# 2 цех план запуска

How a schedule from MS Project changed from version to version. A marks actual dates.

## Version 1 (saved 2026-08-31, file 31.08.26.mpp)

Note of the change: start

| ID | WBS | Task | Duration | Start | Finish | Predecessors | Complete | Total float | Constraint |
| --- | --- | --- | --- | --- | --- | --- | --- | --- | --- |
| 1 | 1 | **1 цех** | 439.5d? | 2023-03-10 09:00 A | 2024-11-02 13:00 |  | 99% |  |  |
| 2 |  | капает с кондиционера ближе к жировику (устранить) | 2h | 2026-08-31 09:00 | 2026-08-31 11:00 |  |  | 137.34d | start no earlier than 2026-08-31 09:00 |
| 3 |  | отвезти внутренний блок с 1 цеха на синий склад | 1h | 2026-08-30 09:00 A | 2026-08-30 10:00 A |  | 100% |  | start no earlier than 2026-08-30 09:00 |
| 4 |  | чистка фильтра кондиционера между печками | 1h | 2026-08-31 09:00 | 2026-08-31 10:00 |  |  |  | start no earlier than 2026-08-31 09:00 |
| 5 |  | ревизия приточной вентиляции (протяжка контактов и т.д.) | 3h | 2026-08-30 09:00 | 2026-08-30 12:00 |  |  |  | start no earlier than 2026-08-30 09:00 |
| 6 |  | прикрутить лоток между барабанами, чтобы не бил о лопасти 1 линия | 1h | 2026-08-30 09:00 A | 2026-08-30 10:00 A |  | 100% |  | start no earlier than 2026-08-30 09:00 |
| 7 |  | улитка на подиуме за цехом, прикрутить отвод в бок (отвод под подиумом) | 1h | 2026-08-31 09:00 | 2026-08-31 10:00 |  |  |  | start no earlier than 2026-08-31 09:00 |
| 8 |  | течет вода с поломоечной машинки - разобраться | 2h | 2026-08-29 09:00 | 2026-08-29 11:00 |  |  |  | start no earlier than 2026-08-29 09:00 |
| 9 | 1.8 | **почистить шнек сухого гидрализата (1 линия)** | 0.12d | 2026-08-28 08:00 A | 2026-08-28 10:00 A |  | 100% |  |  |
| 10 |  | замена пошипников | 2h | 2026-08-28 08:00 A | 2026-08-28 10:00 A |  | 100% |  | start no earlier than 2026-08-28 08:00 |
| 11 |  | замена фильтров на приточке | 1h | 2026-08-27 09:00 A | 2026-08-27 10:00 A |  | 100% |  | start no earlier than 2026-08-27 09:00 |
| 12 | 1.10 | **продумать как сделать герметичную крышку на смесителе сухого гидрализата** | 4.88d? | 2026-08-27 09:00 A | 2026-09-02 17:00 |  | 25% | 134.72d |  |
| 13 |  | изготовить крышку (расскажу по телефону) | 4h | 2026-08-27 09:00 A | 2026-08-27 13:00 A |  | 100% |  | start no earlier than 2026-08-27 09:00 |
| 14 |  | изготовить крышку для 2 линии (как сделал Слава) | 4h | 2026-09-01 09:00 | 2026-09-01 13:00 |  |  | 136.09d | start no earlier than 2026-09-01 09:00 |
| 15 |  | установка на струбцинах с уплотнителями | 1d? | 2026-09-02 09:00 | 2026-09-02 17:00 |  |  | 134.72d | start no earlier than 2026-09-02 09:00 |
| 16 | 1.11 | **метал от тенов печи, устранить причину** | 7.5d | 2026-08-24 09:00 A | 2026-09-02 13:00 |  | 38% | 135.09d |  |
| 17 |  | выяснить сгорел тен русский или китайский (будет ночью остановка) | 15min | 2026-08-27 09:00 A | 2026-08-27 09:15 A |  | 100% |  | start no earlier than 2026-08-27 09:00 |
| 18 |  | вскрыть 2 зону и посмотреть какой тен (мойка) | 1h | 2026-09-02 09:00 A | 2026-09-02 10:00 A |  | 100% |  | start no earlier than 2026-09-02 09:00 |
| 19 |  | осмотр состояния тенов/ планирование замены | 10min | 2026-08-27 09:00 A | 2026-08-27 09:10 A |  | 100% |  | start no earlier than 2026-08-27 09:00 |
| 20 |  | выяснить статус поставки тенов из китая | 1h | 2026-08-24 09:00 A | 2026-08-24 10:00 A |  | 100% |  | start no earlier than 2026-08-24 09:00 |
| 21 |  | замена заброкованных осмотром тенов | 4h | 2026-09-02 09:00 | 2026-09-02 13:00 |  |  | 135.09d | start no earlier than 2026-09-02 09:00 |
| 22 |  | замена плата 485 в контроллере 2 линия | 1h | 2026-08-21 09:00 A | 2026-08-21 10:00 A |  | 100% |  | start no earlier than 2026-08-21 09:00 |
| 23 |  | перемонтаж частотный привод сух гидролизат | 2h | 2026-09-01 09:00 | 2026-09-01 11:00 |  |  | 136.34d | start no earlier than 2026-09-01 09:00 |
| 24 |  | поменять светильник где вывозят готовую продукцию (с люлки) | 2h | 2026-08-31 09:00 | 2026-08-31 11:00 |  |  | 137.34d | start no earlier than 2026-08-31 09:00 |
| 25 |  | на нотис настроить кнопку, чтобы работала в цикле | 1h | 2026-08-20 09:00 A | 2026-08-20 10:00 A |  | 100% |  | start no earlier than 2026-08-20 09:00 |
| 26 |  | изготовление герметичной крышки под мойкой экструдера (объясню по телефону) занкрепить на анкера | 2h | 2026-08-19 08:00 A | 2026-08-19 10:00 A |  | 100% |  | start no earlier than 2026-08-19 08:00 |
| 27 | 1.17 | **проверка пылесоса, почему не стартует (в слесарке)** | 1d? | 2026-08-25 09:00 A | 2026-08-25 18:00 A |  | 100% |  |  |
| 28 |  | заказать двигатель и выяснить на гарантии он или нет | 1d? | 2026-08-25 09:00 A | 2026-08-25 18:00 A |  | 100% |  | start no earlier than 2026-08-25 08:00 |
| 29 |  | ремонт свет в раздевалке | 30min | 2026-08-14 09:00 A | 2026-08-14 09:30 A |  | 100% |  | start no earlier than 2026-08-14 09:00 |
| 30 |  | стиральная машинка проверка насоса слива, разборка, фото шильдик. Не качает. | 2h | 2026-08-15 09:00 A | 2026-08-15 11:00 A |  | 100% |  | start no earlier than 2026-08-15 09:00 |
| 31 | 1.20 | **настройка пробники на толстую цветную пленку** | 12.38d? | 2026-08-14 09:00 A | 2026-08-27 12:00 A |  | 100% |  |  |
| 32 |  | тест пленки на пробнике с Луговских В в 11 00 | 1h | 2026-08-14 09:00 A | 2026-08-14 10:00 A |  | 100% |  | start no earlier than 2026-08-14 09:00 |
| 33 |  | установить протяжной ролик к турбе от ТЕКО 1.5 с синего,снять с синего примерка | 2h | 2026-08-17 09:00 A | 2026-08-17 11:00 A |  | 100% |  | start no earlier than 2026-08-17 09:00 |
| 34 |  | настройка пробника с режимом фотометки | 1h | 2026-08-27 09:00 A | 2026-08-27 10:00 A |  | 100% |  | start no earlier than 2026-08-27 09:00 |
| 35 |  | получить пневмоцилиндр | 15min | 2026-08-20 09:00 A | 2026-08-20 09:15 A |  | 100% |  | start no earlier than 2026-08-20 09:00 |
| 36 |  | изготовление крепления вспомогательной протяжки | 6h | 2026-08-21 09:00 A | 2026-08-21 15:00 A |  | 100% |  | start no earlier than 2026-08-21 09:00 |
| 37 |  | подключение частотника через реле от двигателя протяжки (спросить Константина) | 1d? | 2026-08-25 09:00 A | 2026-08-25 18:00 A |  | 100% |  | start no earlier than 2026-08-25 08:00 |
| 38 |  | настройка частотника для работы пробника | 3h | 2026-08-27 09:00 A | 2026-08-27 12:00 A |  | 100% |  | start no earlier than 2026-08-27 09:00 |
| 39 |  | жалобы, что пробники бьют периодически током- проверить соединения, контакты и т.д. | 1h | 2026-08-26 08:00 A | 2026-08-26 09:00 A |  | 100% |  | start no earlier than 2026-08-26 08:00 |
| 40 |  | настройка параметров ЧП сухой ГДЗ сбиты, переставлен с линии 2. Снял Слава, найти. Настройка в птц | 15min | 2026-08-20 09:00 A | 2026-08-20 09:15 A |  | 100% |  | start no earlier than 2026-08-20 09:00 |
| 41 | 1.22 | **ТЕКО ремонт кнопки, которую снял Бобренок В , вернуть то что снял с 3ц** | 20.16d | 2026-08-13 09:00 A | 2026-09-07 10:15 |  | 44% | 132.44d |  |
| 42 |  | осмотр | 30min | 2026-08-13 09:00 A | 2026-08-13 09:30 A |  | 100% |  | start no earlier than 2026-08-13 09:00 |
| 43 |  | заявка в ТЕКО платы | 30min | 2026-08-18 09:00 A | 2026-08-18 09:30 A | 42 | 100% |  | start no earlier than 2026-08-18 09:00 |
| 44 |  | контроль поставки | 15min | 2026-09-04 09:00 | 2026-09-04 09:15 | 43FS+10d |  | 132.47d | start no earlier than 2026-09-04 09:00 |
| 45 |  | монтаж платы на место | 1h | 2026-09-07 09:15 | 2026-09-07 10:15 | 44FS+1d |  | 132.44d | start no earlier than 2026-08-13 09:00 |
| 46 |  | установить вент решетки на трассу кондиционера | 30min | 2026-08-12 09:00 A | 2026-08-12 09:30 A |  | 100% |  | start no earlier than 2026-08-12 09:00 |
| 47 |  | течь сливной трубы кондиционара править трассу | 2h | 2026-08-12 09:00 A | 2026-08-12 11:00 A |  | 100% |  | start no earlier than 2026-08-12 09:00 |
| 48 |  | слить конденсат и чистка фильтров, продуть радиаторы компрессора | 2h | 2026-08-09 09:00 A | 2026-08-09 11:00 A |  | 100% |  | start no earlier than 2026-08-09 09:00 |
| 49 |  | заменить камеру над квадропаком (слева) -камера у нас в слесарке, взять в помощь оператора | 1h | 2026-08-09 09:00 A | 2026-08-09 10:00 A |  | 100% |  | start no earlier than 2026-08-09 09:00 |
| 50 |  | дверь тяжело открывается в гидрализаторную (попробовать поправить, задевает металл-металл) | 1h | 2026-08-06 09:00 A | 2026-08-06 10:00 A |  | 100% |  | start no earlier than 2026-08-06 08:00 |
| 51 |  | заменить плафон в душе | 1h | 2026-08-06 09:00 A | 2026-08-06 10:00 A |  | 100% |  | start no earlier than 2026-08-06 09:00 |
| 52 |  | ТО пробники и Теко 0,4 (чистка тен, ножей, смазка) | 4h | 2026-08-05 08:00 A | 2026-08-05 12:00 A |  | 100% |  | start no earlier than 2026-08-05 08:00 |
| 53 | 1.30 | **палетообмостчик заказ** | 37d? | 2026-08-12 09:00 A | 2026-09-29 02:00 |  | 7% | 116.59d |  |
| 54 |  | получить договор + счет | 1h | 2026-08-12 09:00 A | 2026-08-12 10:00 A |  | 100% |  | start no earlier than 2026-08-12 09:00 |
| 55 | 1.30.2 | **согласвоание договор** | 4.89d | 2026-08-12 10:00 A | 2026-08-17 09:05 A | 54 | 100% |  |  |
| 56 |  | передать Маше | 5min | 2026-08-12 10:00 A | 2026-08-12 10:05 A |  | 100% |  | start no earlier than 2026-08-12 09:00 |
| 57 |  | контроль | 5min | 2026-08-17 09:00 A | 2026-08-17 09:05 A | 56FS+3d | 100% |  | start no earlier than 2026-08-17 09:00 |
| 58 |  | оплата подать счет | 0d | 2026-08-12 09:00 A | 2026-08-12 09:00 A |  | 100% |  | start no earlier than 2026-08-12 09:00 |
| 59 |  | доставка конетроль | 1d? | 2026-09-25 09:00 | 2026-09-25 18:00 | 58FS+30d |  | 116d | start no earlier than 2026-09-25 09:00 |
| 60 |  | монтаж | 1d? | 2026-09-28 18:00 | 2026-09-29 02:00 | 59FS+1d |  | 116d | start no earlier than 2026-08-10 08:00 |
| 61 | 1.31 | **замена сетка печи линия 1** | 40.97d? | 2026-08-12 09:00 A | 2026-10-02 17:45 |  | 5% | 112.62d |  |
| 62 |  | замерить параметры сетки | 15min | 2026-08-12 09:00 A | 2026-08-12 09:15 A |  | 100% |  | start no earlier than 2026-08-12 09:00 |
| 63 |  | получить счет на сетку КИТАЙ | 15min | 2026-08-17 09:00 A | 2026-08-17 09:15 A | 62 | 100% |  | start no earlier than 2026-08-17 09:00 |
| 64 |  | контроль оплата | 0d | 2026-08-21 09:00 A | 2026-08-21 09:00 A | 63FS+2d | 100% |  | start no earlier than 2026-08-21 09:00 |
| 65 |  | контроль доставки | 15min | 2026-10-01 09:00 | 2026-10-01 09:15 | 64FS+30d |  | 112.91d | start no earlier than 2026-08-10 08:00 |
| 66 |  | приемка | 30min | 2026-10-01 09:15 | 2026-10-01 09:45 | 65 |  | 112.91d | start no earlier than 2026-08-10 08:00 |
| 67 |  | замена | 1d? | 2026-10-02 09:45 | 2026-10-02 17:45 | 66FS+1d |  | 112.62d | start no earlier than 2026-08-10 08:00 |
| 68 | 1.32 | **зависает диспелей на расходомере 2л** | 19.06d | 2026-08-11 09:00 A | 2026-09-02 09:30 |  | 82% | 135.53d |  |
| 69 |  | контроль поставки | 15min | 2026-08-11 09:00 A | 2026-08-11 09:15 A |  | 100% |  | start no earlier than 2026-08-11 09:00 |
| 70 |  | замена кабель к монитору | 30min | 2026-08-19 09:00 A | 2026-08-19 09:30 A | 69 | 100% |  | start no earlier than 2026-08-19 09:00 |

| ID | WBS | Task | Duration | Start | Finish | Predecessors | Complete | Total float | Constraint |
| --- | --- | --- | --- | --- | --- | --- | --- | --- | --- |
| 71 |  | объеденить минус шину контроллера с нулевым проводом оборудования ч/з резистор 10 Ом | 30min | 2026-09-02 09:00 | 2026-09-02 09:30 |  |  | 135.53d | start no earlier than 2026-09-02 09:00 |
| 72 |  | замена кабель от ЧП к контроллеру на экранированный | 30min | 2026-08-24 09:00 A | 2026-08-24 09:30 A |  | 100% |  | start no earlier than 2026-08-24 09:00 |
| 73 |  | замена блок питания 5в | 1h | 2026-08-13 09:00 A | 2026-08-13 10:00 A |  | 100% |  | start no earlier than 2026-08-13 09:00 |
| 74 |  | подключить розетку на правой ноге квадропака (отключить квадропак на 5 минут) | 2h | 2026-08-11 09:00 A | 2026-08-11 11:00 A |  | 100% |  | start no earlier than 2026-08-11 09:00 |
| 75 | 1.34 | **перенос вентилятор охладителя линия2 в реверс, убрать шкаф** | 15d | 2026-08-18 09:00 A | 2026-09-04 19:15 |  | 70% | 132.59d |  |
| 76 |  | проектирование рамы | 2d | 2026-08-19 09:00 A | 2026-08-20 18:00 A |  | 100% |  | start no earlier than 2026-08-19 09:00 |
| 77 |  | чертеж рамы под вентилятор | 2h | 2026-08-18 09:00 A | 2026-08-18 11:00 A |  | 100% |  | start no earlier than 2026-08-18 09:00 |
| 78 |  | заявка вент фитинги | 1h | 2026-08-21 09:00 A | 2026-08-21 10:00 A | 77 | 100% |  | start no earlier than 2026-08-21 09:00 |
| 79 |  | конроль поставки | 15min | 2026-09-03 10:00 | 2026-09-03 10:15 | 78FS+10d |  | 132.56d | start no earlier than 2026-08-12 09:00 |
| 80 |  | сборка рама | 4h | 2026-09-04 10:15 | 2026-09-04 15:15 | 79FS+1d |  | 132.56d | start no earlier than 2026-09-02 09:00 |
| 81 |  | модернизация венттилятора | 4h | 2026-09-04 15:15 | 2026-09-04 19:15 | 80 |  | 132.56d | start no earlier than 2026-08-12 09:00 |
| 82 | 1.35 | **ревизия красного смесителя 2 линия (просыпается мука)** | 13.25d | 2026-08-17 09:00 A | 2026-09-02 11:00 |  | 31% | 135.34d |  |
| 83 |  | подтянуть торцевое уплотнение смесителя | 30min | 2026-08-17 09:00 A | 2026-08-17 09:30 A |  | 100% |  | start no earlier than 2026-08-17 09:00 |
| 84 |  | запрос штатное уплотнеие у производителя / заявка | 30min | 2026-08-19 09:00 A | 2026-08-19 09:30 A |  | 100% |  | start no earlier than 2026-08-19 09:00 |
| 85 |  | контроль поставки | 15min | 2026-08-25 09:30 | 2026-08-25 09:45 | 84FS+5d |  | 140.38d | start no earlier than 2026-08-12 09:00 |
| 86 |  | замена | 2h | 2026-09-02 09:00 | 2026-09-02 11:00 | 85FS+1d |  | 135.34d | start no earlier than 2026-09-02 09:00 |
| 87 |  | шум зл двигателя 2 линия / смазка | 1h | 2026-08-10 08:00 A | 2026-08-10 09:00 A |  | 100% |  | start no earlier than 2026-08-10 08:00 |
| 88 |  | натяжка транспортер №2 линия 2 | 2h | 2026-08-12 09:00 A | 2026-08-12 11:00 A |  | 100% |  | start no earlier than 2026-08-12 09:00 |
| 89 |  | монтаж- подключение внутреннего блока кондиционера | 2h | 2026-08-05 09:00 A | 2026-08-05 11:00 A |  | 100% |  | start no earlier than 2026-08-05 09:00 |
| 90 | 1.39 | **теко 0,4 -восстановить или заменить блок для тепловухи** | 1d? | 2026-08-04 09:00 A | 2026-08-04 18:00 |  | 100% |  |  |
| 91 |  | проверить подключение транспортера и тепловуху | 1d? | 2026-08-05 09:00 A | 2026-08-05 18:00 A |  | 100% |  | start no earlier than 2026-08-05 09:00 |
| 92 |  | замена перегоревших светильников, монтаж доп. Светильников (Шуранов- покажу) | 4h | 2026-08-05 09:00 A | 2026-08-05 13:00 A |  | 100% |  | start no earlier than 2026-08-12 09:00 |
| 93 |  | включить мухоловку 1 линия экструдер | 0.5h | 2026-08-02 09:00 A | 2026-08-02 09:30 A |  | 100% |  | start no earlier than 2026-08-02 09:00 |
| 94 |  | пропадает питание на весах смесителя 2 линия- проверить | 1h | 2026-08-01 09:00 A | 2026-08-01 10:00 A |  | 100% |  | start no earlier than 2026-08-01 09:00 |
| 95 |  | эксперимент с лейкой жиры | 2h | 2026-08-06 09:00 A | 2026-08-06 11:00 A |  | 100% |  | start no earlier than 2026-08-07 09:00 |
| 96 |  | камера над компрессором снять и поменять (камеры у нас в кабинете) | 1h | 2026-08-03 09:00 A | 2026-08-03 10:00 A |  | 100% |  | start no earlier than 2026-08-03 09:00 |
| 97 |  | на мезонине смотрит на квадропак, поменять и сделать чуть ниже обзор | 1h | 2026-08-03 09:00 A | 2026-08-03 10:00 A |  | 100% |  | start no earlier than 2026-08-03 09:00 |
| 98 |  | камера 1 линия повернуть чуть правее и приподнять | 1h | 2026-08-03 09:00 A | 2026-08-03 10:00 A |  | 100% |  | start no earlier than 2026-08-03 09:00 |
| 99 |  | камера на углу, где вывозят готовую продукцию с люльки поменять (камеры у нас в кабинете) | 2h | 2026-08-03 09:00 A | 2026-08-03 11:00 A |  | 100% |  | start no earlier than 2026-08-03 09:00 |
| 100 |  | повесить камеру над входом в фасовку, чтобы смотрела на коридор и как обрабатывают руки, монтаж кабеля | 3h | 2026-08-03 09:00 A | 2026-08-03 12:00 A |  | 100% |  | start no earlier than 2026-08-03 09:00 |
| 101 | 1.49 | **снять камеру зона экструдера и повесить на жирах со стороны экструдера, монтаж кабель** | 0.25d | 2026-09-02 09:00 | 2026-09-02 11:00 |  |  | 135.34d |  |
| 102 |  | на мойке попробовать снять камеру | 2h | 2026-09-02 09:00 | 2026-09-02 11:00 |  |  | 135.34d | start no earlier than 2026-09-02 09:00 |
| 103 |  | открутить полочку на столе на жирах, сделать ребра жесткости | 1h | 2026-07-31 09:00 A | 2026-07-31 10:00 A |  | 100% |  | start no earlier than 2026-07-31 08:00 |
| 104 |  | слив конденсата с компрессора и продуть радиаторы и фильтры | 1h | 2026-07-31 08:00 A | 2026-07-31 09:00 A |  | 100% |  | start no earlier than 2026-07-31 08:00 |
| 105 |  | Ревизия головы от Нотис/заключение | 1h | 2026-07-27 08:00 A | 2026-07-27 09:00 A |  | 100% |  | start no earlier than 2026-07-27 08:00 |
| 106 |  | Снять клавиатуру с головы нотис, подготовить ее к замене лежит на верстаке | 30min | 2026-07-29 08:00 A | 2026-07-29 08:30 A |  | 100% |  | start no earlier than 2026-07-29 08:00 |
| 107 | 1.54 | **ремонт кондиционер зона фасовки** | 0.5d | 2026-07-16 09:00 A | 2026-07-16 13:00 A |  | 100% |  |  |
| 108 |  | демонтаж внутреннего блока | 2h | 2026-07-16 09:00 A | 2026-07-16 11:00 A |  | 100% |  | start no earlier than 2026-07-16 09:00 |
| 109 |  | разборка, отделить испаритель от рамы | 1h | 2026-07-16 11:00 A | 2026-07-16 12:00 A | 108 | 100% |  | start no earlier than 2026-07-15 09:00 |
| 110 |  | опресовка в воде | 1h | 2026-07-16 12:00 A | 2026-07-16 13:00 A | 109 | 100% |  | start no earlier than 2026-07-15 09:00 |
| 111 |  | редуктор конвейера выгрузки пакетов квадропак -> обеспечить гибкое соединеине к раме, жесткое будет ломать либо вал либо редутор | 2h | 2026-07-16 09:00 A | 2026-07-16 11:00 A |  | 100% |  | start no earlier than 2026-07-16 09:00 |
| 112 | 1.56 | **выполнить смотровые люки состояния цепи средниий и верхние этажи. На торцевой крышке с стороны экструдера.** | 39.88d | 2026-07-14 09:00 A | 2026-09-02 17:00 |  | 13% | 134.72d |  |
| 113 |  | заявка шарниры нерж + бугельный зажим | 1h | 2026-07-14 09:00 A | 2026-07-14 10:00 A |  | 100% |  | start no earlier than 2026-07-14 08:00 |
| 114 |  | контроль доставка | 10min | 2026-08-17 09:00 A | 2026-08-17 09:10 A | 113FS+7d | 100% |  | start no earlier than 2026-08-17 09:00 |
| 115 |  | монтаж 1 линия | 4h | 2026-09-02 09:00 | 2026-09-02 13:00 | 114FS+1d |  | 134.72d | start no earlier than 2026-09-02 09:00 |
| 116 |  | монтаж 2 линия | 4h | 2026-09-02 13:00 | 2026-09-02 17:00 | 115 |  | 134.72d | start no earlier than 2026-07-14 08:00 |
| 117 |  | монтаж светильник под площадку дозатора квадропака | 4h | 2026-07-10 09:00 A | 2026-07-10 13:00 A |  | 100% |  | start no earlier than 2026-07-10 09:00 |
| 118 | 1.58 | **замена вентилятор вытяжка с экструдеров** | 2.25d | 2026-07-13 09:00 A | 2026-07-15 11:00 A |  | 100% |  |  |
| 119 |  | подключение воздуховоды | 4h | 2026-07-13 09:00 A | 2026-07-13 13:00 A |  | 100% |  | start no earlier than 2026-07-13 09:00 |
| 120 |  | установить крыльчатку на мотор | 1h | 2026-07-14 09:00 A | 2026-07-14 10:00 A |  | 100% |  | start no earlier than 2026-07-14 08:00 |
| 121 |  | устарнить причину вибрации мотора | 2h | 2026-07-15 09:00 A | 2026-07-15 11:00 A |  | 100% |  | start no earlier than 2026-07-15 09:00 |
| 122 | 1.59 | **сборка дозатор на квадропак** | 45.5d | 2026-07-09 08:00 A | 2026-09-03 13:00 |  | 80% | 134.09d |  |
| 123 |  | установить переключатель блокировки сброса дозатором | 30min | 2026-08-15 09:00 A | 2026-08-15 09:30 A |  | 100% |  | start no earlier than 2026-08-15 09:00 |
| 124 |  | упорядочить схему | 30min | 2026-08-15 09:00 A | 2026-08-15 09:30 A |  | 100% |  | start no earlier than 2026-08-15 09:00 |
| 125 |  | транспортировка дозатора в слесарку | 2h | 2026-08-04 08:00 A | 2026-08-04 10:00 A |  | 100% |  | start no earlier than 2026-08-04 08:00 |
| 126 |  | установить розетку для дозатора. Вывод кабель сверлить платформу, что бы он был не под ногами и удобен при уборке | 2h | 2026-07-09 08:00 A | 2026-07-09 10:00 A |  | 100% |  | start no earlier than 2026-07-09 08:00 |
| 127 |  | закрепить монитор фото Зорькин | 2h | 2026-07-09 08:00 A | 2026-07-09 10:00 A |  | 100% |  | start no earlier than 2026-07-09 08:00 |
| 128 |  | подключение дозатора к машине / поиск кабеля в 3 цехе / изучение документации | 4h | 2026-07-14 09:00 A | 2026-07-14 13:00 A |  | 100% |  | start no earlier than 2026-07-14 09:00 |
| 129 |  | подключить реле аварии дозатора паралельно датчику отсутствия пакета квадропака (схема прилагается) | 1h | 2026-08-12 09:00 A | 2026-08-12 10:00 A | 128 | 100% |  | start no earlier than 2026-08-12 09:00 |
| 130 |  | калибровка весов и разгон наполнения, тестирование работы | 4h | 2026-08-12 09:00 A | 2026-08-12 13:00 A |  | 100% |  | start no earlier than 2026-08-12 09:00 |
| 131 |  | монтаж кабель выравнивания потенциалов площадка дозатора и площадка квадропака | 30min | 2026-08-15 09:00 A | 2026-08-15 09:30 A |  | 100% |  | start no earlier than 2026-08-15 09:00 |
| 132 |  | контроль поставки маткериал | 0d | 2026-08-27 09:00 A | 2026-08-27 09:00 A |  | 100% |  | start no earlier than 2026-08-27 09:00 |
| 133 |  | тестирование весов / разгон | 2h | 2026-09-01 09:00 | 2026-09-01 11:00 | 132 |  | 135.97d | start no earlier than 2026-09-01 09:00 |
| 134 |  | подключить синхронизацию пуска дозатора паралельно катушки открытия заслонки квадропака | 4h | 2026-08-04 11:00 A | 2026-08-04 16:00 A | 129 | 100% |  | start no earlier than 2026-07-16 09:00 |
| 135 |  | монтаж перила на площадку - подготовка | 2h | 2026-08-14 09:00 A | 2026-08-14 11:00 A |  | 100% |  | start no earlier than 2026-08-14 09:00 |
| 136 |  | монтаж перила на площадку | 2h | 2026-08-17 09:00 A | 2026-08-17 11:00 A |  | 100% |  | start no earlier than 2026-08-17 09:00 |
| 137 |  | сверлить для крепления перил | 2h | 2026-09-03 09:00 | 2026-09-03 11:00 | 133 |  | 134.22d | start no earlier than 2026-09-03 09:00 |
| 138 |  | закрыть металлом пустые места между площадками квадропак и дозатор | 2h | 2026-09-03 11:00 | 2026-09-03 13:00 | 137 |  | 134.09d | start no earlier than 2026-08-27 09:00 |
| 139 |  | навести сортиировка / порядок пандус 1ц | 4h | 2026-07-10 09:00 A | 2026-07-10 13:00 A |  | 100% |  | start no earlier than 2026-07-10 09:00 |
| 140 | 1.61 | **Кондиционер зоны экструдера** | 0.5d | 2026-07-07 09:00 A | 2026-07-07 13:00 A |  | 100% |  |  |

| ID | WBS | Task | Duration | Start | Finish | Predecessors | Complete | Total float | Constraint |
| --- | --- | --- | --- | --- | --- | --- | --- | --- | --- |
| 141 |  | Чистка сливной магистрали | 4h | 2026-07-07 09:00 A | 2026-07-07 13:00 A |  | 100% |  | start no earlier than 2026-07-07 09:00 |
| 142 | 1.62 | **установить датчик давления на экструдер** | 47.5d | 2026-07-06 08:00 A | 2026-09-02 13:00 |  | 68% | 135.09d |  |
| 143 |  | контроль поставка фитинги | 15min | 2026-08-28 09:00 | 2026-08-28 09:15 |  |  | 138.06d | start no earlier than 2026-08-28 09:00 |
| 144 |  | монтаж кронштейны для фиксации датчикоа давления 1+2 линия | 2h | 2026-07-10 09:00 A | 2026-07-10 11:00 A |  | 100% |  | start no earlier than 2026-07-10 09:00 |
| 145 |  | установить датчики давления через гидравлические шланги | 2h | 2026-07-06 08:00 A | 2026-07-06 10:00 A |  | 100% |  | start no earlier than 2026-07-06 08:00 |
| 146 |  | доработка кожух нож узла для закрытия | 2h | 2026-07-07 09:00 A | 2026-07-07 11:00 A |  | 100% |  | start no earlier than 2026-07-07 09:00 |
| 147 |  | Прокинуть кабель ШВВП 2х0,75 от датчиков давления до регистраторов, сделать по красоте. | 3h | 2026-07-10 09:00 A | 2026-07-10 12:00 A |  | 100% |  | start no earlier than 2026-07-10 09:00 |
| 148 |  | подключение датчиков давления к регистратору | 4h | 2026-09-02 09:00 | 2026-09-02 13:00 | 143 |  | 135.09d | start no earlier than 2026-09-02 09:00 |
| 149 |  | печь №1 ревизия/замена перемычек | 4h | 2026-07-04 09:00 A | 2026-07-04 13:00 A |  | 100% |  | start no earlier than 2026-07-04 09:00 |
| 150 |  | печь №2 ревизия/замена перемычек | 2h | 2026-07-16 09:00 A | 2026-07-16 11:00 A |  | 100% |  | start no earlier than 2026-07-16 09:00 |
| 151 |  | заменить амперметры неиспрвные на ШУ 1 и 2 линия (они на складе) | 1h | 2026-07-22 09:00 | 2026-07-22 10:00 |  |  |  | start no earlier than 2026-07-22 09:00 |
| 152 | 1.66 | **ставим 2 частотника на вентиляторы вытяжки с печек №1 и 2** | 0.5d | 2026-07-02 09:00 A | 2026-07-02 13:00 A |  | 100% |  |  |
| 153 |  | подключение к улиткам вытяжки 1 и 2 линия (помошника дадим) | 4h | 2026-07-02 09:00 A | 2026-07-02 13:00 A |  | 100% |  | start no earlier than 2026-07-02 09:00 |
| 154 |  | подключить частотный привод вентилятор на площадке жиротопки | 4h | 2026-07-14 09:00 A | 2026-07-14 13:00 A |  | 100% |  | start no earlier than 2026-07-14 09:00 |
| 155 |  | установка частотника для улитку в жиротопке (по телефону расскажу) | 4h | 2026-07-02 09:00 A | 2026-07-02 13:00 A |  | 100% |  | start no earlier than 2026-07-02 09:00 |
| 156 |  | заменить шнеки и гильзы на 2 линии (ставим усиленные, 2 гильзы) по уровню (операторы помогут) | 10h | 2026-07-05 09:00 A | 2026-07-06 11:00 A |  | 100% |  | start no earlier than 2026-07-05 09:00 |
| 157 | 1.70 | **поменять фильтрующую ткань на фильтрах кондиционеров 1 цех** | 0.25d | 2026-07-01 09:00 A | 2026-07-01 11:00 A |  | 100% |  |  |
| 158 |  | установка фильтров закрываем внутренние блоки | 2h | 2026-07-01 09:00 A | 2026-07-01 11:00 A |  | 100% |  | start no earlier than 2026-07-01 09:00 |
| 159 |  | изготовление кронштейна для установки вентилятора крепим на место в зоне экструдера | 2h | 2026-06-30 09:00 A | 2026-06-30 11:00 A |  | 100% |  | start no earlier than 2026-06-30 09:00 |
| 160 |  | снять на всех валах барабанов колеса, будем покрывать полиуретаном | 3h | 2026-06-29 09:00 A | 2026-06-29 12:00 A |  | 100% |  | start no earlier than 2026-06-29 09:00 |
| 161 | 1.73 | **сборка раковина нерж для мойки конвейер** | 7.25d? | 2026-09-02 09:00 | 2026-09-11 11:00 |  |  | 128.34d |  |
| 162 |  | подготовить данные, оформить как проект / инициировать совещание | 2h | 2026-09-02 09:00 | 2026-09-02 11:00 |  |  | 128.34d | start no earlier than 2026-09-02 09:00 |
| 163 |  | совещание с руководителями / фиксация решения | 1d? | 2026-09-03 11:00 | 2026-09-04 11:00 | 162FS+1d |  | 128.34d | start no earlier than 2026-08-31 09:00 |
| 164 |  | подготовить чертеж раковины, проверить материал | 1d? | 2026-09-07 11:00 | 2026-09-08 11:00 | 163FS+1d |  | 128.34d | start no earlier than 2026-08-31 09:00 |
| 165 |  | сборка | 2d | 2026-09-09 11:00 | 2026-09-11 11:00 | 164FS+1d |  | 128.34d | start no earlier than 2026-07-14 08:00 |
| 166 |  | ревизия шестеренок питателя 2 линия, если нужно замена с зип- питатель синий склад | 3h | 2026-06-29 09:00 A | 2026-06-29 12:00 A |  | 100% |  | start no earlier than 2026-06-29 09:00 |
| 167 |  | повесить полочки у ОТК в кабинете- крепеж по гипсокортону у меня на столе | 1h | 2026-06-26 09:00 A | 2026-06-26 10:00 A |  | 100% |  | start no earlier than 2026-06-26 09:00 |
| 168 |  | нормально прикрутить светильник на стойке со сканером QR- кодов на фасовке, если нужно заменить на другой | 2h | 2026-07-03 09:00 A | 2026-07-03 11:00 A |  | 100% |  | start no earlier than 2026-07-03 09:00 |
| 169 |  | прикрутить розетку возле ШУ приточки | 1h | 2026-07-04 09:00 A | 2026-07-04 10:00 A |  | 100% |  | start no earlier than 2026-07-04 09:00 |
| 170 |  | заменить светильник 50Вт на жиротопке | 2h | 2026-06-27 09:00 A | 2026-06-27 11:00 A |  | 100% |  | start no earlier than 2026-06-27 09:00 |
| 171 |  | мойка внутрених и внешних блоков керхером | 4h | 2026-06-24 09:00 A | 2026-06-24 13:00 A |  | 100% |  | start no earlier than 2026-06-24 09:00 |
| 172 |  | 1 линия средняя зона печи 115А | 2h | 2026-07-01 09:00 A | 2026-07-01 11:00 A |  | 100% |  | start no earlier than 2026-07-01 09:00 |
| 173 |  | продуть внешний блок кондиционера (посередине) | 2h | 2026-06-24 09:00 A | 2026-06-24 11:00 A |  | 100% |  | start no earlier than 2026-06-24 09:00 |
| 174 |  | слить конденсат и продуть радиаторы на компрессоре | 1h | 2026-06-22 09:00 A | 2026-06-22 10:00 A |  | 100% |  | start no earlier than 2026-06-22 08:00 |
| 175 |  | взять ключи на складе и повесить возле каждого щитка | 1h | 2026-07-05 09:00 A | 2026-07-05 10:00 A |  | 100% |  | start no earlier than 2026-07-05 09:00 |
| 176 |  | заменить монтажную коробку- пускатели улиток, зона экструдера | 1h | 2026-06-30 09:00 A | 2026-06-30 10:00 A |  | 100% |  | start no earlier than 2026-06-30 09:00 |
| 177 |  | герметизация стыков в душевой женской, потечка воды | 1h | 2026-06-21 09:00 A | 2026-06-21 10:00 A |  | 100% |  | start no earlier than 2026-06-21 09:00 |
| 178 | 1.86 | **вернуть колбу уровня подачи воды на 2 линию** | 1h? | 2026-06-26 09:00 | 2026-06-26 10:00 |  | 100% |  |  |
| 179 |  | найти колбу | 1d? | 2026-06-29 09:00 A | 2026-06-29 18:00 A |  | 100% |  | start no earlier than 2026-06-29 09:00 |
| 180 | 1.87 | **изготовить шило для экструдерщиков, они подскажут** | 1h? | 2026-06-26 09:00 | 2026-06-26 10:00 |  |  |  |  |
| 181 |  | заказать спицы не пустые | 15min | 2026-08-31 09:00 | 2026-08-31 09:15 |  |  | 137.56d | start no earlier than 2026-08-31 09:00 |
| 182 |  | отключить кондеры и продуть внешние блоки кондиционеров 1 ц. | 2h | 2026-06-20 09:00 A | 2026-06-20 11:00 A |  | 100% |  | start no earlier than 2026-06-20 09:00 |
| 183 | 1.89 | **померить верхний воздуховод и трассу для подключения новой улитки** | 1d? | 2026-06-22 09:00 A | 2026-06-22 18:00 A |  | 100% |  |  |
| 184 |  | заказать переходник | 1d? | 2026-06-22 09:00 A | 2026-06-22 18:00 A |  | 100% |  | start no earlier than 2026-06-22 08:00 |
| 185 |  | слив конденсата с компрессора и продуть радиаторы и фильтры | 1h | 2026-06-14 09:00 A | 2026-06-14 10:00 A |  | 100% |  | start no earlier than 2026-06-14 09:00 |
| 186 | 1.91 | **закрепить редуктор к отводящему транспортеру** | 1d? | 2026-06-17 09:00 A | 2026-06-17 18:00 A |  | 100% |  |  |
| 187 |  | сделать надежное крепление на мойке | 1d? | 2026-06-17 09:00 A | 2026-06-17 18:00 A |  | 100% |  | start no earlier than 2026-06-17 09:00 |
| 188 |  | заменить сальник на вакууматоре (редуктор) | 1h | 2026-06-11 09:00 A | 2026-06-11 10:00 A |  | 100% |  | start no earlier than 2026-06-11 09:00 |
| 189 |  | законтрогаить шпильки-ножки запайщиков | 1h | 2026-06-12 09:00 A | 2026-06-12 10:00 A |  | 100% |  | start no earlier than 2026-06-12 09:00 |
| 190 |  | настроить подачу масла на квадропаке по пневмо системе (спросить у Дедова) | 1h | 2026-06-10 09:00 A | 2026-06-10 10:00 A |  | 100% |  | start no earlier than 2026-06-10 09:00 |
| 191 | 1.95 | **проверить давление в гидроаккумуляторе водоподготовки** | 0.25d | 2026-06-10 09:00 A | 2026-06-10 11:00 A |  | 100% |  |  |
| 192 |  | замена мембраны | 2h | 2026-06-10 09:00 A | 2026-06-10 11:00 A |  | 100% |  | start no earlier than 2026-06-10 09:00 |
| 193 |  | модернизация опроры пневмоцилиндра встряживателя №1 квадропак | 4h | 2026-09-02 09:00 | 2026-09-02 13:00 |  |  | 135.09d | start no earlier than 2026-09-02 09:00 |
| 194 | 1.97 | **готовить в зип сетку оборотную для печей (нижняя)** | 0.5d | 2026-06-09 09:00 A | 2026-06-09 13:00 A |  | 100% |  |  |
| 195 |  | проверка материал | 30min | 2026-06-09 09:00 A | 2026-06-09 09:30 A |  | 100% |  | start no earlier than 2026-06-09 09:00 |
| 196 |  | сборка | 4h | 2026-06-09 09:00 A | 2026-06-09 13:00 A |  | 100% |  | start no earlier than 2026-06-09 09:00 |
| 197 |  | подключить частотный привод насос жир 2 линия/ при остановке | 2h | 2026-06-07 09:00 A | 2026-06-07 11:00 A |  | 100% |  | start no earlier than 2026-06-07 09:00 |
| 198 | 1.99 | **жиротопка текет сальник насоса** | 41.03d? | 2026-06-28 09:00 A | 2026-08-18 09:15 A |  | 100% |  |  |
| 199 |  | замена насос из зип | 1h | 2026-06-28 09:00 A | 2026-06-28 10:00 A |  | 100% |  | start no earlier than 2026-06-28 09:00 |
| 200 |  | замена сальник на снятом насосе | 1h | 2026-06-28 10:00 A | 2026-06-28 11:00 A | 199 | 100% |  | start no earlier than 2026-06-17 09:00 |
| 201 |  | заказать | 1d? | 2026-06-29 09:00 A | 2026-06-29 18:00 A |  | 100% |  | start no earlier than 2026-06-29 09:00 |
| 202 |  | ревизия прогресса утечки | 15min | 2026-08-05 09:00 A | 2026-08-05 09:15 A |  | 100% |  | start no earlier than 2026-08-05 09:00 |
| 203 |  | контроль наличия сальника | 15min | 2026-08-18 09:00 A | 2026-08-18 09:15 A |  | 100% |  | start no earlier than 2026-08-18 09:00 |
| 204 |  | замена сальника | 1d? | 2026-08-05 09:00 A | 2026-08-05 17:00 A |  | 100% |  | start no earlier than 2026-08-05 09:00 |
| 205 |  | ремонт весов напольный (палетные) проверить кабель на обрыв | 3h | 2026-06-11 09:00 A | 2026-06-11 12:00 A |  | 100% |  | start no earlier than 2026-06-11 09:00 |
| 206 |  | печь №2 проверка токов, тен, замена | 2h | 2026-06-04 09:00 A | 2026-06-04 11:00 A |  | 100% |  | start no earlier than 2026-06-04 09:00 |
| 207 |  | изготовление шторки после приемного лотка циклона | 2h | 2026-06-04 09:00 A | 2026-06-04 11:00 A |  | 100% |  | start no earlier than 2026-06-04 09:00 |
| 208 | 1.103 | **на аппликаторе настроить печать QR-кода на пакет, чтобы не размазывало (по тел. Объясню)** | 5.12d | 2026-06-04 09:00 A | 2026-06-09 10:00 A |  | 100% |  |  |
| 209 |  | тест (подключить доп. Датчик -настроить печать без размытия, картридж находиться у Луговских подписанный) | 1h | 2026-06-04 09:00 A | 2026-06-04 10:00 A |  | 100% |  | start no earlier than 2026-06-04 09:00 |
| 210 |  | тест | 1h | 2026-06-09 09:00 A | 2026-06-09 10:00 A |  | 100% |  | start no earlier than 2026-06-09 09:00 |

| ID | WBS | Task | Duration | Start | Finish | Predecessors | Complete | Total float | Constraint |
| --- | --- | --- | --- | --- | --- | --- | --- | --- | --- |
| 211 |  | целкает аппликатор -разобраться, устранить | 1h | 2026-06-03 08:00 A | 2026-06-03 09:00 A |  | 100% |  | start no earlier than 2026-06-03 08:00 |
| 212 | 1.105 | **установить резервную трубку/штангу с форсункой на подачу жира** | 8.88d | 2026-08-31 09:00 | 2026-09-10 17:00 |  |  | 128.72d |  |
| 213 |  | проект-схема разработать | 1h | 2026-08-31 09:00 | 2026-08-31 10:00 |  |  | 128.75d | start no earlier than 2026-08-31 09:00 |
| 214 |  | заявка фитинги / тройники / краны / трубка | 1h | 2026-09-01 10:00 | 2026-09-01 11:00 | 213FS+1d |  | 128.75d | start no earlier than 2026-06-03 08:00 |
| 215 |  | доставка контроль | 0d | 2026-09-08 11:00 | 2026-09-08 11:00 | 214FS+5d |  | 128.75d | start no earlier than 2026-06-03 08:00 |
| 216 |  | сборка в мастерской | 4h | 2026-09-09 11:00 | 2026-09-09 15:00 | 215FS+1d |  | 128.75d | start no earlier than 2026-06-15 09:00 |
| 217 |  | монтаж на линию | 2h | 2026-09-10 15:00 | 2026-09-10 17:00 | 216FS+1d |  | 128.72d | start no earlier than 2026-06-03 08:00 |
| 218 | 1.106 | **установить автоматику запуска шнека + смеситель по датчику уровня сырья в бункере экструдера** | 72.12d? | 2026-06-04 09:00 | 2026-08-31 10:00 |  |  | 137.47d |  |
| 219 |  | разработка схема / компановка | 1h | 2026-08-31 09:00 | 2026-08-31 10:00 |  |  | 137.47d | start no earlier than 2026-08-31 09:00 |
| 220 |  | заявка датчики / пускатели / эл щит | 2h | 2026-06-04 09:00 | 2026-06-04 11:00 |  |  | 200.73d | start no earlier than 2026-06-04 09:00 |
| 221 |  | доставка контроль | 5min | 2026-06-11 11:00 | 2026-06-11 11:05 | 220FS+7d |  | 200.73d | start no earlier than 2026-06-03 08:00 |
| 222 |  | контроль поставки | 5min | 2026-06-12 11:05 | 2026-06-12 11:10 | 221FS+1d |  | 200.73d | start no earlier than 2026-06-03 08:00 |
| 223 |  | сборка ШУ | 1d? | 2026-06-24 09:00 | 2026-06-24 17:00 | 222 |  | 191.12d | start no earlier than 2026-06-24 09:00 |
| 224 |  | монтаж в линию | 1d? | 2026-06-24 17:00 | 2026-06-25 01:00 | 223 |  | 191.12d | start no earlier than 2026-06-03 08:00 |
| 225 |  | поставить на двигатели накопительных столов тепловые реле | 2h | 2026-06-15 09:00 | 2026-06-15 11:00 |  |  | 200.34d | start no earlier than 2026-06-15 09:00 |
| 226 |  | влагоотделитель крышки загрузки квадропак треснул- замена | 1h | 2026-06-10 09:00 | 2026-06-10 10:00 |  |  | 203.47d | start no earlier than 2026-06-10 09:00 |
| 227 |  | установка ПЧ на насос жира 2 линия | 2h | 2026-06-02 09:00 A | 2026-06-02 11:00 A |  | 100% |  | start no earlier than 2026-06-02 09:00 |
| 228 |  | установка ПЧ на барабаны жиров 1 и 2 линия | 2h | 2026-06-02 09:00 A | 2026-06-02 11:00 A |  | 100% |  | start no earlier than 2026-06-02 09:00 |
| 229 | 1.111 | **рассекатели после шлюзовика 1 и 2 линия сделать, чтобы корм равномерно ложился по поверхности сетки** | 7.25d | 2026-06-03 09:00 A | 2026-06-10 11:00 A |  | 100% |  |  |
| 230 |  | после обеда будет остановка 2 линия- модернизация рассекателя | 1h | 2026-06-03 09:00 A | 2026-06-03 10:00 A |  | 100% |  | start no earlier than 2026-06-03 09:00 |
| 231 | 1.111.2 | **установить зубчатую пластину для выравнивания слоя на входе в печь** | 7.25d | 2026-06-03 09:00 A | 2026-06-10 11:00 A |  | 100% |  |  |
| 232 |  | подготовиьт чертеж | 2h | 2026-06-03 09:00 A | 2026-06-03 11:00 A |  | 100% |  | start no earlier than 2026-06-03 08:00 |
| 233 |  | изготовить | 6h | 2026-06-05 09:00 A | 2026-06-05 16:00 A | 232 | 100% |  | start no earlier than 2026-06-05 09:00 |
| 234 |  | монтаж | 2h | 2026-06-10 09:00 A | 2026-06-10 11:00 A | 233 | 100% |  | start no earlier than 2026-06-10 09:00 |
| 235 | 1.112 | **монтаж 2х прожекторов на барабаны жиров** | 0.25d | 2026-06-02 09:00 A | 2026-06-02 11:00 A |  | 100% |  |  |
| 236 |  | подключить в ШУ самого транспортера на автомат | 2h | 2026-06-02 09:00 A | 2026-06-02 11:00 A |  | 100% |  | start no earlier than 2026-06-02 09:00 |
| 237 | 1.113 | **проверка вентилятор упавший в зимний период. Тест на месте** | 8.25d | 2026-06-05 09:00 A | 2026-06-15 11:00 A |  | 100% |  |  |
| 238 |  | изготовить подиум под улитку | 6h | 2026-06-05 09:00 A | 2026-06-05 15:00 A |  | 100% |  | start no earlier than 2026-06-05 09:00 |
| 239 |  | перенос вентилятора | 2h | 2026-06-15 09:00 A | 2026-06-15 11:00 A |  | 100% |  | start no earlier than 2026-06-15 09:00 |
| 240 |  | прачка 1ц замена светильник | 1h | 2026-05-29 09:00 A | 2026-05-29 10:00 A |  | 100% |  | start no earlier than 2026-05-29 08:00 |
| 241 |  | запайщик замена нихром | 1h | 2026-05-29 09:00 A | 2026-05-29 10:00 A |  | 100% |  | start no earlier than 2026-05-29 08:00 |
| 242 |  | устранить провисание патрубка подачи ГДЗ линия 2 | 1h | 2026-08-31 09:00 | 2026-08-31 10:00 |  |  | 137.47d | start no earlier than 2026-08-31 09:00 |
| 243 |  | крепеление РР магистраль ф20 воздух в склад гдз | 15min | 2026-05-27 09:00 A | 2026-05-27 09:15 A |  | 100% |  | start no earlier than 2026-05-27 09:00 |
| 244 | 1.118 | **перевод насосов ГДЗ на канистры с трассой на насос > 1/2** | 5.25d | 2026-05-28 09:00 A | 2026-06-02 11:00 |  | 50% | 211.34d |  |
| 245 |  | подготовка канистры установить штуцер, подготовить шланг + фитинги на насос | 2h | 2026-05-28 09:00 A | 2026-05-28 11:00 A |  | 100% |  | start no earlier than 2026-05-28 09:00 |
| 246 |  | монаж на линию 1 | 2h | 2026-06-02 09:00 | 2026-06-02 11:00 | 245 |  | 211.34d | start no earlier than 2026-06-02 09:00 |
| 247 | 1.119 | **с тена печей осыпается оребрение, попадая в продукт** | 14.5d | 2026-05-27 09:00 A | 2026-06-10 13:00 A |  | 100% |  |  |
| 248 |  | осмотр тенов печей линия 1 и линия 2 на предмет отслоения оребрения. Очистка / замена | 3h | 2026-05-27 09:00 A | 2026-05-27 12:00 A |  | 100% |  | start no earlier than 2026-05-27 09:00 |
| 249 |  | замена неисправных тенов линия 2, по диагностике Некрасова 27.05 (токи) 2 линия | 4h | 2026-06-02 09:00 A | 2026-06-02 13:00 A |  | 100% |  | start no earlier than 2026-06-02 09:00 |
| 250 |  | замена прогнувшихся тен | 4h | 2026-06-10 09:00 A | 2026-06-10 13:00 A |  | 100% |  | start no earlier than 2026-06-10 09:00 |
| 251 |  | перенести частотный привод ШУ печи 1л для доступа обслуживания | 2h | 2026-06-02 09:00 A | 2026-06-02 11:00 A |  | 100% |  | start no earlier than 2026-06-02 09:00 |
| 252 |  | нет фазы линия 2 печь оперативно | 1h | 2026-05-26 09:00 A | 2026-05-26 10:00 A |  | 100% |  | start no earlier than 2026-05-26 09:00 |
| 253 |  | замена твердотельное реле фаза В 2шт (найти пробитый) | 30min | 2026-05-27 09:00 A | 2026-05-27 09:30 A |  | 100% |  | start no earlier than 2026-05-27 09:00 |
| 254 |  | выравнивание потенциалов ШУ тв реле печей 1 и 2 | 1h | 2026-05-27 09:00 A | 2026-05-27 10:00 A |  | 100% |  | start no earlier than 2026-05-27 09:00 |
| 255 | 1.124 | **заменить фитинги с гайками (они на складе) на жирах 1 + 2 линия** | 34.25d | 2026-05-27 09:00 A | 2026-07-04 11:00 A |  | 100% |  |  |
| 256 |  | доставка шланг 8х12мм. Контроль | 5min | 2026-05-27 09:00 A | 2026-05-27 09:05 A |  | 100% |  | start no earlier than 2026-05-27 09:00 |
| 257 |  | замена 2 линия | 2h | 2026-05-27 09:00 A | 2026-05-27 11:00 A |  | 100% |  | start no earlier than 2026-05-27 09:00 |
| 258 |  | замена 1 линия | 2h | 2026-06-15 09:00 A | 2026-06-15 11:00 A |  | 100% |  | start no earlier than 2026-06-15 09:00 |
| 259 |  | проверить где не поставлены фитинги с гайками- поменять | 2h | 2026-07-04 09:00 A | 2026-07-04 11:00 A |  | 100% |  | start no earlier than 2026-07-04 09:00 |
| 260 |  | подключить Sаvema на теко 0,4 через ИБП (ибп на складе) | 1h | 2026-05-26 09:00 A | 2026-05-26 10:00 A |  | 100% |  | start no earlier than 2026-05-26 09:00 |
| 261 |  | найти и закрутить мотор-редукторы на транспортерах и отписаться на каких были не прикручены и не законтрогаек. | 1h | 2026-05-25 09:00 A | 2026-05-25 10:00 A |  | 100% |  | start no earlier than 2026-05-25 09:00 |
| 262 |  | транспортер с жиров на виброохладитель- поменять кнопку стоп 2 линия | 1h | 2026-05-27 09:00 A | 2026-05-27 10:00 A |  | 100% |  | start no earlier than 2026-05-27 09:00 |
| 263 |  | демонтировать на накопительном столе квадропака силиконовую резинку по диаметру | 1h | 2026-05-24 09:00 A | 2026-05-24 10:00 A |  | 100% |  | start no earlier than 2026-05-24 09:00 |
| 264 | 1.129 | **установка фосунок - подача жира 1 линия** | 27.12d? | 2026-06-05 09:00 A | 2026-07-07 10:00 |  | 17% | 181.47d |  |
| 265 |  | сборка кронштейн для фильтров + счетчик/ покраска | 1h | 2026-06-05 09:00 A | 2026-06-05 10:00 A |  | 100% |  | start no earlier than 2026-06-05 09:00 |
| 266 |  | установка | 1d? | 2026-07-06 09:00 | 2026-07-06 18:00 |  |  | 181.59d | start no earlier than 2026-07-06 09:00 |
| 267 |  | монтаж в линию | 2h | 2026-07-06 09:00 | 2026-07-06 11:00 |  |  | 182.34d | start no earlier than 2026-07-06 09:00 |
| 268 |  | монтаж розетка для блок питания 5в для регистратора | 1h | 2026-07-07 09:00 A | 2026-07-07 10:00 A |  | 100% |  | start no earlier than 2026-07-07 09:00 |
| 269 | 1.130 | **конв №2 линия 2 нижний вал нет защиты подшипников (был фетр)** | 11.41d | 2026-08-19 09:00 A | 2026-09-02 12:15 A |  | 100% |  |  |
| 270 |  | разборка, ревизия, подбор / чертеж уплотнеия | 2h | 2026-08-26 09:00 A | 2026-08-26 11:00 A |  | 100% |  | start no earlier than 2026-08-26 09:00 |
| 271 |  | заявка уплотнение | 1h | 2026-08-19 09:00 A | 2026-08-19 10:00 A |  | 100% |  | start no earlier than 2026-08-19 09:00 |
| 272 |  | контроль поставки | 15min | 2026-09-01 10:00 A | 2026-09-01 10:15 A | 271FS+10d | 100% |  | start no earlier than 2026-08-12 09:00 |
| 273 |  | монтаж уплотнения | 2h | 2026-09-02 10:15 A | 2026-09-02 12:15 A | 272FS+1d | 100% |  | start no earlier than 2026-08-12 09:00 |
| 274 |  | вентилятор на охладителе верхний краний слишком большой - переделать крепление | 1h | 2026-08-26 09:00 A | 2026-08-26 10:00 A |  | 100% |  | start no earlier than 2026-08-26 09:00 |
| 275 |  | устанить утечку на мойке зона экструдера | 1h | 2023-03-10 09:00 A | 2023-03-10 10:00 A |  | 100% |  |  |
| 276 |  | выдать шестигранные болты и шайбы на ножевой узел экструдерщикам (штук 20) | 1h | 2026-05-21 09:00 A | 2026-05-21 10:00 A |  | 100% |  | start no earlier than 2026-05-21 08:00 |
| 277 |  | приварить болты к заслонке подачи гранулы на квадропаке (остановить, с мастером согласовать) | 1h | 2026-05-26 09:00 A | 2026-05-26 10:00 A |  | 100% |  | start no earlier than 2026-05-26 09:00 |
| 278 |  | увеличить диаметр отверстия, чтобы горловина подачи сух. Гидрализата проходила (жиротопка) | 1h | 2026-05-20 09:00 A | 2026-05-20 10:00 A |  | 100% |  | start no earlier than 2026-05-20 09:00 |
| 279 |  | посмотреть приточку, выпадает часто в аварию по насосу | 2h | 2026-05-18 08:00 A | 2026-05-18 10:00 A |  | 100% |  | start no earlier than 2026-05-18 08:00 |
| 280 |  | замена светильника в зоне завоза навесок (работа на высоте) | 2h | 2026-05-15 09:00 A | 2026-05-15 11:00 A |  | 100% |  | start no earlier than 2026-05-15 09:00 |

| ID | WBS | Task | Duration | Start | Finish | Predecessors | Complete | Total float | Constraint |
| --- | --- | --- | --- | --- | --- | --- | --- | --- | --- |
| 281 |  | закрепить встиряхиватель полного пакета №1 квадропак | 1h | 2026-05-14 08:00 A | 2026-05-14 09:00 A |  | 100% |  | start no earlier than 2026-05-14 08:00 |
| 282 |  | замена лампа светильник гардероб М = на короткий. | 1h | 2026-05-13 09:00 A | 2026-05-13 10:00 A |  | 100% |  | start no earlier than 2026-05-13 09:00 |
| 283 |  | устранить потерю мощности печи в 2х фазах | 2h | 2026-05-12 08:00 A | 2026-05-12 10:00 A |  | 100% |  | start no earlier than 2026-05-12 08:00 |
| 284 |  | квадропак изготовить и заменить текстолит на термоноже | 2h | 2026-05-12 09:00 A | 2026-05-12 11:00 A |  | 100% |  | start no earlier than 2026-05-12 08:00 |
| 285 | 1.142 | **бак стабилизации воды-утечка** | 0.25d | 2026-05-22 09:00 A | 2026-05-22 11:00 A |  | 100% |  |  |
| 286 |  | монтаж подачи воды 2 линия в прекондиционер | 2h | 2026-05-22 09:00 A | 2026-05-22 11:00 A |  | 100% |  | start no earlier than 2026-05-22 09:00 |
| 287 | 1.143 | **парогенератор 1ц ремонт по гарантии** | 35d? | 2026-04-27 09:00 A | 2026-06-05 18:00 A |  | 100% |  |  |
| 288 |  | отправить ПГ на ремонт орг курьера | 10min | 2026-04-27 09:00 A | 2026-04-27 09:10 A |  | 100% |  | start no earlier than 2026-04-27 08:00 |
| 289 |  | контроль ремонт | 10min | 2026-05-04 09:10 A | 2026-05-04 09:20 A | 288FS+5d | 100% |  | start no earlier than 2026-04-27 08:00 |
| 290 |  | нужно посмотреть парогенератор там релюха не щелкает- может разберешься, он находиться на складе у Веры | 2h | 2026-05-11 09:00 A | 2026-05-11 11:00 A |  | 100% |  | start no earlier than 2026-05-11 09:00 |
| 291 |  | орг ремонт по гарантии | 1h | 2026-05-13 09:00 A | 2026-05-13 10:00 A |  | 100% |  | start no earlier than 2026-05-13 09:00 |
| 292 |  | контроль возврата | 1d? | 2026-06-05 09:00 A | 2026-06-05 18:00 A |  | 100% |  | start no earlier than 2026-06-05 09:00 |
| 293 |  | проверить мотор-редуктор на накопительном столе фасовка и | 4h | 2026-05-11 09:00 A | 2026-05-11 13:00 A |  | 100% |  | start no earlier than 2026-05-11 09:00 |
| 294 |  | прикрутить ножку на 2 столе (ножка у Луговских в кабинете) | 1h | 2026-05-12 09:00 A | 2026-05-12 10:00 A |  | 100% |  | start no earlier than 2026-05-12 08:00 |
| 295 | 1.146 | **отодвинуть миксер подачи сухого гидрализата, чтобы сыпал не на ребра барабана, а на обод выхода** | 0.25d | 2026-05-08 08:00 A | 2026-05-08 11:00 A |  | 100% |  |  |
| 296 |  | перекрутить платформу миксера подачи сухого гидрализата снизу, чтобы дуло не задевало барабан | 3h | 2026-05-08 08:00 A | 2026-05-08 11:00 A |  | 100% |  | start no earlier than 2026-05-08 08:00 |
| 297 |  | монтаж светильник в районе ВРУ сверху (зона экструдера) | 2h | 2026-05-16 09:00 A | 2026-05-16 11:00 A |  | 100% |  | start no earlier than 2026-05-16 09:00 |
| 298 |  | закрепить трубу п/п на фасовке в углу, где стеллаж на клипсы к стене | 1h | 2026-05-07 08:00 A | 2026-05-07 09:00 A |  | 100% |  | start no earlier than 2026-05-07 08:00 |
| 299 |  | прикрутить пускатели запуска вытяжки перед лестницей на 2 этаж зона экструдера и розетки | 2h | 2026-05-06 08:00 A | 2026-05-06 10:00 A |  | 100% |  | start no earlier than 2026-05-06 08:00 |
| 300 |  | нет напряжения в розетке для инсектицидного светильника, корридор где вывозят готовую продукцию | 1h | 2026-05-07 09:00 A | 2026-05-07 10:00 A |  | 100% |  | start no earlier than 2026-05-07 09:00 |
| 301 |  | подключить через счетчик подачу жира | 2h | 2026-05-05 08:00 A | 2026-05-05 10:00 A |  | 100% |  | start no earlier than 2026-05-05 08:00 |
| 302 | 1.152 | **повесить на места светильники инсектицидные (замена ламп)** | 0.38d | 2026-05-05 09:00 A | 2026-05-05 12:00 A |  | 100% |  |  |
| 303 |  | заменить инсектицидные лампы в светильниках (количество, которое поменял -записать) | 3h | 2026-05-05 09:00 A | 2026-05-05 12:00 A |  | 100% |  | start no earlier than 2026-05-05 08:00 |
| 304 |  | на жиротопке установить газ лифты (они на складе) | 1h | 2026-05-05 08:00 A | 2026-05-05 09:00 A |  | 100% |  | start no earlier than 2026-05-05 08:00 |
| 305 | 1.154 | **дверь вход в столовую вкрыть заглушки и установить личинку с ключами (взять на складе)** | 18.12d | 2026-05-13 09:00 A | 2026-06-02 10:00 A |  | 100% |  |  |
| 306 |  | заказать ручку / ответ | 30min | 2026-05-13 09:00 A | 2026-05-13 09:30 A |  | 100% |  | start no earlier than 2026-05-13 09:00 |
| 307 |  | конроль | 5d | 2026-05-18 09:00 A | 2026-05-22 18:00 A | 306 | 100% |  | start no earlier than 2026-05-18 09:00 |
| 308 |  | замена | 1h | 2026-05-30 09:00 A | 2026-05-30 10:00 A | 307 | 100% |  | start no earlier than 2026-05-30 09:00 |
| 309 |  | перевернуть замок ручкой вверх, личика переворачивается в любую сторону | 1h | 2026-06-02 09:00 A | 2026-06-02 10:00 A |  | 100% |  | start no earlier than 2026-06-02 09:00 |
| 310 |  | поставить шпонки на питатель в слесарке | 1h | 2026-05-04 09:00 A | 2026-05-04 10:00 A |  | 100% |  | start no earlier than 2026-05-04 08:00 |
| 311 |  | установить транспортер на 1 линии | 1h | 2026-05-04 08:00 A | 2026-05-04 09:00 A |  | 100% |  | start no earlier than 2026-05-04 08:00 |
| 312 |  | собрать транспортер ковшевой (валы приехали, фетр на складе) | 4h | 2026-04-30 08:00 A | 2026-04-30 12:00 A |  | 100% |  | start no earlier than 2026-04-30 08:00 |
| 313 | 1.158 | **со старой ленты снять ковши в слесарке** | 0.5d | 2026-05-05 09:00 A | 2026-05-05 13:00 A |  | 100% |  |  |
| 314 |  | подготовить ленту с ковшами (150 мм между ковшами) лента на складе 5120мм в кольце и унести на желтый склад | 4h | 2026-05-05 09:00 A | 2026-05-05 13:00 A |  | 100% |  | start no earlier than 2026-05-05 09:00 |
| 315 | 1.159 | **разбираем улитки циклон и печи, замена подшипников** | 1d? | 2026-06-03 09:00 A | 2026-06-03 18:00 A |  | 100% |  |  |
| 316 |  | проверка подшипников на улитках печей | 1d? | 2026-06-03 09:00 A | 2026-06-03 18:00 A |  | 100% |  | start no earlier than 2026-06-03 09:00 |
| 317 |  | ТО Теко 1,5 (чистка тен, смазка штоков пневмоцилиндров, подшипников) | 3h | 2026-04-28 09:00 A | 2026-04-28 12:00 A |  | 100% |  | start no earlier than 2026-04-28 09:00 |
| 318 |  | ТО Теко 0,4 (чистка тен, смазка штоков пневмоцилиндров, подшипников) | 3h | 2026-04-28 09:00 A | 2026-04-28 12:00 A |  | 100% |  | start no earlier than 2026-04-28 09:00 |
| 319 |  | полное ТО квадропака (чистка тен, смазка штоков пневмоцилиндров, шприцевание подшипников, протяжка болтовых соединений) | 3h | 2026-04-28 09:00 A | 2026-04-28 12:00 A |  | 100% |  | start no earlier than 2026-04-28 09:00 |
| 320 | 1.163 | **модернизация трассы слива зона мойки экструдеров** | 23d? | 2026-04-27 09:00 A | 2026-05-23 10:00 A |  | 100% |  |  |
| 321 |  | заявка соединения и гидрозатвор | 15min | 2026-04-27 09:00 A | 2026-04-27 09:15 A |  | 100% |  | start no earlier than 2026-04-27 08:00 |
| 322 |  | контроль доставки | 15min | 2026-05-04 09:15 A | 2026-05-04 09:30 A | 321FS+5d | 100% |  | start no earlier than 2026-04-27 08:00 |
| 323 |  | монтаж | 1d? | 2026-05-06 09:30 A | 2026-05-06 17:30 A | 322FS+2d | 100% |  | start no earlier than 2026-04-27 08:00 |
| 324 |  | заявка на бурить стену / получить счет | 1h | 2026-04-28 09:00 A | 2026-04-28 10:00 A |  | 100% |  | start no earlier than 2026-04-28 09:00 |
| 325 |  | расчет угла бурения. Замер + зхарисовать схему | 4h | 2026-05-13 09:00 A | 2026-05-13 13:00 A | 324 | 100% |  | start no earlier than 2026-05-13 09:00 |
| 326 |  | орг работу подрядчика по бурению | 1h | 2026-05-20 09:00 A | 2026-05-20 10:00 A | 325 | 100% |  | start no earlier than 2026-05-20 09:00 |
| 327 |  | запенить стыки в месте бурения | 1h | 2026-05-23 09:00 A | 2026-05-23 10:00 A |  | 100% |  | start no earlier than 2026-05-23 09:00 |
| 328 |  | взять на складе 2 гофросифона и заменить на мойке экструдер | 1h | 2026-04-24 09:00 A | 2026-04-24 10:00 A |  | 100% |  | start no earlier than 2026-04-24 08:00 |
| 329 |  | заменить монтажную коробку на 150х200мм -она у них на стяжках. Коробка новая на складе | 1h | 2026-04-26 09:00 A | 2026-04-26 10:00 A |  | 100% |  | start no earlier than 2026-04-26 09:00 |
| 330 |  | под мойкой в зоне экструдера на слив 3 греющего кабеля, нужно разобраться | 1h | 2026-04-24 09:00 A | 2026-04-24 10:00 A |  | 100% |  | start no earlier than 2026-04-24 08:00 |
| 331 |  | жиротопка течет сальник, проверить и устранить течи везде. Чистка фильтров. | 2h | 2026-04-28 09:00 A | 2026-04-28 11:00 A |  | 100% |  | start no earlier than 2026-04-28 09:00 |
| 332 |  | ТО печи линия 1 ( вскрыть, ревизия- замена перемычек и т.д.) | 4h | 2026-04-23 09:00 A | 2026-04-23 13:00 A |  | 100% |  | start no earlier than 2026-04-23 08:00 |
| 333 |  | протянуть кабель UTP от столя Луговских до шкафа серверного (расскажу как протянуть по звонку) | 4h | 2026-04-23 09:00 A | 2026-04-23 13:00 A |  | 100% |  | start no earlier than 2026-04-23 08:00 |
| 334 | 1.170 | **подключить приточку как было** | 0.25d | 2026-04-29 09:00 A | 2026-04-29 11:00 A |  | 100% |  |  |
| 335 |  | подключить сервопривод на шибер и подключить | 2h | 2026-04-29 09:00 A | 2026-04-29 11:00 A |  | 100% |  | start no earlier than 2026-04-29 09:00 |
| 336 | 1.171 | **замена ленты на транспортере тип 2 2 линия (дособрать)** | 1.5d | 2026-04-24 09:00 A | 2026-04-25 13:00 A |  | 100% |  |  |
| 337 |  | со снятой ленты транспортера тип 2 снять все ковши (готовим для замены на 1 линии) | 2h | 2026-04-24 09:00 A | 2026-04-24 11:00 A |  | 100% |  | start no earlier than 2026-04-24 09:00 |
| 338 |  | установка ковшей со старой ленты на новую со склада 400х 5120мм | 4h | 2026-04-25 09:00 A | 2026-04-25 13:00 A |  | 100% |  | start no earlier than 2026-04-25 09:00 |
| 339 | 1.172 | **система угольной фильтрации вытяжных газов с печей и пневотранспорта** | 0.25d | 2026-04-21 09:00 A | 2026-04-21 11:00 A |  | 100% |  |  |
| 340 |  | подготовить пластины 200*200 5мм для анкерения колон к полу ф12 6шт | 2h | 2026-04-21 09:00 A | 2026-04-21 11:00 A |  | 100% |  | start no earlier than 2026-04-21 09:00 |
| 341 |  | подготовить пластины 100*100 5мм для анкерения колон к стене 8шт | 1h | 2026-04-21 09:00 A | 2026-04-21 10:00 A |  | 100% |  | start no earlier than 2026-04-21 09:00 |
| 342 |  | проверка фильтров воды с редуктором в прекондиционер на ТО | 1h | 2026-04-22 09:00 A | 2026-04-22 10:00 A |  | 100% |  | start no earlier than 2026-04-22 09:00 |
| 343 | 1.174 | **заменить фильтры на жиротопка** | 10.28d | 2026-08-31 09:00 | 2026-09-14 11:15 |  |  | 127.31d |  |
| 344 |  | выяснить тип фильтров, заказ катриджи | 1h | 2026-08-31 09:00 | 2026-08-31 10:00 |  |  | 127.34d | start no earlier than 2026-08-31 09:00 |
| 345 |  | контроль | 15min | 2026-09-14 10:00 | 2026-09-14 10:15 | 344FS+10d |  | 127.34d | start no earlier than 2026-04-22 09:00 |
| 346 |  | замена | 1h | 2026-09-14 10:15 | 2026-09-14 11:15 | 345 |  | 127.31d | start no earlier than 2026-07-23 09:00 |
| 347 |  | проверить напряжение в розетке конатушка вывоза готовой продукции | 1h | 2026-04-19 09:00 A | 2026-04-19 10:00 A |  | 100% |  | start no earlier than 2026-04-19 09:00 |
| 348 | 1.176 | **обслуживание инсекьюеров, утлизация отработанных ламп** | 110.25d | 2026-04-21 08:00 A | 2026-08-31 11:00 |  | 98% | 137.34d |  |
| 349 |  | Составить список ламп по цехам и передать Зорькину | 2h | 2026-04-21 08:00 A | 2026-04-21 10:00 A |  | 100% |  | start no earlier than 2026-04-21 08:00 |
| 350 |  | Заказать новые лампы | 30min | 2026-04-21 10:00 A | 2026-04-21 10:30 A | 349 | 100% |  | start no earlier than 2026-04-21 08:00 |

| ID | WBS | Task | Duration | Start | Finish | Predecessors | Complete | Total float | Constraint |
| --- | --- | --- | --- | --- | --- | --- | --- | --- | --- |
| 351 |  | доставка | 10d | 2026-04-21 10:30 A | 2026-05-04 10:30 A | 350 | 100% |  | start no earlier than 2026-04-21 08:00 |
| 352 |  | снять все светильники мухоловки, извлечь лампы, уложить аккуратно в коробку (оставить в слесарке отработанные) светильники снятые передать мастеру смены для мытья | 2h | 2026-05-05 10:30 A | 2026-05-05 12:30 A | 351 | 100% |  | start no earlier than 2026-05-01 09:00 |
| 353 |  | после чистки установить лампы в светильники, тусклые замнеить | 2h | 2026-05-12 09:00 A | 2026-05-12 11:00 A | 352 | 100% |  | start no earlier than 2026-05-12 09:00 |
| 354 |  | сообщить кол-во замененных ламп нач цехов | 1h | 2026-05-12 11:00 A | 2026-05-12 12:00 A | 353 | 100% |  | start no earlier than 2026-05-01 09:00 |
| 355 |  | запрос договор на утилизацию ламп | 1h | 2026-08-31 09:00 | 2026-08-31 10:00 |  |  | 137.34d | start no earlier than 2026-08-31 09:00 |
| 356 |  | подготовить лампы к утилизации | 1h | 2026-08-31 10:00 | 2026-08-31 11:00 | 354, 355 |  | 137.34d | start no earlier than 2026-05-27 09:00 |
| 357 | 1.177 | **на 1 линии подготовить из оргстекла обратные крышки транспортера тип 2 (ковшевой), согласовать остановка с мастером и установить** | 0.12d | 2026-04-24 09:00 A | 2026-04-24 10:00 A |  | 100% |  |  |
| 358 |  | перекрутить оргстекло (операторы подскажут в чем проблема) | 1h | 2026-04-24 09:00 A | 2026-04-24 10:00 A |  | 100% |  | start no earlier than 2026-04-24 09:00 |
| 359 |  | проверить гидроаккумуляторы парогенераторов 1 и 2 линия и 100литровый в комнате стабилизации воды, если нужно качаем 2 очка. | 2h | 2026-04-19 09:00 A | 2026-04-19 11:00 A |  | 100% |  | start no earlier than 2026-04-19 09:00 |
| 360 |  | проверка фильтров на редукторы экструдеров | 1h | 2026-04-24 09:00 A | 2026-04-24 10:00 A |  | 100% |  | start no earlier than 2026-04-24 09:00 |
| 361 |  | проверка токов, всех перемычек, шприцевание всех подшипников печи №2 | 3h | 2026-04-23 09:00 A | 2026-04-23 12:00 A |  | 100% |  | start no earlier than 2026-04-24 09:00 |
| 362 |  | на питателе заменить втулки линия 1 и 2 | 2h | 2026-04-15 08:00 A | 2026-04-15 10:00 A |  | 100% |  | start no earlier than 2026-04-15 08:00 |
| 363 |  | проверить радиатор приточки (протечки, есть ли подача горячей воды), если нет - выключить приточку, чтобы не разморозить! | 1h | 2026-04-14 09:00 A | 2026-04-14 10:00 A |  | 100% |  | start no earlier than 2026-04-14 08:00 |
| 364 |  | приварить левую ногу мезонина на фасовке (штабелером сместили) | 1h | 2026-04-15 09:00 A | 2026-04-15 10:00 A |  | 100% |  | start no earlier than 2026-04-15 09:00 |
| 365 |  | на печи №1 прошприцевать подшипники, проверить токи, если нужно вскрываем на ревизию перемычек | 3h | 2026-04-14 09:00 A | 2026-04-14 12:00 A |  | 100% |  | start no earlier than 2026-04-14 08:00 |
| 366 |  | замена электродной группы на парогенераторе линия №1 (электроды подготовили в слесарке) | 4h | 2026-04-14 09:00 A | 2026-04-14 13:00 A |  | 100% |  | start no earlier than 2026-04-14 08:00 |
| 367 |  | на квадропаке тена выставить в параллель | 1h | 2026-04-13 09:00 A | 2026-04-13 10:00 A |  | 100% |  | start no earlier than 2026-04-13 08:00 |
| 368 |  | покрасить подиум под циклонами линия 1 и 2 | 2h | 2026-04-22 09:00 A | 2026-04-22 11:00 A |  | 100% |  | start no earlier than 2026-04-22 09:00 |
| 369 |  | подготовить лекало на приемный лоток транспортера тип 2 (у них в работе картонка, можно по ней и сделать), если будет остановка приварить | 1h | 2026-04-27 09:00 A | 2026-04-27 10:00 A |  | 100% |  | start no earlier than 2026-04-27 09:00 |
| 370 |  | на пнемоулитку поставить пистолет (зона экструдера) | 1h | 2026-04-11 09:00 A | 2026-04-11 10:00 A |  | 100% |  | start no earlier than 2026-04-11 09:00 |
| 371 |  | установить фильтр на кондиционер между печками (фильтр у Луговских) | 1h | 2026-04-22 09:00 A | 2026-04-22 10:00 A |  | 100% |  | start no earlier than 2026-04-22 09:00 |
| 372 | 1.191 | **зафиксировать ручку в туалет (закрутить)** | 856.12d | 2023-03-22 09:00 A | 2026-04-22 10:00 |  | 100% |  |  |
| 373 |  | заказать ручки | 1h | 2023-03-22 09:00 A | 2023-03-22 10:00 A |  | 100% |  |  |
| 374 |  | установка (заменить ручку, взять на складе) | 1h | 2026-05-05 09:00 A | 2026-05-05 10:00 A |  | 100% |  | start no earlier than 2026-05-05 09:00 |
| 375 |  | ТО теко 1,5 (чистка тен, смазка штоков пневмоцилиндров, подшипников) | 3h | 2026-04-25 09:00 A | 2026-04-25 12:00 A |  | 100% |  | start no earlier than 2026-04-25 09:00 |
| 376 |  | слить конденсат с компрессора, чистка фильтров и радиаторов | 2h | 2026-04-12 09:00 A | 2026-04-12 11:00 A |  | 100% |  | start no earlier than 2026-04-12 09:00 |
| 377 | 1.194 | **заказать газлифт жиротопка** | 11.12d? | 2026-04-22 09:00 A | 2026-05-06 10:00 |  | 100% |  |  |
| 378 |  | доставка | 10d | 2026-04-22 09:00 A | 2026-05-04 18:00 A |  | 100% |  | start no earlier than 2026-04-22 09:00 |
| 379 | 1.194.2 | **установка газ лифт** | 82.04d | 2026-05-13 09:00 A | 2026-08-18 09:20 A |  | 100% |  |  |
| 380 |  | контроль поставки / размер | 20min | 2026-08-18 09:00 A | 2026-08-18 09:20 A |  | 100% |  | start no earlier than 2026-08-18 09:00 |
| 381 |  | наварить уголок для площадки упора газлифта | 1h | 2026-05-13 09:00 A | 2026-05-13 10:00 A |  | 100% |  | start no earlier than 2026-05-13 09:00 |
| 382 |  | заявка газлифт с меньшей усилием/ выяснить координата | 30min | 2026-05-27 09:00 A | 2026-05-27 09:30 A |  | 100% |  | start no earlier than 2026-05-27 09:00 |
| 383 |  | доставка контроль | 15min | 2026-08-12 09:00 A | 2026-08-12 09:15 A | 382FS+10d | 100% |  | start no earlier than 2026-05-13 09:00 |
| 384 |  | замена | 1h | 2026-08-12 09:00 A | 2026-08-12 10:00 A |  | 100% |  | start no earlier than 2026-08-12 09:00 |
| 385 |  | убрать диммер за еврокубом, где завозят навески (провода заизолировать и спрятать в кабель-канал) | 1h | 2026-04-10 08:00 A | 2026-04-10 09:00 A |  | 100% |  | start no earlier than 2026-04-10 08:00 |
| 386 |  | закрыть монтажную коробку над дверью зона жиров выход | 1h | 2026-04-09 08:00 A | 2026-04-09 09:00 A |  | 100% |  | start no earlier than 2026-04-09 08:00 |
| 387 | 1.197 | **на аппликаторе установить принтер (взять на складе)** | 3h? | 2026-04-10 09:00 | 2026-04-10 12:00 |  | 100% |  |  |
| 388 |  | монтаж витой пары от аппликатора до шкафа где вывозят ГП справа | 4h | 2026-04-09 08:00 A | 2026-04-09 12:00 A |  | 100% |  | start no earlier than 2026-04-09 08:00 |
| 389 |  | тест принтера | 1h | 2026-05-14 09:00 A | 2026-05-14 10:00 A |  | 100% |  | start no earlier than 2026-05-14 09:00 |
| 390 |  | замена шнек+гильзы (б/у) на 2 линии | 4h | 2026-04-09 08:00 A | 2026-04-09 12:00 A |  | 100% |  | start no earlier than 2026-04-09 08:00 |
| 391 |  | закрепить светильник в комнатке перед выходом, где вывозят готовую продукцию справа, оторвался | 1h | 2026-04-08 09:00 A | 2026-04-08 10:00 A |  | 100% |  | start no earlier than 2026-04-08 08:00 |
| 392 | 1.200 | **замена лент на аппликаторе, подумать какой сделать отражатель для фотометки, чтобы не цепляло пакеты в работе** | 0.5d | 2026-05-27 09:00 | 2026-05-27 13:00 |  |  |  |  |
| 393 |  | замена ленеты | 4h | 2026-09-02 09:00 | 2026-09-02 13:00 |  |  | 135.09d | start no earlier than 2026-09-02 09:00 |
| 394 |  | подготовить электродную группу для парогенератора (собрать) | 2h | 2026-04-08 09:00 A | 2026-04-08 11:00 A |  | 100% |  | start no earlier than 2026-04-08 08:00 |
| 395 | 1.202 | **просыпается гранула на пересыпке с барабана в конвейер** | 0.5d | 2026-04-08 09:00 A | 2026-04-08 13:00 A |  | 100% |  |  |
| 396 |  | пододвинуть ближе к барабану конвейер + охладитель + вентилятор | 2h | 2026-04-08 09:00 A | 2026-04-08 11:00 A |  | 100% |  | start no earlier than 2026-04-08 09:00 |
| 397 |  | доработка приемного лотка конвейера | 4h | 2026-04-08 09:00 A | 2026-04-08 13:00 A |  | 100% |  | start no earlier than 2026-04-08 09:00 |
| 398 |  | забрать 2 рохли с пандуса, снять колеса в зип (зад- перед), а сами рохли в контейнер | 3h | 2026-04-04 09:00 A | 2026-04-04 12:00 A |  | 100% |  | start no earlier than 2026-04-04 09:00 |
| 399 | 1.204 | **квадропак модернизация регулировки пластины нажима роликов для захвата пакета** | 2.12d | 2026-04-15 09:00 A | 2026-04-17 10:00 A |  | 100% |  |  |
| 400 |  | регулировочной тягой отвезти нажимную площадку на 5мм (остановить работу на 10 минут, согласовать с мастером) | 1h | 2026-04-17 09:00 A | 2026-04-17 10:00 A |  | 100% |  | start no earlier than 2026-04-17 09:00 |
| 401 |  | изготовление пластины на ногу по аналогии как на первой ноге | 1h | 2026-04-15 09:00 A | 2026-04-15 10:00 A | 400 | 100% |  | start no earlier than 2026-04-15 09:00 |
| 402 |  | монтаж | 1h | 2026-04-15 10:00 A | 2026-04-15 11:00 A | 401 | 100% |  | start no earlier than 2026-04-10 09:00 |
| 403 |  | изготовить крышку на приямок слива канализации под раковинами зона экструдер. Из нерж, с ручкой. | 4h | 2026-04-02 08:00 A | 2026-04-02 12:00 A |  | 100% |  | start no earlier than 2026-04-02 08:00 |
| 404 |  | выпрямить погнутые роль-ворота на рампе - в сторону слесарки (нужно откутить левую направляшку и вставить воротину на место) | 1h | 2026-04-02 08:00 A | 2026-04-02 09:00 A |  | 100% |  | start no earlier than 2026-04-02 08:00 |
| 405 | 1.207 | **выключатель света на входе в гидролизатную закрепить сам рычаг переключения, проскальзывает** | 17.12d | 2026-04-06 09:00 A | 2026-04-25 10:00 A |  | 100% |  |  |
| 406 |  | заказать выключатель | 1h | 2026-04-06 09:00 A | 2026-04-06 10:00 A |  | 100% |  | start no earlier than 2026-04-06 08:00 |
| 407 |  | замена выключателя (выключатель в слесарке тебе показывал) | 1h | 2026-04-25 09:00 A | 2026-04-25 10:00 A |  | 100% |  | start no earlier than 2026-04-25 09:00 |
| 408 |  | на пандусе 1 цеха справа - пометить шнеки и гильзы что они рабочие и вывести в контейнер | 2h | 2026-04-01 08:00 A | 2026-04-01 10:00 A |  | 100% |  | start no earlier than 2026-04-01 08:00 |
| 409 |  | взять с контейнера пысос- проверить рабочий или нет (если работает выдать в 1 цех) | 2h | 2026-04-01 08:00 A | 2026-04-01 10:00 A |  | 100% |  | start no earlier than 2026-04-01 08:00 |
| 410 |  | заменить плату интерфейса RS485 | 1h | 2026-04-04 09:00 A | 2026-04-04 10:00 A |  | 100% |  | start no earlier than 2026-04-04 09:00 |
| 411 |  | замена шнеки 1 линия | 4h | 2026-03-31 08:00 A | 2026-03-31 12:00 A |  | 100% |  | start no earlier than 2026-03-31 08:00 |
| 412 |  | замер износ шнеков | 2h | 2026-03-31 08:00 A | 2026-03-31 10:00 A |  | 100% |  | start no earlier than 2026-03-31 08:00 |
| 413 |  | почистить канальные вентиляторы вытяжки в курилке | 2h | 2026-03-28 09:00 A | 2026-03-28 11:00 A |  | 100% |  | start no earlier than 2026-03-28 09:00 |
| 414 |  | монтаж розетки на ногу нотис справа для подключения весов | 2h | 2026-03-27 09:00 A | 2026-03-27 11:00 A |  | 100% |  | start no earlier than 2026-03-27 09:00 |
| 415 |  | добавить вибрации на виброохладителе линия 2 (согласовать с мастером, если будет остановка) | 2h | 2026-04-30 09:00 A | 2026-04-30 11:00 A | 424 | 100% |  |  |
| 416 | 1.216 | **замена ленты конвейер 2 линия 2** | 14.38d | 2026-04-07 09:00 A | 2026-04-23 12:00 A |  | 100% |  |  |
| 417 |  | взять ленту 400мм и начать крепить ковши для транспортера тип 2 (посчитать количество на транспортере) | 8h | 2026-04-07 09:00 A | 2026-04-07 18:00 A |  | 100% |  | start no earlier than 2026-04-07 09:00 |
| 418 |  | замена ленты | 3h | 2026-04-23 09:00 A | 2026-04-23 12:00 A |  | 100% |  | start no earlier than 2026-04-23 09:00 |
| 419 |  | заменить на штабелере второй АКБ в зоне экструдера | 1h | 2026-03-28 09:00 A | 2026-03-28 10:00 A |  | 100% |  | start no earlier than 2026-03-28 09:00 |
| 420 |  | на кпп №1 опустить на 10см кабель в гофре для камер видеонаблюдения | 2h | 2026-03-28 09:00 A | 2026-03-28 11:00 A |  | 100% |  | start no earlier than 2026-03-28 09:00 |

| ID | WBS | Task | Duration | Start | Finish | Predecessors | Complete | Total float | Constraint |
| --- | --- | --- | --- | --- | --- | --- | --- | --- | --- |
| 421 |  | вход охладителя 1 линии - нужно на среднем лотке между уровнями сделать сбоков шторки (фото скину) | 2h | 2026-03-28 09:00 A | 2026-03-28 11:00 A |  | 100% |  | start no earlier than 2026-03-28 09:00 |
| 422 |  | на первой линии под выходом из печи прикрутить на стенку оргстекло (Слава готовил по размерам оргстекло) | 1h | 2026-03-28 09:00 A | 2026-03-28 10:00 A |  | 100% |  | start no earlier than 2026-03-28 09:00 |
| 423 |  | На пробниках оторвали разъем питания, нужно припаять | 2h | 2026-03-27 09:00 A | 2026-03-27 11:00 A |  | 100% |  | start no earlier than 2026-03-27 09:00 |
| 424 |  | подготовить 1 ленты с ковшами для транспортера тип 2 (зип) | 1d? | 2026-04-29 09:00 A | 2026-04-29 18:00 A |  | 100% |  | start no earlier than 2026-04-29 09:00 |
| 425 |  | замена на старые капролонновые втулки в питателе линия 1 | 1h | 2026-03-26 09:00 A | 2026-03-26 10:00 A |  | 100% |  | start no earlier than 2026-03-26 09:00 |
| 426 |  | сделать на 2 линии вставыш на ленту транспортера тип 2 и установить на транспортер | 4h | 2026-03-25 09:00 A | 2026-03-25 13:00 A |  | 100% |  | start no earlier than 2026-03-25 09:00 |
| 427 |  | герметизация мезонина подачи навесок по шву | 1h | 2026-04-15 09:00 A | 2026-04-15 10:00 A |  | 100% |  | start no earlier than 2026-04-15 09:00 |
| 428 | 1.226 | **на 2 линии на хомуты закрепить горловину к бункеру подачи сухого гидрализата (все расскажу)** | 0.25d | 2026-04-27 09:00 A | 2026-04-27 11:00 A |  | 100% |  |  |
| 429 |  | на горловине подачи сухого гидрализата приварить выход под углом 45 градусов (углы из нерж есть в 3 цехе) | 2h | 2026-04-27 09:00 A | 2026-04-27 11:00 A |  | 100% |  | start no earlier than 2026-04-27 09:00 |
| 430 | 1.227 | **разобрать с двух сторон питатель 2 линия - ревизия шестеренок и втулок спереди (оставить все разобранное)** | 2h | 2026-03-24 09:00 | 2026-03-24 11:00 |  | 100% |  |  |
| 431 |  | собрать питатель, ревизия втулок, подшипников, шнеков, шестеренок. Подогнать капролонновые втулки | 2h | 2026-03-26 09:00 A | 2026-03-26 11:00 A |  | 100% |  | start no earlier than 2026-03-26 09:00 |
| 432 |  | пульт управления кондиционером в зоне экструдера- закрепить гофру и заизолировать разрыв гофры, закрепить к стенке | 1h | 2026-03-24 08:00 A | 2026-03-24 09:00 A |  | 100% |  | start no earlier than 2026-03-24 08:00 |
| 433 |  | блок питания для весов на жирах развалился, стянуть изолентой | 1h | 2026-03-24 08:00 A | 2026-03-24 09:00 A |  | 100% |  | start no earlier than 2026-03-24 08:00 |
| 434 | 1.230 | **ремонт /отключить 2 вентилятора охладитель 1 линия** | 801d | 2023-06-21 09:00 A | 2026-05-04 18:00 A |  | 100% |  |  |
| 435 |  | заказать в зип | 6392h | 2023-06-21 09:00 A | 2026-05-04 18:00 A |  | 100% |  |  |
| 436 |  | заменить 2 вентилятора | 1h | 2026-04-04 09:00 A | 2026-04-04 10:00 A |  | 100% |  |  |
| 437 |  | демонтаж крышка лотка в проеме между краем площадки вентиляции приточной и проемом ворот вход в кооридор завода навесок | 383520min | 2023-06-21 09:00 A | 2026-05-04 18:00 A |  | 100% |  |  |
| 438 |  | стук шнек 2 линия - проверить, при необходимости разобрать | 3h | 2026-04-27 09:00 A | 2026-04-27 12:00 A |  | 100% |  | start no earlier than 2026-04-27 09:00 |
| 439 |  | слить конденсат и продуть все радиаторы компрессор | 1h | 2026-03-21 09:00 A | 2026-03-21 10:00 A |  | 100% |  | start no earlier than 2026-03-21 09:00 |
| 440 |  | закрепить аварийную кнопку в гидролизатной (фото в чате будет) / пожарный выключатель | 1h | 2026-03-22 09:00 A | 2026-03-22 10:00 A |  | 100% |  | start no earlier than 2026-03-22 09:00 |
| 441 |  | кнопки на управление ворот зона жиров поднять и закпепить выше | 2h | 2026-03-18 08:00 A | 2026-03-18 10:00 A |  | 100% |  | start no earlier than 2026-03-18 08:00 |
| 442 |  | закрепить все отбойники где завозят навески экструдерщики | 2h | 2026-03-18 08:00 A | 2026-03-18 10:00 A |  | 100% |  | start no earlier than 2026-03-18 08:00 |
| 443 |  | закрыить все электро шкафы | 30min | 2026-03-17 08:00 A | 2026-03-17 08:30 A |  | 100% |  | start no earlier than 2026-03-17 08:00 |
| 444 |  | поломоечная машинка устранить течь | 1h | 2026-03-17 08:00 A | 2026-03-17 09:00 A |  | 100% |  | start no earlier than 2026-03-17 08:00 |
| 445 |  | закрыить крышку на пробниках, задняя стенка прикрутить | 30min | 2026-03-17 08:00 A | 2026-03-17 08:30 A |  | 100% |  | start no earlier than 2026-03-17 08:00 |
| 446 |  | продувка кабельного лотка | 2h | 2026-03-18 09:00 A | 2026-03-18 11:00 A |  | 100% |  | start no earlier than 2026-03-18 09:00 |
| 447 |  | монтаж крючков под халаты. Получить у мастера | 1h | 2026-03-17 08:00 A | 2026-03-17 09:00 A |  | 100% |  | start no earlier than 2026-03-17 08:00 |
| 448 | 1.242 | **установить расходомеры пара на ПГ** | 0.38d | 2026-04-01 09:00 | 2026-04-01 12:00 |  |  |  |  |
| 449 |  | монтаж 1 линия расходомер / кабель / блок питания | 3h | 2026-09-02 09:00 A | 2026-09-02 12:00 |  |  |  | start no earlier than 2026-09-02 09:00 |
| 450 | 1.243 | **монтаж регистратор данных линия 1 и 2:** | 0.25d | 2026-03-18 09:00 A | 2026-03-18 11:00 A |  | 100% |  |  |
| 451 |  | подключение линия 1 | 2h | 2026-03-18 09:00 A | 2026-03-18 11:00 A |  | 100% |  | start no earlier than 2026-03-18 09:00 |
| 452 | 1.244 | **разделить воду в экструдер и парогенераторы** | 157d | 2026-03-19 09:00 A | 2026-09-23 20:30 |  | 90% | 119.59d |  |
| 453 |  | заявка поплавкой клапан вертикальный, подводка с боку по аналогии с 4ц | 1h | 2026-03-19 09:00 A | 2026-03-19 10:00 A |  | 100% |  | start no earlier than 2026-03-19 08:00 |
| 454 |  | доставка | 10d | 2026-03-19 10:00 A | 2026-03-30 10:00 A | 453 | 100% |  | start no earlier than 2026-03-19 08:00 |
| 455 |  | испытать производсительность маленького черн насоса с "медленным" счетким | 2h | 2026-05-20 09:00 A | 2026-05-20 11:00 A |  | 100% |  | start no earlier than 2026-05-20 09:00 |
| 456 |  | изготовить емкость для поплавкой камеры и насоса из нерж | 4h | 2026-04-27 09:00 A | 2026-04-27 13:00 A |  | 100% |  | start no earlier than 2026-04-27 09:00 |
| 457 |  | доставка частотный 220 контроль | 0d | 2026-04-24 09:00 A | 2026-04-24 09:00 A |  | 100% |  | start no earlier than 2026-04-24 09:00 |
| 458 |  | испытать регулирование насоса на частотнике | 1h | 2026-05-26 09:00 A | 2026-05-26 10:00 A |  | 100% |  | start no earlier than 2026-05-26 09:00 |
| 459 |  | монтаж насоса + бак нерж на линия 2 | 1h | 2026-05-27 09:00 A | 2026-05-27 10:00 A |  | 100% |  | start no earlier than 2026-05-27 09:00 |
| 460 |  | монтаж розетка, кабель до насаса, подключение двигатель насоса | 1h | 2026-05-27 09:00 A | 2026-05-27 10:00 A |  | 100% |  | start no earlier than 2026-05-27 09:00 |
| 461 |  | подключение насос + счетчик + кран + частотник - сборка схема с байпасом на мал насосе | 2h | 2026-08-11 09:00 A | 2026-08-11 11:00 A |  | 100% |  | start no earlier than 2026-08-11 09:00 |
| 462 |  | установить счетчик в линию | 1h | 2026-08-12 09:00 A | 2026-08-12 10:00 A |  | 100% |  | start no earlier than 2026-08-12 09:00 |
| 463 |  | испытания производительности и регулировки | 1h | 2026-08-12 09:00 A | 2026-08-12 10:00 A |  | 100% |  | start no earlier than 2026-08-12 09:00 |
| 464 |  | тестирование работы при обновленном SSID | 1h | 2026-08-19 09:00 A | 2026-08-19 10:00 A |  | 100% |  | start no earlier than 2026-08-19 09:00 |
| 465 | 1.244.13 | **монтаж на линия 1** | 18d | 2026-08-31 09:00 | 2026-09-23 20:30 |  |  | 119.59d |  |
| 466 |  | заявка на счетчик, насос, 3х ход клапан, фитинги, канистра | 1h | 2026-08-31 09:00 | 2026-08-31 10:00 |  |  | 119.81d | start no earlier than 2026-08-31 09:00 |
| 467 |  | контроль поставки | 30min | 2026-09-21 10:00 | 2026-09-21 10:30 | 466FS+15d |  | 119.81d | start no earlier than 2026-08-12 09:00 |
| 468 |  | сборка корпус | 4h | 2026-09-22 10:30 | 2026-09-22 14:30 | 467FS+1d |  | 119.44d | start no earlier than 2026-08-12 09:00 |
| 469 |  | монтаж линия 1 | 6h | 2026-09-23 14:30 | 2026-09-23 20:30 | 468FS+1d |  | 119.44d | start no earlier than 2026-08-12 09:00 |
| 470 |  | подключть конденсатор к насосу, запуск системы | 1h | 2026-05-27 08:00 A | 2026-05-27 09:00 A |  | 100% |  | start no earlier than 2026-05-27 08:00 |
| 471 |  | подготовить емкость нерж (попловок, сгон) для подключения к насосу | 4h | 2026-05-26 09:00 A | 2026-05-26 13:00 A |  | 100% |  | start no earlier than 2026-05-26 09:00 |
| 472 |  | испытать насос на часотоном приводе | 2h | 2026-05-19 09:00 A | 2026-05-19 11:00 A | 457 | 100% |  | start no earlier than 2026-05-20 09:00 |
| 473 |  | перенос с 3й линии бак с насосом, установка на линия 2 | 4h | 2026-04-08 09:00 A | 2026-04-08 13:00 A | 456 | 100% |  | start no earlier than 2026-04-08 09:00 |
| 474 |  | бойлер на экструдере - установить трубку на клапан сброса и смонтировать её ы раковину | 1h | 2026-03-14 09:00 A | 2026-03-14 10:00 A |  | 100% |  | start no earlier than 2026-03-14 09:00 |
| 475 |  | смазать дверную ручку (входную) | 1h | 2026-03-15 09:00 A | 2026-03-15 10:00 A |  | 100% |  | start no earlier than 2026-03-15 09:00 |
| 476 |  | сделать ручку дверную (вход на упаковку) | 1h | 2026-03-15 09:00 A | 2026-03-15 10:00 A |  | 100% |  | start no earlier than 2026-03-15 09:00 |
| 477 |  | дверная ручка в туалет (подкрутить) | 1h | 2026-03-15 09:00 A | 2026-03-15 10:00 A |  | 100% |  | start no earlier than 2026-03-15 09:00 |
| 478 |  | штабелер экструдера натянуть цепь | 1h | 2026-03-13 08:00 A | 2026-03-13 09:00 A |  | 100% |  | start no earlier than 2026-03-13 08:00 |
| 479 |  | установить розетку возле роутера. Место монтажа фото от Шуранова | 2h | 2026-03-14 09:00 A | 2026-03-14 11:00 A |  | 100% |  | start no earlier than 2026-03-14 09:00 |
| 480 |  | линия 1 лоток охладителя под конвейером (по фото) - поднять на 3см, что бы не цеплял сетку. Снять / пересверлить крепеж | 2h | 2026-03-14 09:00 A | 2026-03-14 11:00 A |  | 100% |  | start no earlier than 2026-03-14 09:00 |
| 481 |  | изготовтиь полочку для роутера с "крышей. Двух скатная". | 4h | 2026-03-14 09:00 A | 2026-03-14 13:00 A |  | 100% |  | start no earlier than 2026-03-14 09:00 |
| 482 | 1.253 | **АКБ штабелер на навесках** | 45d | 2026-03-13 08:00 A | 2026-05-01 18:00 A |  | 100% |  |  |
| 483 |  | заявка на новые АКБ, отправить | 0d | 2026-03-13 08:00 A | 2026-03-13 08:00 A |  | 100% |  | start no earlier than 2026-03-13 08:00 |
| 484 |  | получить счет | 0d | 2026-03-16 09:00 A | 2026-03-16 09:00 A | 483 | 100% |  | start no earlier than 2026-03-16 09:00 |
| 485 |  | доставыка\ | 40d | 2026-03-16 09:00 A | 2026-05-01 18:00 A | 484 | 100% |  | start no earlier than 2026-03-13 08:00 |
| 486 |  | замена (получить на складе 2 АКБ и поменять на штабелере) | 2h | 2026-03-25 09:00 A | 2026-03-25 11:00 A |  | 100% |  | start no earlier than 2026-03-25 09:00 |
| 487 |  | замена шнеков на 1 линии по команде. Подготовить / старые увезти | 1h | 2026-03-14 09:00 A | 2026-03-14 10:00 A |  | 100% |  | start no earlier than 2026-03-14 09:00 |
| 488 | 1.255 | **установить принтер датаматрикс на пролистыватель** | 146d? | 2026-03-13 09:00 A | 2026-08-31 18:00 |  | 20% | 136.59d |  |
| 489 |  | разработка крепления принтера | 1h | 2026-03-13 09:00 A | 2026-03-13 10:00 A |  | 100% |  | start no earlier than 2026-03-13 08:00 |
| 490 |  | настройка ПО с агрегатором | 1d? | 2026-08-31 09:00 | 2026-08-31 18:00 |  |  | 136.59d | start no earlier than 2026-08-31 09:00 |

| ID | WBS | Task | Duration | Start | Finish | Predecessors | Complete | Total float | Constraint |
| --- | --- | --- | --- | --- | --- | --- | --- | --- | --- |
| 491 |  | изучение документации | 1h | 2026-05-28 09:00 A | 2026-05-28 10:00 A |  | 100% |  | start no earlier than 2026-05-28 09:00 |
| 492 | 1.256 | **заменить мятый профлист коррдиор подачи навесок** | 41.25d | 2026-03-13 09:00 A | 2026-04-28 11:00 A |  | 100% |  |  |
| 493 |  | расчет материал / заявка | 1h | 2026-03-13 09:00 A | 2026-03-13 10:00 A |  | 100% |  | start no earlier than 2026-03-13 09:00 |
| 494 |  | доставка | 10d | 2026-03-13 10:00 A | 2026-03-23 10:00 A | 493 | 100% |  | start no earlier than 2026-03-12 08:00 |
| 495 |  | замена | 2h | 2026-04-28 09:00 A | 2026-04-28 11:00 A | 494 | 100% |  | start no earlier than 2026-04-28 09:00 |
| 496 | 1.257 | **заменить плинтус стена вдольпечи 2** | 13.06d? | 2026-03-26 09:00 | 2026-04-10 09:30 |  | 91% |  |  |
| 497 |  | заявка | 30min | 2026-03-13 09:00 A | 2026-03-13 09:30 A |  | 100% |  | start no earlier than 2026-03-13 09:00 |
| 498 |  | доставка | 10d | 2026-03-13 09:30 A | 2026-03-23 09:30 A | 497 | 100% |  | start no earlier than 2026-03-12 08:00 |
| 499 |  | замена | 1d? | 2026-09-14 09:00 | 2026-09-14 18:00 | 498 |  | 126.59d | start no earlier than 2026-09-14 09:00 |
| 500 | 1.258 | **заменить аллюминевый скотч на швах вентиляции** | 24.25d | 2026-03-12 09:00 A | 2026-04-07 11:00 A |  | 100% |  |  |
| 501 |  | заявка | 20min | 2026-03-12 09:00 A | 2026-03-12 09:20 A |  | 100% |  | start no earlier than 2026-03-12 08:00 |
| 502 |  | доставка | 10d | 2026-03-12 09:20 A | 2026-03-22 09:20 A | 501 | 100% |  | start no earlier than 2026-03-12 08:00 |
| 503 |  | замена (также на улитках печей, циклона, стык регулировки шибера улитки) | 2h | 2026-04-07 09:00 A | 2026-04-07 11:00 A | 502 | 100% |  | start no earlier than 2026-04-07 09:00 |
| 504 | 1.259 | **замена скорлупа утеплитель горячих труб печи** | 22d | 2026-03-13 09:00 A | 2026-04-05 11:00 A |  | 100% |  |  |
| 505 |  | заявка | 1h | 2026-03-13 09:00 A | 2026-03-13 10:00 A |  | 100% |  | start no earlier than 2026-03-13 09:00 |
| 506 |  | доставка | 10d | 2026-03-13 10:00 A | 2026-03-23 10:00 A | 505 | 100% |  | start no earlier than 2026-03-12 08:00 |
| 507 |  | замена | 2h | 2026-04-05 09:00 A | 2026-04-05 11:00 A | 506 | 100% |  | start no earlier than 2026-04-05 09:00 |
| 508 | 1.260 | **купить прокатный запайщик** | 93.12d? | 2026-03-16 09:00 A | 2026-07-01 10:00 A |  | 100% |  |  |
| 509 |  | поиск / заявка | 2h | 2026-03-16 09:00 A | 2026-03-16 11:00 A |  | 100% |  | start no earlier than 2026-03-16 09:00 |
| 510 |  | получить счет + договор | 1h | 2026-05-12 09:00 A | 2026-05-12 10:00 A | 509 | 100% |  | start no earlier than 2026-05-12 09:00 |
| 511 |  | оплата | 0d | 2026-05-12 10:00 A | 2026-05-12 10:00 A | 510 | 100% |  | start no earlier than 2026-03-12 08:00 |
| 512 |  | доставка | 40d | 2026-05-12 10:00 A | 2026-07-01 10:00 A | 511 | 100% |  | start no earlier than 2026-03-12 08:00 |
| 513 |  | приемка / сборка | 1d? | 2026-06-29 09:00 A | 2026-06-29 17:00 A | 512 | 100% |  | start no earlier than 2026-03-12 08:00 |
| 514 |  | сборка рохли 2шт | 1h | 2026-03-13 09:00 A | 2026-03-13 10:00 A |  | 100% |  | start no earlier than 2026-03-13 09:00 |
| 515 |  | изготовить герметичную крышку на подачку гидролизата | 2h | 2026-05-20 09:00 A | 2026-05-20 11:00 A |  | 100% |  | start no earlier than 2026-05-20 09:00 |
| 516 | 1.263 | **установить крышку печи торцевую с стороны экструдера на шарниры** | 14.5d | 2026-03-25 09:00 | 2026-04-10 13:00 |  | 95% |  |  |
| 517 |  | заказ шарниры | 5min | 2026-03-06 09:00 A | 2026-03-06 09:05 A |  | 100% |  | start no earlier than 2026-03-06 08:00 |
| 518 |  | доставка | 10d | 2026-03-06 09:05 A | 2026-03-16 09:05 A | 517 | 100% |  | start no earlier than 2026-03-06 08:00 |
| 519 |  | монтаж линия 1 | 4h | 2026-05-13 09:00 A | 2026-05-13 13:00 A | 518 | 100% |  | start no earlier than 2026-05-13 09:00 |
| 520 |  | монтаж линия 1 и 2 печи (чтобы открывалась и не мешала открыванию лотку сверху) | 4h | 2026-09-05 09:00 | 2026-09-05 13:00 | 518 |  |  | start no earlier than 2026-09-05 09:00 |
| 521 | 1.264 | **квадропак заменить пружины на лапках** | 13.12d | 2026-03-18 09:00 A | 2026-04-01 10:00 A |  | 100% |  |  |
| 522 |  | попытка заменить | 1h | 2026-03-18 09:00 A | 2026-03-18 10:00 A |  | 100% |  | start no earlier than 2026-03-18 09:00 |
| 523 |  | проврить ролики на износ / заказать | 1h | 2026-03-19 09:00 A | 2026-03-19 10:00 A |  | 100% |  | start no earlier than 2026-03-19 08:00 |
| 524 |  | проверить / разрабоать полпн прижимная пластина регулировка | 1h | 2026-04-01 09:00 A | 2026-04-01 10:00 A |  | 100% |  | start no earlier than 2026-04-01 09:00 |
| 525 | 1.265 | **звонок на ворота по привозу навесок** | 47.25d | 2026-03-05 09:00 A | 2026-04-25 11:00 A |  | 100% |  |  |
| 526 |  | заявка на сирену / звонок | 30min | 2026-03-05 09:00 A | 2026-03-05 09:30 A |  | 100% |  | start no earlier than 2026-03-05 09:00 |
| 527 |  | доставка | 10d | 2026-03-12 09:00 A | 2026-03-21 18:00 A | 526 | 100% |  | start no earlier than 2026-03-12 08:00 |
| 528 |  | монтаж кнопка и звонок на складе (кнопку устанавливаем справа от ворот- звонок возле ВРУ слева | 2h | 2026-04-25 09:00 A | 2026-04-25 11:00 A | 527 | 100% |  | start no earlier than 2026-04-25 09:00 |
| 529 | 1.266 | **установить профлист на левую стену** | 57d? | 2026-03-12 09:00 A | 2026-05-15 18:00 A |  | 100% |  |  |
| 530 |  | расчет материал с Олегом | 1h | 2026-03-12 09:00 A | 2026-03-12 10:00 A |  | 100% |  | start no earlier than 2026-03-12 09:00 |
| 531 |  | заявка | 30min | 2026-03-19 09:00 A | 2026-03-19 09:30 A | 530 | 100% |  | start no earlier than 2026-03-19 09:00 |
| 532 |  | доставка | 10d | 2026-03-19 09:30 A | 2026-03-30 09:30 A | 531 | 100% |  | start no earlier than 2026-03-04 08:00 |
| 533 |  | монтаж пробный ряд | 4h | 2026-04-22 09:00 A | 2026-04-22 13:00 A |  | 100% |  | start no earlier than 2026-04-22 09:00 |
| 534 |  | монтаж каркас | 1d? | 2026-04-23 14:00 A | 2026-04-24 13:00 A | 532, 533FS+1d | 100% |  | start no earlier than 2026-04-22 09:00 |
| 535 |  | монтаж лист | 6h | 2026-04-28 09:00 A | 2026-04-28 16:00 A | 534 | 100% |  | start no earlier than 2026-04-28 09:00 |
| 536 |  | монтаж уровень 2 | 4d | 2026-05-12 09:00 A | 2026-05-15 18:00 A |  | 100% |  | start no earlier than 2026-05-12 08:00 |
| 537 | 1.267 | **модернизация вентиляции** | 146.31d | 2026-03-13 09:00 A | 2026-09-01 11:30 |  | 26% | 136.28d |  |
| 538 |  | заявка врезки для отбора проб | 15min | 2026-08-21 09:00 A | 2026-08-21 09:15 A |  | 100% |  | start no earlier than 2026-08-21 09:00 |
| 539 |  | контроль доставки | 15min | 2026-08-31 09:15 | 2026-08-31 09:30 | 538FS+7d |  | 136.41d | start no earlier than 2026-08-10 08:00 |
| 540 |  | монтаж | 2h | 2026-09-01 09:30 | 2026-09-01 11:30 | 539FS+1d |  | 136.28d | start no earlier than 2026-08-10 08:00 |
| 541 |  | составить схему, расчет | 2h | 2026-03-13 09:00 A | 2026-03-13 11:00 A |  | 100% |  | start no earlier than 2026-03-13 09:00 |
| 542 |  | монтаж вентиляторов | 4h | 2026-05-12 09:00 | 2026-05-12 13:00 |  |  | 230.09d | start no earlier than 2026-05-12 08:00 |
| 543 | 1.268 | **заменаить фитинги на жирах** | 56.12d | 2026-02-19 09:00 A | 2026-04-22 10:00 A |  | 100% |  |  |
| 544 |  | заявка | 30min | 2026-02-19 09:00 A | 2026-02-19 09:30 A |  | 100% |  | start no earlier than 2026-02-19 09:00 |
| 545 |  | доставка | 10d | 2026-02-19 09:30 A | 2026-03-03 09:30 A | 544 | 100% |  |  |
| 546 |  | контроль поставки | 0d | 2026-03-12 08:00 A | 2026-03-12 08:00 A | 545 | 100% |  | start no earlier than 2026-03-12 08:00 |
| 547 |  | контроль. Пришли опять не те | 0min | 2026-03-12 09:00 A | 2026-03-12 09:00 A | 545, 546 | 100% |  | start no earlier than 2026-03-12 09:00 |
| 548 |  | контроль | 0d | 2026-04-01 09:00 A | 2026-04-01 09:00 A |  | 100% |  | start no earlier than 2026-04-01 09:00 |
| 549 |  | замена | 1h | 2026-04-22 09:00 A | 2026-04-22 10:00 A | 547FS+2d | 100% |  | start no earlier than 2026-04-22 09:00 |
| 550 | 1.269 | **жиротопка замена воздухоотводчиков** | 32.12d | 2026-03-04 09:00 A | 2026-04-07 10:00 A |  | 100% |  |  |
| 551 |  | заявка | 15min | 2026-03-04 09:00 A | 2026-03-04 09:15 A |  | 100% |  | start no earlier than 2026-03-04 09:00 |
| 552 |  | доставка | 5d | 2026-03-04 09:15 A | 2026-03-09 09:15 A | 551 | 100% |  | start no earlier than 2026-02-27 08:00 |
| 553 |  | замена | 1h | 2026-04-07 09:00 A | 2026-04-07 10:00 A | 552 | 100% |  | start no earlier than 2026-04-07 09:00 |
| 554 | 1.270 | **увеличить освещение в зоне квадропака** | 11.12d | 2026-03-04 09:00 A | 2026-03-15 10:00 A |  | 100% |  |  |
| 555 |  | составить список мматериал для монтажа | 30min | 2026-03-04 09:00 A | 2026-03-04 09:30 A |  | 100% |  | start no earlier than 2026-03-04 09:00 |
| 556 |  | заявка трос, светильники | 30min | 2026-03-04 09:30 A | 2026-03-04 10:00 A | 555 | 100% |  | start no earlier than 2026-02-27 08:00 |
| 557 |  | доставка | 10d | 2026-03-05 10:00 A | 2026-03-15 10:00 A | 556FS+1d | 100% |  | start no earlier than 2026-02-27 08:00 |
| 558 |  | монтаж | 2h | 2026-03-06 09:00 A | 2026-03-06 11:00 A |  | 100% |  | start no earlier than 2026-03-06 09:00 |
| 559 | 1.271 | **установить орг стекло/нерж на обратный ход ленты на раму конвейера** | 48.25d | 2026-03-03 09:00 A | 2026-04-24 11:00 A |  | 100% |  |  |
| 560 |  | заявка нерж | 30min | 2026-03-03 09:00 A | 2026-03-03 09:30 A |  | 100% |  | start no earlier than 2026-03-03 09:00 |

| ID | WBS | Task | Duration | Start | Finish | Predecessors | Complete | Total float | Constraint |
| --- | --- | --- | --- | --- | --- | --- | --- | --- | --- |
| 561 |  | доставка | 10d | 2026-03-03 09:30 A | 2026-03-13 09:30 A | 560 | 100% |  | start no earlier than 2026-03-02 09:00 |
| 562 |  | подготовка материала в размер по аналогии 2 линии | 1h | 2026-04-15 09:00 A | 2026-04-15 10:00 A | 561 | 100% |  | start no earlier than 2026-04-15 09:00 |
| 563 |  | установка на остановке 1 линии (переустановить) | 2h | 2026-04-24 09:00 A | 2026-04-24 11:00 A |  | 100% |  | start no earlier than 2026-04-24 09:00 |
| 564 | 1.272 | **установить роутер в зону экструдера для регистрации данных** | 2.12d | 2026-03-02 09:00 A | 2026-03-04 10:00 A |  | 100% |  |  |
| 565 |  | монтаж кабель / розетка, роутер | 4h | 2026-03-02 09:00 A | 2026-03-02 13:00 A |  | 100% |  | start no earlier than 2026-03-02 09:00 |
| 566 |  | Монтаж розетки для роутера | 1h | 2026-03-03 09:00 A | 2026-03-03 10:00 A |  | 100% |  | start no earlier than 2026-03-03 09:00 |
| 567 |  | Заявка Айтишнику на монтаж наконечников | 10min | 2026-03-03 09:00 A | 2026-03-03 09:10 A |  | 100% |  | start no earlier than 2026-03-03 09:00 |
| 568 |  | Монтаж штекеров на кабель | 1h | 2026-03-04 09:00 A | 2026-03-04 10:00 A |  | 100% |  | start no earlier than 2026-03-04 09:00 |
| 569 | 1.273 | **ремонт приточной вентиляции** | 60.25d | 2026-02-26 09:00 A | 2026-05-04 11:00 A |  | 100% |  |  |
| 570 |  | заявка калорифер | 30min | 2026-03-04 09:00 A | 2026-03-04 09:30 A |  | 100% |  | start no earlier than 2026-03-04 09:00 |
| 571 |  | доставка | 10d | 2026-03-04 09:30 A | 2026-03-16 09:30 A | 570 | 100% |  |  |
| 572 |  | замена калорифер | 4h | 2026-03-11 09:00 A | 2026-03-11 13:00 A |  | 100% |  | start no earlier than 2026-03-11 09:00 |
| 573 |  | дать фото насоса | 20min | 2026-02-26 09:00 A | 2026-02-26 09:20 A |  | 100% |  | start no earlier than 2026-02-26 08:00 |
| 574 |  | заявка насос вода | 30min | 2026-03-02 09:30 A | 2026-03-02 10:00 A | 573, 570 | 100% |  | start no earlier than 2026-02-26 08:00 |
| 575 |  | доставка | 10d | 2026-03-02 10:00 A | 2026-03-12 10:00 A | 574 | 100% |  | start no earlier than 2026-02-26 08:00 |
| 576 |  | контроль доставки насос и заслонка | 10min | 2026-03-24 09:00 A | 2026-03-24 09:10 A |  | 100% |  | start no earlier than 2026-03-24 08:00 |
| 577 |  | замена насоса | 1h | 2026-03-25 09:10 A | 2026-03-25 10:10 A | 576FS+1d | 100% |  | start no earlier than 2026-03-24 09:00 |
| 578 |  | заявка привод заслонки | 30min | 2026-03-04 09:00 A | 2026-03-04 09:30 A | 574 | 100% |  | start no earlier than 2026-03-04 09:00 |
| 579 |  | доставка | 10d | 2026-03-04 09:30 A | 2026-03-14 09:30 A | 578 | 100% |  | start no earlier than 2026-02-26 08:00 |
| 580 |  | замена привода заслонки | 1h | 2026-05-04 09:00 A | 2026-05-04 10:00 A | 576FS+1d | 100% |  | start no earlier than 2026-05-04 09:00 |
| 581 |  | заявка фильтры на приточная вентиляция | 30min | 2026-03-04 09:00 A | 2026-03-04 09:30 A |  | 100% |  | start no earlier than 2026-03-04 09:00 |
| 582 |  | доставка | 10d | 2026-03-04 09:30 A | 2026-03-14 09:30 A | 581 | 100% |  | start no earlier than 2026-02-27 08:00 |
| 583 |  | замена | 2h | 2026-05-04 09:00 A | 2026-05-04 11:00 A | 582 | 100% |  | start no earlier than 2026-05-04 09:00 |
| 584 | 1.274 | **монтаж регистратор данных линия 1 и 2:** | 1.12d | 2026-02-24 09:00 A | 2026-02-25 10:00 A |  | 100% |  |  |
| 585 |  | установить розетку и автомат для для блока питания в ШУ экструдера, без подключения | 2h | 2026-02-24 09:00 A | 2026-02-24 11:00 A |  | 100% |  | start no earlier than 2026-02-24 09:00 |
| 586 |  | монтаж безподключения кабель RS485 по аналогии с линия 3 - только часотный привод. На складе. | 1h | 2026-02-24 09:00 A | 2026-02-24 10:00 A |  | 100% |  | start no earlier than 2026-02-24 09:00 |
| 587 |  | подключение розеток для блока питания в ШУ | 1h | 2026-02-25 09:00 A | 2026-02-25 10:00 A |  | 100% |  | start no earlier than 2026-02-25 09:00 |
| 588 |  | монтаж пультов управления и индикации регистратор, по аналогии с линия 3 | 1h | 2026-02-25 09:00 A | 2026-02-25 10:00 A |  | 100% |  | start no earlier than 2026-02-25 09:00 |
| 589 |  | заменить пластик втулку на металл деталь уплотнение вала прекондицинера 2 линия | 1d? | 2025-09-08 09:00 A | 2025-09-08 18:00 A |  | 100% |  | start no earlier than 2025-09-08 09:00 |
| 590 | 1.276 | **баки жир 2 линия устноавить наконечники. От 23.05.25** | 297.25d | 2025-04-16 09:00 A | 2026-04-22 11:00 A |  | 100% |  |  |
| 591 |  | заявка на наконечнки | 30min | 2025-04-16 09:00 A | 2025-04-16 09:30 A |  | 100% |  | start no earlier than 2025-04-16 09:00 |
| 592 |  | доставка | 5d | 2025-04-16 09:30 A | 2025-04-21 09:30 A | 591 | 100% |  | start no earlier than 2025-04-14 09:00 |
| 593 |  | ТО каблей, клемников | 2h | 2026-04-22 09:00 A | 2026-04-22 11:00 A | 592 | 100% |  | start no earlier than 2026-04-22 09:00 |
| 594 | 1.277 | **установить фильтры на жир** | 103d? | 2025-05-14 09:00 A | 2025-09-15 18:00 A |  | 100% |  |  |
| 595 |  | изготовить переходники токарь разместить | 1h | 2025-09-08 09:00 A | 2025-09-08 10:00 A |  | 100% |  | start no earlier than 2025-09-08 09:00 |
| 596 |  | контроль доставки | 5d | 2025-09-08 10:00 A | 2025-09-15 10:00 A | 595 | 100% |  | start no earlier than 2025-09-08 09:00 |
| 597 |  | замена | 1d? | 2025-09-15 10:00 A | 2025-09-15 18:00 A | 596 | 100% |  | start no earlier than 2025-09-08 09:00 |
| 598 |  | установить фильтры на жир 2шт через краны на тройник | 1h | 2025-05-14 09:00 A | 2025-05-14 10:00 A |  | 100% |  | start no earlier than 2025-05-14 09:00 |
| 599 | 1.278 | **палетные ворота подача навесок + подача жир** | 16d? | 2025-07-17 09:00 A | 2025-08-05 18:00 A |  | 100% |  |  |
| 600 |  | подготовить чертеж | 1d? | 2025-07-17 09:00 A | 2025-07-17 18:00 A |  | 100% |  | start no earlier than 2025-07-17 09:00 |
| 601 |  | сборка рамы | 2d | 2025-07-25 09:00 A | 2025-07-28 18:00 A | 600 | 100% |  | start no earlier than 2025-07-25 09:00 |
| 602 |  | монтаж | 1d? | 2025-08-05 09:00 A | 2025-08-05 18:00 A | 601 | 100% |  | start no earlier than 2025-08-05 09:00 |
| 603 |  | защита подшипников паронтом + подготовка | 4h | 2025-06-18 09:00 A | 2025-06-18 13:00 A |  | 100% |  | start no earlier than 2025-06-18 09:00 |
| 604 | 1.280 | **квадропак ТО + составить карту смазки и ТО + составить список ЗИП** | 0.5d | 2025-04-02 09:00 A | 2025-04-02 13:00 A |  | 100% |  |  |
| 605 |  | оформить карту ТО | 4h | 2025-04-02 09:00 A | 2025-04-02 13:00 A |  | 100% |  | start no earlier than 2025-04-02 09:00 |
| 606 | 1.281 | **квадропак некрасивый шов - золотинка** | 116.25d | 2025-01-13 09:00 A | 2025-06-06 11:00 |  | 100% |  |  |
| 607 | 1.281.1 | **изготовление термоножа с вставкойвставкой** | 0.12d | 2025-01-13 09:00 A | 2025-01-13 10:00 A |  | 100% |  |  |
| 608 |  | чертеж | 1h | 2025-01-13 09:00 A | 2025-01-13 10:00 A |  | 100% |  | start no earlier than 2025-01-13 09:00 |
| 609 | 1.281.2 | **установка тефлона на термонож** | 42.25d | 2025-04-17 09:00 A | 2025-06-06 11:00 |  | 100% |  |  |
| 610 |  | разработать метод крепления | 30min | 2025-04-17 09:00 A | 2025-04-17 09:30 A |  | 100% |  | start no earlier than 2025-04-17 09:00 |
| 611 |  | чертеж | 4h | 2025-04-17 09:30 A | 2025-04-17 14:30 A | 610 | 100% |  | start no earlier than 2025-01-17 09:00 |
| 612 |  | орг изготовление деталей | 2h | 2025-04-17 14:30 A | 2025-04-17 16:30 A | 611 | 100% |  | start no earlier than 2025-04-16 09:00 |
| 613 | 1.282 | **режет кабель ЛУКАС силовой в лотке эстакада у КПП** | 493.5d | 2024-08-02 09:00 | 2026-04-16 13:00 |  |  | 251.09d |  |
| 614 |  | решение о переговорах ГП | 30min | 2024-08-02 09:00 | 2024-08-02 09:30 |  |  | 744.53d | start no earlier than 2024-08-02 09:00 |
| 615 |  | перекладка кабель | 4h | 2026-04-16 09:00 | 2026-04-16 13:00 |  |  | 251.09d | start no earlier than 2026-04-16 08:00 |
| 616 | 1.283 | **ШР2.2 замена автомат на циклон на номинальный** | 5.19d | 2026-04-10 09:00 A | 2026-04-16 10:30 A |  | 100% |  |  |
| 617 |  | прорверить какой стоит / заявка по мощности мотора | 30min | 2026-04-10 09:00 A | 2026-04-10 09:30 A |  | 100% |  | start no earlier than 2026-04-10 09:00 |
| 618 |  | достьавка | 5d | 2026-04-10 09:30 A | 2026-04-16 09:30 A | 617 | 100% |  | start no earlier than 2024-03-04 09:00 |
| 619 |  | замена | 1h | 2026-04-16 09:30 A | 2026-04-16 10:30 A | 618 | 100% |  | start no earlier than 2026-04-06 09:00 |
| 620 | 1.284 | **кронштейн фотометки ТЕКО усилить** | 10.25d | 2024-09-11 09:00 A | 2024-09-21 11:00 A |  | 100% |  |  |
| 621 |  | поиск заявка кронштейна для датчика с регулировкой в3 плоскостях | 1h | 2024-09-11 09:00 A | 2024-09-11 10:00 A |  | 100% |  | start no earlier than 2024-09-11 09:00 |
| 622 |  | доставка | 10d | 2024-09-11 10:00 A | 2024-09-21 10:00 A | 621 | 100% |  | start no earlier than 2024-09-11 09:00 |
| 623 |  | замена | 1h | 2024-09-21 10:00 A | 2024-09-21 11:00 A | 622 | 100% |  | start no earlier than 2024-09-11 09:00 |
| 624 | 1.285 | **квадропак греет пневмоцилиндр термоножа** | 19.5d | 2024-09-12 09:00 A | 2024-10-02 13:00 A |  | 100% |  |  |
| 625 |  | решение о применении теплоизоляц пластины / заявка | 1h | 2024-09-12 09:00 A | 2024-09-12 10:00 A |  | 100% |  | start no earlier than 2024-09-12 09:00 |
| 626 |  | доставка | 10d | 2024-09-12 10:00 A | 2024-09-23 10:00 A | 625 | 100% |  | start no earlier than 2024-09-11 09:00 |
| 627 |  | замена | 4h | 2024-10-02 09:00 A | 2024-10-02 13:00 A | 626 | 100% |  | start no earlier than 2024-10-02 09:00 |
| 628 | 1.286 | **ремонт комппрессора - сдать по гарантии** | 806.12d | 2023-10-31 09:00 A | 2026-08-31 10:00 A |  | 100% |  |  |
| 629 |  | контроль снабжения - отправитьт поставщику | 1h | 2023-10-31 09:00 A | 2023-10-31 10:00 A |  | 100% |  | start no earlier than 2023-10-31 09:00 |
| 630 |  | контроль возврата | 1h | 2026-08-31 09:00 A | 2026-08-31 10:00 A | 629 | 100% |  | start no earlier than 2026-08-31 09:00 |

| ID | WBS | Task | Duration | Start | Finish | Predecessors | Complete | Total float | Constraint |
| --- | --- | --- | --- | --- | --- | --- | --- | --- | --- |
| 631 | 1.287 | **убрать кабеля с пола на упаковке 1 цех** | 0.02d | 2026-08-31 09:00 | 2026-08-31 09:10 |  |  | 137.57d |  |
| 632 |  | проверить на актуальность | 10min | 2026-08-31 09:00 | 2026-08-31 09:10 |  |  | 137.57d | start no earlier than 2026-08-31 09:00 |
| 633 |  | режет металлом изоляцию кабеля в прорходе стены в 1 цех угол комппрессора - обезвредить | 1h | 2023-12-28 09:00 A | 2023-12-28 10:00 A |  | 100% |  | start no earlier than 2023-12-28 09:00 |
| 634 | 1.289 | **убрать кабеля с пола и заменить переноски штатными розетками - участок жира 1 цех** | 0.01d | 2026-08-31 09:00 | 2026-08-31 09:05 |  |  | 137.58d |  |
| 635 |  | проверить на актуальность | 5min | 2026-08-31 09:00 | 2026-08-31 09:05 |  |  | 137.58d | start no earlier than 2026-08-31 09:00 |
| 636 |  | изготовить ключь для ТП | 2h | 2023-06-21 09:00 A | 2023-06-21 11:00 A |  | 100% |  | start no earlier than 2023-06-21 09:00 |
| 637 |  | заменитьт автомат 63С кондиционер 1 цех | 1h | 2023-06-22 09:00 A | 2023-06-22 10:00 A |  | 100% |  | start no earlier than 2023-06-22 09:00 |
| 638 | 1.292 | **Барабаны 2 линия дражжировка** | 19d | 2026-04-21 09:00 A | 2026-05-13 18:00 A |  | 100% |  |  |
| 639 |  | Проработать модернизацию форсунок | 3h | 2026-04-22 09:00 A | 2026-04-22 12:00 A |  | 100% |  | start no earlier than 2026-04-22 09:00 |
| 640 |  | сделать заявку на доп форсунки, расходники | 30min | 2026-04-22 09:00 A | 2026-04-22 09:30 A |  | 100% |  | start no earlier than 2026-04-22 09:00 |
| 641 |  | доставка | 10d | 2026-04-30 09:00 A | 2026-05-13 18:00 A |  | 100% |  | start no earlier than 2026-04-30 09:00 |
| 642 |  | Внедрение и монтаж | 2h | 2026-05-08 09:00 A | 2026-05-08 11:00 A |  | 100% |  | start no earlier than 2026-05-08 09:00 |
| 643 | 1.292.5 | **Парогенератор** | 0.25d | 2026-04-21 09:00 A | 2026-04-21 11:00 A |  | 100% |  |  |
| 644 |  | Проверить термадатчик (панельтемпературы) TC4R на корректность работы, скачет температура, по необходимости заменить | 2h | 2026-04-21 09:00 A | 2026-04-21 11:00 A |  | 100% |  | start no earlier than 2026-04-21 08:00 |
| 645 | 1.293 | **Звонок на экструдер** | 16.25d | 2026-04-07 09:00 A | 2026-04-25 11:00 A |  | 100% |  |  |
| 646 |  | Протяжка кабеля от ворот к экструдерщикам | 4h | 2026-04-07 09:00 A | 2026-04-07 13:00 A |  | 100% |  | start no earlier than 2026-04-22 09:00 |
| 647 |  | монтаж звонка | 1h | 2026-04-25 09:00 A | 2026-04-25 10:00 A | 646 | 100% |  | start no earlier than 2026-04-25 09:00 |
| 648 |  | монтаж кнопки за воротами | 1h | 2026-04-25 10:00 A | 2026-04-25 11:00 A | 647 | 100% |  | start no earlier than 2026-04-21 08:00 |
| 649 | 1.294 | **Насос гидролизата** | 111.12d | 2026-04-22 08:00 A | 2026-09-02 10:00 |  | 91% | 135.47d |  |
| 650 |  | Заказать ремкомплект шнек, резинка, трубка, связаться с производителем | 20min | 2026-08-04 09:00 A | 2026-08-04 09:20 A |  | 100% |  | start no earlier than 2026-08-04 09:00 |
| 651 |  | Доставка контроль сам насос шетсрен | 5min | 2026-08-31 09:00 | 2026-08-31 09:05 |  |  | 137.58d | start no earlier than 2026-08-31 09:00 |
| 652 | 1.294.3 | **Дражжировка конвейер №1 после печки** | 0.12d | 2026-09-02 09:00 | 2026-09-02 10:00 |  |  | 135.47d |  |
| 653 |  | Поставить резьбовые клепки на боковой кожух, где кончается лента | 1h | 2026-09-02 09:00 | 2026-09-02 10:00 |  |  | 135.47d | start no earlier than 2026-09-02 09:00 |
| 654 |  | контроль героторная пара оплата | 5min | 2026-08-21 09:00 A | 2026-08-21 09:05 A |  | 100% |  | start no earlier than 2026-08-21 09:00 |
| 655 |  | Замена сальника на поворотном столе/проверить | 1h | 2026-07-23 09:00 A | 2026-07-23 10:00 A |  | 100% |  | start no earlier than 2026-07-23 08:00 |
| 656 | 1.294.6 | **дражжировка** | 0.5d | 2026-04-22 08:00 A | 2026-04-22 14:00 A |  | 100% |  |  |
| 657 |  | Установка рамы для фильтров | 3h | 2026-04-22 08:00 A | 2026-04-22 11:00 A |  | 100% |  | start no earlier than 2026-04-22 08:00 |
| 658 |  | установка счетчика | 1h | 2026-04-22 11:00 A | 2026-04-22 12:00 A | 657 | 100% |  | start no earlier than 2026-04-22 08:00 |
| 659 |  | кронштейн под пульт расходомера | 2h | 2026-04-22 12:00 A | 2026-04-22 14:00 A | 658 | 100% |  | start no earlier than 2026-04-22 08:00 |
| 660 | 1.294.6.4 | **Парогенератор** | 0.38d | 2026-04-22 09:00 A | 2026-04-22 12:00 A |  | 100% |  |  |
| 661 |  | чистка парогенераторов 1 и 2 линия | 3h | 2026-04-22 09:00 A | 2026-04-22 12:00 A |  | 100% |  | start no earlier than 2026-04-22 08:00 |
| 662 |  | отмена | 1d? | 2026-08-31 09:00 | 2026-08-31 18:00 |  |  | 136.59d | start no earlier than 2026-08-31 08:00 |
| 663 | 1.296 | **Парогенератор** | 27.5d? | 2026-04-22 09:00 | 2026-05-25 13:00 |  | 8% |  |  |
| 664 |  | Замена говротрубы 1 линия | 1h | 2026-07-08 09:00 A | 2026-07-08 10:00 A |  | 100% |  | start no earlier than 2026-07-08 09:00 |
| 665 |  | Осмотр стоек где стоит реле давления до расширительного бачка | 30min | 2026-07-27 09:00 | 2026-07-27 09:30 |  |  | 164.72d | start no earlier than 2026-07-27 09:00 |
| 666 |  | Составить список материала для ремонта и изготовления стоек | 30min | 2026-07-27 09:30 | 2026-07-27 10:00 | 665 |  | 164.72d | start no earlier than 2026-05-27 09:00 |
| 667 |  | Заказать недостающий материал | 20min | 2026-07-27 09:00 | 2026-07-27 09:20 |  |  | 165.55d | start no earlier than 2026-07-27 09:00 |
| 668 |  | Изготовление стоек | 3h | 2026-07-29 09:00 | 2026-07-29 12:00 | 666 |  | 162.84d | start no earlier than 2026-07-29 09:00 |
| 669 |  | Замена стойки под реле давления | 3h | 2026-07-29 12:00 | 2026-07-29 16:00 | 668 |  | 162.84d | start no earlier than 2026-05-27 09:00 |
| 670 |  | Составить список материалов или заключение по 2-м частотникам из 1 цеха от теко 0,4 (поворотный стол и конвейер) | 1h | 2026-07-27 08:00 | 2026-07-27 09:00 |  |  | 165.5d | start no earlier than 2026-07-27 08:00 |
| 671 |  | Взять трубку в нашем кабинете и насверлить по всей длине симметрично отверстия самым маленьким сверлом которое у нас есть (по этому заданию позвонить) | 3h | 2026-07-28 08:00 | 2026-07-28 11:00 |  |  | 164.34d | start no earlier than 2026-07-28 08:00 |
| 672 |  | Демонтаж разборка/сборка редукторы шлюз. Питателей циклона 1 и 2 линия | 3h | 2026-04-24 09:00 A | 2026-04-24 12:00 A |  | 100% |  | start no earlier than 2026-04-24 09:00 |
| 673 | 1.298 | **Теко 0,4** | 0.38d | 2026-04-03 09:00 A | 2026-04-03 12:00 A |  | 100% |  |  |
| 674 |  | замена ковшей | 3h | 2026-04-03 09:00 A | 2026-04-03 12:00 A |  | 100% |  | start no earlier than 2026-04-03 09:00 |
| 675 | 2 | **2 цех** | 257d? | 2023-11-16 09:00 | 2024-10-29 18:00 |  | 81% |  |  |
| 676 |  | проверка котлов на приточку | 2h | 2026-08-29 09:00 | 2026-08-29 11:00 |  |  |  | start no earlier than 2026-08-29 09:00 |
| 677 |  | проверка всех котлов на отопление по цеху | 4h | 2026-08-30 09:00 A | 2026-08-30 13:00 A |  | 100% |  | start no earlier than 2026-08-30 09:00 |
| 678 |  | закрепить коробку двери снизу (возле ШУ приточка 2 этаж) | 2h | 2026-08-28 09:00 A | 2026-08-28 11:00 A |  | 100% |  | start no earlier than 2026-08-28 09:00 |
| 679 | 2.4 | **заменить фильтры на воду в цехе (проверить мембрану на гидроаккумуляторе)** | 1d? | 2026-08-28 09:00 A | 2026-08-28 18:00 A |  | 100% |  |  |
| 680 |  | заказать фильтры | 1d? | 2026-08-28 09:00 A | 2026-08-28 18:00 A |  | 100% |  | start no earlier than 2026-08-28 09:00 |
| 681 |  | монтаж и подключение розетки для кондиционера в кабинет ОТК | 2h | 2026-08-26 08:00 A | 2026-08-26 10:00 A |  | 100% |  | start no earlier than 2026-08-26 08:00 |
| 682 |  | сливной шланг от кондиционеров наш кабинет и Шелепова спрятать в кабель канал 30х25 (он на складе) | 2h | 2026-08-26 08:00 A | 2026-08-26 10:00 A |  | 100% |  | start no earlier than 2026-08-26 08:00 |
| 683 |  | сливной шланг от кондиционеров кабинет Сапелина спрятать в кабель канал 30х25 (он на складе) с 10 до 11ч | 1h | 2026-08-31 09:00 | 2026-08-31 10:00 |  |  | 137.47d | start no earlier than 2026-08-31 09:00 |
| 684 |  | замерить токи на оборудование (таблица в слесарке) | 3h | 2026-08-27 09:00 A | 2026-08-27 12:00 A |  | 100% |  | start no earlier than 2026-08-27 09:00 |
| 685 | 2.9 | **дренаж кондиционеров жир и упаковка установить отдельный насос от жиров** | 23.56d | 2026-08-24 09:00 | 2026-09-24 14:30 |  |  | 119.03d |  |
| 686 |  | заявка насос | 30min | 2026-08-24 09:00 | 2026-08-24 09:30 |  |  | 119.03d | start no earlier than 2026-08-24 09:00 |
| 687 |  | контроль доставка | 15d | 2026-09-02 09:30 | 2026-09-23 09:30 | 686FS+7d |  | 119.03d | start no earlier than 2026-08-20 09:00 |
| 688 |  | монтаж трасс и насос | 4.5h | 2026-09-24 09:30 | 2026-09-24 14:30 | 687FS+1d |  | 119.03d | start no earlier than 2026-08-20 09:00 |
| 689 | 2.10 | **бетонирование крыльцо вход в 2ц** | 0.02d | 2026-08-31 09:00 | 2026-08-31 09:10 |  |  | 137.57d |  |
| 690 |  | заявка Олегу | 10min | 2026-08-31 09:00 | 2026-08-31 09:10 |  |  | 137.57d | start no earlier than 2026-08-31 09:00 |
| 691 |  | течь кондиционер жиры - контроль работы слива | 30min | 2026-08-31 09:00 | 2026-08-31 09:30 |  |  | 137.53d | start no earlier than 2026-08-31 09:00 |
| 692 |  | контроль замена фитинги или трубки жир, устранить возможность произвольного срыва | 30min | 2026-09-03 09:00 | 2026-09-03 09:30 |  |  | 134.53d | start no earlier than 2026-09-03 09:00 |
| 693 | 2.13 | **разгрузка синего накопителя, в реверс шнек + окно** | 6.12d | 2026-08-20 09:00 A | 2026-08-27 10:00 A |  | 100% |  |  |
| 694 |  | выполнить люк в шнеке: вырезать окно, крепеж на шарнир + притвор с уплотнением + застежка | 0h | 2026-08-20 09:00 A | 2026-08-20 09:00 A |  | 100% |  | start no earlier than 2026-08-20 09:00 |
| 695 |  | быстросъемное крепление | 1h | 2026-08-27 09:00 A | 2026-08-27 10:00 A |  | 100% |  | start no earlier than 2026-08-27 09:00 |
| 696 |  | изготовление фланца + труба для крепления гофротрубы ф250 | 3h | 2026-08-24 09:00 A | 2026-08-24 12:00 A |  | 100% |  | start no earlier than 2026-08-24 09:00 |
| 697 |  | перенос розетка на стену инсекютер корридор у ОТК | 1h | 2026-08-15 09:00 A | 2026-08-15 10:00 A |  | 100% |  | start no earlier than 2026-08-15 09:00 |
| 698 |  | перенос инсекютер ниже на фасовке, для возможности доступа операторами | 1h | 2026-09-01 09:00 | 2026-09-01 10:00 |  |  | 136.47d | start no earlier than 2026-09-01 09:00 |
| 699 |  | изготовить лопатку для датчика сырья, что бы было 2-4 лопасти и ниже на 5-10см | 2h | 2026-08-13 09:00 A | 2026-08-13 11:00 A |  | 100% |  | start no earlier than 2026-08-13 09:00 |
| 700 |  | прикрепить план увакуации на место (зона отстоя навесок, стенка мойки) | 30min | 2026-08-12 09:00 A | 2026-08-12 09:30 A |  | 100% |  | start no earlier than 2026-08-12 09:00 |

| ID | WBS | Task | Duration | Start | Finish | Predecessors | Complete | Total float | Constraint |
| --- | --- | --- | --- | --- | --- | --- | --- | --- | --- |
| 701 |  | ремонт ручка в экструдер 2ц | 1h | 2026-08-14 09:00 A | 2026-08-14 10:00 A |  | 100% |  | start no earlier than 2026-08-14 09:00 |
| 702 | 2.19 | **установить сифон ф110 в линию слива жиров** | 16.28d | 2026-08-12 09:00 A | 2026-08-31 11:15 |  | 31% | 137.31d |  |
| 703 |  | заявка на сифон, планирование монтаж | 1h | 2026-08-12 09:00 A | 2026-08-12 10:00 A |  | 100% |  | start no earlier than 2026-08-12 09:00 |
| 704 |  | контроль доставка | 15min | 2026-08-31 09:00 | 2026-08-31 09:15 | 703FS+7d |  | 137.44d | start no earlier than 2026-08-31 09:00 |
| 705 |  | монтаж | 2h | 2026-08-31 09:15 | 2026-08-31 11:15 | 704 |  | 137.31d | start no earlier than 2026-08-26 09:00 |
| 706 | 2.20 | **установить инсекютер дополнительный на экструдер** | 9.38d | 2026-08-21 09:00 A | 2026-09-02 12:00 |  | 7% | 135.22d |  |
| 707 |  | заявка инстекютер | 15min | 2026-08-21 09:00 A | 2026-08-21 09:15 A |  | 100% |  | start no earlier than 2026-08-21 09:00 |
| 708 |  | контроль доставки | 15min | 2026-08-31 09:15 | 2026-08-31 09:30 | 707FS+7d |  | 137.28d | start no earlier than 2026-08-11 09:00 |
| 709 |  | монтаж розетка / кабель | 3h | 2026-09-02 09:00 | 2026-09-02 12:00 | 708 |  | 135.22d | start no earlier than 2026-09-02 09:00 |
| 710 |  | маркировка канистры гидролизата - передать на время гровер нач цеха 2 | 20min | 2026-08-11 09:00 A | 2026-08-11 09:20 A |  | 100% |  | start no earlier than 2026-08-11 09:00 |
| 711 | 2.22 | **ограждение мусорного контейнера у 2ц** | 14.34d | 2026-08-31 09:00 | 2026-09-18 11:45 |  |  | 123.25d |  |
| 712 |  | схема размещения | 1h | 2026-08-31 09:00 | 2026-08-31 10:00 |  |  | 123.25d | start no earlier than 2026-08-31 09:00 |
| 713 |  | контроль остатков материала - каркас + обшивка стен | 30min | 2026-08-31 10:00 | 2026-08-31 10:30 | 712 |  | 123.25d | start no earlier than 2026-08-14 09:00 |
| 714 |  | заявка материал / лист | 1h | 2026-09-01 10:30 | 2026-09-01 11:30 | 713FS+1d |  | 123.25d | start no earlier than 2026-08-10 08:00 |
| 715 |  | контроль поставка | 15min | 2026-09-15 11:30 | 2026-09-15 11:45 | 714FS+10d |  | 123.25d | start no earlier than 2026-08-10 08:00 |
| 716 |  | монтаж каркас + обшивка | 3.34d | 2026-09-16 11:45 | 2026-09-18 11:45 | 715FS+1d |  | 123.25d | start no earlier than 2026-08-10 08:00 |
| 717 | 2.23 | **установить кондиционер контролерам ОТК в 2ц** | 8.38d | 2026-08-19 09:00 A | 2026-08-28 12:00 A |  | 100% |  |  |
| 718 |  | оапата счет контроль | 15min | 2026-08-19 09:00 A | 2026-08-19 09:15 A |  | 100% |  | start no earlier than 2026-08-19 09:00 |
| 719 |  | длоставка контроль | 15min | 2026-08-24 09:15 A | 2026-08-24 09:30 A | 718FS+4d | 100% |  | start no earlier than 2026-08-17 09:00 |
| 720 |  | монтаж | 4h | 2026-08-24 09:30 A | 2026-08-24 14:30 A | 719 | 100% |  | start no earlier than 2026-08-10 08:00 |
| 721 |  | монтаж крозетка | 3h | 2026-08-28 09:00 A | 2026-08-28 12:00 A | 720FS-1d | 100% |  | start no earlier than 2026-08-28 09:00 |
| 722 | 2.24 | **усиление подогрев приточной вентиляции** | 20.53d? | 2026-08-17 09:00 A | 2026-09-11 14:15 |  | 49% | 128.06d |  |
| 723 |  | планирование мощности для приточная вент до 200 квт + тепл завесы | 4h | 2026-08-17 09:00 A | 2026-08-17 13:00 A |  | 100% |  | start no earlier than 2026-08-17 09:00 |
| 724 |  | заявка доп котлы + автоматика | 4h | 2026-08-27 09:00 A | 2026-08-27 13:00 A | 723FS+1d | 100% |  | start no earlier than 2026-08-27 09:00 |
| 725 |  | контроль поствки | 15min | 2026-09-10 14:00 | 2026-09-10 14:15 | 724FS+10d |  | 128.06d | start no earlier than 2026-08-10 08:00 |
| 726 |  | монтаж | 1d? | 2026-09-10 14:15 | 2026-09-11 14:15 | 725 |  | 128.06d | start no earlier than 2026-08-10 08:00 |
| 727 |  | собрать 4 стула и тумбочку. Находятся у мастера | 4h | 2026-08-10 08:00 A | 2026-08-10 12:00 A |  | 100% |  | start no earlier than 2026-08-10 08:00 |
| 728 |  | кабель к вентилятору печи примыкание гофры к трубе выполнить без пустот фото Фадеевой | 1h | 2026-08-11 09:00 A | 2026-08-11 10:00 A |  | 100% |  | start no earlier than 2026-08-11 09:00 |
| 729 |  | закрыить все эл щщитки на ключь | 1h | 2026-08-10 08:00 A | 2026-08-10 09:00 A |  | 100% |  | start no earlier than 2026-08-10 08:00 |
| 730 |  | установить отбойник склад навесок, стена мойки | 1h | 2026-08-10 08:00 A | 2026-08-10 09:00 A |  | 100% |  | start no earlier than 2026-08-10 08:00 |
| 731 | 2.29 | **обеспечить не менее +15 зимой в зоне хранения навесок** | 44.34d? | 2026-08-04 09:00 A | 2026-09-30 11:45 |  | 19% | 115.25d |  |
| 732 | 2.29.1 | **утепление стены** | 7.16d? | 2026-08-31 09:00 | 2026-09-09 10:15 |  |  | 116.25d |  |
| 733 |  | расчет количство утеплителя + профлист/саморезы. Заявка | 1h | 2026-08-31 09:00 | 2026-08-31 10:00 |  |  | 130.44d | start no earlier than 2026-08-31 09:00 |
| 734 |  | получить цену / решение о тепловой завесе | 0d | 2026-09-01 09:00 | 2026-09-01 09:00 |  |  | 115.25d | start no earlier than 2026-09-01 09:00 |
| 735 |  | контроль даты доставки | 15min | 2026-09-07 10:00 | 2026-09-07 10:15 | 733FS+5d |  | 130.44d | start no earlier than 2026-08-27 08:00 |
| 736 |  | монтаж | 1d? | 2026-09-08 10:15 | 2026-09-09 10:15 | 735FS+1d |  | 130.44d | start no earlier than 2026-08-27 08:00 |
| 737 |  | решение об утеплении стены сравнить с затратами на тепловые завесы | 0h | 2026-09-01 09:00 | 2026-09-01 09:00 | 753, 734 |  | 115.25d | start no earlier than 2026-08-24 09:00 |
| 738 | 2.29.2 | **кап ремонт стен зона хранения навесок. Промерзают** | 5.12d | 2026-08-04 09:00 A | 2026-08-11 10:00 A |  | 100% |  |  |
| 739 |  | установить листы на место склад навесо стена с эл щитком | 1h | 2026-08-11 09:00 A | 2026-08-11 10:00 A |  | 100% |  | start no earlier than 2026-08-11 09:00 |
| 740 |  | вскрытие стен дя составления плана работ. Демонтировать несколько листов в зоне промерзания (гдещиток) | 4h | 2026-08-04 09:00 A | 2026-08-04 13:00 A |  | 100% |  | start no earlier than 2026-08-04 09:00 |
| 741 | 2.29.3 | **тепловые завесы в 2ц зона подачи навесок** | 33.34d? | 2026-08-17 09:00 A | 2026-09-30 11:45 |  | 8% | 115.25d |  |
| 742 | 2.29.3.1 | **монтаж теплокалориферов** | 20.34d? | 2026-09-02 09:00 | 2026-09-30 11:45 |  |  | 115.25d |  |
| 743 |  | заявка | 2h | 2026-09-02 09:00 | 2026-09-02 11:00 | 737FS+1d |  | 115.25d | start no earlier than 2026-08-21 09:00 |
| 744 |  | контроль оплаты\ | 15min | 2026-09-04 11:00 | 2026-09-04 11:15 | 743FS+2d |  | 115.25d | start no earlier than 2026-08-10 08:00 |
| 745 |  | контроль доставки | 15min | 2026-09-25 11:15 | 2026-09-25 11:30 | 744FS+15d |  | 115.25d | start no earlier than 2026-08-10 08:00 |
| 746 |  | приемка | 15min | 2026-09-28 11:30 | 2026-09-28 11:45 | 745FS+1d |  | 115.25d | start no earlier than 2026-08-10 08:00 |
| 747 |  | монтаж калориферов | 1d? | 2026-09-29 11:45 | 2026-09-30 11:45 | 746FS+1d |  | 115.25d | start no earlier than 2026-08-10 08:00 |
| 748 | 2.29.3.2 | **монтаж кабель** | 18.38d? | 2026-08-17 09:00 A | 2026-09-09 12:00 |  | 15% | 130.22d |  |
| 749 |  | планирование мощности | 2h | 2026-08-17 09:00 A | 2026-08-17 11:00 A |  | 100% |  | start no earlier than 2026-08-17 09:00 |
| 750 |  | заявка кабель /щиток | 2h | 2026-08-31 09:00 | 2026-08-31 11:00 | 749 |  | 130.22d | start no earlier than 2026-08-31 09:00 |
| 751 |  | контроль доставка | 1h | 2026-09-07 11:00 | 2026-09-07 12:00 | 750FS+5d |  | 130.22d | start no earlier than 2026-08-10 08:00 |
| 752 |  | монтаж | 1d? | 2026-09-08 12:00 | 2026-09-09 12:00 | 751FS+1d |  | 130.22d | start no earlier than 2026-08-10 08:00 |
| 753 |  | контроль достаточности если не крепить верхние саморезы | 15min | 2026-08-13 09:00 A | 2026-08-13 09:15 A |  | 100% |  | start no earlier than 2026-08-13 09:00 |
| 754 | 2.30 | **дверь в мойку сделать герметичный притвор** | 2.25d | 2026-08-14 09:00 A | 2026-08-16 11:00 A |  | 100% |  |  |
| 755 |  | подбор уплотнителя / заказать | 20min | 2026-08-14 09:00 A | 2026-08-14 09:20 A |  | 100% |  | start no earlier than 2026-08-14 09:00 |
| 756 |  | монтаж резинки на клей | 2h | 2026-08-16 09:00 A | 2026-08-16 11:00 A |  | 100% |  | start no earlier than 2026-08-16 09:00 |
| 757 | 2.31 | **на дверь в мойку установить мощный доводчик** | 10.03d | 2026-08-21 09:00 A | 2026-09-03 09:15 |  | 28% | 134.56d |  |
| 758 |  | закрыть отверстие от ручки | 15min | 2026-09-03 09:00 | 2026-09-03 09:15 |  |  | 134.56d | start no earlier than 2026-09-03 09:00 |
| 759 |  | установить ручку с защелкой -язычком | 1h | 2026-09-01 09:00 | 2026-09-01 10:00 |  |  | 136.47d | start no earlier than 2026-09-01 09:00 |
| 760 |  | установить щетку для герметизации низа двери | 1h | 2026-08-28 09:00 A | 2026-08-28 10:00 A |  | 100% |  | start no earlier than 2026-08-28 09:00 |
| 761 |  | заявка доводчик | 20min | 2026-08-21 09:00 A | 2026-08-21 09:20 A |  | 100% |  | start no earlier than 2026-08-21 09:00 |
| 762 |  | контроль поставки | 15min | 2026-08-31 09:00 | 2026-08-31 09:15 | 761FS+5d |  | 136.44d | start no earlier than 2026-08-31 09:00 |
| 763 |  | монтаж | 2h | 2026-09-01 09:15 | 2026-09-01 11:15 | 762FS+1d |  | 136.31d | start no earlier than 2026-08-10 08:00 |
| 764 | 2.32 | **пролистыватель с апликтором заказ** | 33.91d? | 2026-08-10 09:00 A | 2026-09-21 17:15 |  | 12% | 121.69d |  |
| 765 |  | получить договор + счет | 1h | 2026-08-10 09:00 A | 2026-08-10 10:00 A |  | 100% |  | start no earlier than 2026-08-10 08:00 |
| 766 | 2.32.2 | **согласвоание договор** | 5.02d | 2026-08-12 09:00 A | 2026-08-17 09:10 A |  | 100% |  |  |
| 767 |  | подать договор | 5min | 2026-08-12 09:00 A | 2026-08-12 09:05 A |  | 100% |  | start no earlier than 2026-08-12 09:00 |
| 768 |  | контроль | 5min | 2026-08-17 09:05 A | 2026-08-17 09:10 A | 767FS+5d | 100% |  | start no earlier than 2026-08-12 09:00 |
| 769 |  | оплата подать счет | 0d | 2026-08-12 09:00 A | 2026-08-12 09:00 A |  | 100% |  | start no earlier than 2026-08-12 09:00 |
| 770 |  | доставка конетроль | 15min | 2026-09-18 09:00 | 2026-09-18 09:15 | 769FS+30d |  | 121.97d | start no earlier than 2026-08-10 08:00 |

| ID | WBS | Task | Duration | Start | Finish | Predecessors | Complete | Total float | Constraint |
| --- | --- | --- | --- | --- | --- | --- | --- | --- | --- |
| 771 |  | монтаж | 1d? | 2026-09-21 09:15 | 2026-09-21 17:15 | 770FS+1d |  | 121.69d | start no earlier than 2026-08-10 08:00 |
| 772 | 2.33 | **вентиляция мойка приточно-вытяжная 1ц 2 линия** | 12d | 2026-08-13 09:00 A | 2026-08-25 18:30 |  | 29% | 140.59d |  |
| 773 |  | монтаж вытяжной трубы в колектор. После переноса вентиляторов отключен | 4h | 2026-08-16 09:00 | 2026-08-16 13:00 |  |  | 149.09d | start no earlier than 2026-08-16 09:00 |
| 774 |  | составить проект | 4h | 2026-08-13 09:00 A | 2026-08-13 13:00 A |  | 100% |  | start no earlier than 2026-08-13 09:00 |
| 775 |  | заявка материалы | 1h | 2026-08-24 09:00 A | 2026-08-24 10:00 A | 774FS+7d | 100% |  | start no earlier than 2026-08-24 09:00 |
| 776 |  | контроль поставки | 30min | 2026-08-25 10:00 | 2026-08-25 10:30 | 775FS+1d |  | 140.81d | start no earlier than 2026-08-10 08:00 |
| 777 |  | монтаж | 1d | 2026-08-25 10:30 | 2026-08-25 18:30 | 776 |  | 140.59d | start no earlier than 2026-08-10 08:00 |
| 778 | 2.34 | **выполнить обрамление двери в охладитель, что бы скрыть поверхность** | 15.28d | 2026-08-14 09:00 A | 2026-09-01 11:15 |  | 10% | 136.31d |  |
| 779 |  | заказ декоративный уголок | 15min | 2026-08-14 09:00 A | 2026-08-14 09:15 A |  | 100% |  | start no earlier than 2026-08-14 09:00 |
| 780 |  | контроль доставки | 15min | 2026-08-31 09:00 | 2026-08-31 09:15 | 779FS+5d |  | 136.31d | start no earlier than 2026-08-31 09:00 |
| 781 |  | монтаж | 2h | 2026-09-01 09:15 | 2026-09-01 11:15 | 780FS+1d |  | 136.31d | start no earlier than 2026-08-26 09:00 |
| 782 | 2.35 | **ремонт осушителя компрессора 2ц** | 19.12d | 2026-08-09 09:00 A | 2026-09-01 10:00 |  | 88% | 136.47d |  |
| 783 |  | проверка давления фреона | 1h | 2026-09-01 09:00 | 2026-09-01 10:00 |  |  | 136.47d | start no earlier than 2026-09-01 09:00 |
| 784 |  | фото шильдик для поиск в продаже | 10min | 2026-08-11 09:00 A | 2026-08-11 09:10 A |  | 100% |  | start no earlier than 2026-08-11 09:00 |
| 785 |  | связь с сервисным отделом получить дату | 1h | 2026-08-12 09:00 A | 2026-08-12 10:00 A |  | 100% |  | start no earlier than 2026-08-12 09:00 |
| 786 |  | фото шильдик для поиск в продаже | 1h | 2026-08-12 09:00 A | 2026-08-12 10:00 A |  | 100% |  | start no earlier than 2026-08-12 09:00 |
| 787 |  | слить конденсат с компрессора, чистка фильтров | 3h | 2026-08-09 09:00 A | 2026-08-09 12:00 A |  | 100% |  | start no earlier than 2026-08-09 09:00 |
| 788 |  | попробовать смазать подшипники вентилятора осушителя | 15min | 2026-08-18 09:00 A | 2026-08-18 09:15 A |  | 100% |  | start no earlier than 2026-08-18 09:00 |
| 789 |  | замер размеров вентилятора | 15min | 2026-08-18 09:00 A | 2026-08-18 09:15 A |  | 100% |  | start no earlier than 2026-08-18 09:00 |
| 790 |  | подбор аналога вентилятора погабариту | 1h | 2026-08-18 09:15 A | 2026-08-18 10:15 A | 789 | 100% |  | start no earlier than 2026-08-14 09:00 |
| 791 |  | заменить вентилятор на осушителе (от охладителя, лежит на компрессоре). В 6 утра остановка | 2h | 2026-08-19 09:00 A | 2026-08-19 11:00 A |  | 100% |  | start no earlier than 2026-08-19 09:00 |
| 792 |  | Заявка в сервис не работает осушитель | 10min | 2026-08-31 09:00 | 2026-08-31 09:10 |  |  | 137.57d | start no earlier than 2026-08-31 09:00 |
| 793 |  | взять у нас в кабинете крышки (обработать) защиты на вентиляторы охладителя | 4h | 2026-09-01 09:00 | 2026-09-01 13:00 |  |  |  | start no earlier than 2026-09-01 09:00 |
| 794 |  | заменить резинки на красном баке (выдать, если будет остановка, поменять) | 1h | 2026-09-01 09:00 | 2026-09-01 10:00 |  |  |  | start no earlier than 2026-09-01 09:00 |
| 795 |  | на приемной горловине красного смесителя закрутить второй ленточный хомут, чтобы не выпадала мука | 1h | 2026-08-06 09:00 A | 2026-08-06 10:00 A |  | 100% |  | start no earlier than 2026-08-06 08:00 |
| 796 | 2.39 | **закрутить болты на петлях двери печи** | 0.12d | 2026-09-03 09:00 | 2026-09-03 10:00 |  |  | 134.47d |  |
| 797 |  | попробовать закрутить на винтовые заклепки | 1h | 2026-09-03 09:00 | 2026-09-03 10:00 |  |  | 134.47d | start no earlier than 2026-09-03 09:00 |
| 798 |  | установка фильтров на подачу жира (осн. + резерв) | 2h | 2026-08-06 08:00 A | 2026-08-06 10:00 A |  | 100% |  | start no earlier than 2026-08-06 08:00 |
| 799 |  | эксперимент с лейкой подача жиров | 1h | 2026-08-06 08:00 A | 2026-08-06 09:00 A |  | 100% |  | start no earlier than 2026-08-06 08:00 |
| 800 | 2.42 | **по аналогии второй линии насверлить сверлом 1 мм отверстия в трубке для жиров** | 0.12d | 2026-08-06 09:00 A | 2026-08-06 10:00 A |  | 100% |  |  |
| 801 |  | установка трубки на жиры | 1h | 2026-08-06 09:00 A | 2026-08-06 10:00 A |  | 100% |  | start no earlier than 2026-08-06 09:00 |
| 802 |  | поломоечная машинка вырезать из силикона шторку захвата воды | 2h | 2026-08-03 08:00 A | 2026-08-03 10:00 A |  | 100% |  | start no earlier than 2026-08-03 08:00 |
| 803 | 2.44 | **втулка фторопласт заказать 26х44х5** | 1d? | 2026-08-04 09:00 A | 2026-08-04 18:00 A |  | 100% |  |  |
| 804 |  | счет доставка | 1d? | 2026-08-04 09:00 A | 2026-08-04 18:00 A |  | 100% |  | start no earlier than 2026-08-04 08:00 |
| 805 | 2.45 | **посмотреть вентилятор Сапелина у нас в кабинете (не работает)** | 1d? | 2026-08-04 09:00 A | 2026-08-04 18:00 A |  | 100% |  |  |
| 806 |  | сгорел двигатель | 1d? | 2026-08-04 09:00 A | 2026-08-04 18:00 A |  | 100% |  | start no earlier than 2026-08-04 08:00 |
| 807 |  | слить конденсат с компрессора | 0.5h | 2026-08-02 09:00 A | 2026-08-02 09:30 A |  | 100% |  | start no earlier than 2026-08-02 09:00 |
| 808 | 2.47 | **продолжить изготовление приемной горловины по аналогии 3 ц.** | 4h? | 2026-08-10 09:00 | 2026-08-10 13:00 |  | 86% |  |  |
| 809 |  | заказать прут нерж. | 1d? | 2026-07-29 09:00 A | 2026-07-29 18:00 A |  | 100% |  | start no earlier than 2026-07-29 09:00 |
| 810 |  | контроль доставка | 5min | 2026-08-18 09:00 A | 2026-08-18 09:05 A |  | 100% |  | start no earlier than 2026-08-18 09:00 |
| 811 |  | изготовление / установка | 4h | 2026-08-20 09:00 A | 2026-08-20 13:00 A | 810 | 100% |  | start no earlier than 2026-08-20 09:00 |
| 812 |  | Корректировка горловины, сделать более плотные зазоры, посмотреть по месту | 2h | 2026-09-03 09:00 | 2026-09-03 11:00 |  |  | 134.34d | start no earlier than 2026-09-03 09:00 |
| 813 |  | прикрутить лотки охладителя, чтобы не задевали сетку (лишние отверстия заварить) | 2h | 2026-08-03 09:00 A | 2026-08-03 11:00 A |  | 100% |  | start no earlier than 2026-08-03 09:00 |
| 814 |  | чистка фильтров кондиционеров | 1h | 2026-08-01 09:00 A | 2026-08-01 10:00 A |  | 100% |  | start no earlier than 2026-08-01 09:00 |
| 815 |  | слить конденсат с компрессора | 1h | 2026-07-30 08:00 A | 2026-07-30 09:00 A |  | 100% |  | start no earlier than 2026-07-30 08:00 |
| 816 |  | слив конденсата с кондиционеров прочистить трубу | 2h | 2026-08-01 09:00 A | 2026-08-01 11:00 A |  | 100% |  | start no earlier than 2026-08-01 09:00 |
| 817 |  | Настройка частотника питателя (созвон с Валентином) | 1h | 2026-07-31 09:00 A | 2026-07-31 10:00 A |  | 100% |  | start no earlier than 2026-07-31 09:00 |
| 818 |  | дверь металлическая зона выдачи ГП ревизия, плоход закрывается | 1h | 2026-07-15 09:00 A | 2026-07-15 10:00 A |  | 100% |  | start no earlier than 2026-07-15 09:00 |
| 819 |  | крепление доводчик дверь входная | 1h | 2026-07-15 09:00 A | 2026-07-15 10:00 A |  | 100% |  | start no earlier than 2026-07-15 09:00 |
| 820 |  | снять меющийся, установить новый прайсчекер (лежит у мастеров) | 1h | 2026-07-15 09:00 A | 2026-07-15 10:00 A |  | 100% |  | start no earlier than 2026-07-15 09:00 |
| 821 |  | ремонт кронштейна датчик давления | 30min | 2026-07-10 09:00 A | 2026-07-10 09:30 A |  | 100% |  | start no earlier than 2026-07-10 09:00 |
| 822 |  | замерить демонтированные шнеки, заполнить ьабличку Зорькина | 1h | 2026-07-11 09:00 A | 2026-07-11 10:00 A |  | 100% |  | start no earlier than 2026-07-11 09:00 |
| 823 |  | обшить входной проем п-образным профилем (на складе лежит) | 3h | 2026-07-08 09:00 A | 2026-07-08 12:00 A |  | 100% |  | start no earlier than 2026-07-08 09:00 |
| 824 |  | чистка воздушных клапанов на септике | 1d? | 2026-07-02 09:00 A | 2026-07-02 18:00 A |  | 100% |  | start no earlier than 2026-07-02 09:00 |
| 825 |  | закрепить щиток транспортера у стены на фасовке, малый дозатор) | 1h | 2026-07-04 09:00 A | 2026-07-04 10:00 A |  | 100% |  | start no earlier than 2026-07-04 09:00 |
| 826 | 2.61 | **под экструдером масло- ревизия откуда** | 0.12d | 2026-07-03 09:00 A | 2026-07-03 10:00 A |  | 100% |  |  |
| 827 |  | заменить шланг 20мм (лежит черный на стеллаже справа, где кабель) при остановке- согласовать с мастером | 1h | 2026-07-03 09:00 A | 2026-07-03 10:00 A |  | 100% |  | start no earlier than 2026-07-03 09:00 |
| 828 |  | чистка труб сброса конденсата с кондиционеров | 2h | 2026-06-30 09:00 A | 2026-06-30 11:00 A |  | 100% |  | start no earlier than 2026-06-30 09:00 |
| 829 |  | чистка всех фильтров на кондиционеры, разобраться с питанием внутреннего блока | 1d? | 2026-06-29 09:00 A | 2026-06-29 18:00 A |  | 100% |  | start no earlier than 2026-06-29 09:00 |
| 830 |  | ТО бестром | 2h | 2026-06-30 09:00 A | 2026-06-30 11:00 A |  | 100% |  | start no earlier than 2026-06-30 09:00 |
| 831 |  | промыть внешние блоки кондиционеров | 3h | 2026-06-26 09:00 A | 2026-06-26 12:00 A |  | 100% |  | start no earlier than 2026-06-26 09:00 |
| 832 |  | вернуть кожух защиты на прекондиционер (подогнать в размер) на остановке линии | 2h | 2026-06-24 09:00 A | 2026-06-24 11:00 A |  | 100% |  | start no earlier than 2026-06-24 09:00 |
| 833 |  | подключение тепловой защиты на приточке и вытяжке | 2h | 2026-06-23 08:00 A | 2026-06-23 10:00 A |  | 100% |  | start no earlier than 2026-06-23 08:00 |
| 834 |  | заменить фильтр приточка 2 этаж и указать кол-во остатка на складе | 1h | 2026-06-20 09:00 A | 2026-06-20 10:00 A |  | 100% |  | start no earlier than 2026-06-20 09:00 |
| 835 |  | сделать защиту жировика от холода (изготовить из сенгвич панели на навесках 2ц.) жировик расскажет | 2h | 2026-06-21 09:00 A | 2026-06-21 11:00 A |  | 100% |  | start no earlier than 2026-06-21 09:00 |
| 836 |  | проверка теко 0,4 -пакет запаенный | 1h | 2026-06-18 08:00 A | 2026-06-18 09:00 A |  | 100% |  | start no earlier than 2026-06-18 08:00 |
| 837 |  | подключение датчика давления через гидрошланг | 1h | 2026-07-09 09:00 A | 2026-07-09 10:00 A |  | 100% |  | start no earlier than 2026-07-09 09:00 |
| 838 |  | чистка парогенератора | 2h | 2026-06-18 08:00 A | 2026-06-18 10:00 A |  | 100% |  | start no earlier than 2026-06-18 08:00 |
| 839 |  | слив конденсата с компрессора и продуть радиаторы и фильтры | 1h | 2026-06-20 09:00 A | 2026-06-20 10:00 A |  | 100% |  | start no earlier than 2026-06-20 09:00 |
| 840 |  | проверить, есть ли давление во всех гидроаккумуляторах на отоплении по цеху, зафиксировать с порванными мембранами | 2h | 2026-06-11 09:00 A | 2026-06-11 11:00 A |  | 100% |  | start no earlier than 2026-06-11 09:00 |

| ID | WBS | Task | Duration | Start | Finish | Predecessors | Complete | Total float | Constraint |
| --- | --- | --- | --- | --- | --- | --- | --- | --- | --- |
| 841 |  | дверь охладителя и угол - прикрутить наружний уголок 20х50 и 50х50, чтобы не резали руки (уголок на входе напротив ворот в синем складе) | 3h | 2026-06-12 09:00 A | 2026-06-12 12:00 A |  | 100% |  | start no earlier than 2026-06-12 09:00 |
| 842 |  | взять на складе специальный п-образный профиль и обшить дверной проем вход в охладитель | 2h | 2026-07-05 09:00 A | 2026-07-05 11:00 A |  | 100% |  | start no earlier than 2026-07-05 09:00 |
| 843 |  | проверка гидроаккумулятора на водоподготовке | 0.5h | 2026-06-11 09:00 A | 2026-06-11 09:30 A |  | 100% |  | start no earlier than 2026-06-11 09:00 |
| 844 |  | чистка парогенератора | 2h | 2026-06-11 09:00 A | 2026-06-11 11:00 A |  | 100% |  | start no earlier than 2026-06-11 09:00 |
| 845 | 2.79 | **посмотреть на желтом складе шибер, если найдем устанавливаем на аквариум зона экструдера** | 0.12d | 2026-06-12 09:00 A | 2026-06-12 10:00 A |  | 100% |  |  |
| 846 |  | монтаж воздуховод под углом на шибер- настройка с операторами направление обдува | 1h | 2026-06-12 09:00 A | 2026-06-12 10:00 A |  | 100% |  | start no earlier than 2026-06-12 09:00 |
| 847 | 2.80 | **ворота выход готовой продукции (прикрутить ролик, ролик у нас в кабинете)** | 0.88d? | 2026-06-11 09:00 A | 2026-06-11 17:00 A |  | 100% |  |  |
| 848 |  | выкл. Ручной режим | 1d? | 2026-06-11 09:00 A | 2026-06-11 17:00 A |  | 100% |  | start no earlier than 2026-06-11 09:00 |
| 849 |  | промерить шнеки / гильзы износ. Маркировать | 1h | 2026-07-08 09:00 A | 2026-07-08 10:00 A |  | 100% |  | start no earlier than 2026-07-08 09:00 |
| 850 |  | сверлить сетку от фильеры, сверлом на станке, все отверстия. | 4h | 2026-06-06 09:00 A | 2026-06-06 13:00 A |  | 100% |  | start no earlier than 2026-06-06 09:00 |
| 851 | 2.83 | **заменаить сальник редуктора транспортер №3** | 0.12d | 2026-06-18 09:00 A | 2026-06-18 10:00 A |  | 100% |  |  |
| 852 |  | заменаить редутор из зип | 1h | 2026-06-18 09:00 A | 2026-06-18 10:00 A |  | 100% |  | start no earlier than 2026-06-18 09:00 |
| 853 |  | замена сальник на снятом | 1h | 2026-06-18 09:00 A | 2026-06-18 10:00 A |  | 100% |  | start no earlier than 2026-06-19 09:00 |
| 854 |  | законтрогаить шпильки-ножки запайщиков | 1h | 2026-06-06 09:00 A | 2026-06-06 10:00 A |  | 100% |  | start no earlier than 2026-06-06 09:00 |
| 855 | 2.85 | **нория квадропак -устранить просыпание** | 0.88d? | 2026-06-04 09:00 A | 2026-06-04 17:00 A |  | 100% |  |  |
| 856 |  | добавить частоту частотника до 70 на норию | 1d? | 2026-06-04 09:00 A | 2026-06-04 17:00 A |  | 100% |  | start no earlier than 2026-06-04 09:00 |
| 857 |  | Замена шнеков (усиленные) - по уровню | 4h | 2026-06-04 09:00 A | 2026-06-04 13:00 A |  | 100% |  | start no earlier than 2026-06-04 09:00 |
| 858 |  | монтаж воздуховод приточный в площадку загрузки смесителя | 3h | 2026-06-05 09:00 A | 2026-06-05 12:00 A |  | 100% |  | start no earlier than 2026-06-05 09:00 |
| 859 |  | очистка вентилятора окно экструдер | 40min | 2026-06-04 09:00 A | 2026-06-04 09:40 A |  | 100% |  | start no earlier than 2026-06-04 09:00 |
| 860 | 2.89 | **доп освещение зона охладитель** | 4.75d? | 2026-06-09 09:00 | 2026-06-15 16:00 |  | 100% |  |  |
| 861 |  | спланировать монтаж / проверить наличие матералов | 20min | 2026-06-25 09:00 A | 2026-06-25 09:20 A |  | 100% |  | start no earlier than 2026-06-25 09:00 |
| 862 |  | заказать | 1d? | 2026-06-10 09:00 A | 2026-06-10 18:00 A |  | 100% |  | start no earlier than 2026-06-10 09:00 |
| 863 |  | монтаж | 2h | 2026-08-06 09:00 A | 2026-08-06 11:00 A | 861 | 100% |  | start no earlier than 2026-08-06 09:00 |
| 864 |  | отключить двигатель зиплока бестром | 1h | 2026-06-12 09:00 A | 2026-06-12 10:00 A |  | 100% |  | start no earlier than 2026-06-12 09:00 |
| 865 |  | ж гардероб душ кабина осмотр гидрозатвор - сильный запах | 2h | 2026-05-30 09:00 A | 2026-05-30 11:00 A |  | 100% |  | start no earlier than 2026-05-30 09:00 |
| 866 |  | ремонт кресло , паук находится на складе у Веры | 1h | 2026-06-13 09:00 A | 2026-06-13 10:00 A |  | 100% |  | start no earlier than 2026-06-13 09:00 |
| 867 |  | ревизия нихром запайщик | 1h | 2026-05-29 09:00 A | 2026-05-29 10:00 A |  | 100% |  | start no earlier than 2026-05-29 08:00 |
| 868 |  | штабелер 2ц ревизия колес | 1h | 2026-06-01 09:00 A | 2026-06-01 10:00 A |  | 100% |  | start no earlier than 2026-06-01 09:00 |
| 869 | 2.95 | **ремонт эл котел №3 охладитель** | 72.25d? | 2026-06-05 09:00 A | 2026-09-01 11:00 |  | 90% | 136.34d |  |
| 870 |  | заказать плату | 1d? | 2026-07-15 09:00 A | 2026-07-15 18:00 A |  | 100% |  | start no earlier than 2026-07-15 09:00 |
| 871 |  | замена силовой платы зота в районе мойки экструдера (плата на складе) -проверка | 2h | 2026-08-09 09:00 A | 2026-08-09 11:00 A |  | 100% |  | start no earlier than 2026-08-09 09:00 |
| 872 |  | котел №3 проверка платы силовой управления тенами (после откл управления перегрелся пошел дым) на складе есть платы 2 шт. для ЗОТА. Слава плату заменил грешит на д температуры | 2h | 2026-09-01 09:00 | 2026-09-01 11:00 |  |  | 136.34d | start no earlier than 2026-09-01 09:00 |
| 873 |  | заказать плату управления | 1d? | 2026-06-05 09:00 A | 2026-06-05 18:00 A |  | 100% |  | start no earlier than 2026-06-05 09:00 |
| 874 |  | замена задних подшипников на прекондиционере (посмотреть итальянские на складе) | 7h | 2026-05-26 09:00 A | 2026-05-26 16:00 A |  | 100% |  | start no earlier than 2026-05-26 09:00 |
| 875 |  | перемотать трубы скотчем серым и по низу стык улиток "загерметизировать" | 2h | 2026-05-25 08:00 A | 2026-05-25 10:00 A |  | 100% |  | start no earlier than 2026-05-25 08:00 |
| 876 | 2.98 | **изготовить мойка малая из нерж** | 0.38d | 2026-06-01 08:00 A | 2026-06-01 12:00 A |  | 100% |  |  |
| 877 |  | подключить мойку на месте (по телефону обсудим) | 4h | 2026-06-01 08:00 A | 2026-06-01 12:00 A |  | 100% |  | start no earlier than 2026-06-01 08:00 |
| 878 | 2.99 | **дополнительное освещение в зоне жиров** | 6.5d | 2026-05-26 09:00 A | 2026-06-01 13:00 |  | 100% |  |  |
| 879 |  | заказ светильников | 1h | 2026-05-26 09:00 A | 2026-05-26 10:00 A |  | 100% |  | start no earlier than 2026-05-26 09:00 |
| 880 |  | монтаж | 4h | 2026-06-01 09:00 A | 2026-06-01 13:00 A |  | 100% |  | start no earlier than 2026-06-01 09:00 |
| 881 |  | подключить к автомату на мойке | 0.5h | 2026-06-04 09:00 A | 2026-06-04 09:30 A |  | 100% |  | start no earlier than 2026-06-04 09:00 |
| 882 |  | подключить пк мастеров через ИБП (согласовать с мастером 1 цеха) | 1h | 2026-05-25 09:00 A | 2026-05-25 10:00 A |  | 100% |  | start no earlier than 2026-05-25 08:00 |
| 883 |  | заменить помпу на термопоте в кухне | 1h | 2026-05-27 09:00 A | 2026-05-27 10:00 A |  | 100% |  | start no earlier than 2026-05-27 09:00 |
| 884 |  | лопнул шланг от насосной станции до редуктора- заменить | 1h | 2026-05-25 08:00 A | 2026-05-25 09:00 A |  | 100% |  | start no earlier than 2026-05-25 08:00 |
| 885 |  | установить влагоотделитель на квадропак | 1h | 2026-05-25 08:00 A | 2026-05-25 09:00 A |  | 100% |  | start no earlier than 2026-05-25 08:00 |
| 886 |  | закрепить монтажную коробку в коридоре до жировика слева, от кондиционера | 1h | 2026-05-22 09:00 A | 2026-05-22 10:00 A |  | 100% |  | start no earlier than 2026-05-22 09:00 |
| 887 |  | закрепить на доп. Клипсы трубу-воздух к стене за бестромом | 1h | 2026-05-23 09:00 A | 2026-05-23 10:00 A |  | 100% |  | start no earlier than 2026-05-23 09:00 |
| 888 |  | заменить сетку печки (находиться в слесарке) | 3h | 2026-05-24 09:00 A | 2026-05-24 12:00 A |  | 100% |  | start no earlier than 2026-05-24 09:00 |
| 889 |  | уложить красиво и закрепить гофру от нории до красного смесителя | 2h | 2026-05-24 09:00 A | 2026-05-24 11:00 A |  | 100% |  | start no earlier than 2026-05-24 09:00 |
| 890 |  | взять ножевой узел с желтого склада и фильеры, подготовить и передать во второй цех на экструдер | 1h | 2026-05-21 09:00 A | 2026-05-21 10:00 A |  | 100% |  | start no earlier than 2026-05-21 08:00 |
| 891 |  | проверить все лотки на охладителе, чтобы не задевали сетку- если нужно поднять. | 1h | 2026-05-21 09:00 A | 2026-05-21 10:00 A |  | 100% |  | start no earlier than 2026-05-21 08:00 |
| 892 |  | чистка парогенератора, если нужно замена электродов | 2h | 2026-05-21 08:00 A | 2026-05-21 10:00 A |  | 100% |  | start no earlier than 2026-05-21 08:00 |
| 893 |  | чистка фильтра редуктора экструдера, проверка уровня масла | 1h | 2026-05-21 08:00 A | 2026-05-21 09:00 A |  | 100% |  | start no earlier than 2026-05-21 08:00 |
| 894 |  | проверить пневмоцилиндры на встряхивателях квадропака | 1h | 2026-05-21 08:00 A | 2026-05-21 09:00 A |  | 100% |  | start no earlier than 2026-05-21 08:00 |
| 895 |  | проверка токов на печи, если просадка проверяем перемычки, тены | 1h | 2026-05-21 09:00 A | 2026-05-21 10:00 A |  | 100% |  | start no earlier than 2026-05-21 08:00 |
| 896 |  | коротит на баке жиров все проверить | 1h | 2026-05-21 09:00 A | 2026-05-21 10:00 A |  | 100% |  | start no earlier than 2026-05-21 08:00 |
| 897 |  | в зоне фасовки сделать конструкцию, чтобы не выпадала макулатура | 6h | 2026-08-31 09:00 | 2026-08-31 15:00 |  |  | 136.97d | start no earlier than 2026-08-31 09:00 |
| 898 |  | закрепить доводчик на входной двери | 1h | 2026-05-23 09:00 A | 2026-05-25 10:00 A |  | 100% |  | start no earlier than 2026-05-23 09:00 |
| 899 |  | установить розетку для палетооботчика на его колону | 2h | 2026-05-18 09:00 A | 2026-05-18 11:00 A |  | 100% |  | start no earlier than 2026-05-18 09:00 |
| 900 | 2.118 | **ИБП установить на принтер SAVEMA** | 5.25d | 2026-05-19 09:00 A | 2026-05-26 11:00 A |  | 100% |  |  |
| 901 |  | подбор и заявка ИБП | 1h | 2026-05-19 09:00 A | 2026-05-19 10:00 A |  | 100% |  | start no earlier than 2026-05-19 09:00 |
| 902 |  | контроль поставки | 15min | 2026-05-26 09:00 A | 2026-05-26 09:15 A |  | 100% |  | start no earlier than 2026-05-26 09:00 |
| 903 |  | монтаж и подключение в шкафу | 2h | 2026-05-26 09:00 A | 2026-05-26 11:00 A | 902 | 100% |  | start no earlier than 2026-05-26 09:00 |
| 904 | 2.119 | **переместить на склад ЗИП палет сетка, зарядка АКБ штабелера** | 0.12d | 2026-06-01 09:00 A | 2026-06-01 10:00 A |  | 100% |  |  |
| 905 |  | зарядку АКБ переместить в контейнер, она находится в мойке зона экструдера | 1h | 2026-06-01 09:00 A | 2026-06-01 10:00 A |  | 100% |  | start no earlier than 2026-06-01 09:00 |
| 906 | 2.120 | **бестром замена линейный подшипник прижима красных ремней** | 30.5d | 2026-05-15 09:00 A | 2026-06-18 13:00 A |  | 100% |  |  |
| 907 |  | заявка | 1h | 2026-05-15 09:00 A | 2026-05-15 10:00 A |  | 100% |  | start no earlier than 2026-05-15 09:00 |
| 908 |  | доставка контроль | 15min | 2026-05-27 10:00 A | 2026-05-27 10:15 A | 907FS+10d | 100% |  | start no earlier than 2026-05-14 08:00 |
| 909 |  | замена | 4h | 2026-06-18 09:00 A | 2026-06-18 13:00 A | 908 | 100% |  | start no earlier than 2026-06-18 09:00 |
| 910 |  | осмотр цепи муфты редуктора экструдера | 1h | 2026-05-14 09:00 A | 2026-05-14 10:00 A |  | 100% |  | start no earlier than 2026-05-14 09:00 |

| ID | WBS | Task | Duration | Start | Finish | Predecessors | Complete | Total float | Constraint |
| --- | --- | --- | --- | --- | --- | --- | --- | --- | --- |
| 911 |  | Линия 3 на жирах нужно поменять колеса на транспортёре, который идет на охладитель | 1h | 2026-05-14 09:00 A | 2026-05-14 10:00 A |  | 100% |  | start no earlier than 2026-05-14 09:00 |
| 912 |  | осмотр прекондиционер "звон" | 30min | 2026-05-14 09:00 A | 2026-05-14 09:30 A |  | 100% |  | start no earlier than 2026-05-14 09:00 |
| 913 | 2.124 | **заменить гофра унитаз правый отсек** | 20.12d | 2026-05-13 09:00 A | 2026-06-04 10:00 A |  | 100% |  |  |
| 914 |  | заявка гофра | 15min | 2026-05-13 09:00 A | 2026-05-13 09:15 A |  | 100% |  | start no earlier than 2026-05-13 09:00 |
| 915 |  | доставка | 5d | 2026-05-13 09:15 A | 2026-05-18 09:15 A | 914 | 100% |  | start no earlier than 2026-05-12 08:00 |
| 916 |  | замена | 1h | 2026-06-04 09:00 A | 2026-06-04 10:00 A | 915 | 100% |  | start no earlier than 2026-06-04 09:00 |
| 917 |  | замена смазка шприц на экструдере | 30min | 2026-05-13 09:00 A | 2026-05-13 09:30 A |  | 100% |  | start no earlier than 2026-05-13 09:00 |
| 918 |  | замена передний подшипник + набивка прекондиционер | 1h | 2026-05-14 09:00 A | 2026-05-14 10:00 A |  | 100% |  | start no earlier than 2026-05-14 09:00 |
| 919 |  | прикрутить лоток выше на 1 ярусе, задевает сетку со сторону редуктора | 1h | 2026-05-08 08:00 A | 2026-05-08 09:00 A |  | 100% |  | start no earlier than 2026-05-08 08:00 |
| 920 |  | взять шайбу у нас в кабинете и шлифануть одну сторону | 1h | 2026-05-08 09:00 A | 2026-05-08 10:00 A |  | 100% |  | start no earlier than 2026-05-08 09:00 |
| 921 |  | смотровое окно на загрузке прекондиционера установить | 4h | 2026-08-25 09:00 A | 2026-08-25 13:00 A |  | 100% |  | start no earlier than 2026-08-31 09:00 |
| 922 |  | добавить воду в систему отопления зота охладитель | 1h | 2026-05-09 09:00 A | 2026-05-09 10:00 A |  | 100% |  | start no earlier than 2026-05-09 09:00 |
| 923 |  | монтаж сетки на палетообмотчике | 4h | 2026-05-14 09:00 A | 2026-05-14 13:00 A |  | 100% |  | start no earlier than 2026-05-14 09:00 |
| 924 |  | Собрать стул, находится в кабинете мастеров 2 цех | 1h | 2026-05-13 09:00 A | 2026-05-13 10:00 A |  | 100% |  | start no earlier than 2026-05-13 09:00 |
| 925 | 2.133 | **взять у нас на складе инсектицидные светильники и повесить их во 2 цехе, где нет** | 1.12d | 2026-05-12 09:00 A | 2026-05-13 10:00 A |  | 100% |  |  |
| 926 |  | ремонт | 2h | 2026-05-12 09:00 A | 2026-05-12 11:00 A |  | 100% |  | start no earlier than 2026-05-12 09:00 |
| 927 |  | монтаж ламп / заполнить в журнал мастера | 1h | 2026-05-13 09:00 A | 2026-05-13 10:00 A |  | 100% |  | start no earlier than 2026-05-13 09:00 |
| 928 |  | герметиком замазать гофру на унитазах (запах) | 1h | 2026-05-07 08:00 A | 2026-05-07 09:00 A |  | 100% |  | start no earlier than 2026-05-07 08:00 |
| 929 |  | заменить фильтр на приточку 2 этаж | 1h | 2026-05-07 08:00 A | 2026-05-07 09:00 A |  | 100% |  | start no earlier than 2026-05-07 08:00 |
| 930 |  | ревизия перемычек, тен на печи - замена | 4h | 2026-05-07 09:00 A | 2026-05-07 13:00 A |  | 100% |  | start no earlier than 2026-05-07 08:00 |
| 931 | 2.137 | **повесить на места светильники инсектицидные (замена ламп)** | 1d? | 2026-05-11 09:00 | 2026-05-11 18:00 |  | 100% |  |  |
| 932 | 2.137.1 | **заказать досели** | 0.25d | 2026-05-12 09:00 A | 2026-05-12 11:00 A |  | 100% |  |  |
| 933 |  | ремонт не рабочих светильников | 2h | 2026-05-12 09:00 A | 2026-05-12 11:00 A |  | 100% |  | start no earlier than 2026-05-12 09:00 |
| 934 |  | уложить кабель в гофре вдоль экструдера в лоток | 2h | 2026-05-04 09:00 A | 2026-05-04 11:00 A |  | 100% |  | start no earlier than 2026-05-04 08:00 |
| 935 | 2.139 | **подготовить ТРМ для парогенератора цех 2** | 0.12d | 2026-05-16 09:00 A | 2026-05-16 10:00 A |  | 100% |  |  |
| 936 |  | установить на остановке ТРМ (который сняли отдать Дедову для восстановления) восстановить кнопку | 1h | 2026-05-16 09:00 A | 2026-05-16 10:00 A |  | 100% |  | start no earlier than 2026-05-16 09:00 |
| 937 |  | повесить светильники 3шт. | 1h | 2026-05-04 09:00 A | 2026-05-04 10:00 A |  | 100% |  | start no earlier than 2026-05-04 08:00 |
| 938 |  | монтаж свет на фасовке | 8h | 2026-05-05 09:00 A | 2026-05-05 17:00 A |  | 100% |  | start no earlier than 2026-05-05 09:00 |
| 939 |  | заменить кулер в ШУ на жирах | 1h | 2026-04-29 08:00 A | 2026-04-29 09:00 A |  | 100% |  | start no earlier than 2026-04-29 08:00 |
| 940 |  | заменить 3х ходовой кран и фитинги с гайкой на жирах | 1h | 2026-04-29 09:00 A | 2026-04-29 10:00 A |  | 100% |  | start no earlier than 2026-04-30 09:00 |
| 941 |  | закрепить на подножке резинку на штабелере зона экструдера (можно на саморез/клепки) | 1h | 2026-04-29 08:00 A | 2026-04-29 09:00 A |  | 100% |  | start no earlier than 2026-04-29 08:00 |
| 942 | 2.145 | **заменить сетку для печи из зип** | 0.38d | 2026-05-05 09:00 A | 2026-05-05 12:00 A |  | 100% |  |  |
| 943 | 2.145.1 | **заменить сетку , которую сняли с печи** | 3h | 2026-05-05 09:00 A | 2026-05-05 12:00 A |  | 100% |  |  |
| 944 |  | ремонт сетки | 2h | 2026-05-05 09:00 A | 2026-05-05 11:00 A |  | 100% |  | start no earlier than 2026-05-05 09:00 |
| 945 |  | под норией сыпит сырье устранить | 4h | 2026-04-30 09:00 A | 2026-04-30 13:00 A |  | 100% |  | start no earlier than 2026-04-30 09:00 |
| 946 |  | устранить течь, сброс пара под прекондиционером | 1h | 2026-05-01 09:00 A | 2026-05-01 10:00 A |  | 100% |  | start no earlier than 2026-05-01 09:00 |
| 947 |  | устранить течь редуктор прекондиционера | 5h | 2026-04-29 09:00 A | 2026-04-29 15:00 A |  | 100% |  | start no earlier than 2026-04-29 08:00 |
| 948 |  | почистить фильтр на поломоечной машинке | 1h | 2026-04-29 09:00 A | 2026-04-29 10:00 A |  | 100% |  | start no earlier than 2026-04-29 09:00 |
| 949 |  | Полное ТО квадропак (чистка тен, смазка штоков пневмоцилиндров, шприцевание подшипников) | 3h | 2026-04-28 09:00 A | 2026-04-28 12:00 A |  | 100% |  | start no earlier than 2026-04-28 09:00 |
| 950 |  | Полное ТО бестром (чистка тен, смазка штоков пневмоцилиндров, шприцевание подшипников) | 2h | 2026-04-28 09:00 A | 2026-04-28 11:00 A |  | 100% |  | start no earlier than 2026-04-28 09:00 |
| 951 |  | демонтаж инсектютерной ламп на очистку / продуть | 1h | 2026-04-27 08:00 A | 2026-04-27 09:00 A |  | 100% |  | start no earlier than 2026-04-27 08:00 |
| 952 |  | ремонт инсектецидных ламп взять у Мастера в каб. (проверить контакты соединения самих лам, дросели). 3 исправно/1 сломан дросель | 1h | 2026-04-29 09:00 A | 2026-04-29 10:00 A |  | 100% |  | start no earlier than 2026-04-29 09:00 |
| 953 | 2.154 | **замена дроселя инсекцидной лампы** | 20.25d | 2026-04-30 09:00 A | 2026-05-25 11:00 A |  | 100% |  |  |
| 954 |  | заявка | 15min | 2026-04-30 09:00 A | 2026-04-30 09:15 A |  | 100% |  | start no earlier than 2026-04-30 08:00 |
| 955 |  | замена | 3h | 2026-05-25 08:00 A | 2026-05-25 11:00 A |  | 100% |  | start no earlier than 2026-05-25 08:00 |
| 956 |  | доставка | 10d | 2026-05-04 09:00 A | 2026-05-15 18:00 A | 954 | 100% |  | start no earlier than 2026-05-04 09:00 |
| 957 |  | замена | 1h | 2026-05-12 09:00 A | 2026-05-12 10:00 A |  | 100% |  | start no earlier than 2026-05-12 09:00 |
| 958 |  | поликарбанат в зоне седла жировика оторвался, ремонт | 1h | 2026-04-30 09:00 A | 2026-04-30 10:00 A |  | 100% |  | start no earlier than 2026-04-30 09:00 |
| 959 |  | зачистить и покрасить решетку на входе в 2 ц. | 4h | 2026-04-28 09:00 A | 2026-04-28 13:00 A |  | 100% |  | start no earlier than 2026-04-28 09:00 |
| 960 |  | поднять лотки на 10 мм на охладителе со стороны фасовки (видео вышлю) | 1h | 2026-04-24 09:00 A | 2026-04-24 10:00 A |  | 100% |  | start no earlier than 2026-04-24 08:00 |
| 961 |  | добавить в систему отопления котла в мойке и в охладителе воды | 2h | 2026-04-24 09:00 A | 2026-04-24 11:00 A |  | 100% |  | start no earlier than 2026-04-24 09:00 |
| 962 |  | на углы установить отбойники выход с зоны экструдера | 2h | 2026-04-23 09:00 A | 2026-04-23 11:00 A |  | 100% |  | start no earlier than 2026-04-23 08:00 |
| 963 |  | сделать ТО Бестром (чистка тен и т.д.) | 2h | 2026-04-22 08:00 A | 2026-04-22 10:00 A |  | 100% |  | start no earlier than 2026-04-22 08:00 |
| 964 |  | собрать кабинку в мужской раздевалке, она там стоит в коробке | 1h | 2026-04-23 09:00 A | 2026-04-23 10:00 A |  | 100% |  | start no earlier than 2026-04-23 09:00 |
| 965 |  | заменить датчик переполнения на загрузке с синего бункера, на складе взять | 1h | 2026-04-29 09:00 A | 2026-04-29 10:00 A |  | 100% |  | start no earlier than 2026-04-29 09:00 |
| 966 | 2.163 | **включить все исектицидные светильники по цеху, проверить есть ли напряжение в розетках** | 0.12d | 2026-04-23 09:00 A | 2026-04-23 10:00 A |  | 100% |  |  |
| 967 |  | проверить напряжение в розетке светильника на фасовке | 1h | 2026-04-23 09:00 A | 2026-04-23 10:00 A |  | 100% |  | start no earlier than 2026-04-23 08:00 |
| 968 | 2.164 | **установить кольцо "вентури" в фильеру** | 2.38d? | 2026-05-04 09:00 | 2026-05-06 12:00 |  | 78% |  |  |
| 969 |  | определить диаметр отверстия кольца | 1h | 2026-04-27 09:00 A | 2026-04-27 10:00 A |  | 100% |  | start no earlier than 2026-04-27 09:00 |
| 970 |  | заявка на изготовление | 1h | 2026-04-28 10:00 A | 2026-04-28 11:00 A | 969FS+1d | 100% |  | start no earlier than 2026-04-20 08:00 |
| 971 |  | контроль | 1h | 2026-05-04 09:00 A | 2026-05-04 10:00 A | 970FS+1d | 100% |  | start no earlier than 2026-05-04 09:00 |
| 972 |  | заявка на выжечь проставку лдя кольца | 30min | 2026-07-15 09:00 A | 2026-07-15 09:30 A |  | 100% |  | start no earlier than 2026-07-15 09:00 |
| 973 |  | контроль доставки | 0d | 2026-07-22 09:30 A | 2026-07-22 09:30 A | 972FS+5d | 100% |  | start no earlier than 2026-07-15 09:00 |
| 974 |  | провести тест | 1h | 2026-08-31 09:00 | 2026-08-31 10:00 |  |  | 137.47d | start no earlier than 2026-08-31 09:00 |
| 975 |  | замена фильтр вода подача в накопитель | 1h | 2026-04-21 09:00 A | 2026-04-21 10:00 A |  | 100% |  | start no earlier than 2026-04-21 09:00 |
| 976 |  | замена потускневших ламп в инсекютере. Мастеру сообщить кол-во. б/у складывать в коробку | 2h | 2026-05-04 09:00 A | 2026-05-04 11:00 A |  | 100% |  | start no earlier than 2026-05-04 09:00 |
| 977 | 2.167 | **ограждение палетообмотчика** | 22.25d | 2026-04-17 08:00 A | 2026-05-14 11:00 A |  | 100% |  |  |
| 978 | 2.167.1 | **подготовка и монтаж рамы** | 8.5d | 2026-04-17 08:00 A | 2026-04-27 13:00 A |  | 100% |  |  |
| 979 |  | изготовить ограждения для палетообмотчика (размеры обговорим) | 10h | 2026-04-17 08:00 A | 2026-04-17 18:00 A |  | 100% |  | start no earlier than 2026-04-17 08:00 |
| 980 |  | очистка, покраска рам ограждения. Быстросохн грунт-эмаль по ржавчине 3в1. | 4h | 2026-04-20 08:00 A | 2026-04-20 12:00 A |  | 100% |  | start no earlier than 2026-04-20 08:00 |

| ID | WBS | Task | Duration | Start | Finish | Predecessors | Complete | Total float | Constraint |
| --- | --- | --- | --- | --- | --- | --- | --- | --- | --- |
| 981 |  | монтаж рамы ограждения | 4h | 2026-04-27 09:00 A | 2026-04-27 13:00 A | 980 | 100% |  | start no earlier than 2026-04-27 09:00 |
| 982 |  | приварить пластины под стойки ограждения и закрепить к полу, чтобы оператор был вне зоны опасности) | 6h | 2026-04-25 09:00 A | 2026-04-25 15:00 A |  | 100% |  | start no earlier than 2026-04-25 09:00 |
| 983 | 2.167.2 | **обклеить рамы лентой** | 19.25d | 2026-04-21 09:00 A | 2026-05-14 11:00 A |  | 100% |  |  |
| 984 |  | заявка клейка лента сигнальная черно-желтая / негабарит | 15min | 2026-04-21 09:00 A | 2026-04-21 09:15 A |  | 100% |  | start no earlier than 2026-04-21 09:00 |
| 985 |  | доставка | 10d | 2026-04-21 09:15 A | 2026-05-04 09:15 A | 984 | 100% |  | start no earlier than 2026-04-20 08:00 |
| 986 |  | монтаж ленты черно-желтой | 2h | 2026-05-14 09:00 A | 2026-05-14 11:00 A | 985 | 100% |  | start no earlier than 2026-05-14 09:00 |
| 987 | 2.167.3 | **монтаж сетки на раму** | 10.53d | 2026-04-21 09:00 A | 2026-05-04 14:15 A |  | 100% |  |  |
| 988 |  | заявка сетка для ограждения | 15min | 2026-04-21 09:00 A | 2026-04-21 09:15 A |  | 100% |  | start no earlier than 2026-04-21 09:00 |
| 989 |  | доставка сетка | 10d | 2026-04-21 09:15 A | 2026-05-04 09:15 A | 988 | 100% |  | start no earlier than 2026-04-20 08:00 |
| 990 |  | монтаж сетка | 4h | 2026-05-04 09:15 A | 2026-05-04 14:15 A | 989 | 100% |  | start no earlier than 2026-04-20 08:00 |
| 991 |  | воздухозабоник циклона отпилить и вернуть как было раньше | 1h | 2026-04-28 09:00 A | 2026-04-28 10:00 A |  | 100% |  | start no earlier than 2026-04-28 09:00 |
| 992 |  | проверка всех гидроаккумуляторов парогенератор, в вент комнате и отопительные | 2h | 2026-04-17 09:00 A | 2026-04-17 11:00 A |  | 100% |  | start no earlier than 2026-04-17 08:00 |
| 993 |  | сборка полетообмотчика на фасовке | 1h | 2026-04-16 09:00 A | 2026-04-16 10:00 A |  | 100% |  | start no earlier than 2026-04-16 09:00 |
| 994 |  | заменить ремень на охладителе | 1h | 2026-04-15 09:00 A | 2026-04-15 10:00 A |  | 100% |  | start no earlier than 2026-04-15 08:00 |
| 995 |  | оторвался контроллер мониторинга на ШУ экструдера | 1h | 2026-04-15 09:00 A | 2026-04-15 10:00 A |  | 100% |  | start no earlier than 2026-04-15 08:00 |
| 996 | 2.173 | **сделать горловину на быстросъемах прекондиционер** | 4.88d? | 2026-04-16 09:00 | 2026-04-21 17:00 |  | 50% |  |  |
| 997 |  | заказать защелки | 1d? | 2026-08-31 09:00 | 2026-08-31 18:00 |  |  | 136.59d | start no earlier than 2026-08-31 09:00 |
| 998 |  | установка | 1d? | 2026-08-20 09:00 A | 2026-08-20 17:00 A |  | 100% |  | start no earlier than 2026-09-02 09:00 |
| 999 |  | перенести светильник квадропака (на край мезонина) | 2h | 2026-04-13 09:00 A | 2026-04-13 11:00 A |  | 100% |  | start no earlier than 2026-04-13 09:00 |
| 1000 |  | сделать или мусоросборник на лотке выхода экструдера, или обратный лоток в сторону охдадителя (обсудим по телефону) | 4h | 2026-08-31 09:00 | 2026-08-31 13:00 |  |  | 137.09d | start no earlier than 2026-08-31 09:00 |
| 1001 |  | слить конденсат с компрессора, продуть радиаторы, чистка фильтров | 2h | 2026-04-12 09:00 A | 2026-04-12 11:00 A |  | 100% |  | start no earlier than 2026-04-12 09:00 |
| 1002 |  | добавить в систему отопления воды (зона экструдера, вход в мойку) | 2h | 2026-04-12 09:00 A | 2026-04-12 11:00 A |  | 100% |  | start no earlier than 2026-04-12 09:00 |
| 1003 |  | починить стул Шелепову (выстучать середину и посадить на хомут) | 1h | 2026-04-11 09:00 A | 2026-04-11 10:00 A |  | 100% |  | start no earlier than 2026-04-11 09:00 |
| 1004 |  | не работает вентилятор третий справа, плохой контакт- прикрутить | 1h | 2026-04-10 08:00 A | 2026-04-10 09:00 A |  | 100% |  | start no earlier than 2026-04-10 08:00 |
| 1005 |  | взять канистру со склада и сделать подачу снизу, взять сгон с канистры 2 линии (канистру я видел в гидрализатной 1 ц.) | 1h | 2026-04-26 09:00 A | 2026-04-26 10:00 A |  | 100% |  | start no earlier than 2026-04-26 09:00 |
| 1006 |  | сделать лоток под канистру рыбий жир - подача в прекондиционер | 3h | 2026-04-11 09:00 A | 2026-04-11 12:00 A |  | 100% |  | start no earlier than 2026-04-11 09:00 |
| 1007 |  | перескочила цепь на 2ом ярусе охладителя -поправить | 1h | 2026-04-10 08:00 A | 2026-04-10 09:00 A |  | 100% |  | start no earlier than 2026-04-10 08:00 |
| 1008 | 2.183 | **установка фосунок - подача жира 2 линия** | 5.93d | 2026-04-24 09:00 A | 2026-04-30 17:25 A |  | 100% |  |  |
| 1009 |  | заявка краны 1/2 | 15min | 2026-04-24 09:00 A | 2026-04-24 09:15 A |  | 100% |  | start no earlier than 2026-04-24 08:00 |
| 1010 |  | доставка контроль | 10min | 2026-04-30 09:15 A | 2026-04-30 09:25 A | 1009FS+5d | 100% |  | start no earlier than 2026-04-24 08:00 |
| 1011 |  | сборка кронштейн для фильтров + счетчик | 4h | 2026-04-30 09:25 A | 2026-04-30 13:25 A | 1010 | 100% |  | start no earlier than 2026-04-24 08:00 |
| 1012 |  | монтаж на линию фильтры + кронштейн + форсунка | 4h | 2026-04-30 13:25 A | 2026-04-30 17:25 A | 1011 | 100% |  | start no earlier than 2026-04-24 08:00 |
| 1013 |  | вывести на синий склад старые цепи от печи зона навесок | 2h | 2026-05-22 09:00 A | 2026-05-22 11:00 A |  | 100% |  | start no earlier than 2026-04-09 08:00 |
| 1014 |  | прикрутить уголок снизу выхода охладителя, забивается кормом (фото скину) | 1h | 2026-04-08 09:00 A | 2026-04-08 10:00 A |  | 100% |  | start no earlier than 2026-04-08 08:00 |
| 1015 |  | закрыть шибер кондиционера над жировиком | 1h | 2026-04-09 09:00 A | 2026-04-09 10:00 A |  | 100% |  | start no earlier than 2026-04-09 09:00 |
| 1016 |  | прикрутить оргстекло в аквариуме где забрасывают навески в смеситель | 1h | 2026-04-08 09:00 A | 2026-04-08 10:00 A |  | 100% |  | start no earlier than 2026-04-08 09:00 |
| 1017 |  | ревизия двигатель, контакты ножевого узла | 1h | 2026-04-09 09:00 A | 2026-04-09 10:00 A |  | 100% |  | start no earlier than 2026-04-09 09:00 |
| 1018 |  | земена сеток печи | 2h | 2026-05-04 09:00 A | 2026-05-04 11:00 A |  | 100% |  | start no earlier than 2026-05-04 09:00 |
| 1019 |  | получить метал-лоток 100х50, закрепить слева от двери выхода с зоны экструдера и уложить все провода | 2h | 2026-04-11 09:00 A | 2026-04-11 11:00 A |  | 100% |  |  |
| 1020 |  | получить аллюминевый скотч- замотать стыки циклона, улитки печек, место рычага шибера улитки | 2h | 2026-04-05 09:00 A | 2026-04-05 11:00 A |  | 100% |  | start no earlier than 2026-04-05 09:00 |
| 1021 | 2.192 | **установить водоподготовку на парогенератор** | 126d? | 2026-04-08 09:00 A | 2026-09-04 18:00 |  | 2% | 132.59d |  |
| 1022 |  | планирование монтажа | 1h | 2026-08-31 09:00 | 2026-08-31 10:00 |  |  | 137.47d | start no earlier than 2026-08-31 09:00 |
| 1023 |  | запрос КП | 0min | 2026-04-08 09:00 A | 2026-04-08 09:00 A |  | 100% |  | start no earlier than 2026-04-08 09:00 |
| 1024 |  | решение о покупке | 0d | 2026-04-08 18:00 A | 2026-04-08 18:00 A | 1023FS+1d | 100% |  | start no earlier than 2026-04-03 08:00 |
| 1025 |  | контроль поставки | 15min | 2026-04-27 09:00 A | 2026-04-27 09:15 A |  | 100% |  | start no earlier than 2026-04-27 09:00 |
| 1026 |  | монтаж (установка) | 1.12d? | 2026-09-04 09:00 | 2026-09-04 18:00 |  |  | 132.59d | start no earlier than 2026-09-04 09:00 |
| 1027 | 2.193 | **изготовить сетку перед фильерой экструдера от костей** | 12.41d | 2026-04-17 09:00 A | 2026-05-01 12:15 A |  | 100% |  |  |
| 1028 |  | составить чертеж | 2h | 2026-04-17 09:00 A | 2026-04-17 11:00 A |  | 100% |  | start no earlier than 2026-04-17 09:00 |
| 1029 |  | разместить заказ | 1h | 2026-04-18 11:00 A | 2026-04-18 12:00 A | 1028FS+1d | 100% |  | start no earlier than 2026-04-03 08:00 |
| 1030 |  | изготовление | 10d | 2026-04-18 12:00 A | 2026-04-30 12:00 A | 1029 | 100% |  | start no earlier than 2026-04-03 08:00 |
| 1031 |  | контроль | 0d | 2026-04-30 12:00 A | 2026-04-30 12:00 A | 1030 | 100% |  | start no earlier than 2026-04-03 08:00 |
| 1032 |  | орг забрать | 15min | 2026-05-01 12:00 A | 2026-05-01 12:15 A | 1031FS+1d | 100% |  | start no earlier than 2026-04-03 08:00 |
| 1033 | 2.194 | **вешалка для дамских сумочек в тамбур при надевании бахил** | 13.25d | 2026-05-04 09:00 | 2026-05-18 11:00 |  | 100% |  |  |
| 1034 |  | заявка | 1h | 2026-04-17 09:00 A | 2026-04-17 10:00 A |  | 100% |  | start no earlier than 2026-04-17 09:00 |
| 1035 |  | доставка | 10d | 2026-04-17 10:00 A | 2026-04-29 10:00 A | 1034 | 100% |  | start no earlier than 2026-04-02 08:00 |
| 1036 |  | монтаж | 1h | 2026-06-13 09:00 A | 2026-06-13 10:00 A | 1035 | 100% |  | start no earlier than 2026-06-13 09:00 |
| 1037 |  | Врезка фитинга 1/2х12мм в дверку прекондиционера 2 цех (созвон с Зорькиным) | 30min | 2026-04-09 09:00 A | 2026-04-09 09:30 A |  | 100% |  | start no earlier than 2026-04-09 09:00 |
| 1038 |  | проверить контур управления насосом ПГ | 1h | 2026-04-02 09:00 A | 2026-04-02 10:00 A |  | 100% |  | start no earlier than 2026-04-02 09:00 |
| 1039 |  | замена электродной группы или чистка до металла электродов | 1h | 2026-04-16 09:00 A | 2026-04-16 10:00 A |  | 100% |  | start no earlier than 2026-04-16 09:00 |
| 1040 |  | закрепить шкаф управления приточной вентиляцией | 30min | 2026-04-01 08:00 A | 2026-04-01 08:30 A |  | 100% |  | start no earlier than 2026-04-01 08:00 |
| 1041 |  | установить пневмо пистолеты на охладители с длинным носиком (у мастеров) | 1h | 2026-04-01 08:00 A | 2026-04-01 09:00 A |  | 100% |  | start no earlier than 2026-04-01 08:00 |
| 1042 |  | утечка группа безопасности котел склад навесок устранить | 30min | 2026-03-31 08:00 A | 2026-03-31 08:30 A |  | 100% |  | start no earlier than 2026-03-31 08:00 |
| 1043 |  | закрепить две трубы подачи воздуха в охладителе, пневмо шланг подачи в улитку крепим к стене | 2h | 2026-03-27 09:00 A | 2026-03-27 11:00 A |  | 100% |  | start no earlier than 2026-03-27 08:00 |
| 1044 |  | изготовить 2 лотка 700х400х50 мм из нерж под транспортерную ленту транспортер №1 и №2 | 6h | 2026-04-04 09:00 A | 2026-04-04 15:00 A |  | 100% |  | start no earlier than 2026-04-04 09:00 |
| 1045 |  | открутить вилку-розетку возле насоса подачи жиров в экструдер | 1h | 2026-04-01 09:00 A | 2026-04-01 10:00 A |  | 100% |  | start no earlier than 2026-04-01 09:00 |
| 1046 |  | прикруть кусок металлопрофиля ,чтобы заделать отверстие куда проходит труба отопления (зона где привозят навески) фото скину | 1h | 2026-03-29 09:00 A | 2026-03-29 10:00 A |  | 100% |  | start no earlier than 2026-03-29 09:00 |
| 1047 | 2.205 | **замена ленты нория** | 5.5d | 2026-03-27 08:00 A | 2026-04-02 13:00 A |  | 100% |  |  |
| 1048 |  | получить материал весь | 30min | 2026-03-29 09:00 A | 2026-03-29 09:30 A |  | 100% |  | start no earlier than 2026-03-29 09:00 |
| 1049 |  | подготовка кондуктора | 3h | 2026-03-27 08:00 A | 2026-03-27 11:00 A |  | 100% |  | start no earlier than 2026-03-27 08:00 |
| 1050 |  | подготовить к установке норийную ленту, ковши, болты | 15h | 2026-03-28 09:00 A | 2026-03-29 00:00 A |  | 100% |  | start no earlier than 2026-03-28 09:00 |

| ID | WBS | Task | Duration | Start | Finish | Predecessors | Complete | Total float | Constraint |
| --- | --- | --- | --- | --- | --- | --- | --- | --- | --- |
| 1051 |  | подготовка крепления лебедки для затягивания ленты | 4h | 2026-03-31 09:00 A | 2026-03-31 13:00 A |  | 100% |  | start no earlier than 2026-03-31 09:00 |
| 1052 |  | замена ленты | 4h | 2026-04-02 09:00 A | 2026-04-02 13:00 A |  | 100% |  | start no earlier than 2026-04-02 09:00 |
| 1053 |  | закрепить гофру на трос -рефрежераторы на территории | 1h | 2026-03-27 09:00 A | 2026-03-27 10:00 A |  | 100% |  | start no earlier than 2026-03-27 09:00 |
| 1054 |  | монтаж розетки до канистры с жиром для подачи в экструдер (подключение весов) | 2h | 2026-03-26 09:00 A | 2026-03-26 11:00 A |  | 100% |  | start no earlier than 2026-03-26 09:00 |
| 1055 |  | заделать щели / маршпуты крыс . Зона хранения навесок (закрутить профлист и запенить отверстие под трубу) | 1h | 2026-03-26 09:00 A | 2026-03-26 10:00 A |  | 100% |  | start no earlier than 2026-03-26 09:00 |
| 1056 |  | оперативная замена шнеков | 7h | 2026-03-23 09:00 A | 2026-03-23 16:00 A |  | 100% |  | start no earlier than 2026-03-23 09:00 |
| 1057 |  | выдать шланг для продувки бестрома | 1h | 2026-03-23 09:00 A | 2026-03-23 10:00 A |  | 100% |  | start no earlier than 2026-03-23 09:00 |
| 1058 |  | приварить уголок на лотке в охладитель (фото скину) | 2h | 2026-03-24 09:00 A | 2026-03-24 11:00 A |  | 100% |  | start no earlier than 2026-03-24 09:00 |
| 1059 |  | на транспортере с охладителя отрезать концы саморезов на оргстекле (зарапают руки) | 1h | 2026-03-23 09:00 A | 2026-03-23 10:00 A |  | 100% |  | start no earlier than 2026-03-23 08:00 |
| 1060 |  | насосная станция включить и проверить на кз (выбивало автомат) | 2h | 2026-03-31 09:00 A | 2026-03-31 11:00 A |  | 100% |  | start no earlier than 2026-03-31 09:00 |
| 1061 |  | закрепить трубу РР к стене в районе хранения кубов гидролизат | 1h | 2026-03-26 09:00 A | 2026-03-26 10:00 A |  | 100% |  | start no earlier than 2026-03-26 09:00 |
| 1062 |  | настройка продувка ПГ ч/з 30 мин | 30min | 2026-04-02 09:00 A | 2026-04-02 09:30 A |  | 100% |  | start no earlier than 2026-04-02 09:00 |
| 1063 |  | на красном смесителе закусывает ручку шибера - разобраться | 2h | 2026-03-26 09:00 A | 2026-03-26 11:00 A |  | 100% |  | start no earlier than 2026-03-26 09:00 |
| 1064 |  | посмотреть эл. магнит на двери вход ц.2 | 1h | 2026-03-27 09:00 A | 2026-03-27 10:00 A |  | 100% |  | start no earlier than 2026-03-27 09:00 |
| 1065 |  | ящик возле нашего кабинета- прибить или прикрутить дно | 1h | 2026-03-22 09:00 A | 2026-03-22 10:00 A |  | 100% |  | start no earlier than 2026-03-22 09:00 |
| 1066 |  | слить конденсат, почистить фильтры и продуть радиаторы | 1h | 2026-03-21 09:00 A | 2026-03-21 10:00 A |  | 100% |  | start no earlier than 2026-03-21 09:00 |
| 1067 |  | забрать кресло Сапелина на ремонт в слесарку с каб. Шелепова | 2h | 2026-03-23 09:00 A | 2026-03-23 11:00 A |  | 100% |  | start no earlier than 2026-03-23 09:00 |
| 1068 |  | закрепить кабель в гофре на клипсы от розетки слева от ворот жировика | 1h | 2026-03-26 09:00 A | 2026-03-26 10:00 A |  | 100% |  | start no earlier than 2026-03-26 09:00 |
| 1069 |  | уложить выше подиума и красиво закрепить на клипсы кабель в гофре от ворот справа (фото вышлю) | 1h | 2026-04-16 09:00 A | 2026-04-16 10:00 A |  | 100% |  | start no earlier than 2026-04-10 09:00 |
| 1070 |  | монтаж отбойников по периметру | 4h | 2026-03-25 09:00 A | 2026-03-25 13:00 A |  | 100% |  | start no earlier than 2026-03-25 09:00 |
| 1071 |  | перенос отбойник ГП с стороны эл щита, что бы не входл палет | 2h | 2026-03-19 08:00 A | 2026-03-19 10:00 A |  | 100% |  | start no earlier than 2026-03-19 08:00 |
| 1072 |  | установить лист сендвич панель на стену жир/экструдер с стороны мойки | 3h | 2026-04-07 09:00 A | 2026-04-07 12:00 A |  | 100% |  | start no earlier than 2026-04-07 09:00 |
| 1073 |  | подлючить пневмоулитку к воздуху в охладителе | 1h | 2026-03-31 09:00 A | 2026-03-31 10:00 A |  | 100% |  | start no earlier than 2026-03-31 09:00 |
| 1074 |  | выдать уплотнение на крышки прекондиционера | 30min | 2026-03-19 08:00 A | 2026-03-19 08:30 A |  | 100% |  | start no earlier than 2026-03-19 08:00 |
| 1075 | 2.228 | **ворота фасовка** | 0.12d | 2026-03-26 09:00 A | 2026-03-26 10:00 A |  | 100% |  |  |
| 1076 |  | закрепить гофру до розетки слева от ворот и закрыть монтажную коробку | 1h | 2026-03-26 09:00 A | 2026-03-26 10:00 A |  | 100% |  | start no earlier than 2026-03-26 09:00 |
| 1077 | 2.229 | **забивает лоток прекондиционер/экструдер, передалать** | 1.5d | 2026-08-31 09:00 | 2026-09-01 14:00 |  |  | 136.09d |  |
| 1078 |  | изготовить чертежи лекалы для воронки | 1h | 2026-08-31 09:00 | 2026-08-31 10:00 |  |  | 136.09d | start no earlier than 2026-08-31 09:00 |
| 1079 |  | изготовление воронки | 4h | 2026-09-01 10:00 | 2026-09-01 14:00 | 1078FS+1d |  | 136.09d | start no earlier than 2026-09-01 09:00 |
| 1080 |  | уложить в лоток пучек управления заслонками, отвязать от батареи | 1h | 2026-03-17 08:00 A | 2026-03-17 09:00 A |  | 100% |  | start no earlier than 2026-03-17 08:00 |
| 1081 |  | распред коробка подкл вентилятора которого уже нет (кондиционер №3 жиры) - облогородить | 30min | 2026-03-17 08:00 A | 2026-03-17 08:30 A |  | 100% |  | start no earlier than 2026-03-17 08:00 |
| 1082 |  | удалить лотаки с барана | 2h | 2026-03-19 09:00 A | 2026-03-19 11:00 A |  | 100% |  | start no earlier than 2026-03-19 08:00 |
| 1083 |  | упорядочить проводку регистратора данных - стянуть в пучек | 1h | 2026-03-20 09:00 A | 2026-03-20 10:00 A |  | 100% |  | start no earlier than 2026-03-20 09:00 |
| 1084 | 2.234 | **открыть люк у бестрома / ревизяия / закрыть на герметик** | 0.12d | 2026-03-19 09:00 A | 2026-03-19 10:00 A |  | 100% |  |  |
| 1085 |  | хим. Лаборатория устранить течь с оборудования | 1h | 2026-03-19 09:00 A | 2026-03-19 10:00 A |  | 100% |  | start no earlier than 2026-03-19 08:00 |
| 1086 | 2.235 | **изготовить 2 лотка из нерж. в зоне жиров по аналогии с первым цехом под транспортером тип 1 и тип 2** | 0.25d | 2026-03-16 09:00 A | 2026-03-16 11:00 A |  | 100% |  |  |
| 1087 |  | установить отбойник в зону ХХХ, брать в 5А | 2h | 2026-03-16 09:00 A | 2026-03-16 11:00 A |  | 100% |  | start no earlier than 2026-03-16 09:00 |
| 1088 | 2.236 | **сточить острый край лотка загрузки в охладитель** | 1.12d | 2026-03-15 09:00 A | 2026-03-16 10:00 A |  | 100% |  |  |
| 1089 |  | вывезти люльку, вывезти бойлер, провода на жирах спрятать в коробку | 1h | 2026-03-15 09:00 A | 2026-03-15 10:00 A |  | 100% |  | start no earlier than 2026-03-15 09:00 |
| 1090 |  | бойлер в душе - установить трубку на клапан сброса и смонтировать её по стене до канализ трубы | 1h | 2026-03-16 09:00 A | 2026-03-16 10:00 A |  | 100% |  | start no earlier than 2026-03-16 09:00 |
| 1091 |  | облогородить кабельный пучек, сделать аккуратно/закрыить крышкой. Слева от двери экструдер/тамбур под лестницей | 6h | 2026-04-09 09:00 A | 2026-04-09 16:00 A |  | 100% |  | start no earlier than 2026-04-11 09:00 |
| 1092 | 2.238 | **изготовить сетку после барабана по аналогии с сущ 10мм** | 4.12d | 2026-03-12 09:00 A | 2026-03-16 10:00 A |  | 100% |  |  |
| 1093 |  | на лоток загрузки в охладитель - установить доп борт с левой стороны, такой же как с правой (съемный) | 4h | 2026-03-15 09:00 A | 2026-03-15 13:00 A |  | 100% |  | start no earlier than 2026-03-15 09:00 |
| 1094 |  | квадропак стол подачи пакетов устновить кайки с барашком/приварить. + зафиксировать от бокового смещения | 1h | 2026-03-16 09:00 A | 2026-03-16 10:00 A |  | 100% |  | start no earlier than 2026-03-16 09:00 |
| 1095 |  | изменить время разгон/торожение привод барабана | 30min | 2026-03-12 09:00 A | 2026-03-12 09:30 A |  | 100% |  | start no earlier than 2026-03-13 09:00 |
| 1096 |  | изготовить кожух на шестерни прекондиционера | 6h | 2026-04-03 09:00 A | 2026-04-03 15:00 A |  | 100% |  | start no earlier than 2026-04-03 09:00 |
| 1097 | 2.240 | **ремонт датчик давления линия 3** | 30.25d | 2026-03-26 09:00 | 2026-04-30 11:00 |  | 100% |  |  |
| 1098 |  | заявка переходник G1/4 /M20*1.5 токарю | 15min | 2026-05-14 09:00 A | 2026-05-14 09:15 A |  | 100% |  | start no earlier than 2026-05-14 09:00 |
| 1099 |  | контроль изг/орг доставка | 0d | 2026-05-14 09:15 A | 2026-05-14 09:15 A | 1098 | 100% |  | start no earlier than 2026-03-20 08:00 |
| 1100 |  | заказ замена + в ЗИП | 15min | 2026-05-14 09:15 A | 2026-05-14 09:30 A | 1099 | 100% |  | start no earlier than 2026-03-13 09:00 |
| 1101 |  | заявка на РВД удлинитель | 15min | 2026-05-14 09:30 A | 2026-05-14 09:45 A | 1100 | 100% |  | start no earlier than 2026-03-12 08:00 |
| 1102 |  | доставка | 15d | 2026-05-14 09:45 A | 2026-05-31 09:45 A | 1101 | 100% |  | start no earlier than 2026-03-12 08:00 |
| 1103 |  | монтаж | 1h | 2026-06-04 09:00 A | 2026-06-04 10:00 A |  | 100% |  | start no earlier than 2026-06-04 09:00 |
| 1104 |  | датчик давления экструдера проверка подключения | 3h | 2026-06-11 09:00 A | 2026-06-11 12:00 A |  | 100% |  | start no earlier than 2026-06-11 09:00 |
| 1105 | 2.241 | **установить сирену при отключении автомата ПГ** | 36.12d | 2026-03-13 09:00 A | 2026-04-22 10:00 A |  | 100% |  |  |
| 1106 |  | заявка на реле / сирена | 30min | 2026-03-13 09:00 A | 2026-03-13 09:30 A |  | 100% |  | start no earlier than 2026-03-13 09:00 |
| 1107 |  | доставка | 10d | 2026-03-13 09:30 A | 2026-03-23 09:30 A | 1106 | 100% |  | start no earlier than 2026-03-12 08:00 |
| 1108 |  | монтаж в схему (проверить почему не срабатывает) | 1h | 2026-04-22 09:00 A | 2026-04-22 10:00 A | 1107 | 100% |  | start no earlier than 2026-04-22 09:00 |
| 1109 | 2.242 | **установить сирену на отключение автоматов в печи** | 19.12d | 2026-03-11 09:00 A | 2026-03-31 10:00 A |  | 100% |  |  |
| 1110 |  | заявка сирена | 15min | 2026-03-13 09:30 A | 2026-03-13 09:45 A | 1106 | 100% |  | start no earlier than 2026-03-12 08:00 |
| 1111 |  | доставка | 5d | 2026-03-13 09:45 A | 2026-03-18 09:45 A | 1110 | 100% |  | start no earlier than 2026-03-12 08:00 |
| 1112 |  | монтаж | 2h | 2026-03-19 09:00 A | 2026-03-19 11:00 A | 1111 | 100% |  | start no earlier than 2026-03-19 09:00 |
| 1113 |  | доставка сирены | 10d | 2026-03-19 09:00 A | 2026-03-28 18:00 A |  | 100% |  | start no earlier than 2026-03-19 08:00 |
| 1114 |  | монтаж сирены | 1h | 2026-03-31 09:00 A | 2026-03-31 10:00 A | 1113 | 100% |  | start no earlier than 2026-03-31 09:00 |
| 1115 |  | настройка доводчика дверь вход в зону экструдера | 1h | 2026-03-11 09:00 A | 2026-03-11 10:00 A |  | 100% |  | start no earlier than 2026-03-11 09:00 |
| 1116 | 2.243 | **выпадает фильера с матрицы - делать стпор** | 0.5d | 2026-04-27 09:00 A | 2026-04-27 13:00 A |  | 100% |  |  |
| 1117 |  | подготовка сверла / метчика | 30min | 2026-04-27 09:00 A | 2026-04-27 09:30 A |  | 100% |  | start no earlier than 2026-04-27 09:00 |
| 1118 |  | сверлить и резать резьбу для фикс болта | 4h | 2026-04-27 09:00 A | 2026-04-27 13:00 A |  | 100% |  | start no earlier than 2026-04-27 09:00 |
| 1119 | 2.244 | **замена поликарбанат на перегородках металопрофилем** | 84.75d | 2026-03-11 09:00 A | 2026-06-15 16:00 A |  | 100% |  |  |
| 1120 |  | расчет материал стена охладитель | 1h | 2026-03-19 09:00 A | 2026-03-19 10:00 A |  | 100% |  | start no earlier than 2026-03-19 09:00 |

| ID | WBS | Task | Duration | Start | Finish | Predecessors | Complete | Total float | Constraint |
| --- | --- | --- | --- | --- | --- | --- | --- | --- | --- |
| 1121 |  | заявка | 1h | 2026-03-19 10:00 A | 2026-03-19 11:00 A | 1120 | 100% |  | start no earlier than 2026-03-12 08:00 |
| 1122 |  | доставка | 10d | 2026-03-19 11:00 A | 2026-03-30 11:00 A | 1121 | 100% |  | start no earlier than 2026-03-12 08:00 |
| 1123 |  | из металлопрофиля 3м. Обшиваем охладитель внутри и снаружи + утеплитель | 6h | 2026-05-29 09:00 A | 2026-05-29 15:00 A |  | 100% |  | start no earlier than 2026-05-29 09:00 |
| 1124 |  | продолжить монтаж (со стороны охладителя и со стороны жиров) | 6h | 2026-06-15 09:00 A | 2026-06-15 16:00 A | 1122 | 100% |  | start no earlier than 2026-06-15 09:00 |
| 1125 |  | замена шланг реле давление и настройка. фильтр приточная офис | 1h | 2026-03-12 09:00 A | 2026-03-12 10:00 A |  | 100% |  | start no earlier than 2026-03-13 09:00 |
| 1126 |  | замена насос гидролизата | 2h | 2026-03-12 08:00 A | 2026-03-12 10:00 A |  | 100% |  | start no earlier than 2026-03-12 08:00 |
| 1127 |  | замена подшипник прекондиционер | 1h | 2026-03-12 09:00 A | 2026-03-12 10:00 A |  | 100% |  | start no earlier than 2026-03-12 08:00 |
| 1128 |  | ремонт вал охладитель | 4h | 2026-03-12 09:00 A | 2026-03-12 13:00 A |  | 100% |  | start no earlier than 2026-03-19 09:00 |
| 1129 |  | плохо закр дверь на фасовку. заменить личинку двери / выравнить напильником в коробке. | 1h | 2026-03-11 09:00 A | 2026-03-11 10:00 A |  | 100% |  | start no earlier than 2026-03-11 09:00 |
| 1130 |  | крепить поликарбанат стена печь/жир длинная часть | 1h | 2026-03-11 09:00 A | 2026-03-11 10:00 A |  | 100% |  | start no earlier than 2026-03-11 09:00 |
| 1131 |  | сетку на выходе барабана жир закрепить. Устр вспомогактельные крепжи операторам | 1h | 2026-03-19 09:00 A | 2026-03-19 10:00 A |  | 100% |  | start no earlier than 2026-03-19 09:00 |
| 1132 | 2.246 | **установить / снять трубу от ПГ для чистки сетки** | 0.25d | 2026-03-12 09:00 A | 2026-03-12 11:00 A |  | 100% |  |  |
| 1133 |  | чистка циклон снаружи от копоти. Средство для чистки выдаст Шелепов К | 2h | 2026-03-12 09:00 A | 2026-03-12 11:00 A |  | 100% |  | start no earlier than 2026-03-12 09:00 |
| 1134 |  | замена датчик расхода пара | 1h | 2026-03-12 09:00 A | 2026-03-12 10:00 A |  | 100% |  | start no earlier than 2026-03-12 09:00 |
| 1135 | 2.247 | **замениь фитинги на жир** | 0.25d | 2026-03-10 09:00 A | 2026-03-10 11:00 A | 547 | 100% |  |  |
| 1136 |  | замена бойлер в мойке экструдера на бойлер который весит за экструдером | 2h | 2026-03-10 09:00 A | 2026-03-10 11:00 A |  | 100% |  | start no earlier than 2026-03-10 09:00 |
| 1137 | 2.248 | **переключить освещение на автолномный выключатель, запитанный от системы освещения, а не от оборудования.** | 21.38d | 2026-03-05 09:00 A | 2026-03-26 12:00 A |  | 100% |  |  |
| 1138 |  | ножевой узел | 1.5h | 2026-03-26 09:00 A | 2026-03-26 10:30 A |  | 100% |  | start no earlier than 2026-03-26 09:00 |
| 1139 |  | бестром | 1.5h | 2026-03-26 09:00 A | 2026-03-26 10:30 A |  | 100% |  | start no earlier than 2026-03-26 09:00 |
| 1140 |  | выход с охладителя | 1.5h | 2026-03-26 10:30 A | 2026-03-26 12:00 A | 1138 | 100% |  | start no earlier than 2026-03-26 09:00 |
| 1141 |  | переключить норию квадропака стационрно, без розетки | 2h | 2026-03-05 09:00 A | 2026-03-05 11:00 A |  | 100% |  | start no earlier than 2026-03-05 09:00 |
| 1142 |  | перемонтаж провода заземления нории квадропак эстетично и удобно для прохода и уборщицы | 2h | 2026-03-05 09:00 A | 2026-03-05 11:00 A |  | 100% |  | start no earlier than 2026-03-05 09:00 |
| 1143 | 2.249 | **сетки на дно печи в зип изготовить** | 14.5d | 2026-03-10 09:00 A | 2026-03-24 13:00 A |  | 100% |  |  |
| 1144 |  | заявка сетка уголки | 1h | 2026-03-10 09:00 A | 2026-03-10 10:00 A |  | 100% |  | start no earlier than 2026-03-10 09:00 |
| 1145 |  | доставка | 10d | 2026-03-10 10:00 A | 2026-03-20 10:00 A | 1144 | 100% |  | start no earlier than 2026-03-06 08:00 |
| 1146 |  | изготовление | 4h | 2026-03-24 09:00 A | 2026-03-24 13:00 A | 1145 | 100% |  | start no earlier than 2026-03-24 09:00 |
| 1147 |  | закрепить лоток для совка с спиртом. Изготовить усилит косынку | 2h | 2026-03-07 09:00 A | 2026-03-07 11:00 A |  | 100% |  | start no earlier than 2026-03-07 09:00 |
| 1148 | 2.251 | **установить монтажную коробку квадропак. Инструктаж Шуранов по тлф** | 0d | 2026-03-06 08:00 A | 2026-03-06 09:00 A |  | 100% |  |  |
| 1149 |  | Не уходит вода в душевой кабине, посмотреть, устранить. | 1h | 2026-03-06 08:00 A | 2026-03-06 09:00 A |  | 100% |  | start no earlier than 2026-03-06 08:00 |
| 1150 |  | ревизия вентиляторов охладителя, не закрываются крышки | 30min | 2026-03-05 09:00 A | 2026-03-05 09:30 A |  | 100% |  | start no earlier than 2026-03-05 09:00 |
| 1151 | 2.253 | **Квадропак** | 0.38d | 2026-03-05 09:00 A | 2026-03-05 12:00 A |  | 100% |  |  |
| 1152 |  | Уложить красиво провода на лестнице квадропака цех 2 (созвон с Шурановым) | 3h | 2026-03-05 09:00 A | 2026-03-05 12:00 A |  | 100% |  | start no earlier than 2026-03-05 09:00 |
| 1153 | 2.254 | **Сброс ошибо Н4 и Е9 на кондиционерах** | 0.08d | 2026-03-04 09:00 A | 2026-03-04 09:40 A |  | 100% |  |  |
| 1154 |  | Договориться с оплотом по решению | 30min | 2026-03-04 09:00 A | 2026-03-04 09:30 A |  | 100% |  | start no earlier than 2026-03-04 09:00 |
| 1155 |  | устранить ошибки | 10min | 2026-03-04 09:30 A | 2026-03-04 09:40 A | 1154 | 100% |  | start no earlier than 2026-03-03 08:00 |
| 1156 |  | закреить поликарбанат по периметру | 4h | 2026-03-08 09:00 A | 2026-03-08 13:00 A |  | 100% |  | start no earlier than 2026-03-08 09:00 |
| 1157 |  | смазать ручки и шарниры дверей | 1h | 2026-03-08 09:00 A | 2026-03-08 10:00 A |  | 100% |  | start no earlier than 2026-03-08 09:00 |
| 1158 | 2.257 | **сделать ровным порог вход в мойку экструдера** | 30.5d | 2026-03-03 09:00 A | 2026-04-03 13:00 A |  | 100% |  |  |
| 1159 |  | Показать Олегу порог | 30min | 2026-03-03 09:00 A | 2026-03-03 09:30 A |  | 100% |  | start no earlier than 2026-03-03 08:00 |
| 1160 |  | составить план ремонта | 15min | 2026-03-03 09:00 A | 2026-03-03 09:15 A |  | 100% |  | start no earlier than 2026-03-03 09:00 |
| 1161 |  | составить заявку на материал | 30min | 2026-03-04 09:00 A | 2026-03-04 09:30 A | 1160 | 100% |  | start no earlier than 2026-03-04 09:00 |
| 1162 |  | доставка | 10d | 2026-03-04 09:30 A | 2026-03-14 09:30 A | 1161 | 100% |  | start no earlier than 2026-03-03 08:00 |
| 1163 |  | реализация | 4h | 2026-04-03 09:00 A | 2026-04-03 13:00 A | 1162 | 100% |  | start no earlier than 2026-04-03 09:00 |
| 1164 |  | востановить профлист. Проход навески экструдер. Обрезками с 3ц, цвет любой | 5h | 2026-03-08 09:00 A | 2026-03-08 14:00 A |  | 100% |  | start no earlier than 2026-03-08 09:00 |
| 1165 |  | установить отбойники в проход и углы проезд навесок. Барть с 5а | 4h | 2026-03-09 09:00 A | 2026-03-09 13:00 A |  | 100% |  | start no earlier than 2026-03-09 09:00 |
| 1166 | 2.260 | **установить отбойники в углы проезд навесок** | 31.25d | 2026-03-13 09:00 A | 2026-04-16 11:00 A |  | 100% |  |  |
| 1167 |  | заявка 2 отбойника | 10min | 2026-03-13 09:00 A | 2026-03-13 09:10 A |  | 100% |  | start no earlier than 2026-03-13 09:00 |
| 1168 |  | доставка | 10d | 2026-03-13 09:10 A | 2026-03-23 09:10 A | 1167 | 100% |  | start no earlier than 2026-03-12 08:00 |
| 1169 |  | монтаж | 2h | 2026-04-16 09:00 A | 2026-04-16 11:00 A | 1168 | 100% |  | start no earlier than 2026-04-16 09:00 |
| 1170 | 2.261 | **наростить ножки на бестроме бункер, вместо деревянной** | 5.38d | 2026-03-05 09:00 A | 2026-03-10 12:00 A |  | 100% |  |  |
| 1171 | 2.261.1 | **мойка** | 0.38d | 2026-03-05 09:00 A | 2026-03-05 12:00 A |  | 100% |  |  |
| 1172 |  | ревизия вытяжка принудительная из печи (нерж вентилятор), очистка | 3h | 2026-03-05 09:00 A | 2026-03-05 12:00 A |  | 100% |  | start no earlier than 2026-03-05 09:00 |
| 1173 |  | ремонт колесо штабелер/замена подшипник | 3h | 2026-03-10 09:00 A | 2026-03-10 12:00 A |  | 100% |  | start no earlier than 2026-03-10 09:00 |
| 1174 | 2.262 | **увеличить освещение в зоне квадропака** | 51d | 2026-03-02 09:00 A | 2026-04-26 00:00 A |  | 100% |  |  |
| 1175 |  | составить список мматериал для монтажа | 30min | 2026-03-02 09:00 A | 2026-03-02 09:30 A |  | 100% |  | start no earlier than 2026-03-02 09:00 |
| 1176 |  | заявка светильники | 30min | 2026-03-02 09:30 A | 2026-03-02 10:00 A | 1175 | 100% |  | start no earlier than 2026-02-27 08:00 |
| 1177 |  | доставка | 10d | 2026-03-02 10:00 A | 2026-03-12 10:00 A | 1176 | 100% |  | start no earlier than 2026-02-27 08:00 |
| 1178 |  | монтаж светильников зона фасовки 8 светильников, операторы помогут | 15h | 2026-04-25 09:00 A | 2026-04-26 00:00 A |  | 100% |  | start no earlier than 2026-04-25 09:00 |
| 1179 |  | монтаж светильников зона квадропак 1шт - перевесить светильник | 1h | 2026-04-16 09:00 A | 2026-04-16 10:00 A |  | 100% |  | start no earlier than 2026-04-16 09:00 |
| 1180 |  | монтаж | 2h | 2026-03-06 09:00 A | 2026-03-06 11:00 A |  | 100% |  | start no earlier than 2026-03-06 09:00 |
| 1181 | 2.262.7 | **замена сетка печи на мелкую** | 0.12d | 2026-03-02 09:00 A | 2026-03-02 10:00 A |  | 100% |  |  |
| 1182 |  | согласовать спецификацию / оплата счет | 1h | 2026-03-02 09:00 A | 2026-03-02 10:00 A |  | 100% |  | start no earlier than 2026-03-02 09:00 |
| 1183 | 2.263 | **монтаж дозации жира в экструдер** | 45.25d? | 2026-02-27 09:00 A | 2026-04-16 11:00 |  | 38% | 251.34d |  |
| 1184 |  | монтаж частотного привода | 2h | 2026-02-27 09:00 A | 2026-02-27 11:00 A |  | 100% |  | start no earlier than 2026-02-27 09:00 |
| 1185 |  | монтаж трассы гидравлической | 2h | 2026-03-02 09:00 A | 2026-03-02 11:00 A | 1184 | 100% |  | start no earlier than 2026-03-02 09:00 |
| 1186 |  | сборка канистры с фитингом | 1h | 2026-03-02 11:00 A | 2026-03-02 12:00 A | 1185 | 100% |  | start no earlier than 2026-02-26 08:00 |
| 1187 |  | калибровка на нужный расход | 1h | 2026-03-03 09:00 A | 2026-03-03 10:00 A |  | 100% |  | start no earlier than 2026-03-03 09:00 |
| 1188 |  | испытание | 1h | 2026-03-04 09:00 A | 2026-03-04 10:00 A |  | 100% |  | start no earlier than 2026-03-04 09:00 |
| 1189 |  | подключить управление насосом синхронно с запуском ножей экструдера. Проложить кабель, изучить параметары, передать по смене что подключать | 4h | 2026-03-04 09:00 | 2026-03-04 13:00 |  |  | 291.09d | start no earlier than 2026-03-04 09:00 |
| 1190 |  | подключить кабель/ неастроить параметры, что передаст Дедов | 1h | 2026-03-05 09:00 | 2026-03-05 10:00 |  |  | 290.47d | start no earlier than 2026-03-05 09:00 |

| ID | WBS | Task | Duration | Start | Finish | Predecessors | Complete | Total float | Constraint |
| --- | --- | --- | --- | --- | --- | --- | --- | --- | --- |
| 1191 |  | поставка контрллра | 1d? | 2026-03-11 09:00 | 2026-03-11 18:00 |  |  | 283.47d | start no earlier than 2026-03-11 09:00 |
| 1192 |  | подключить контрллера расходомер | 2h | 2026-04-16 09:00 | 2026-04-16 11:00 | 1191 |  | 251.34d | start no earlier than 2026-04-16 09:00 |
| 1193 |  | Прокинуть интерфейсный кабель от черной коробочки до нового частотника на синем бункере (проложить так чтоб ни где ничего не торчало) | 3h | 2026-03-05 08:00 | 2026-03-05 11:00 |  |  | 290.34d | start no earlier than 2026-03-05 08:00 |
| 1194 |  | сделать регулировку угла наклона приемная воронка конв в охладитель после жира | 3h | 2026-03-05 09:00 A | 2026-03-05 12:00 A |  | 100% |  | start no earlier than 2026-03-05 09:00 |
| 1195 |  | сборка и монтаж полка для дез раствора на охладитель | 1h | 2026-03-02 09:00 A | 2026-03-02 10:00 A |  | 100% |  | start no earlier than 2026-03-02 09:00 |
| 1196 | 2.264 | **настройка блокировок отключения котла, если отключена приточка** | 156.25d | 2026-03-03 09:00 A | 2026-09-01 11:00 |  | 5% | 136.34d |  |
| 1197 |  | внести в схему котла блокировку либо от трм 33 либо от частотника | 4h | 2026-03-03 09:00 A | 2026-03-03 13:00 A |  | 100% |  | start no earlier than 2026-03-03 09:00 |
| 1198 |  | Заявка на реле протока воды | 10min | 2026-03-10 09:00 A | 2026-03-10 09:10 A |  | 100% |  | start no earlier than 2026-03-10 09:00 |
| 1199 |  | Доставка | 10d | 2026-03-10 09:10 | 2026-03-20 09:10 | 1198 |  | 275.45d | start no earlier than 2026-03-02 09:00 |
| 1200 |  | Замена | 2h | 2026-09-01 09:00 | 2026-09-01 11:00 | 1199 |  | 136.34d | start no earlier than 2026-09-01 09:00 |
| 1201 |  | Запрет работы вентилятора если низкая температура калорифера | 2h | 2026-03-12 09:00 A | 2026-03-12 11:00 A |  | 100% |  | start no earlier than 2026-03-12 09:00 |
| 1202 | 2.266 | **установить на охладитель ролики + скольжение трубы** | 2.88d? | 2026-09-01 09:00 | 2026-09-03 17:00 |  |  | 133.72d |  |
| 1203 |  | печать кронштейнов | 2h | 2026-09-01 09:00 | 2026-09-01 11:00 |  |  | 136.34d | start no earlier than 2026-09-01 09:00 |
| 1204 |  | установить держатели труб | 1d? | 2026-09-03 09:00 | 2026-09-03 17:00 |  |  | 133.72d | start no earlier than 2026-09-03 09:00 |
| 1205 | 2.267 | **установить паровопровод для очистки сетки печи на мойке парогенератором** | 10.75d | 2026-03-02 09:00 A | 2026-03-12 16:00 A |  | 100% |  |  |
| 1206 |  | проверка фитингов | 30min | 2026-03-02 09:00 A | 2026-03-02 09:30 A |  | 100% |  | start no earlier than 2026-03-02 09:00 |
| 1207 |  | монтаж | 2h | 2026-03-05 09:00 A | 2026-03-05 11:00 A | 1206 | 100% |  | start no earlier than 2026-03-05 09:00 |
| 1208 | 2.267.3 | **лоток с транспортера в барабан. Большой** | 2.75d | 2026-03-10 09:00 A | 2026-03-12 16:00 A |  | 100% |  |  |
| 1209 |  | изготовить из листа лоток. Заготовку 612*965 с пропилами для сгиба по чертежу | 4h | 2026-03-10 09:00 A | 2026-03-10 13:00 A |  | 100% |  | start no earlier than 2026-03-10 09:00 |
| 1210 |  | подготовить раму крепежа | 4h | 2026-03-12 09:00 A | 2026-03-12 13:00 A | 1209 | 100% |  | start no earlier than 2026-03-12 09:00 |
| 1211 |  | монтаж | 2h | 2026-03-12 14:00 A | 2026-03-12 16:00 A | 1210 | 100% |  | start no earlier than 2026-02-27 08:00 |
| 1212 | 2.268 | **установка ворот шлюз в проходе вент камеры** | 144d? | 2026-02-24 09:00 A | 2026-08-09 13:00 A |  | 100% |  |  |
| 1213 |  | изготовить и установить шпингалеты | 4h | 2026-02-27 09:00 A | 2026-02-27 13:00 A |  | 100% |  | start no earlier than 2026-02-27 09:00 |
| 1214 |  | установка петель, транспортировка, монтаж | 1d? | 2026-02-24 09:00 A | 2026-02-24 18:00 A |  | 100% |  | start no earlier than 2026-02-24 09:00 |
| 1215 |  | установить полосу притвора | 3h | 2026-02-27 09:00 A | 2026-02-27 12:00 A |  | 100% |  | start no earlier than 2026-02-28 09:00 |
| 1216 |  | установить силиконовые уплотнители на пол | 2h | 2026-02-26 09:00 A | 2026-02-26 11:00 A |  | 100% |  | start no earlier than 2026-02-26 08:00 |
| 1217 |  | заявка доводчики, шпингалеты | 30min | 2026-03-02 09:00 A | 2026-03-02 09:30 A |  | 100% |  | start no earlier than 2026-03-02 09:00 |
| 1218 |  | доставка | 10d | 2026-03-02 09:30 A | 2026-03-12 09:30 A | 1217 | 100% |  | start no earlier than 2026-02-27 08:00 |
| 1219 |  | монтаж шпингалетов | 2h | 2026-03-25 09:00 A | 2026-03-25 11:00 A | 1218 | 100% |  | start no earlier than 2026-03-25 09:00 |
| 1220 | 2.268.8 | **установить концевики блокировки открывания роль ворот, если не закрыты шлюз** | 130d | 2026-03-10 09:00 A | 2026-08-09 13:00 A |  | 100% |  |  |
| 1221 | 2.268.8.1 | **установить доводчики на ворота в зоне навесок** | 0d | 2026-06-14 09:00 A | 2026-06-14 11:00 A |  | 100% |  |  |
| 1222 |  | пробурить для задвижек ворот в полу отверстия -фиксация для проезда штабелера | 2h | 2026-06-14 09:00 A | 2026-06-14 11:00 A |  | 100% |  | start no earlier than 2026-06-14 09:00 |
| 1223 |  | составить список материалов | 30min | 2026-03-10 09:00 A | 2026-03-10 09:30 A |  | 100% |  | start no earlier than 2026-03-10 09:00 |
| 1224 |  | заявка | 30min | 2026-03-10 09:30 A | 2026-03-10 10:00 A | 1223 | 100% |  | start no earlier than 2026-03-03 09:00 |
| 1225 |  | доставка | 5d | 2026-03-10 10:00 A | 2026-03-15 10:00 A | 1224 | 100% |  | start no earlier than 2026-02-27 08:00 |
| 1226 |  | монтаж датчиков на двери / доводчиков. | 4h | 2026-08-09 09:00 A | 2026-08-09 13:00 A | 1225 | 100% |  | start no earlier than 2026-08-09 09:00 |
| 1227 |  | монтаж кабеля от датчиков до блока рольворот, не подключать | 4h | 2026-08-09 09:00 A | 2026-08-09 13:00 A | 1226 | 100% |  | start no earlier than 2026-08-09 09:00 |
| 1228 |  | установить концевики на ворота - установить закладные под них | 1h | 2026-08-08 09:00 A | 2026-08-08 10:00 A |  | 100% |  | start no earlier than 2026-08-08 09:00 |
| 1229 | 2.269 | **схема блокировки роль ворот при открытым шлюзе + авт закрытие + датчик препятствия** | 2d | 2026-08-31 09:00 | 2026-09-01 18:00 |  |  | 135.59d |  |
| 1230 |  | разработка схемы | 4h | 2026-08-31 09:00 | 2026-08-31 13:00 |  |  | 135.59d | start no earlier than 2026-08-31 09:00 |
| 1231 |  | монтаж | 4h | 2026-09-01 14:00 | 2026-09-01 18:00 | 1230FS+1d |  | 135.59d | start no earlier than 2026-08-15 09:00 |
| 1232 |  | ремонт нижних сеток печи просева гранулы | 4h | 2025-01-23 09:00 A | 2025-01-23 13:00 A |  | 100% |  | start no earlier than 2025-01-23 09:00 |
| 1233 | 2.271 | **замена реле безопасности бойлер ж** | 98.12d | 2024-10-16 09:00 A | 2025-02-20 10:00 A |  | 100% |  |  |
| 1234 |  | заЯВка | 1h | 2024-10-16 09:00 A | 2024-10-16 10:00 A |  | 100% |  | start no earlier than 2024-10-16 09:00 |
| 1235 |  | доставка | 10d | 2024-10-16 10:00 A | 2024-10-30 10:00 A | 1234 | 100% |  | start no earlier than 2024-10-16 09:00 |
| 1236 |  | замена | 1h | 2025-02-20 09:00 A | 2025-02-20 10:00 A | 1235 | 100% |  | start no earlier than 2025-02-20 09:00 |
| 1237 | 2.272 | **установить пульты на регулировку шибиров вентиляции** | 11.25d? | 2026-08-31 09:00 | 2026-09-15 11:00 |  |  | 126.34d |  |
| 1238 |  | заявка на блок питания, шкаф управления, кабель | 2h | 2026-08-31 09:00 | 2026-08-31 11:00 |  |  | 126.34d | start no earlier than 2026-08-31 09:00 |
| 1239 |  | доставка | 10d | 2026-08-31 11:00 | 2026-09-14 11:00 | 1238 |  | 126.34d | start no earlier than 2024-05-08 08:00 |
| 1240 |  | монтаж | 1d? | 2026-09-14 11:00 | 2026-09-15 11:00 | 1239 |  | 126.34d | start no earlier than 2024-05-08 08:00 |
| 1241 |  | заменить местами 2 зеркала маленький и большой бункер | 4h | 2024-10-03 09:00 | 2024-10-03 13:00 |  |  | 695.09d | start no earlier than 2024-10-03 09:00 |
| 1242 |  | установить провод заземления на дверь шкафа упр сушки | 1h | 2024-01-06 09:00 | 2024-01-06 10:00 |  |  | 894.5d | start no earlier than 2024-01-06 09:00 |
| 1243 | 2.275 | **Палетообмотчик** | 59.06d | 2026-05-19 09:00 A | 2026-07-28 09:30 A |  | 100% |  |  |
| 1244 |  | заказать цепь | 10min | 2026-05-19 09:00 A | 2026-05-19 09:10 A |  | 100% |  | start no earlier than 2026-05-19 08:00 |
| 1245 |  | доставка | 10d | 2026-05-29 09:00 A | 2026-06-07 18:00 A |  | 100% |  | start no earlier than 2026-05-29 09:00 |
| 1246 |  | замена цепи на вход в зону палетирования на складе взять 10М оцинкованная 3мм | 30min | 2026-07-28 09:00 A | 2026-07-28 09:30 A |  | 100% |  | start no earlier than 2026-07-28 09:00 |
| 1247 |  | Изготовить полочки из нержавейки по образцу на 18 баночек еще 2 шт | 3h | 2026-07-24 09:00 A | 2026-07-24 12:00 A |  | 100% |  | start no earlier than 2026-07-24 09:00 |
| 1248 | 2.277 | **разделить воду на ПГ и экструдер** | 0.25d | 2026-09-01 09:00 | 2026-09-01 11:00 |  |  | 0d |  |
| 1249 |  | изготовить промежуточную емкость для прекондера, подача воды, сделать по аналогу 3 цеха, покрасить везде | 2h | 2026-09-01 09:00 | 2026-09-01 11:00 |  |  |  | start no earlier than 2026-09-01 09:00 |
| 1250 | 2.278 | **отмена** | 80d? | 2026-08-11 09:00 A | 2026-11-25 19:30 |  | 2% | 74.59d |  |
| 1251 | 2.278.1 | **найти места утечки тепла под потолком- перемерзает труба подачи воды в 3 цех** | 80d? | 2026-08-11 09:00 A | 2026-11-25 19:30 |  | 2% | 74.59d |  |
| 1252 |  | вспомнить из-за чего холод под потолком? Какие нужны мероприятия?- никто не помнит | 15min | 2026-08-11 09:00 A | 2026-08-11 09:15 A |  | 100% |  | start no earlier than 2026-08-11 09:00 |
| 1253 |  | подать олегу заявку | 15min | 2026-08-31 09:00 | 2026-08-31 09:15 |  |  | 137.56d | start no earlier than 2026-08-31 09:00 |
| 1254 |  | проверка пирометром / тепловизором | 2h | 2026-11-11 09:00 | 2026-11-11 11:00 |  |  | 74.69d | start no earlier than 2026-11-11 09:00 |
| 1255 |  | заявка (подумать материал) | 15min | 2026-11-11 11:00 | 2026-11-11 11:15 | 1254 |  | 74.69d | start no earlier than 2026-08-13 09:00 |
| 1256 |  | доставка- контроль | 15min | 2026-11-25 11:15 | 2026-11-25 11:30 | 1255FS+10d |  | 74.69d | start no earlier than 2026-08-12 09:00 |
| 1257 |  | монтаж | 1d? | 2026-11-25 11:30 | 2026-11-25 19:30 | 1256 |  | 74.59d | start no earlier than 2026-08-11 09:00 |
| 1258 | 2.279 | **вентиляция** | 14.25d | 2026-08-13 09:00 A | 2026-08-28 11:00 A |  | 100% |  |  |
| 1259 |  | Монтаж частотников на ШУ | 2h | 2026-08-13 09:00 A | 2026-08-13 11:00 A |  | 100% |  | start no earlier than 2026-08-13 09:00 |
| 1260 |  | В ШУ вырезать окна для частотников в двери, закрыть оргстеклом. Желательно на шарниры. | 2h | 2026-08-28 09:00 A | 2026-08-28 11:00 A |  | 100% |  | start no earlier than 2026-08-31 09:00 |

| ID | WBS | Task | Duration | Start | Finish | Predecessors | Complete | Total float | Constraint |
| --- | --- | --- | --- | --- | --- | --- | --- | --- | --- |
| 1261 | 2.280 | **Синий бункер** | 0.25d | 2026-07-30 09:00 A | 2026-07-30 11:00 A |  | 100% |  |  |
| 1262 |  | Ремонт синего бункера в зоне вибратора | 2h | 2026-07-30 09:00 A | 2026-07-30 11:00 A |  | 100% |  | start no earlier than 2026-07-30 09:00 |
| 1263 | 2.281 | **Охладитель** | 0.38d | 2026-07-30 09:00 A | 2026-07-30 12:00 A |  | 100% |  |  |
| 1264 |  | Установка защиты сетки на полозья/направляющие, спросить Зорькина | 3h | 2026-07-30 09:00 A | 2026-07-30 12:00 A |  | 100% |  | start no earlier than 2026-07-30 09:00 |
| 1265 |  | Осмотреть/устранить течь раковины возле туалета | 1h | 2026-07-29 08:00 A | 2026-07-29 09:00 A |  | 100% |  | start no earlier than 2026-07-29 08:00 |
| 1266 | 3 | **3 цех** | 320d? | 2025-08-30 09:00 A | 2026-10-07 18:00 |  | 75% | 109.59d |  |
| 1267 |  | приварить к люку сливной ямы вспомогательную ручку (ручка весит на стеллаже в слесарке) | 2h | 2026-08-30 09:00 | 2026-08-30 11:00 |  |  |  | start no earlier than 2026-08-30 09:00 |
| 1268 | 3.2 | **монтаж унитаз, получить на складе** | 0d | 2026-08-17 09:00 A | 2026-08-17 09:00 A |  | 100% |  |  |
| 1269 |  | крышка бачка лопнувшая- поменять по гарантии | 0d | 2026-08-17 09:00 A | 2026-08-17 09:00 A |  | 100% |  | start no earlier than 2026-08-17 09:00 |
| 1270 |  | закрыить металлом 1.5мм щель стена / площадка загрузки муки. Между рольворотой и стеной с окнами | 2h | 2026-08-15 09:00 A | 2026-08-15 11:00 A |  | 100% |  | start no earlier than 2026-08-15 09:00 |
| 1271 |  | закрыть щель битумной лентой стык площадка-профлист стенка. Полоску клеить из нутри, обезжирить. | 2h | 2026-08-16 09:00 A | 2026-08-16 11:00 A |  | 100% |  | start no earlier than 2026-08-16 09:00 |
| 1272 |  | монтаж светильник в корридор / лестница на площадку жиров | 3h | 2026-08-16 09:00 A | 2026-08-16 12:00 A |  | 100% |  | start no earlier than 2026-08-16 09:00 |
| 1273 | 3.6 | **ломает гранулу после печи** | 14.5d? | 2026-08-18 09:00 A | 2026-09-04 13:00 |  | 31% | 133.09d |  |
| 1274 |  | тест на ручной загрузке | 2h | 2026-08-18 09:00 A | 2026-08-18 11:00 A |  | 100% |  | start no earlier than 2026-08-18 09:00 |
| 1275 |  | полная раборка трассы на ревизию острых граней? | 2h | 2026-08-19 09:00 A | 2026-08-19 11:00 A |  | 100% |  | start no earlier than 2026-08-19 09:00 |
| 1276 |  | определить параметры нории для запроса цены | 2h | 2026-08-18 09:00 A | 2026-08-18 11:00 A |  | 100% |  | start no earlier than 2026-08-18 09:00 |
| 1277 |  | контроль отвта | 15min | 2026-09-03 09:00 | 2026-09-03 09:15 | 1276FS+5d |  | 134.56d | start no earlier than 2026-09-03 09:00 |
| 1278 |  | изготовить новый отвод 90 с фланцем, учесть степеньку. Позвонить Юре | 4h | 2026-09-03 09:00 | 2026-09-03 13:00 |  |  | 134.09d | start no earlier than 2026-09-03 09:00 |
| 1279 |  | тест | 1h | 2026-08-19 09:00 A | 2026-08-19 10:00 A |  | 100% |  | start no earlier than 2026-08-19 09:00 |
| 1280 |  | переварить фланец на угловом соединении (объясню по телефону). То же самое | 0h | 2026-09-03 09:00 | 2026-09-03 09:00 |  |  | 134.59d | start no earlier than 2026-09-03 09:00 |
| 1281 |  | печать переходника на 3д принтере | 1d? | 2026-08-31 09:00 | 2026-08-31 18:00 |  |  | 136.59d | start no earlier than 2026-08-31 09:00 |
| 1282 |  | проверка размещения нории от квадропака | 15min | 2026-08-18 09:00 A | 2026-08-18 09:15 A |  | 100% |  | start no earlier than 2026-08-18 09:00 |
| 1283 |  | установить угловой фланец на пневмотрассу | 4h | 2026-09-04 09:00 | 2026-09-04 13:00 |  |  | 133.09d | start no earlier than 2026-09-04 09:00 |
| 1284 | 3.7 | **доп мощности для приточной вентиляции** | 35d? | 2026-08-21 09:00 A | 2026-10-07 18:00 |  | 16% | 109.59d |  |
| 1285 |  | проект автоматика ограничения мощности в автомате | 1d? | 2026-08-31 09:00 | 2026-08-31 18:00 |  |  | 109.59d | start no earlier than 2026-08-31 09:00 |
| 1286 |  | составить ТЗ на монтаж кабеля | 3d | 2026-08-21 09:00 A | 2026-08-24 18:00 A |  | 100% |  | start no earlier than 2026-08-21 09:00 |
| 1287 |  | получить КП / счет договор | 0d | 2026-09-01 18:00 | 2026-09-01 18:00 | 1286FS+2d, 1285FS+1d |  | 109.59d | start no earlier than 2026-08-27 09:00 |
| 1288 |  | предоплата | 0d | 2026-09-02 18:00 | 2026-09-02 18:00 | 1287FS+1d |  | 109.59d | start no earlier than 2026-08-10 08:00 |
| 1289 |  | монтаж | 15d | 2026-09-17 09:00 | 2026-10-07 18:00 | 1288FS+10d |  | 109.59d | start no earlier than 2026-08-10 08:00 |
| 1290 |  | сделать перемычку на нижней части системы загрузки палет подачи жиров и гидрализата | 3h | 2026-08-15 09:00 | 2026-08-15 12:00 |  |  |  | start no earlier than 2026-08-15 09:00 |
| 1291 | 3.9 | **сборка квадропака 3 цех** | 5.25d | 2026-08-14 09:00 A | 2026-08-19 11:00 |  | 31% | 146.34d |  |
| 1292 |  | перестановка норий, задействовать бункер | 2h | 2026-08-17 09:00 A | 2026-08-17 11:00 A |  | 100% |  | start no earlier than 2026-08-17 09:00 |
| 1293 |  | сборка накопительный стол | 2h | 2026-08-19 09:00 A | 2026-08-19 11:00 A | 1292 | 100% |  | start no earlier than 2026-08-19 09:00 |
| 1294 |  | подключение дозатор | 1h | 2026-08-14 09:00 | 2026-08-14 10:00 |  |  | 151.47d | start no earlier than 2026-08-14 09:00 |
| 1295 |  | зарисовка схема ШУ нория - понять управление бункером | 4h | 2026-08-14 09:00 | 2026-08-14 13:00 |  |  | 150.72d | start no earlier than 2026-08-14 09:00 |
| 1296 |  | подключение нория к упаковке | 2h | 2026-08-14 14:00 | 2026-08-14 16:00 | 1295 |  | 150.72d | start no earlier than 2026-08-14 09:00 |
| 1297 |  | подключение вводный кабель | 1h | 2026-08-17 09:00 | 2026-08-17 10:00 | 1296 |  | 148.38d | start no earlier than 2026-08-17 09:00 |
| 1298 |  | подключениекомпрессор | 1h | 2026-08-17 10:00 | 2026-08-17 11:00 | 1297 |  | 148.34d | start no earlier than 2026-08-17 09:00 |
| 1299 |  | сделать ручку и зацепной крюк для открытия люка сливной ямы | 2h | 2026-08-08 09:00 A | 2026-08-08 11:00 A |  | 100% |  | start no earlier than 2026-08-08 09:00 |
| 1300 | 3.11 | **карусель добавить перемычку снизу, чтобы не выпал мешок** | 11.27d | 2026-08-18 09:00 A | 2026-09-01 11:10 |  | 7% | 136.32d |  |
| 1301 |  | заказать краску | 10min | 2026-08-18 09:00 A | 2026-08-18 09:10 A |  | 100% |  | start no earlier than 2026-08-18 09:00 |
| 1302 |  | контроль доставки | 10min | 2026-08-31 09:00 | 2026-08-31 09:10 | 1301FS+5d |  | 136.45d | start no earlier than 2026-08-31 09:00 |
| 1303 |  | покрасить перемычки | 2h | 2026-09-01 09:10 | 2026-09-01 11:10 | 1302FS+1d |  | 136.32d | start no earlier than 2026-08-15 09:00 |
| 1304 |  | убрать битумную ленту снаружи мезонина | 1h | 2026-08-04 08:00 A | 2026-08-04 09:00 A |  | 100% |  | start no earlier than 2026-08-04 08:00 |
| 1305 |  | хорошо закрепить шланг подачи воды в прекондеционер | 2h | 2026-08-04 08:00 A | 2026-08-04 10:00 A |  | 100% |  | start no earlier than 2026-08-04 08:00 |
| 1306 |  | на выходе ротаметра поменять шланг большего диаметра | 1h | 2026-07-31 08:00 A | 2026-07-31 09:00 A |  | 100% |  | start no earlier than 2026-07-31 08:00 |
| 1307 |  | покрасить кронштейн крепления ротаметра | 1h | 2026-07-31 09:00 A | 2026-07-31 10:00 A |  | 100% |  | start no earlier than 2026-07-31 09:00 |
| 1308 |  | не набирает заданную температуру 4 зона экструдера- разобраться | 2h | 2026-07-30 08:00 A | 2026-07-30 10:00 A |  | 100% |  | start no earlier than 2026-07-30 08:00 |
| 1309 |  | сборка кожухи на печи | 2h | 2026-07-15 09:00 A | 2026-07-15 11:00 A |  | 100% |  | start no earlier than 2026-07-15 09:00 |
| 1310 | 3.18 | **установить зеркало сферическое на бункер** | 17.5d | 2026-07-07 09:00 A | 2026-07-28 13:00 A |  | 100% |  |  |
| 1311 |  | заявка | 1h | 2026-07-07 09:00 A | 2026-07-07 10:00 A |  | 100% |  | start no earlier than 2026-07-07 09:00 |
| 1312 |  | контроль доставки | 0d | 2026-07-17 10:00 A | 2026-07-17 10:00 A | 1311FS+10d | 100% |  | start no earlier than 2026-07-14 08:00 |
| 1313 |  | монтаж | 4h | 2026-07-28 09:00 A | 2026-07-28 13:00 A | 1312FS+1d | 100% |  | start no earlier than 2026-07-28 09:00 |
| 1314 |  | поиск след от смазки на охладителе | 1h | 2026-07-10 09:00 A | 2026-07-10 10:00 A |  | 100% |  | start no earlier than 2026-07-10 09:00 |
| 1315 | 3.20 | **установить наосос центробежный на бочку слив с парогенератора, врезать штуцер в бочку** | 0.25d | 2026-07-15 09:00 A | 2026-07-15 11:00 A |  | 100% |  |  |
| 1316 |  | орг закуп с курьером | 2h | 2026-07-15 09:00 A | 2026-07-15 11:00 A |  | 100% |  | start no earlier than 2026-07-15 09:00 |
| 1317 |  | монтаж штуцер | 2h | 2026-07-15 09:00 A | 2026-07-15 11:00 A |  | 100% |  | start no earlier than 2026-07-15 09:00 |
| 1318 | 3.21 | **вода идет не стабильно** | 6.38d | 2026-07-09 09:00 A | 2026-07-15 12:00 A |  | 100% |  |  |
| 1319 |  | Поставить гидроаккумулятор на насос между выходом насосной станции и 3-х ходомым краном подачи воды в экструдер и заменить трубки на шланги | 3h | 2026-07-09 09:00 A | 2026-07-09 12:00 A |  | 100% |  | start no earlier than 2026-07-09 09:00 |
| 1320 |  | тест работы воды с ПГ на давлении питательного насоса 3+ | 1h | 2026-07-10 09:00 A | 2026-07-10 10:00 A |  | 100% |  | start no earlier than 2026-07-10 09:00 |
| 1321 |  | орг закуп с курьером | 2h | 2026-07-15 09:00 A | 2026-07-15 11:00 A | 1316SS | 100% |  | start no earlier than 2026-07-13 09:00 |
| 1322 |  | замена шланг напорный с насоса до ротаметра | 1h | 2026-07-15 11:00 A | 2026-07-15 12:00 A | 1321 | 100% |  | start no earlier than 2026-07-13 09:00 |
| 1323 |  | Доработать крутилку ссыпа гранулы, прихватить на сварку | 1h | 2026-07-09 09:00 A | 2026-07-09 10:00 A |  | 100% |  | start no earlier than 2026-07-09 09:00 |
| 1324 |  | удлинить лоток ножевого узла, до кромки загрузки применик пневмотранспорта | 3h | 2026-07-09 09:00 A | 2026-07-09 12:00 A |  | 100% |  | start no earlier than 2026-07-09 09:00 |
| 1325 |  | Снять торцевые дверцы на печи для доступа к сетке | 1h | 2026-07-08 09:00 A | 2026-07-08 10:00 A |  | 100% |  | start no earlier than 2026-07-08 08:00 |
| 1326 |  | Снять кожухи на редукторах на цепях | 1h | 2026-07-08 09:00 A | 2026-07-08 10:00 A |  | 100% |  | start no earlier than 2026-07-08 08:00 |
| 1327 |  | Установка раковины,унитаза в 3 цеху 2 этаж | 4h | 2026-07-07 09:00 A | 2026-07-07 13:00 A |  | 100% |  | start no earlier than 2026-07-07 09:00 |
| 1328 |  | Установить тройник на компрессор маленький, на входе. (тройни пришел сегодня на склад) | 1h | 2026-07-08 09:00 A | 2026-07-08 10:00 A |  | 100% |  | start no earlier than 2026-07-08 08:00 |
| 1329 |  | Вернуть упакованный унитаз на склад | 30min | 2026-07-08 09:00 A | 2026-07-08 09:30 A |  | 100% |  | start no earlier than 2026-07-08 08:00 |
| 1330 | 3.29 | **на тепловых реле 1 и 2 смесителя добавить порог выключения** | 1h? | 2026-07-11 09:00 | 2026-07-11 10:00 |  | 17% |  |  |

| ID | WBS | Task | Duration | Start | Finish | Predecessors | Complete | Total float | Constraint |
| --- | --- | --- | --- | --- | --- | --- | --- | --- | --- |
| 1331 |  | заявка на тепловые реле с большим номинолом | 15min | 2026-07-14 09:00 A | 2026-07-14 09:15 A |  | 100% |  | start no earlier than 2026-07-14 08:00 |
| 1332 |  | доставка контроль | 15min | 2026-08-28 09:00 | 2026-08-28 09:15 | 1331FS+5d |  | 137.44d | start no earlier than 2026-08-28 09:00 |
| 1333 |  | замена | 1h | 2026-09-01 09:00 | 2026-09-01 10:00 | 1332FS+1d |  | 136.47d | start no earlier than 2026-09-01 09:00 |
| 1334 |  | сделать ручки с резьбой для снятия матрицы экструдера | 2h | 2026-07-04 09:00 A | 2026-07-04 11:00 A |  | 100% |  | start no earlier than 2026-07-04 09:00 |
| 1335 |  | сделать противоудары головы на циклоне в зоне жиров | 1h | 2026-07-26 09:00 A | 2026-07-26 10:00 A |  | 100% |  | start no earlier than 2026-07-26 09:00 |
| 1336 |  | сделать откидную крышку на ножевом узле (расскажу как) | 8h | 2026-07-04 09:00 A | 2026-07-04 17:00 A |  | 100% |  | start no earlier than 2026-07-04 09:00 |
| 1337 |  | подклинивает охладитель (все ярусы)- разобраться почему | 2h | 2026-07-11 09:00 A | 2026-07-11 11:00 A |  | 100% |  | start no earlier than 2026-07-11 09:00 |
| 1338 | 3.34 | **откалибровать весы красных смесителей, муку с контрольным весом обеспечит 5ц** | 2h? | 2026-07-29 09:00 A | 2026-07-29 11:00 |  | 100% |  |  |
| 1339 |  | вызвать специалистов | 1d? | 2026-08-03 09:00 A | 2026-08-03 18:00 A |  | 100% |  | start no earlier than 2026-08-03 09:00 |
| 1340 | 3.35 | **установка частотника на шнек подачи со смесителей на ногу опоры шнека в разрыв питания шнека** | 0.12d | 2026-07-04 09:00 A | 2026-07-04 10:00 A |  | 100% |  |  |
| 1341 |  | демонтировать частотник шнека (в слесарку) | 1h | 2026-07-04 09:00 A | 2026-07-04 10:00 A |  | 100% |  | start no earlier than 2026-07-04 09:00 |
| 1342 |  | щель запенить выход из цеха | 1d? | 2026-07-02 09:00 A | 2026-07-02 18:00 A |  | 100% |  | start no earlier than 2026-07-02 09:00 |
| 1343 |  | силиконим двери прекондиционера (одну эксперимент) | 2h | 2026-07-02 09:00 A | 2026-07-02 11:00 A |  | 100% |  | start no earlier than 2026-07-03 09:00 |
| 1344 |  | наростить лопатку датчика переполнения на приемном лотке прекондиционера | 1h | 2026-06-30 09:00 A | 2026-06-30 10:00 A |  | 100% |  | start no earlier than 2026-06-30 09:00 |
| 1345 |  | установка бака стабилизации на подачу воды в прекондеционер (подключение) | 2h | 2026-07-02 09:00 A | 2026-07-02 11:00 A |  | 100% |  | start no earlier than 2026-07-02 09:00 |
| 1346 |  | изготовить фильтры на установки охлаждения | 1d? | 2026-07-06 09:00 | 2026-07-06 17:00 |  |  | 181.72d | start no earlier than 2026-07-06 09:00 |
| 1347 |  | удлинить горловину для второго красного смесителя | 2h | 2026-06-29 09:00 A | 2026-06-29 11:00 A |  | 100% |  | start no earlier than 2026-06-29 09:00 |
| 1348 |  | закрепить датчик сырья лопаткой в горке, под магнитом. Бункер экструдера | 4h | 2026-06-27 09:00 A | 2026-06-27 13:00 A |  | 100% |  | start no earlier than 2026-06-27 09:00 |
| 1349 |  | над магнитом сделать приемную воронку, борта, чтобы не пересыпалось сырье | 4h | 2026-06-27 09:00 A | 2026-06-27 13:00 A |  | 100% |  | start no earlier than 2026-06-27 09:00 |
| 1350 |  | удлинить воронку смесителя до горловины шнека. Приготовить сварщику, обяснить что нужно сделать. Вместо вибратора | 4h | 2026-06-27 09:00 A | 2026-06-27 13:00 A |  | 100% |  | start no earlier than 2026-06-27 09:00 |
| 1351 |  | байпас для масленной станции | 2h | 2026-07-01 09:00 A | 2026-07-01 11:00 A |  | 100% |  | start no earlier than 2026-07-01 09:00 |
| 1352 | 3.46 | **площадка для операторов для доступа к бункеру, что бы не наступали на краны** | 0.12d | 2026-07-02 09:00 A | 2026-07-02 10:00 A |  | 100% |  |  |
| 1353 |  | убрать заусенцы болгаркой | 1h | 2026-07-02 09:00 A | 2026-07-02 10:00 A |  | 100% |  | start no earlier than 2026-07-02 09:00 |
| 1354 | 3.47 | **монтаж второй площадки с другой стороны (лестницу берем у 5 цеха -белую)** | 0.12d | 2026-07-03 09:00 A | 2026-07-03 10:00 A |  | 100% |  |  |
| 1355 |  | покрасить лестницу (мастер ц.1 даст людей- контроль) | 1h | 2026-07-03 09:00 A | 2026-07-03 10:00 A |  | 100% |  | start no earlier than 2026-07-03 09:00 |
| 1356 |  | закрутить крышку двигателя улитки на циклоне жиров | 1h | 2026-06-25 09:00 A | 2026-06-25 10:00 A |  | 100% |  | start no earlier than 2026-06-25 09:00 |
| 1357 |  | укоротить шланг подачи масла | 1h | 2026-06-25 08:00 A | 2026-06-25 09:00 A |  | 100% |  | start no earlier than 2026-06-25 08:00 |
| 1358 |  | проверка подачи воды на парогенератор и прекондиционер, почему клапан подачи в бак заблокирован. | 2h | 2026-06-25 09:00 A | 2026-06-25 11:00 A |  | 100% |  | start no earlier than 2026-06-25 09:00 |
| 1359 |  | проверить парогенератор | 0.5h | 2026-06-25 09:00 A | 2026-06-25 09:30 A |  | 100% |  | start no earlier than 2026-06-25 09:00 |
| 1360 |  | вскрыть парогенератор, чистка электродов- фото | 3h | 2026-06-25 08:00 A | 2026-06-25 11:00 A |  | 100% |  | start no earlier than 2026-06-25 08:00 |
| 1361 |  | подключить ролеты на охладителе | 1h | 2026-06-25 09:00 A | 2026-06-25 10:00 A |  | 100% |  | start no earlier than 2026-06-25 09:00 |
| 1362 |  | изготовление и установка шибера в лоток | 2h | 2026-06-25 09:00 A | 2026-06-25 11:00 A |  | 100% |  | start no earlier than 2026-06-25 09:00 |
| 1363 |  | контроль печи, будет включена пока не перестанет дымить | 1h | 2026-06-24 09:00 A | 2026-06-24 10:00 A |  | 100% |  | start no earlier than 2026-06-24 09:00 |
| 1364 | 3.56 | **взять на складе у Веры кронштейн под щетку, закрепить на него саму щетку и прикрутить на мезонине навесок в сторону ворот** | 30.38d | 2026-07-07 09:00 A | 2026-08-14 12:00 A |  | 100% |  |  |
| 1365 |  | заказать профиль 5мм | 15min | 2026-07-07 09:00 A | 2026-07-07 09:15 A |  | 100% |  | start no earlier than 2026-07-07 09:00 |
| 1366 |  | контроль досставки | 15min | 2026-07-17 09:15 A | 2026-07-17 09:30 A | 1365FS+10d | 100% |  | start no earlier than 2026-07-07 09:00 |
| 1367 |  | прикрепить на клепки/ саморезу щетку и установить на мезонине где ворота (все это находиться в 3 ц. справа на входе) Еще одна щетка есть у веры на складе, висела на кабинке | 3h | 2026-08-14 09:00 A | 2026-08-14 12:00 A | 1366 | 100% |  |  |
| 1368 |  | кабель трется о дверь, уложить в лоток, приподнять -закрепить к воздуховоду | 3h | 2026-06-24 09:00 A | 2026-06-24 12:00 A |  | 100% |  | start no earlier than 2026-06-24 09:00 |
| 1369 |  | на частотнике пневмоулитки на жирах- увеличить время разгона и торможения | 1h | 2026-06-23 09:00 A | 2026-06-23 10:00 A |  | 100% |  | start no earlier than 2026-06-23 09:00 |
| 1370 |  | проверить редукторы на печи (утечка есть или нет) | 1h | 2026-06-23 09:00 A | 2026-06-23 10:00 A |  | 100% |  | start no earlier than 2026-06-23 09:00 |
| 1371 |  | убрать трубу нерж в коридоре возле охладителя в комнату на выходе из цеха | 1h | 2026-06-20 09:00 A | 2026-06-20 10:00 A |  | 100% |  | start no earlier than 2026-06-20 09:00 |
| 1372 |  | капает с улитки вытяжки печи- просверлить сверло 6мм | 1h | 2026-06-20 09:00 A | 2026-06-20 10:00 A |  | 100% |  | start no earlier than 2026-06-20 09:00 |
| 1373 |  | герметизация всех стыков вневмотрубы аллюминевым скотчем (улитка с печи на жиры) | 1h | 2026-06-21 09:00 A | 2026-06-21 10:00 A |  | 100% |  | start no earlier than 2026-06-21 09:00 |
| 1374 |  | отпилить одну перекладину опоры вентиляции, чтобы открывалась дверь печи | 3h | 2026-06-21 09:00 A | 2026-06-21 12:00 A |  | 100% |  | start no earlier than 2026-06-21 09:00 |
| 1375 |  | проверка подачи воды в прекондиционер | 1h | 2026-06-21 09:00 A | 2026-06-21 10:00 A |  | 100% |  | start no earlier than 2026-06-21 09:00 |
| 1376 |  | включаем печь, прожигаем масло- чтобы вагорело и не дымило… контроль | 1h | 2026-06-23 09:00 A | 2026-06-23 10:00 A |  | 100% |  | start no earlier than 2026-06-23 09:00 |
| 1377 |  | прикрутить горловину прекондиционера (находиться в комнате на выходе из цеха) | 1h | 2026-06-20 09:00 A | 2026-06-20 10:00 A |  | 100% |  | start no earlier than 2026-06-20 09:00 |
| 1378 |  | на 1 и 2 зоне температура растет больше факта- проверить | 1h | 2026-06-23 09:00 A | 2026-06-23 10:00 A |  | 100% |  | start no earlier than 2026-06-23 09:00 |
| 1379 |  | собрать парогенератор (насос+ вход вода в парик) | 1h | 2026-06-19 09:00 A | 2026-06-19 10:00 A |  | 100% |  | start no earlier than 2026-06-19 09:00 |
| 1380 |  | увеличить частоту на пневмоулитку с печи в жиры | 1h | 2026-06-19 09:00 A | 2026-06-19 10:00 A |  | 100% |  | start no earlier than 2026-06-19 09:00 |
| 1381 |  | трубу жиротопки утеплить | 2h | 2026-06-18 09:00 A | 2026-06-18 11:00 A |  | 100% |  | start no earlier than 2026-06-18 08:00 |
| 1382 |  | установка смесителя душа 2 этаж продолжить | 4h | 2026-07-07 09:00 A | 2026-07-07 13:00 A |  | 100% |  | start no earlier than 2026-07-07 09:00 |
| 1383 |  | на прекондеционере настроить премыкание на всех дверцах | 3h | 2026-06-21 09:00 A | 2026-06-21 12:00 A |  | 100% |  | start no earlier than 2026-06-21 09:00 |
| 1384 |  | обрезить шпильки, которые торчат, на воздуховодах вентиляции (зона навесок и жиров) | 2h | 2026-06-18 09:00 A | 2026-06-18 11:00 A |  | 100% |  | start no earlier than 2026-06-18 08:00 |
| 1385 | 3.74 | **модернизация схема ШУ жиротопки - отключается циркуляц насос при достжении температуры** | 6.5d | 2026-06-07 09:00 A | 2026-06-15 13:00 A |  | 100% |  |  |
| 1386 |  | изучить схему, согласовать предложения модернизации | 1h | 2026-06-07 09:00 A | 2026-06-07 10:00 A |  | 100% |  | start no earlier than 2026-06-07 09:00 |
| 1387 |  | реализации модернизации | 4h | 2026-06-15 09:00 A | 2026-06-15 13:00 A | 1386 | 100% |  | start no earlier than 2026-06-15 09:00 |
| 1388 | 3.75 | **сборка квадропак с системой дозации** | 64.5d | 2026-06-18 09:00 A | 2026-09-04 13:00 |  | 27% | 133.09d |  |
| 1389 |  | сборка нория | 8h | 2026-07-17 09:00 | 2026-07-17 17:00 |  |  | 169.72d | start no earlier than 2026-07-17 09:00 |
| 1390 |  | сборка площадка | 7h | 2026-07-17 17:00 | 2026-07-20 12:00 | 1389 |  | 169.72d | start no earlier than 2026-07-09 08:00 |
| 1391 |  | монтаж весы | 5h | 2026-07-20 12:00 | 2026-07-20 17:00 | 1390 |  | 169.72d | start no earlier than 2026-07-09 08:00 |
| 1392 |  | подключить квадропак / пусконаладка | 4h | 2026-09-04 09:00 | 2026-09-04 13:00 |  |  | 133.09d | start no earlier than 2026-09-04 09:00 |
| 1393 |  | разгрузка / распаковка | 1h | 2026-06-18 09:00 A | 2026-06-18 10:00 A |  | 100% |  | start no earlier than 2026-06-18 09:00 |
| 1394 |  | сборка рама в 1ц над столом выгрузки пакетов. Примерка/доработка рамы по месту | 4h | 2026-07-09 09:00 A | 2026-07-09 13:00 A |  | 100% |  | start no earlier than 2026-07-09 09:00 |
| 1395 |  | сборка дозатор | 4h | 2026-07-09 09:00 A | 2026-07-09 13:00 A |  | 100% |  | start no earlier than 2026-07-09 09:00 |
| 1396 |  | устранить заусенцы пол площадки жиротопки. Рвет тряпку уборщица. | 4h | 2026-05-31 09:00 A | 2026-05-31 13:00 A |  | 100% |  | start no earlier than 2026-05-31 09:00 |
| 1397 | 3.77 | **востановить насос циркуляция воды на жиротопке** | 10.32d | 2026-06-06 09:00 A | 2026-06-18 11:35 A |  | 100% |  |  |
| 1398 |  | разборка насос / выяснить причину заклинивания | 1h | 2026-06-06 09:00 A | 2026-06-06 10:00 A |  | 100% |  | start no earlier than 2026-06-06 09:00 |
| 1399 |  | заявка аналог | 20min | 2026-06-08 09:00 A | 2026-06-08 09:20 A | 1398 | 100% |  | start no earlier than 2026-06-08 09:00 |
| 1400 |  | контроль доставка | 15min | 2026-06-17 09:20 A | 2026-06-17 09:35 A | 1399FS+7d | 100% |  | start no earlier than 2026-06-05 08:00 |

| ID | WBS | Task | Duration | Start | Finish | Predecessors | Complete | Total float | Constraint |
| --- | --- | --- | --- | --- | --- | --- | --- | --- | --- |
| 1401 |  | замена | 2h | 2026-06-18 09:35 A | 2026-06-18 11:35 A | 1400FS+1d | 100% |  | start no earlier than 2026-06-05 08:00 |
| 1402 | 3.78 | **жиротопка** | 10.25d | 2026-06-09 09:00 A | 2026-06-22 11:00 A |  | 100% |  |  |
| 1403 |  | (проверить двигатель и сам насос) | 1h | 2026-06-09 09:00 A | 2026-06-09 10:00 A |  | 100% |  | start no earlier than 2026-06-09 09:00 |
| 1404 |  | ремонт заклинившего насоса жиров (сняли сегодя голову ) | 1h | 2026-06-18 09:00 A | 2026-06-18 10:00 A | 1403 | 100% |  | start no earlier than 2026-06-18 09:00 |
| 1405 |  | установить насос, который перебрал Труфанов поставить на штатное место / если не заработает ставим новый | 1h | 2026-06-21 09:00 A | 2026-06-21 10:00 A | 1404 | 100% |  | start no earlier than 2026-06-21 09:00 |
| 1406 |  | восстановить работу пускателя на насос перекачки с бака в бак | 4h | 2026-06-20 09:00 A | 2026-06-20 13:00 A |  | 100% |  | start no earlier than 2026-06-20 09:00 |
| 1407 |  | подключить все шланги подачи жира в баки | 2h | 2026-06-22 09:00 A | 2026-06-22 11:00 A |  | 100% |  | start no earlier than 2026-06-22 09:00 |
| 1408 | 3.79 | **трасса нерж жиротопка- баки, найти утечки устранить** | 0d | 2026-05-23 09:00 A | 2026-05-23 15:00 A |  | 100% |  |  |
| 1409 |  | заварить места утечки и восстановить утеплитель + греющий кабель | 6h | 2026-05-23 09:00 A | 2026-05-23 15:00 A |  | 100% |  | start no earlier than 2026-05-23 09:00 |
| 1410 | 3.80 | **защита ворот на мезонине загрузки** | 8h? | 2026-05-22 09:00 | 2026-05-22 18:00 |  | 100% |  |  |
| 1411 |  | покрасить конструкцию | 2h | 2026-05-31 09:00 A | 2026-05-31 11:00 A |  | 100% |  | start no earlier than 2026-05-31 09:00 |
| 1412 |  | приварить дополнительную перекладину на защиту воротины | 2h | 2026-07-07 09:00 A | 2026-07-07 11:00 A |  | 100% |  | start no earlier than 2026-07-07 09:00 |
| 1413 |  | заказать щетку и битумную ленту | 1h | 2026-05-31 11:00 A | 2026-05-31 12:00 A | 1411 | 100% |  | start no earlier than 2026-05-22 09:00 |
| 1414 |  | контроль доставки | 1d? | 2026-05-31 12:00 A | 2026-06-01 12:00 A | 1413 | 100% |  | start no earlier than 2026-05-29 09:00 |
| 1415 |  | установка щетки | 4h | 2026-08-13 09:00 A | 2026-08-13 13:00 A |  | 100% |  | start no earlier than 2026-08-13 09:00 |
| 1416 |  | монтаж | 1d? | 2026-05-29 09:00 A | 2026-05-29 18:00 A |  | 100% |  | start no earlier than 2026-05-29 09:00 |
| 1417 |  | установить щетку на поломоечную машину (щетка на складе) | 2h | 2026-05-21 09:00 A | 2026-05-21 11:00 A |  | 100% |  | start no earlier than 2026-05-21 08:00 |
| 1418 |  | площадка мезонина зона фасовки- убрать щели профиля битумной лентой | 2h | 2026-05-21 09:00 A | 2026-05-21 11:00 A |  | 100% |  | start no earlier than 2026-05-21 09:00 |
| 1419 |  | прикрутить дюзы форсунок подачи воды в прекондиционер, взять у меня на столе. | 1h | 2026-05-22 09:00 A | 2026-05-22 10:00 A |  | 100% |  | start no earlier than 2026-05-22 09:00 |
| 1420 |  | проверить насос подачи жира со 2 бака на барабаны, Викторович его разобрал | 2h | 2026-05-19 08:00 A | 2026-05-19 10:00 A |  | 100% |  | start no earlier than 2026-05-19 08:00 |
| 1421 |  | проверить рабочий или нет циркуляционный насос для змеевика на жиротопке | 1h | 2026-05-19 08:00 A | 2026-05-19 09:00 A |  | 100% |  | start no earlier than 2026-05-19 08:00 |
| 1422 |  | проверка оборудования на жирах водой | 3h | 2026-05-19 09:00 A | 2026-05-19 12:00 A |  | 100% |  | start no earlier than 2026-05-20 09:00 |
| 1423 |  | покраска пол под лотком барабан-охладитель | 1h | 2026-05-15 09:00 A | 2026-05-15 10:00 A |  | 100% |  | start no earlier than 2026-05-15 09:00 |
| 1424 | 3.88 | **ремонт ворот рольставня** | 6.12d | 2026-05-14 09:00 A | 2026-05-20 10:00 A |  | 100% |  |  |
| 1425 |  | вызывать сервис | 1h | 2026-05-14 09:00 A | 2026-05-14 10:00 A |  | 100% |  | start no earlier than 2026-05-14 09:00 |
| 1426 |  | контроль работ | 1h | 2026-05-20 09:00 A | 2026-05-20 10:00 A |  | 100% |  | start no earlier than 2026-05-20 09:00 |
| 1427 |  | вырезать косая пластина в воронку пневмотранспорта на подачу жиров | 2h | 2026-05-14 09:00 A | 2026-05-14 11:00 A |  | 100% |  | start no earlier than 2026-05-14 09:00 |
| 1428 |  | убрать бороду от вентиляторов | 4h | 2026-05-12 09:00 A | 2026-05-12 13:00 A |  | 100% |  | start no earlier than 2026-05-12 09:00 |
| 1429 |  | монтаж кабель управления заслонками вентиляторы окно | 4h | 2026-05-20 09:00 A | 2026-05-20 13:00 A |  | 100% |  | start no earlier than 2026-05-22 09:00 |
| 1430 | 3.92 | **автоматика управления смесителями** | 95.38d | 2026-05-04 09:00 A | 2026-08-24 12:00 |  | 91% | 142.22d |  |
| 1431 |  | поменять местами переключатели управления смесителями левый что бы включал поперечный смеситель | 2h | 2026-07-12 09:00 A | 2026-07-12 11:00 A |  | 100% |  | start no earlier than 2026-07-12 09:00 |
| 1432 |  | сделать подключение красных смесителей по схеме Домоводова | 22h | 2026-05-18 09:00 A | 2026-05-19 07:00 A |  | 100% |  | start no earlier than 2026-05-19 09:00 |
| 1433 |  | доработка схемы управления смесителями по логике ТЗ, упорядочить монтаж, промаркировать соденения | 8h | 2026-05-04 09:00 A | 2026-05-04 17:00 A |  | 100% |  | start no earlier than 2026-05-04 09:00 |
| 1434 |  | уложить красиво все провода в шкафу управления смесителями | 3h | 2026-08-24 09:00 | 2026-08-24 12:00 |  |  | 142.22d | start no earlier than 2026-08-24 09:00 |
| 1435 | 3.93 | **установить воздуховод на 300мм на красные смесители** | 9.25d | 2026-05-08 08:00 A | 2026-05-18 11:00 A |  | 100% |  |  |
| 1436 |  | заказать другой диаметр | 0d | 2026-05-08 08:00 A | 2026-05-08 08:00 A |  | 100% |  | start no earlier than 2026-05-08 08:00 |
| 1437 |  | установить ф300 | 0h | 2026-05-13 09:00 A | 2026-05-13 09:00 A |  | 100% |  | start no earlier than 2026-05-13 09:00 |
| 1438 |  | красные смесители вернуть воздуховоды (доработать рукав пересыпки воронка-смеситель) | 2h | 2026-05-13 09:00 A | 2026-05-13 11:00 A |  | 100% |  | start no earlier than 2026-05-13 09:00 |
| 1439 |  | сборка рукав на второй смеситель. Сшить по образцу | 2h | 2026-05-18 09:00 A | 2026-05-18 11:00 A |  | 100% |  | start no earlier than 2026-05-18 09:00 |
| 1440 |  | проверить почему не запускается приточная вентиляция в вент. Камере 7,5кВт | 1h | 2026-04-29 08:00 A | 2026-04-29 09:00 A |  | 100% |  | start no earlier than 2026-04-29 08:00 |
| 1441 |  | прозвонить кнопку индикации водителя под сиденьем (позвони объясню) | 2h | 2026-04-15 09:00 A | 2026-04-15 11:00 A |  | 100% |  | start no earlier than 2026-04-15 08:00 |
| 1442 |  | проверить приход с Китая по шнекам и гильзам | 1h | 2026-04-09 09:00 A | 2026-04-09 10:00 A |  | 100% |  | start no earlier than 2026-04-09 08:00 |
| 1443 |  | собрать и установить мойку (со старой прикрутить смеситель) мойка у Веры на складе на 2 верхнем ярусе стеллажей | 2h | 2026-04-05 09:00 A | 2026-04-05 11:00 A |  | 100% |  | start no earlier than 2026-04-05 09:00 |
| 1444 |  | вывоз 3 поддона с мусором | 30min | 2026-03-24 09:00 A | 2026-03-24 09:30 A |  | 100% |  | start no earlier than 2026-03-24 09:00 |
| 1445 |  | установить отбойники на стеллажи | 8h | 2026-03-29 09:00 A | 2026-03-29 18:00 A |  | 100% |  | start no earlier than 2026-03-29 09:00 |
| 1446 |  | установить отбойники на стеллажи | 5h | 2026-04-18 09:00 A | 2026-04-18 15:00 A |  | 100% |  | start no earlier than 2026-04-18 09:00 |
| 1447 |  | уборка зона курилка / венткамера | 4h | 2026-03-17 09:00 A | 2026-03-17 13:00 A |  | 100% |  | start no earlier than 2026-03-17 09:00 |
| 1448 | 3.102 | **сборка квадропак** | 16d | 2026-05-06 09:00 A | 2026-05-24 11:00 A |  | 100% |  |  |
| 1449 |  | подвести воздух к квадропаку | 4h | 2026-05-22 09:00 A | 2026-05-22 13:00 A |  | 100% |  | start no earlier than 2026-05-22 09:00 |
| 1450 |  | установить перед пневмораспределителями влагоотделитель | 2h | 2026-05-24 09:00 A | 2026-05-24 11:00 A |  | 100% |  | start no earlier than 2026-05-24 09:00 |
| 1451 |  | подключить квадропак к щитку кабель 5х2,5 | 4h | 2026-05-06 09:00 A | 2026-05-06 13:00 A |  | 100% |  | start no earlier than 2026-05-06 09:00 |
| 1452 |  | крепление магистрали компрессора. Зона дрожировки | 1h | 2026-03-08 09:00 A | 2026-03-08 10:00 A |  | 100% |  | start no earlier than 2026-03-08 09:00 |
| 1453 |  | Собрать транспортер тип2 (уточнить у Шуранова)/ доделать | 3h | 2026-03-08 09:00 A | 2026-03-08 12:00 A |  | 100% |  | start no earlier than 2026-03-08 09:00 |
| 1454 | 3.105 | **Покраска лестницы** | 53d | 2026-03-04 09:00 A | 2026-05-01 01:00 A |  | 100% |  |  |
| 1455 |  | Заявка на краску | 20min | 2026-03-04 09:00 A | 2026-03-04 09:20 A |  | 100% |  | start no earlier than 2026-03-04 09:00 |
| 1456 |  | Доставка | 10d | 2026-03-04 09:20 A | 2026-03-14 09:20 A | 1455 | 100% |  | start no earlier than 2026-03-03 08:00 |
| 1457 |  | Работа по покраске | 6h | 2026-04-28 09:00 A | 2026-04-28 16:00 A | 1456 | 100% |  | start no earlier than 2026-04-28 09:00 |
| 1458 |  | покраска колонны в коридоре | 4h | 2026-04-28 09:00 A | 2026-04-28 13:00 A |  | 100% |  | start no earlier than 2026-04-28 08:00 |
| 1459 |  | покарска потолок в корридоре | 2d | 2026-04-30 09:00 A | 2026-05-01 01:00 A |  | 100% |  | start no earlier than 2026-04-30 09:00 |
| 1460 | 3.106 | **доработка лотка барабан-охладитель - снизить скорость падения, установить сетку** | 1.5d? | 2026-04-14 09:00 | 2026-04-15 13:00 |  | 88% |  |  |
| 1461 |  | сборка кронштейны + стека | 5h | 2026-05-13 09:00 A | 2026-05-13 15:00 A |  | 100% |  | start no earlier than 2026-05-13 09:00 |
| 1462 |  | сборка ручки, установка. Фотоотчет | 2h | 2026-05-15 09:00 A | 2026-05-15 11:00 A |  | 100% |  | start no earlier than 2026-05-15 09:00 |
| 1463 |  | сборка вращающаяся заслонка | 4h | 2026-05-15 11:00 A | 2026-05-15 16:00 A | 1462 | 100% |  | start no earlier than 2026-05-15 09:00 |
| 1464 |  | доработка пластины, что бы не клинила | 1h | 2026-05-21 09:00 A | 2026-05-21 10:00 A |  | 100% |  | start no earlier than 2026-05-22 09:00 |
| 1465 |  | заказ на лазере пластину для регулировки шибера | 1d? | 2026-05-25 09:00 A | 2026-05-25 18:00 A |  | 100% |  | start no earlier than 2026-05-25 09:00 |
| 1466 |  | чертеж пластина фиксации рычага | 2h | 2026-05-19 09:00 A | 2026-05-19 11:00 A | 1463 | 100% |  | start no earlier than 2026-05-19 09:00 |
| 1467 |  | заявка на изготвление на лазер | 15min | 2026-05-20 11:00 A | 2026-05-20 11:15 A | 1466FS+1d | 100% |  | start no earlier than 2026-05-15 08:00 |
| 1468 |  | контроль изг | 15min | 2026-06-01 09:00 A | 2026-06-01 09:15 A | 1467FS+5d | 100% |  | start no earlier than 2026-06-01 09:00 |
| 1469 |  | доставка орг | 15min | 2026-06-05 09:00 A | 2026-06-05 09:15 A | 1468FS+1d | 100% |  | start no earlier than 2026-06-05 09:00 |
| 1470 |  | сборка рычага | 4h | 2026-06-06 09:15 | 2026-06-06 14:15 | 1469FS+1d |  | 207.06d | start no earlier than 2026-06-06 09:00 |

| ID | WBS | Task | Duration | Start | Finish | Predecessors | Complete | Total float | Constraint |
| --- | --- | --- | --- | --- | --- | --- | --- | --- | --- |
| 1471 |  | сделать напраляшку на шибере регулируемую- сыпит в одну сторону | 1d? | 2026-06-17 09:00 A | 2026-06-17 17:00 A |  | 100% |  | start no earlier than 2026-06-23 09:00 |
| 1472 |  | сборка система отопления 2 этаж | 1d? | 2026-06-15 09:00 | 2026-06-15 18:00 |  |  | 199.59d | start no earlier than 2026-06-15 09:00 |
| 1473 | 3.108 | **заменить сопряжение смесителей на гибк вставку** | 36.25d | 2026-03-19 09:00 A | 2026-04-29 11:00 A |  | 100% |  |  |
| 1474 |  | заявка | 30min | 2026-03-19 09:00 A | 2026-03-19 09:30 A |  | 100% |  | start no earlier than 2026-03-19 09:00 |
| 1475 |  | доставка | 15d | 2026-03-19 09:30 A | 2026-04-04 09:30 A | 1474 | 100% |  | start no earlier than 2026-02-27 08:00 |
| 1476 |  | замена | 2h | 2026-04-29 09:00 A | 2026-04-29 11:00 A | 1475 | 100% |  | start no earlier than 2026-04-29 09:00 |
| 1477 | 3.109 | **приточная вентиляция** | 52.25d | 2026-03-06 09:00 A | 2026-05-04 11:00 |  | 31% | 237.34d |  |
| 1478 |  | визит Евгения. Контроль монтажа | 30min | 2026-03-06 09:00 A | 2026-03-06 09:30 A |  | 100% |  | start no earlier than 2026-03-06 09:00 |
| 1479 |  | подключить силовой кабель в ШУ (лежит в лотке) | 3h | 2026-03-13 09:00 A | 2026-03-13 12:00 A |  | 100% |  | start no earlier than 2026-03-13 09:00 |
| 1480 |  | монтаж изоляционных прокладок вводный автомат между фазами | 2h | 2026-03-20 09:00 | 2026-03-20 11:00 |  |  | 275.34d | start no earlier than 2026-03-20 09:00 |
| 1481 |  | подключить нулевой провод шкаф управления | 2h | 2026-03-20 09:00 | 2026-03-20 11:00 |  |  | 275.34d | start no earlier than 2026-03-20 09:00 |
| 1482 |  | монтаж перемычек от автомата на ТВ реле . Звонить Дедову | 1d | 2026-03-20 09:00 | 2026-03-20 17:00 |  |  | 274.72d | start no earlier than 2026-03-20 09:00 |
| 1483 |  | замена схемы включения вентилятор вытяжка / приточка | 2h | 2026-05-04 09:00 A | 2026-05-04 11:00 A |  | 100% |  | start no earlier than 2026-05-04 09:00 |
| 1484 |  | установить гидроаккумулятор | 2h | 2026-03-03 09:00 A | 2026-03-03 11:00 A |  | 100% |  | start no earlier than 2026-03-03 09:00 |
| 1485 |  | тест герметичности. жиропровод нерж оборудовать греющим кабелем + утеплитель. | 2h | 2026-05-31 09:00 | 2026-05-31 11:00 |  |  | 213.34d | start no earlier than 2026-05-31 09:00 |
| 1486 | 3.112 | **установить перила площадка загрузки навески** | 0.25d | 2026-05-27 09:00 A | 2026-05-27 11:00 A |  | 100% |  |  |
| 1487 |  | покрасить перила | 2h | 2026-05-27 09:00 A | 2026-05-27 11:00 A |  | 100% |  | start no earlier than 2026-05-27 09:00 |
| 1488 |  | дорабать качелю безопасности на площадке загрузки навески что бы не задевала за вентиляцию | 2h | 2026-05-12 09:00 A | 2026-05-12 11:00 A |  | 100% |  | start no earlier than 2026-05-12 09:00 |
| 1489 |  | подготовить отражатели тепла на подшипники печи линия 4 | 8h | 2025-08-30 09:00 | 2025-08-30 17:00 |  |  | 428.72d | start no earlier than 2025-08-30 09:00 |
| 1490 |  | усилить раму прекондиционера | 1d? | 2026-04-28 08:00 A | 2026-04-28 16:00 A |  | 100% |  | start no earlier than 2026-04-28 08:00 |
| 1491 |  | переместить магнит загрузки сырья | 2h | 2026-05-07 09:00 A | 2026-05-07 11:00 A |  | 100% |  | start no earlier than 2026-05-07 09:00 |
| 1492 |  | труба выход пара греет шнек - переместить | 1d? | 2026-06-19 09:00 | 2026-06-19 17:00 |  |  | 195.72d | start no earlier than 2026-06-19 09:00 |
| 1493 |  | герметизация примыкание на выходе из печи | 2d | 2026-05-18 09:00 A | 2026-05-19 18:00 A |  | 100% |  | start no earlier than 2026-05-18 09:00 |
| 1494 |  | обшить стены курилки | 2d | 2026-04-30 09:00 A | 2026-05-01 18:00 A |  | 100% |  | start no earlier than 2026-04-30 09:00 |
| 1495 |  | покраска рамы воздуховодов уличные | 4h | 2026-05-27 09:00 | 2026-05-27 13:00 |  |  | 217.09d | start no earlier than 2026-05-27 09:00 |
| 1496 | 3.121 | **Люки на колодцы** | 13.31d | 2026-05-26 09:00 A | 2026-06-08 11:30 |  | 98% | 205.28d |  |
| 1497 |  | Консультация с Олегом | 30min | 2026-05-26 09:00 A | 2026-05-26 09:30 A |  | 100% |  | start no earlier than 2026-05-26 08:00 |
| 1498 |  | Заявка на закуп | 30min | 2026-05-29 09:00 A | 2026-05-29 09:30 A | 1497 | 100% |  | start no earlier than 2026-05-29 09:00 |
| 1499 |  | Доставка, контроль | 10d | 2026-05-29 09:30 A | 2026-06-08 09:30 A | 1498 | 100% |  | start no earlier than 2026-05-26 09:00 |
| 1500 |  | установка люков на колодцы | 2h | 2026-06-08 09:30 | 2026-06-08 11:30 | 1499 |  | 205.28d | start no earlier than 2026-06-04 09:00 |
| 1501 |  | Выяснить количество теплопотерь с печи на входе | 1h | 2026-08-28 09:00 | 2026-08-28 10:00 |  |  | 138.47d | start no earlier than 2026-08-28 09:00 |
| 1502 |  | Переделка входа пневмотрассы с печи на жиры, сделать плавный переход из двух углов по 45 | 4h | 2026-07-24 09:00 | 2026-07-24 13:00 |  |  | 166.09d | start no earlier than 2026-07-24 09:00 |
| 1503 | 3.124 | **Печь** | 0d | 2026-07-25 09:00 A | 2026-07-26 11:00 A |  | 100% |  |  |
| 1504 |  | Переделка входа пневмотрассы с печи на жиры, сделать плавный переход из двух углов по 45, закончить если Валентин не доделал или взять в работу если Валентин не начал. Уточнить у него как он хотел сделать. | 4h | 2026-07-25 09:00 A | 2026-07-25 13:00 A |  | 100% |  | start no earlier than 2026-07-25 09:00 |
| 1505 |  | 4 зона шкаф управления не набирает заданную температуру, выяснить причину/устранить | 2h | 2026-07-26 09:00 A | 2026-07-26 11:00 A |  | 100% |  | start no earlier than 2026-07-26 09:00 |
| 1506 | 3.125 | **розетки** | 0.25d | 2026-07-25 09:00 A | 2026-07-27 11:00 A |  | 100% |  |  |
| 1507 |  | Монтаж розетки для болера, где мойка экструдера, подключиться к резерву ШУ на экструдере | 2h | 2026-07-25 09:00 A | 2026-07-25 11:00 A |  | 100% |  | start no earlier than 2026-07-25 09:00 |
| 1508 |  | Монтаж розетки, где ворота выхода готовой продукции | 2h | 2026-07-27 09:00 A | 2026-07-27 11:00 A |  | 100% |  |  |
| 1509 | 3.126 | **Дражжировка** | 0d | 2026-07-26 09:00 A | 2026-07-26 11:00 A |  | 100% |  |  |
| 1510 |  | Устранить течь за раковиной. Вода перекрывается на потолке возле главной вентилляции | 2h | 2026-07-26 09:00 A | 2026-07-26 11:00 A |  | 100% |  | start no earlier than 2026-07-26 09:00 |
| 1511 |  | обшить стены вент камеры | 2d | 2026-05-06 09:00 A | 2026-05-07 18:00 A |  | 100% |  | start no earlier than 2026-05-06 09:00 |
| 1512 |  | убрать металл 100*100 в зону охладителя или корридор | 1h | 2026-03-02 09:00 A | 2026-03-02 10:00 A |  | 100% |  | start no earlier than 2026-03-02 09:00 |
| 1513 | 4 | **4 склад** | 109.75d | 2026-03-13 09:00 A | 2026-07-15 16:00 |  | 100% |  |  |
| 1514 |  | реверс направления кнопок движения вперед-назад ричтрака | 2h | 2026-07-14 08:00 A | 2026-07-14 10:00 A |  | 100% |  | start no earlier than 2026-07-14 08:00 |
| 1515 |  | 2 ветки не работают светильники -разобраться | 1h | 2026-07-02 09:00 A | 2026-07-02 10:00 A |  | 100% |  | start no earlier than 2026-07-02 09:00 |
| 1516 |  | Выяснить почему перегорают светильники | 2h | 2026-07-29 08:00 A | 2026-07-29 10:00 A |  | 100% |  | start no earlier than 2026-07-29 08:00 |
| 1517 |  | замена светильников | 8h | 2026-04-17 09:00 A | 2026-04-17 18:00 A |  | 100% |  | start no earlier than 2026-04-17 08:00 |
| 1518 |  | сборка рохли 1шт | 1h | 2026-03-13 09:00 A | 2026-03-13 10:00 A |  | 100% |  | start no earlier than 2026-03-13 09:00 |
| 1519 |  | ремонт обрамление погрузочной рампы | 4h | 2026-05-28 09:00 A | 2026-05-28 13:00 A |  | 100% |  | start no earlier than 2026-05-28 09:00 |
| 1520 |  | замена неисправных светильников | 1d | 2026-03-14 09:00 A | 2026-03-14 17:00 A |  | 100% |  | start no earlier than 2026-03-14 09:00 |
| 1521 | 4.8 | **замена неисправных светильников** | 106.75d | 2026-03-16 09:00 A | 2026-07-15 16:00 A |  | 100% |  |  |
| 1522 |  | заявка светильники | 15min | 2026-03-16 09:00 A | 2026-03-16 09:15 A |  | 100% |  | start no earlier than 2026-03-16 09:00 |
| 1523 |  | доставка | 5d | 2026-03-16 09:15 A | 2026-03-21 09:15 A | 1522 | 100% |  | start no earlier than 2026-03-12 08:00 |
| 1524 |  | замена | 6h | 2026-07-15 09:00 A | 2026-07-15 16:00 A | 1523 | 100% |  | start no earlier than 2026-07-15 09:00 |
| 1525 | 5 | **5 цех** | 958.12d? | 2023-05-29 09:00 A | 2026-10-27 10:00 |  | 60% | 96.47d |  |
| 1526 |  | подключить Олегу сварочный автомат | 1h | 2026-08-31 09:00 A | 2026-08-31 10:00 A |  | 100% |  | start no earlier than 2026-08-31 09:00 |
| 1527 | 5.2 | **подготовить сетку на мал дробилку 3 и 4мм** | 1.19d | 2026-08-24 09:00 | 2026-08-25 10:30 |  |  | 141.41d |  |
| 1528 |  | проверка отстатков сетки на складах | 30min | 2026-08-24 09:00 | 2026-08-24 09:30 |  |  | 141.44d | start no earlier than 2026-08-24 09:00 |
| 1529 |  | вырезатиь сетку в размер | 1h | 2026-08-25 09:30 | 2026-08-25 10:30 | 1528FS+1d |  | 141.41d | start no earlier than 2026-08-20 09:00 |
| 1530 |  | ревизия шнека | 3h | 2026-08-17 09:00 A | 2026-08-17 12:00 A |  | 100% |  | start no earlier than 2026-08-17 09:00 |
| 1531 | 5.4 | **свет в туалет передать крепление светильника** | 3.12d | 2026-08-14 09:00 A | 2026-08-17 10:00 |  | 56% | 148.47d |  |
| 1532 |  | проверить наличие светильника с боковым монтажем | 15min | 2026-08-14 09:00 A | 2026-08-14 09:15 A |  | 100% |  | start no earlier than 2026-08-14 09:00 |
| 1533 |  | замена светильника / или закрепить | 1h | 2026-08-15 09:00 | 2026-08-15 10:00 | 1532 |  | 150.47d | start no earlier than 2026-08-15 09:00 |
| 1534 |  | закрепить светильник в коридоре -вход в туалет | 1h | 2026-08-17 09:00 A | 2026-08-17 10:00 A |  | 100% |  | start no earlier than 2026-08-17 09:00 |
| 1535 |  | трещина вибросито №2 1см ремонт | 6h | 2026-08-27 09:00 A | 2026-08-27 15:00 A |  | 100% |  | start no earlier than 2026-08-27 09:00 |
| 1536 |  | трещина вибросито №1 кольцо. ремонт | 4h | 2026-08-28 09:00 A | 2026-08-28 13:00 A |  | 100% |  | start no earlier than 2026-08-28 09:00 |
| 1537 | 5.7 | **проект новая дробилка** | 33.03d | 2026-08-21 09:00 A | 2026-10-06 09:15 |  | 17% | 111.56d |  |
| 1538 | 5.7.1 | **кабель для доп мощности** | 33.03d | 2026-08-21 09:00 A | 2026-10-06 09:15 |  | 17% | 111.56d |  |
| 1539 |  | составить ТЗ на монтаж кабеля | 3d | 2026-08-21 09:00 A | 2026-08-24 18:00 A |  | 100% |  | start no earlier than 2026-08-21 09:00 |
| 1540 |  | получить КП / счет договор | 0d | 2026-08-31 09:00 | 2026-08-31 09:00 | 1539FS+2d |  | 111.56d | start no earlier than 2026-08-31 09:00 |

| ID | WBS | Task | Duration | Start | Finish | Predecessors | Complete | Total float | Constraint |
| --- | --- | --- | --- | --- | --- | --- | --- | --- | --- |
| 1541 |  | предоплата | 15min | 2026-09-01 09:00 | 2026-09-01 09:15 | 1540FS+1d |  | 111.56d | start no earlier than 2026-08-10 08:00 |
| 1542 |  | монтаж | 15d | 2026-09-15 09:15 | 2026-10-06 09:15 | 1541FS+10d |  | 111.56d | start no earlier than 2026-08-10 08:00 |
| 1543 | 5.8 | **монтаж вода в 5ц** | 22.01d? | 2026-08-10 08:00 A | 2026-09-04 09:05 |  | 45% | 133.58d |  |
| 1544 |  | выяснить возможность обмена тройников 1+1/4-1/2 на 3/4-1/2 | 15min | 2026-08-31 09:00 | 2026-08-31 09:15 |  |  | 137.56d | start no earlier than 2026-08-31 09:00 |
| 1545 | 5.8.2 | **монтаж трассы по 3ц** | 6.5d | 2026-08-11 09:00 A | 2026-08-17 13:00 A |  | 100% |  |  |
| 1546 |  | заявка хомуты сантех - получить дату поставки | 15min | 2026-08-11 09:00 A | 2026-08-11 09:15 A |  | 100% |  | start no earlier than 2026-08-11 09:00 |
| 1547 |  | контроль доставки | 15min | 2026-08-14 09:15 A | 2026-08-14 09:30 A | 1546FS+3d | 100% |  | start no earlier than 2026-08-10 08:00 |
| 1548 |  | монтаж продложть | 4h | 2026-08-14 09:30 A | 2026-08-14 14:30 A | 1547 | 100% |  | start no earlier than 2026-08-10 08:00 |
| 1549 |  | монтаж продложть | 4h | 2026-08-17 09:00 A | 2026-08-17 13:00 A | 1547 | 100% |  | start no earlier than 2026-08-17 09:00 |
| 1550 | 5.8.3 | **монтаж труба в земле между 3 и 4ц** | 22.01d? | 2026-08-10 08:00 A | 2026-09-04 09:05 |  | 26% | 133.58d |  |
| 1551 |  | монтаж ф32 в ф40 | 5h | 2026-08-10 08:00 A | 2026-08-10 13:00 A |  | 100% |  | start no earlier than 2026-08-10 08:00 |
| 1552 |  | заявка греющий кабель внтуреннего монтажа + | 1h | 2026-08-11 09:00 A | 2026-08-11 10:00 A | 1551 | 100% |  | start no earlier than 2026-08-11 09:00 |
| 1553 |  | заявка защита УЗО | 1h | 2026-08-24 09:00 | 2026-08-24 10:00 |  |  | 138.46d | start no earlier than 2026-08-24 09:00 |
| 1554 |  | контоль доставка | 5min | 2026-08-31 09:00 | 2026-08-31 09:05 | 1552FS+5d, 1553 |  | 133.58d | start no earlier than 2026-08-31 09:00 |
| 1555 |  | монтаж кабеля | 1d? | 2026-09-01 09:05 | 2026-09-02 09:05 | 1554FS+1d |  | 133.58d | start no earlier than 2026-08-18 09:00 |
| 1556 |  | монтаж щиток кабеля с УЗО | 1d? | 2026-09-03 09:05 | 2026-09-04 09:05 | 1555FS+1d |  | 133.58d | start no earlier than 2026-08-24 09:00 |
| 1557 | 5.8.4 | **монтаж трассы по воздуху м/д 4 и 5А** | 12.5d | 2026-08-11 09:00 A | 2026-08-24 13:00 |  | 24% | 142.09d |  |
| 1558 |  | подготовка материал | 1h | 2026-08-11 09:00 A | 2026-08-11 10:00 A |  | 100% |  | start no earlier than 2026-08-11 09:00 |
| 1559 |  | контроль поставки рым 10 | 15min | 2026-08-21 09:00 A | 2026-08-21 09:15 A |  | 100% |  | start no earlier than 2026-08-21 09:00 |
| 1560 |  | монтаж | 4h | 2026-08-24 09:00 | 2026-08-24 13:00 | 1559 |  | 142.09d | start no earlier than 2026-08-24 09:00 |
| 1561 |  | монтаж щиток греющего кабеля по воздуху | 4h | 2026-08-24 09:00 | 2026-08-24 13:00 |  |  | 142.09d | start no earlier than 2026-08-24 09:00 |
| 1562 |  | монтаж трассы по 4ц | 6h | 2026-08-18 09:00 A | 2026-08-18 15:00 A | 1547 | 100% |  | start no earlier than 2026-08-18 09:00 |
| 1563 |  | монтаж трассы по 5ц | 4h | 2026-08-19 09:00 A | 2026-08-19 13:00 A | 1562 | 100% |  | start no earlier than 2026-08-19 09:00 |
| 1564 |  | монтаж трассы по 5ц | 6h | 2026-08-24 09:00 | 2026-08-24 15:00 | 1562 |  | 141.97d | start no earlier than 2026-08-24 09:00 |
| 1565 | 5.9 | **монтаж тепловые пушки подвесные 5 цех** | 21.38d | 2026-08-21 09:00 A | 2026-09-18 12:00 |  | 24% | 123.22d |  |
| 1566 |  | составить схему монтажа | 4h | 2026-08-26 09:00 A | 2026-08-26 13:00 A |  | 100% |  | start no earlier than 2026-08-26 09:00 |
| 1567 |  | заявка на тепловые пушки вулкан | 2h | 2026-08-21 09:00 A | 2026-08-21 11:00 A |  | 100% |  | start no earlier than 2026-08-21 09:00 |
| 1568 |  | контроль остатки нерж труба, фтинги | 2h | 2026-09-04 09:00 | 2026-09-04 11:00 | 1567 |  | 123.22d | start no earlier than 2026-09-04 09:00 |
| 1569 |  | контроль доставки | 1h | 2026-09-15 11:00 | 2026-09-15 12:00 | 1568FS+7d |  | 123.22d | start no earlier than 2026-08-10 08:00 |
| 1570 |  | монтаж | 2d | 2026-09-16 12:00 | 2026-09-18 12:00 | 1569FS+1d |  | 123.22d | start no earlier than 2026-08-10 08:00 |
| 1571 |  | замена светильника перегоревшего у Большакова в кабинете | 2h | 2026-08-06 09:00 A | 2026-08-06 11:00 A |  | 100% |  | start no earlier than 2026-08-07 09:00 |
| 1572 |  | устранить утечку воды в душе | 1h | 2026-08-06 09:00 A | 2026-08-06 10:00 A |  | 100% |  | start no earlier than 2026-08-06 08:00 |
| 1573 | 5.12 | **установить унитаз на 3 этаже** | 3.38d? | 2026-08-04 09:00 A | 2026-08-07 12:00 A |  | 100% |  |  |
| 1574 |  | заказать гофру и гибкую вставку | 1d? | 2026-08-04 09:00 A | 2026-08-04 18:00 A |  | 100% |  | start no earlier than 2026-08-04 08:00 |
| 1575 |  | установка унитаза (гофротруба и гибкая подводка и коронка у Большакова) коронку вернуть Большакову | 3h | 2026-08-07 09:00 A | 2026-08-07 12:00 A |  | 100% |  | start no earlier than 2026-08-07 09:00 |
| 1576 |  | монтаж свет в туалете 3 этаж (оператора дадут в помощь) | 5h | 2026-08-09 09:00 A | 2026-08-09 15:00 A |  | 100% |  | start no earlier than 2026-08-09 09:00 |
| 1577 |  | прикрутить смотровые окна на дробилке, не хватает саморезов- просыпается сырье | 1h | 2026-08-02 09:00 A | 2026-08-02 10:00 A |  | 100% |  | start no earlier than 2026-08-02 09:00 |
| 1578 |  | сборка ограничиетелей на сетку №2 для сито из лазера | 4h | 2026-07-17 09:00 A | 2026-07-17 13:00 A |  | 100% |  | start no earlier than 2026-07-17 09:00 |
| 1579 |  | ремонт сетки, хомуты с 5ц | 2h | 2026-07-15 09:00 A | 2026-07-15 11:00 A |  | 100% |  | start no earlier than 2026-07-15 09:00 |
| 1580 |  | вырезать сетку 2мм на большую дробилку | 2h | 2026-07-15 09:00 A | 2026-07-15 11:00 A |  | 100% |  | start no earlier than 2026-07-15 09:00 |
| 1581 |  | заменаить ножи на мал дробилке | 6h | 2026-07-06 08:00 A | 2026-07-06 14:00 A |  | 100% |  | start no earlier than 2026-07-06 08:00 |
| 1582 |  | заварить хомут от деко 5 ц. в слесарке | 2h | 2026-07-11 09:00 A | 2026-07-11 11:00 A |  | 100% |  | start no earlier than 2026-07-11 09:00 |
| 1583 |  | Дефектовка кнопок растаривателя, ремонт, клинит кнопку | 30min | 2026-07-06 08:00 A | 2026-07-06 08:30 A |  | 100% |  | start no earlier than 2026-07-06 08:00 |
| 1584 |  | сито просечка с лазера - доплнить 4шт до 6-8 уголоков ограничителей. | 2h | 2026-06-26 08:00 A | 2026-06-26 10:00 A |  | 100% |  | start no earlier than 2026-06-26 08:00 |
| 1585 |  | просечки нерж. наварить уголки, чтобы не падало внутрь | 2h | 2026-06-25 08:00 A | 2026-06-25 10:00 A |  | 100% |  | start no earlier than 2026-06-25 08:00 |
| 1586 |  | на поворотную кнопку реверса шнека №1 установить бокс (взять на складе) | 1h | 2026-06-24 09:00 A | 2026-06-24 10:00 A |  | 100% |  | start no earlier than 2026-06-24 09:00 |
| 1587 |  | развернуть ножи на большой дробилке, если не успеваем передаем по смене | 4h | 2026-06-23 08:00 A | 2026-06-23 12:00 A |  | 100% |  | start no earlier than 2026-06-23 08:00 |
| 1588 | 5.25 | **протянуть все болтовые соединения: шиберы растаривателей, металлоконструкции под бункера и т.д. если нет болта - прикручиваем** | 3h? | 2026-06-23 09:00 A | 2026-06-23 12:00 |  | 100% |  |  |
| 1589 |  | заказать краску | 1d? | 2026-06-23 09:00 A | 2026-06-23 18:00 A |  | 100% |  | start no earlier than 2026-06-23 08:00 |
| 1590 |  | проверить откуда гайку нашли на магните, растариватель-дробилка -шнеки -крепление магнитов | 1h | 2026-06-22 09:00 A | 2026-06-22 10:00 A |  | 100% |  | start no earlier than 2026-06-22 08:00 |
| 1591 | 5.27 | **закрепить штурвал на растаривателе 1** | 1d? | 2026-06-23 09:00 A | 2026-06-23 18:00 A |  | 100% |  |  |
| 1592 |  | заказываем растариватель | 1d? | 2026-06-23 09:00 A | 2026-06-23 18:00 A |  | 100% |  | start no earlier than 2026-06-23 09:00 |
| 1593 |  | заварить просеиватель ближе к стеллажам и на правом (расскажу как) | 3h | 2026-06-11 09:00 A | 2026-06-11 12:00 A |  | 100% |  | start no earlier than 2026-06-11 09:00 |
| 1594 |  | ремонт просечку с вибросито, передать в 5ц | 2h | 2026-06-12 09:00 A | 2026-06-12 11:00 A |  | 100% |  | start no earlier than 2026-06-12 09:00 |
| 1595 |  | ремонт хомут с вибросито | 2h | 2026-06-05 09:00 A | 2026-06-05 11:00 A |  | 100% |  | start no earlier than 2026-06-05 08:00 |
| 1596 |  | заварить хомут от деко 5 ц. в слесарке | 2h | 2026-07-14 09:00 A | 2026-07-14 11:00 A |  | 100% |  | start no earlier than 2026-07-14 09:00 |
| 1597 | 5.32 | **востановить коробку тельфера** | 19.01d | 2026-06-04 09:00 A | 2026-06-26 09:05 |  | 59% | 190.58d |  |
| 1598 |  | найти производителя тельфера и выяснить марку коробку / найти в продаже подходящий артикул | 2h | 2026-06-04 09:00 A | 2026-06-04 11:00 A |  | 100% |  | start no earlier than 2026-06-04 09:00 |
| 1599 |  | заявка | 1h | 2026-06-05 09:00 A | 2026-06-05 10:00 A |  | 100% |  | start no earlier than 2026-06-05 09:00 |
| 1600 |  | доставка контроль | 5min | 2026-06-26 09:00 | 2026-06-26 09:05 |  |  | 190.58d | start no earlier than 2026-06-26 09:00 |
| 1601 |  | замена | 2h | 2026-06-23 09:00 | 2026-06-23 11:00 |  |  | 193.34d | start no earlier than 2026-06-23 09:00 |
| 1602 |  | замена пускатель тельфер 24дц / найти/изготовить + установить крышку контакторов / доработать крепеж кабеля к тросу | 1h | 2026-05-27 09:00 A | 2026-05-27 10:00 A |  | 100% |  | start no earlier than 2026-05-27 09:00 |
| 1603 |  | проверка всех банок АКБ штабелера / замена неисправных | 2h | 2026-05-30 09:00 A | 2026-05-30 11:00 A |  | 100% |  | start no earlier than 2026-05-30 09:00 |
| 1604 |  | посмотреть что с тельфером на дробилке | 1h | 2026-05-26 09:00 A | 2026-05-26 10:00 A |  | 100% |  | start no earlier than 2026-05-26 09:00 |
| 1605 |  | приварить магниты на сито | 0.5h | 2026-05-26 09:00 A | 2026-05-26 09:30 A |  | 100% |  | start no earlier than 2026-05-26 09:00 |
| 1606 |  | заварить растариватель №2 | 4h | 2026-05-25 08:00 A | 2026-05-25 12:00 A |  | 100% |  | start no earlier than 2026-05-25 08:00 |
| 1607 |  | уложить красиво кабель в гофре зона дробилки | 1h | 2026-05-19 09:00 A | 2026-05-19 10:00 A |  | 100% |  | start no earlier than 2026-05-19 09:00 |
| 1608 |  | заварить 2 просечки от сито и отправить все на 5 цех | 1h | 2026-05-19 09:00 A | 2026-05-19 10:00 A |  | 100% |  | start no earlier than 2026-05-19 09:00 |
| 1609 |  | сделать дублирующий пост (вкл. И выкл. Смесителя) на мезонине дробилки | 4h | 2026-05-18 08:00 A | 2026-05-18 12:00 A |  | 100% |  | start no earlier than 2026-05-18 08:00 |
| 1610 |  | прошприцевать сам двигатель дробилки | 1h | 2026-05-19 09:00 A | 2026-05-19 10:00 A |  | 100% |  | start no earlier than 2026-05-19 09:00 |

| ID | WBS | Task | Duration | Start | Finish | Predecessors | Complete | Total float | Constraint |
| --- | --- | --- | --- | --- | --- | --- | --- | --- | --- |
| 1611 | 5.42 | **сборка схемы блокировки дробилки при открытом люке** | 8.25d? | 2026-05-17 09:00 A | 2026-05-27 11:00 A |  | 100% |  |  |
| 1612 |  | монтаж кабель | 4h | 2026-05-17 09:00 A | 2026-05-17 13:00 A |  | 100% |  | start no earlier than 2026-05-17 09:00 |
| 1613 |  | сборка схема | 2h | 2026-05-27 09:00 A | 2026-05-27 11:00 A | 1612 | 100% |  | start no earlier than 2026-05-27 09:00 |
| 1614 |  | заказать концевики | 1d? | 2026-05-25 09:00 A | 2026-05-25 18:00 A |  | 100% |  | start no earlier than 2026-05-25 08:00 |
| 1615 |  | доделать схему блокировки- концевики LA167-Z8/122 на складе | 3h | 2026-05-26 09:00 A | 2026-05-26 12:00 A |  | 100% |  | start no earlier than 2026-05-26 09:00 |
| 1616 |  | проверка центровки мотора после замены подшипнка + замена подшипник задний | 4h | 2026-05-12 08:00 A | 2026-05-12 12:00 A |  | 100% |  | start no earlier than 2026-05-12 08:00 |
| 1617 |  | заварить сито | 2h | 2026-05-08 08:00 A | 2026-05-08 10:00 A |  | 100% |  | start no earlier than 2026-05-08 08:00 |
| 1618 |  | закрепить штурвал, чтобы не болтался на растаривателе 1 | 1h | 2026-05-08 08:00 A | 2026-05-08 09:00 A |  | 100% |  | start no earlier than 2026-05-08 08:00 |
| 1619 |  | посмотреть компрессор (если проблема в предохранителе- то взять у меня на столе)пароль8989 | 1h | 2026-05-08 08:00 A | 2026-05-08 09:00 A |  | 100% |  | start no earlier than 2026-05-08 08:00 |
| 1620 |  | проверить на 2х котлах давление в системе отопления- где нужно долить воды. И слить воду система отопления 5а цех | 2h | 2026-05-06 08:00 A | 2026-05-06 10:00 A |  | 100% |  | start no earlier than 2026-05-06 08:00 |
| 1621 | 5.48 | **ремонт сито (попробовать заклеить эпоксидкой) / ремонт у производсителя** | 15d | 2026-05-13 09:00 A | 2026-05-29 18:00 A |  | 100% |  |  |
| 1622 |  | отправить сито на ремонт производителю | 30min | 2026-05-13 09:00 A | 2026-05-13 09:30 A |  | 100% |  | start no earlier than 2026-05-13 09:00 |
| 1623 |  | контроль доставки | 15min | 2026-05-29 17:45 A | 2026-05-29 18:00 A | 1622SF+15d | 100% |  | start no earlier than 2026-05-12 08:00 |
| 1624 |  | зачистить приемный бункер после дробилке болгаркой | 1h | 2026-04-30 08:00 A | 2026-04-30 09:00 A |  | 100% |  | start no earlier than 2026-04-30 08:00 |
| 1625 | 5.50 | **ремонт стиральной машинки / шум подшипника** | 1d? | 2026-04-27 09:00 | 2026-04-27 18:00 |  |  | 241.59d |  |
| 1626 |  | договор | 1d? | 2026-04-27 09:00 | 2026-04-27 18:00 |  |  | 241.59d | start no earlier than 2026-04-27 08:00 |
| 1627 | 5.51 | **ремонт утечки с системы отопления** | 1.12d | 2026-05-04 09:00 | 2026-05-05 10:00 |  | 100% |  |  |
| 1628 |  | слив воды | 4h | 2026-05-07 09:00 A | 2026-05-07 13:00 A |  | 100% |  | start no earlier than 2026-05-07 09:00 |
| 1629 |  | ремонт утечки | 2h | 2026-05-07 13:00 A | 2026-05-07 15:00 A | 1628 | 100% |  | start no earlier than 2026-04-27 08:00 |
| 1630 |  | заправить воду / опресовать | 4h | 2026-05-07 15:00 A | 2026-05-07 19:00 A | 1629 | 100% |  | start no earlier than 2026-04-27 08:00 |
| 1631 |  | долить в систему отопления воды цех 5а, электрокотел не включаем. Работаем на газ котле | 1h | 2026-04-24 09:00 A | 2026-04-24 10:00 A |  | 100% |  | start no earlier than 2026-04-24 08:00 |
| 1632 |  | вывезти шнек на синий склад | 1h | 2026-04-23 09:00 A | 2026-04-23 10:00 A |  | 100% |  | start no earlier than 2026-04-24 09:00 |
| 1633 |  | взять на зажима для троса на складе и натянуть трос на воротах 5а | 2h | 2026-04-25 09:00 A | 2026-04-25 11:00 A |  | 100% |  | start no earlier than 2026-04-25 09:00 |
| 1634 |  | убавить температуры на газ котлах | 1h | 2026-04-24 09:00 A | 2026-04-24 10:00 A |  | 100% |  | start no earlier than 2026-04-24 09:00 |
| 1635 |  | заварить сито и хомуты | 1h | 2026-04-24 09:00 A | 2026-04-24 10:00 A |  | 100% |  | start no earlier than 2026-04-24 09:00 |
| 1636 |  | проверка вибросит детальный осмотр с полной разборкой / ремонт трещин | 4h | 2026-04-21 09:00 A | 2026-04-21 13:00 A |  | 100% |  | start no earlier than 2026-04-21 09:00 |
| 1637 |  | протяжка анкеров стеллажей, болтается | 2h | 2026-04-20 09:00 A | 2026-04-20 11:00 A |  | 100% |  | start no earlier than 2026-04-20 09:00 |
| 1638 |  | замена потускневших ламп в инсекютере. Мастеру сообщить кол-во. б/у складывать в коробку | 2h | 2026-05-06 09:00 A | 2026-05-06 11:00 A |  | 100% |  | start no earlier than 2026-05-06 09:00 |
| 1639 |  | переворачиваем молотки дробилка | 4h | 2026-04-15 09:00 A | 2026-04-15 13:00 A |  | 100% |  | start no earlier than 2026-04-17 08:00 |
| 1640 |  | завершить работы по примыканию к кровли 5А (излишки изоспан) | 1d? | 2026-06-19 09:00 | 2026-06-19 18:00 |  |  | 195.59d | start no earlier than 2026-06-19 09:00 |
| 1641 |  | монтаж тамбур для завоза навесок | 10d | 2026-04-16 09:00 | 2026-04-27 18:00 |  |  | 241.59d | start no earlier than 2026-04-16 08:00 |
| 1642 |  | вырезать верхушку еврокуба возле мусорки, будет туда засыпать отсев для дворника | 1h | 2026-04-18 09:00 A | 2026-04-18 10:00 A |  | 100% |  | start no earlier than 2026-04-18 09:00 |
| 1643 |  | заварить хомуты и сетки от сито | 1h | 2026-04-14 09:00 A | 2026-04-14 10:00 A |  | 100% |  | start no earlier than 2026-04-14 08:00 |
| 1644 |  | проверить дист. Воду на штабелере, если нужно долить (фото модели акб) | 1h | 2026-04-13 09:00 A | 2026-04-13 10:00 A |  | 100% |  | start no earlier than 2026-04-13 08:00 |
| 1645 |  | установка шнека отремонтированного обратно на дробилку | 6h | 2026-04-21 09:00 A | 2026-04-21 16:00 A |  | 100% |  | start no earlier than 2026-04-21 09:00 |
| 1646 |  | установка бойлера отремонтированного в туалет, а с туалета на 2 этаж, мастер выделит человека в помощь | 4h | 2026-04-13 09:00 A | 2026-04-13 13:00 A |  | 100% |  | start no earlier than 2026-04-13 09:00 |
| 1647 |  | замена паука на расстаривателе- высокие бэги не могут поднять до конца | 1h | 2026-04-10 08:00 A | 2026-04-10 09:00 A |  | 100% |  | start no earlier than 2026-04-10 08:00 |
| 1648 | 5.69 | **получить насос Wilo, установить на 1 газовый котел** | 0.12d | 2026-04-10 09:00 A | 2026-04-10 10:00 A |  | 100% |  |  |
| 1649 |  | проверить направление подачи воды, посмотреть по аналогии 2 котла | 1h | 2026-04-10 09:00 A | 2026-04-10 10:00 A |  | 100% |  | start no earlier than 2026-04-10 09:00 |
| 1650 |  | ремот сеток с сито | 2h | 2026-04-06 09:00 A | 2026-04-06 11:00 A |  | 100% |  | start no earlier than 2026-04-06 08:00 |
| 1651 |  | на выходах из сито №1 и №2 установить сетки с бортиками | 2h | 2026-04-06 09:00 A | 2026-04-06 11:00 A |  | 100% |  | start no earlier than 2026-04-06 08:00 |
| 1652 |  | сыпит сырье с дробилки (вход) | 2h | 2026-06-15 09:00 A | 2026-06-15 11:00 A |  | 100% |  | start no earlier than 2026-06-13 09:00 |
| 1653 |  | востановить ручной штурвал заслонки на растаривателе дробилки | 1h | 2026-04-02 08:00 A | 2026-04-02 09:00 A |  | 100% |  | start no earlier than 2026-04-02 08:00 |
| 1654 |  | изготовить штурвал заслонки на растариватель вибросита у стены | 2h | 2026-04-13 09:00 A | 2026-04-13 11:00 A |  | 100% |  | start no earlier than 2026-04-13 09:00 |
| 1655 |  | монтаж отбойников | 5h | 2026-04-18 09:00 A | 2026-04-18 15:00 A |  | 100% |  | start no earlier than 2026-04-18 09:00 |
| 1656 | 5.76 | **ремонт шкаф управления шнеком 1 растариватель (замена щитка взять на складе)** | 13.5d? | 2026-04-21 09:00 | 2026-05-07 13:00 |  | 100% |  |  |
| 1657 |  | вывод кнопки управления частотником на ШУ (если нужно замена частотника) с мастером согласовать остановку | 5h | 2026-04-20 09:00 A | 2026-04-20 14:00 A |  | 100% |  | start no earlier than 2026-04-20 09:00 |
| 1658 |  | установить кнопочный пост | 2h | 2026-04-21 09:00 A | 2026-04-21 11:00 A |  | 100% |  | start no earlier than 2026-04-21 09:00 |
| 1659 |  | заявка кнопка SB7 | 15min | 2026-04-21 09:00 A | 2026-04-21 09:15 A |  | 100% |  | start no earlier than 2026-04-21 09:00 |
| 1660 |  | доставка | 5d | 2026-04-21 09:15 A | 2026-04-27 09:15 A | 1659 | 100% |  | start no earlier than 2026-04-20 08:00 |
| 1661 |  | замена | 1h | 2026-04-27 09:15 A | 2026-04-27 10:15 A | 1660 | 100% |  | start no earlier than 2026-04-20 08:00 |
| 1662 |  | ремонт корпус | 1h | 2026-04-17 09:00 A | 2026-04-17 10:00 A | 1657 | 100% |  | start no earlier than 2026-04-09 09:00 |
| 1663 | 5.76.7 | **замена корпус** | 6.31d | 2026-04-21 09:00 A | 2026-04-28 11:30 A |  | 100% |  |  |
| 1664 |  | заявка | 30min | 2026-04-21 09:00 A | 2026-04-21 09:30 A |  | 100% |  | start no earlier than 2026-03-31 08:00 |
| 1665 |  | доставка | 5d | 2026-04-21 09:30 A | 2026-04-28 09:30 A | 1664 | 100% |  | start no earlier than 2026-03-31 08:00 |
| 1666 |  | замена | 2h | 2026-04-28 09:30 A | 2026-04-28 11:30 A | 1665 | 100% |  | start no earlier than 2026-04-14 09:00 |
| 1667 |  | получить фланец на складе NMRV040 и установить мотор-редуктор на расстаривателе №1 | 2h | 2026-04-28 09:00 A | 2026-04-28 11:00 A |  | 100% |  | start no earlier than 2026-04-28 09:00 |
| 1668 |  | убрать красный скотч везде в дробилке, сделать крепление фильтра с малой дробилки на ленточный хомут | 3h | 2026-03-27 09:00 A | 2026-03-27 12:00 A |  | 100% |  | start no earlier than 2026-03-27 08:00 |
| 1669 |  | ремонт вибросито | 4h | 2026-03-27 08:00 A | 2026-03-27 12:00 A |  | 100% |  | start no earlier than 2026-03-27 08:00 |
| 1670 |  | заварить сито возле слесарки (2 шт) и деки 2 шт | 3h | 2026-03-26 09:00 A | 2026-03-26 12:00 A |  | 100% |  | start no earlier than 2026-03-26 08:00 |
| 1671 |  | сделать отбойник на входную дверь | 1h | 2026-03-28 09:00 A | 2026-03-28 10:00 A |  | 100% |  | start no earlier than 2026-03-28 09:00 |
| 1672 |  | сделать трап в курилку | 3h | 2026-04-01 09:00 A | 2026-04-01 12:00 A |  | 100% |  | start no earlier than 2026-04-01 09:00 |
| 1673 |  | заварить бункер дробилки | 2h | 2026-03-24 09:00 A | 2026-03-24 11:00 A |  | 100% |  | start no earlier than 2026-03-24 09:00 |
| 1674 |  | перенос металл с торца стеллажа напротив ВРУ / на син склад | 1h | 2026-03-25 09:00 A | 2026-03-25 10:00 A |  | 100% |  | start no earlier than 2026-03-25 09:00 |
| 1675 |  | пульт управления шибером растариватель правый демонтаж красный скотч / закрепить | 1h | 2026-03-22 09:00 A | 2026-03-22 10:00 A |  | 100% |  | start no earlier than 2026-03-22 09:00 |
| 1676 |  | установить корпус на переключатель реверса шнек растаривателя правый / продуть от пыли контакты | 30min | 2026-03-22 09:00 A | 2026-03-22 09:30 A |  | 100% |  | start no earlier than 2026-03-22 09:00 |
| 1677 |  | демонтаж розетки без крышки 2 этаж щиток в фае | 30min | 2026-03-25 09:00 A | 2026-03-25 09:30 A |  | 100% |  | start no earlier than 2026-03-25 09:00 |
| 1678 |  | подлючить розетку для зарядки нового АКБ для штабелера Ц.5А | 2h | 2026-03-21 09:00 A | 2026-03-21 11:00 A |  | 100% |  | start no earlier than 2026-03-21 09:00 |
| 1679 | 5.89 | **ремонт шнек с дробилки** | 14.75d | 2026-03-17 09:00 A | 2026-04-01 16:00 A |  | 100% |  |  |
| 1680 |  | орг пескоструйка корпус шнека - отправить | 1h | 2026-03-17 09:00 A | 2026-03-17 10:00 A |  | 100% |  | start no earlier than 2026-03-17 08:00 |

| ID | WBS | Task | Duration | Start | Finish | Predecessors | Complete | Total float | Constraint |
| --- | --- | --- | --- | --- | --- | --- | --- | --- | --- |
| 1681 |  | сборка шнека с ремонта | 6h | 2026-04-01 09:00 A | 2026-04-01 16:00 A | 1680 | 100% |  | start no earlier than 2026-04-01 09:00 |
| 1682 |  | установить уплотнения на гофра без красн скотча | 4h | 2026-03-20 09:00 A | 2026-03-20 13:00 A |  | 100% |  | start no earlier than 2026-03-20 09:00 |
| 1683 |  | добавить воду в 4 газ. Котел проверить реальное давление в системе | 2h | 2026-03-19 08:00 A | 2026-03-19 11:00 A |  | 100% |  | start no earlier than 2026-03-19 08:00 |
| 1684 |  | сменить палярность вращения дробилки / сточило ножи | 1h | 2026-03-16 09:00 A | 2026-03-16 10:00 A |  | 100% |  | start no earlier than 2026-03-16 09:00 |
| 1685 | 5.93 | **устанвить ИБП на клапан газ** | 0.03d | 2026-03-16 09:00 A | 2026-03-16 09:15 A |  | 100% |  |  |
| 1686 |  | координация сроков выполнения с газовщиком | 15min | 2026-03-16 09:00 A | 2026-03-16 09:15 A |  | 100% |  | start no earlier than 2026-03-16 09:00 |
| 1687 | 5.94 | **установить вентилятор с клапаном и фильтром** | 11.03d? | 2026-03-18 09:00 | 2026-03-30 09:15 |  |  | 266.56d |  |
| 1688 |  | получить сммету / счет | 15min | 2026-03-18 09:00 | 2026-03-18 09:15 |  |  | 266.56d | start no earlier than 2026-03-18 09:00 |
| 1689 |  | изготовление поставка | 10d | 2026-03-18 09:15 | 2026-03-28 09:15 | 1688 |  | 266.56d | start no earlier than 2026-03-17 08:00 |
| 1690 |  | монтаж | 1d? | 2026-03-28 09:15 | 2026-03-30 09:15 | 1689 |  | 266.56d | start no earlier than 2026-03-17 08:00 |
| 1691 |  | закрыть отвертстие от демонтированной аспирации фильтротканью. Временно, до изг фильтра | 1h | 2026-03-13 08:00 A | 2026-03-13 09:00 A |  | 100% |  | start no earlier than 2026-03-13 08:00 |
| 1692 | 5.96 | **на отверстие от демонтированной оспирации установить фильтр** | 10.01d | 2026-03-20 09:00 A | 2026-03-31 09:05 A |  | 100% |  |  |
| 1693 |  | получить фильтры | 5min | 2026-03-31 09:00 A | 2026-03-31 09:05 A |  | 100% |  | start no earlier than 2026-03-31 09:00 |
| 1694 |  | монтаж | 1h | 2026-03-20 09:00 A | 2026-03-20 10:00 A | 1693FS+1d | 100% |  | start no earlier than 2026-03-20 09:00 |
| 1695 | 5.97 | **устранить ржавчину шнека после дробилки** | 1d? | 2026-03-16 09:00 A | 2026-03-16 18:00 A |  | 100% |  |  |
| 1696 |  | полная разборка / зачистка / сборка | 1d? | 2026-03-16 09:00 A | 2026-03-16 18:00 A |  | 100% |  | start no earlier than 2026-03-16 09:00 |
| 1697 |  | согласовать чем можно покрыть шнек внутри | 0d | 2026-03-16 09:00 A | 2026-03-16 09:00 A |  | 100% |  | start no earlier than 2026-03-16 09:00 |
| 1698 |  | заменаить гидро АКБ на насосной станции / замена мебраны и золотника | 2h | 2026-03-15 09:00 A | 2026-03-15 11:00 A |  | 100% |  | start no earlier than 2026-03-15 09:00 |
| 1699 |  | устарнить выдавливание материала с шнека №1 узел дробилки | 4h | 2026-03-13 09:00 A | 2026-03-13 13:00 A |  | 100% |  | start no earlier than 2026-03-13 09:00 |
| 1700 |  | проверить обр клапан бойлер в гардеробе. Стреляет | 30min | 2026-03-13 09:00 A | 2026-03-13 09:30 A |  | 100% |  | start no earlier than 2026-03-13 09:00 |
| 1701 |  | долить дистилят в АКБ штабелер свинцовый | 1h | 2026-03-11 09:00 A | 2026-03-11 10:00 A |  | 100% |  | start no earlier than 2026-03-11 09:00 |
| 1702 | 5.102 | **замена бойлер туалет** | 19.25d | 2026-03-23 09:00 A | 2026-04-14 11:00 A |  | 100% |  |  |
| 1703 |  | заявка бойлер | 15min | 2026-03-23 09:00 A | 2026-03-23 09:15 A |  | 100% |  | start no earlier than 2026-03-23 09:00 |
| 1704 |  | доставка | 10d | 2026-03-30 09:00 A | 2026-04-09 18:00 A | 1703 | 100% |  | start no earlier than 2026-03-29 09:00 |
| 1705 |  | монтаж | 2h | 2026-04-14 09:00 A | 2026-04-14 11:00 A | 1704 | 100% |  | start no earlier than 2026-03-12 08:00 |
| 1706 |  | ремонт хомут с вибросито | 1h | 2026-03-10 09:00 A | 2026-03-10 10:00 A |  | 100% |  | start no earlier than 2026-03-10 09:00 |
| 1707 |  | Заварить деку на сито | 2h | 2026-03-06 09:00 A | 2026-03-06 11:00 A |  | 100% |  | start no earlier than 2026-03-06 09:00 |
| 1708 |  | Замена двойной розетки (созвон с Шурановым) или спросить у мастера | 1h | 2026-03-05 08:00 A | 2026-03-05 09:00 A |  | 100% |  | start no earlier than 2026-03-05 08:00 |
| 1709 |  | ошибка Е10 стиральная машинка | 1h | 2026-03-04 09:00 A | 2026-03-04 10:00 A |  | 100% |  | start no earlier than 2026-03-04 09:00 |
| 1710 |  | ремонт сито, сварка шов | 2h | 2026-03-03 09:00 A | 2026-03-03 11:00 A |  | 100% |  | start no earlier than 2026-03-03 09:00 |
| 1711 |  | ремонт растариватель №1 + установить косынки | 2h | 2026-03-03 09:00 A | 2026-03-03 11:00 A |  | 100% |  | start no earlier than 2026-03-03 09:00 |
| 1712 | 5.109 | **ремонт растаривателя №3 - клинит заслонку** | 113.81d | 2026-04-20 09:00 A | 2026-09-02 16:30 |  | 56% | 134.78d |  |
| 1713 |  | установка ручной штурвал управления шибером | 2h | 2026-04-20 09:00 A | 2026-04-20 11:00 A |  | 100% |  | start no earlier than 2026-04-20 09:00 |
| 1714 |  | контроль поставка Зип - оплачивали или нет? | 10min | 2026-08-12 09:00 A | 2026-08-12 09:10 A |  | 100% |  | start no earlier than 2026-08-12 09:00 |
| 1715 |  | получить счет | 15min | 2026-08-13 09:00 A | 2026-08-13 09:15 A |  | 100% |  | start no earlier than 2026-08-13 09:00 |
| 1716 |  | контроль поставки | 15min | 2026-08-31 09:00 | 2026-08-31 09:15 | 1715FS+12d |  | 134.91d | start no earlier than 2026-08-31 09:00 |
| 1717 |  | приемка | 15min | 2026-09-01 09:15 | 2026-09-01 09:30 | 1716FS+1d |  | 134.91d | start no earlier than 2026-08-31 09:00 |
| 1718 |  | замена | 4h | 2026-09-02 09:30 | 2026-09-02 14:30 | 1717FS+1d |  | 134.91d | start no earlier than 2026-08-12 09:00 |
| 1719 |  | установить фланец на редуктор NMRV050 | 2h | 2026-05-18 09:00 A | 2026-05-18 11:00 A |  | 100% |  | start no earlier than 2026-05-20 09:00 |
| 1720 |  | настройка тепловое реле, настройка концевиков | 2h | 2026-09-02 14:30 | 2026-09-02 16:30 | 1719, 1718 |  | 134.78d | start no earlier than 2026-05-08 09:00 |
| 1721 |  | доработка пластины, которая клинит | 4h | 2026-05-07 09:00 A | 2026-05-07 13:00 A |  | 100% |  | start no earlier than 2026-05-07 09:00 |
| 1722 | 5.110 | **установить курилку на раму. Изготовить лавочку** | 27.25d? | 2026-02-28 09:00 A | 2026-03-27 11:00 A |  | 100% |  |  |
| 1723 |  | сделать удлинители для синей платформы, на которые встанет курилка | 1d? | 2026-02-28 09:00 A | 2026-02-28 17:00 A |  | 100% |  | start no earlier than 2026-02-28 09:00 |
| 1724 |  | закрыть отверстие в полу жзелезом | 1h | 2026-03-13 09:00 A | 2026-03-13 10:00 A |  | 100% |  | start no earlier than 2026-03-13 09:00 |
| 1725 |  | монтаж фанера на лавочку | 2h | 2026-03-27 09:00 A | 2026-03-27 11:00 A | 1724 | 100% |  | start no earlier than 2026-03-27 09:00 |
| 1726 |  | поворот курилки к стене, от ветра | 1h | 2026-03-20 09:00 A | 2026-03-20 10:00 A |  | 100% |  | start no earlier than 2026-03-20 09:00 |
| 1727 |  | изготовить трап входной | 4h | 2026-03-20 10:00 A | 2026-03-20 15:00 A | 1726 | 100% |  | start no earlier than 2026-03-12 08:00 |
| 1728 |  | изготовить лавку по периметру курилки. На железо будет потом доска или пенка. Металл с остатков 3ц или с синего склада | 1d? | 2026-03-01 09:00 A | 2026-03-01 17:00 A |  | 100% |  | start no earlier than 2026-03-01 09:00 |
| 1729 |  | приготовить ручки за которые будет толпа поднимать руками курилку | 2h | 2026-03-09 09:00 A | 2026-03-09 11:00 A |  | 100% |  | start no earlier than 2026-03-09 09:00 |
| 1730 |  | ТО штабелеров - обрезать нитки. Дефектовка подшипников, указать в отчете состояние | 2h | 2026-03-01 09:00 A | 2026-03-01 11:00 A |  | 100% |  | start no earlier than 2026-03-01 09:00 |
| 1731 | 5.112 | **штабелер - замена ролик мачты. Подшипник котка** | 0.01d | 2026-03-03 09:00 A | 2026-03-03 09:05 A |  | 100% |  |  |
| 1732 |  | контроль | 5min | 2026-03-03 09:00 A | 2026-03-03 09:05 A |  | 100% |  | start no earlier than 2026-03-03 09:00 |
| 1733 | 5.113 | **установить стеллажи для архив образцов** | 31.5d? | 2026-03-03 09:00 | 2026-04-04 13:30 A |  | 100% |  |  |
| 1734 |  | монтаж освещение | 4h | 2026-03-06 09:00 A | 2026-03-06 13:00 A |  | 100% |  | start no earlier than 2026-03-06 09:00 |
| 1735 | 5.113.2 | **покрасить стеллажи** | 12.02d | 2026-03-06 14:00 A | 2026-03-18 14:10 A | 1734 | 100% |  |  |
| 1736 |  | Заказать краску не пахнущую для радиаторов | 10min | 2026-03-06 14:00 A | 2026-03-06 14:10 A |  | 100% |  | start no earlier than 2026-03-03 09:00 |
| 1737 |  | Доставка | 10d | 2026-03-06 14:10 A | 2026-03-18 14:10 A | 1736 | 100% |  | start no earlier than 2026-03-03 09:00 |
| 1738 |  | покраска | 4h | 2026-03-06 14:00 A | 2026-03-06 18:00 A |  | 100% |  | start no earlier than 2026-03-06 09:00 |
| 1739 |  | покраска | 4h | 2026-03-06 14:00 A | 2026-03-06 18:00 A |  | 100% |  | start no earlier than 2026-03-06 09:00 |
| 1740 |  | занести стеллажи в кабинеты с работниками 5ц | 4h | 2026-03-09 09:00 A | 2026-03-09 13:00 A | 1742 | 100% |  | start no earlier than 2026-03-09 09:00 |
| 1741 |  | сборка стеллажей | 4h | 2026-03-13 09:00 A | 2026-03-13 13:00 A |  | 100% |  | start no earlier than 2026-03-13 09:00 |
| 1742 |  | монтаж доп полок с уголка | 4h | 2026-03-08 09:00 A | 2026-03-08 13:00 A | 1743 | 100% |  | start no earlier than 2026-03-08 09:00 |
| 1743 |  | напилить фанеру на стеллажи | 8h | 2026-03-15 09:00 A | 2026-03-15 18:00 A |  | 100% |  | start no earlier than 2026-03-15 09:00 |
| 1744 |  | напилить фанеру на стеллажи | 4h | 2026-03-16 09:00 A | 2026-03-16 13:00 A |  | 100% |  | start no earlier than 2026-03-16 09:00 |
| 1745 | 5.113.8 | **монтаж двери** | 8.06d? | 2026-03-03 09:00 | 2026-03-11 09:30 |  | 100% |  |  |
| 1746 |  | заявка фурнитуры | 30min | 2026-03-05 09:00 A | 2026-03-05 09:30 A |  | 100% |  | start no earlier than 2026-03-05 09:00 |
| 1747 |  | получить коробку на дверь / контроолль поставки | 5min | 2026-03-18 09:00 A | 2026-03-18 09:05 A |  | 100% |  | start no earlier than 2026-03-18 09:00 |
| 1748 |  | монтаж 2 двери | 4h | 2026-03-20 09:00 A | 2026-03-20 13:00 A |  | 100% |  | start no earlier than 2026-03-20 09:00 |
| 1749 |  | монтаж замка и ручек | 2h | 2026-03-24 09:00 A | 2026-03-24 11:00 A |  | 100% |  | start no earlier than 2026-03-24 09:00 |
| 1750 | 5.113.8.5 | **монтаж наличноков** | 10.5d | 2026-03-24 09:00 A | 2026-04-04 13:30 A |  | 100% |  |  |

| ID | WBS | Task | Duration | Start | Finish | Predecessors | Complete | Total float | Constraint |
| --- | --- | --- | --- | --- | --- | --- | --- | --- | --- |
| 1751 |  | заявка на наличинки | 30min | 2026-03-24 09:00 A | 2026-03-24 09:30 A |  | 100% |  | start no earlier than 2026-03-24 09:00 |
| 1752 |  | доставка | 10d | 2026-03-24 09:30 A | 2026-04-04 09:30 A | 1751 | 100% |  | start no earlier than 2026-03-20 08:00 |
| 1753 |  | монтаж | 4h | 2026-04-04 09:30 A | 2026-04-04 13:30 A | 1752 | 100% |  | start no earlier than 2026-03-20 08:00 |
| 1754 | 5.114 | **монтаж розеток для весов** | 101.88d | 2026-03-02 09:00 A | 2026-06-24 17:00 A |  | 100% |  |  |
| 1755 |  | составить план монтажа, расчет материалов | 30min | 2026-03-02 09:00 A | 2026-03-02 09:30 A |  | 100% |  | start no earlier than 2026-03-02 09:00 |
| 1756 |  | заявка трос/ талреп | 30min | 2026-03-02 09:30 A | 2026-03-02 10:00 A | 1755 | 100% |  | start no earlier than 2026-02-27 08:00 |
| 1757 |  | доставка | 10d | 2026-03-02 10:00 A | 2026-03-12 10:00 A | 1756 | 100% |  | start no earlier than 2026-02-27 08:00 |
| 1758 |  | комплектация | 30min | 2026-06-01 09:00 A | 2026-06-01 09:30 A |  | 100% |  | start no earlier than 2026-06-01 09:00 |
| 1759 |  | монтаж | 8h | 2026-06-24 09:00 A | 2026-06-24 17:00 A | 1757 | 100% |  | start no earlier than 2026-06-24 09:00 |
| 1760 | 5.115 | **установить кнопочный пост вентилятора в окно в доступную зону** | 5.06d | 2026-03-03 09:00 A | 2026-03-08 09:30 |  | 1% | 287.53d |  |
| 1761 |  | заявка частотник 0,5-0,75квт | 30min | 2026-03-03 09:00 A | 2026-03-03 09:30 A |  | 100% |  | start no earlier than 2026-03-03 09:00 |
| 1762 |  | доставка | 5d | 2026-03-03 09:30 | 2026-03-08 09:30 | 1761 |  | 287.53d | start no earlier than 2026-02-27 08:00 |
| 1763 |  | монтаж | 4h | 2026-03-03 09:00 | 2026-03-03 13:00 |  |  | 292.09d | start no earlier than 2026-03-03 09:00 |
| 1764 |  | замена местами бойлер с раздевали и кухня | 2h | 2026-02-27 09:00 A | 2026-02-27 11:00 A |  | 100% |  | start no earlier than 2026-02-27 08:00 |
| 1765 | 5.117 | **установить калорифер на 4 котел** | 11.12d? | 2026-10-12 09:00 | 2026-10-27 10:00 |  |  | 96.47d |  |
| 1766 |  | заявка | 1h | 2026-10-12 09:00 | 2026-10-12 10:00 |  |  | 96.47d | start no earlier than 2026-10-12 09:00 |
| 1767 |  | доставка | 10d | 2026-10-12 10:00 | 2026-10-26 10:00 | 1766 |  | 96.47d | start no earlier than 2026-02-27 08:00 |
| 1768 |  | монтаж | 1d? | 2026-10-26 10:00 | 2026-10-27 10:00 | 1767 |  | 96.47d | start no earlier than 2026-02-27 08:00 |
| 1769 | 5.118 | **изготовить бункер нерж** | 83d | 2026-06-06 09:00 | 2026-09-16 18:00 |  | 84% |  |  |
| 1770 |  | составить чертеж | 1h | 2026-03-16 09:00 A | 2026-03-16 10:00 A |  | 100% |  | start no earlier than 2026-03-16 09:00 |
| 1771 |  | заявка на нерж | 30min | 2026-03-16 10:00 A | 2026-03-16 10:30 A | 1770 | 100% |  | start no earlier than 2026-02-27 08:00 |
| 1772 |  | доставка | 10d | 2026-04-23 09:00 A | 2026-05-05 18:00 A | 1771 | 100% |  | start no earlier than 2026-04-23 09:00 |
| 1773 |  | сборка | 2d | 2026-06-06 09:00 | 2026-06-07 18:00 | 1772 |  | 205.59d | start no earlier than 2026-06-06 09:00 |
| 1774 |  | аудит по взрывоопасности 5ц | 1d? | 2025-09-03 09:00 | 2025-09-03 18:00 |  |  | 424.59d | start no earlier than 2025-09-03 09:00 |
| 1775 | 5.120 | **расширить прорем для проезда погрузчика** | 3d? | 2024-05-27 09:00 | 2024-05-29 18:00 |  |  | 790.59d |  |
| 1776 |  | перенос канализ трубы | 1d? | 2024-05-27 09:00 | 2024-05-27 18:00 |  |  | 790.59d | start no earlier than 2024-05-27 09:00 |
| 1777 |  | монтаж закладных в прорем +400мм | 1d? | 2024-05-28 09:00 | 2024-05-28 18:00 | 1776 |  | 790.59d | start no earlier than 2024-05-17 09:00 |
| 1778 |  | демонтаж /расширение | 1d? | 2024-05-29 09:00 | 2024-05-29 18:00 | 1777 |  | 790.59d | start no earlier than 2024-05-17 09:00 |
| 1779 |  | подключить концевые выключатели шибера растаривателя | 2h | 2023-06-21 09:00 | 2023-06-21 11:00 |  |  | 1037.34d | start no earlier than 2023-06-21 09:00 |
| 1780 | 5.122 | **установить сирену при включении тельфера** | 118.88d? | 2023-05-29 09:00 A | 2023-11-09 17:00 |  |  | 935.72d |  |
| 1781 |  | заявка на сирену и кабель | 5min | 2023-05-29 09:00 A | 2023-05-29 09:05 A |  | 100% |  | start no earlier than 2023-05-29 09:00 |
| 1782 |  | доставка | 5d | 2023-05-29 09:05 | 2023-06-05 09:05 | 1781 |  | 1048.99d | start no earlier than 2023-05-22 09:00 |
| 1783 |  | монтаж | 1d? | 2023-11-09 09:00 | 2023-11-09 17:00 | 1782 |  | 935.72d | start no earlier than 2023-11-09 09:00 |
| 1784 |  | держак мешка для сбора отработанного корма лопатой, что бы второй не держал мешок | 1d? | 2026-05-04 09:00 | 2026-05-04 17:00 |  |  | 236.72d | start no earlier than 2026-05-04 09:00 |
| 1785 |  | Попытаться заварить деки и хомуты той проволокой по нерже, что есть у нас | 3h | 2026-07-28 08:00 A | 2026-07-28 11:00 A |  | 100% |  | start no earlier than 2026-07-28 08:00 |
| 1786 | 5.125 | **5 цех** | 0.25d | 2026-04-07 09:00 A | 2026-04-07 11:00 A |  | 100% |  |  |
| 1787 |  | Установка сеток на сито | 1h | 2026-04-07 09:00 A | 2026-04-07 10:00 A |  | 100% |  | start no earlier than 2026-04-07 08:00 |
| 1788 | 5.125.2 | **2 цех** | 0.25d | 2026-04-07 09:00 A | 2026-04-07 11:00 A |  | 100% |  |  |
| 1789 |  | Взять шланг с мойки зона экструдера, установить на складе навесок цех 2, для набора воды в кубы | 30min | 2026-04-07 09:00 A | 2026-04-07 09:30 A |  | 100% |  | start no earlier than 2026-04-07 08:00 |
| 1790 |  | Посмотреть подачу воды на поломоечной машинке | 2h | 2026-04-07 09:00 A | 2026-04-07 11:00 A |  | 100% |  | start no earlier than 2026-04-07 08:00 |
| 1791 | 6 | **модернизация** | 911.5d? | 2023-06-07 09:00 A | 2026-09-01 13:00 |  | 47% | 136.09d |  |
| 1792 |  | доработка нерж труб для парогенератора (антиэлектрод) | 1h | 2026-07-06 09:00 | 2026-07-06 10:00 |  |  | 182.47d | start no earlier than 2026-07-06 09:00 |
| 1793 | 6.2 | **Дражжировка 2 линия 1 цех** | 0.12d | 2026-07-29 08:00 A | 2026-07-29 10:00 A |  | 100% |  |  |
| 1794 |  | установка трубки с отверстиями, эксперимент | 2h | 2026-07-29 08:00 A | 2026-07-29 10:00 A |  | 100% |  | start no earlier than 2026-07-29 08:00 |
| 1795 | 6.3 | **поточные весы на входе в барабан жира** | 0.12d | 2026-06-15 09:00 A | 2026-06-15 10:00 A |  | 100% |  |  |
| 1796 |  | запрос КП у НОТИС - весы с дозатором / бункеры | 1h | 2026-06-15 09:00 A | 2026-06-15 10:00 A |  | 100% |  | start no earlier than 2026-06-15 09:00 |
| 1797 | 6.4 | **устройство загрузки в смесители** | 0.12d | 2026-03-31 09:00 | 2026-03-31 10:00 |  |  | 265.47d |  |
| 1798 |  | подбор оборудования, запрос КП | 1h | 2026-03-31 09:00 | 2026-03-31 10:00 |  |  | 265.47d | start no earlier than 2026-03-31 08:00 |
| 1799 | 6.5 | **определить параметры сушки гранулы лаб испытанием** | 8d | 2024-09-09 09:00 A | 2024-09-16 18:00 A |  | 100% |  |  |
| 1800 |  | изучить метод материал, физ законы процесса сушки. | 4h | 2024-09-09 09:00 A | 2024-09-09 13:00 A |  | 100% |  | start no earlier than 2024-09-09 09:00 |
| 1801 |  | Определить набор средств измерения и оборыдования для лаб работы. | 4h | 2024-09-09 14:00 A | 2024-09-09 18:00 A | 1800 | 100% |  | start no earlier than 2024-09-09 09:00 |
| 1802 |  | разрабоать пошаговый план лаб работы сушки 1кг продукта в термошкафу | 4h | 2024-09-16 09:00 A | 2024-09-16 13:00 A | 1801 | 100% |  | start no earlier than 2024-09-16 09:00 |
| 1803 |  | определить зависимость времени сушки от температуры и влажности среды. | 4h | 2024-09-16 14:00 A | 2024-09-16 18:00 A | 1802 | 100% |  | start no earlier than 2024-09-06 08:00 |
| 1804 | 6.6 | **станция фильтрации гидролизат с еврокуба в промежут емкость. Фильтр + насос** | 35.25d | 2026-03-13 09:00 A | 2026-04-21 11:00 A |  | 100% |  |  |
| 1805 |  | составить схему размещения насос / фильтр | 1h | 2026-03-13 09:00 A | 2026-03-13 10:00 A |  | 100% |  | start no earlier than 2026-03-13 09:00 |
| 1806 |  | заявка фильтр 5" коллона + фитинги РР | 1h | 2026-03-13 10:00 A | 2026-03-13 11:00 A | 1805 | 100% |  | start no earlier than 2026-03-12 08:00 |
| 1807 |  | доставка | 10d | 2026-03-13 11:00 A | 2026-03-23 11:00 A | 1806 | 100% |  | start no earlier than 2026-03-12 08:00 |
| 1808 |  | сборка насосная станция с фильром в 1ц | 4h | 2026-04-20 09:00 A | 2026-04-20 13:00 A | 1807 | 100% |  | start no earlier than 2026-04-20 09:00 |
| 1809 |  | оформление протокол испытаний | 2h | 2026-04-21 09:00 A | 2026-04-21 11:00 A |  | 100% |  | start no earlier than 2026-04-21 09:00 |
| 1810 | 6.7 | **тест форсунки на гидролизат фильтрованный гидролизат** | 111.25d | 2026-04-21 11:00 A | 2026-09-01 13:00 | 1804 | 75% | 136.09d |  |
| 1811 |  | подготовить переходник | 2h | 2026-04-21 11:00 A | 2026-04-21 13:00 A |  | 100% |  | start no earlier than 2026-03-12 08:00 |
| 1812 |  | тестирование разных форсунок | 3h | 2026-04-21 13:00 A | 2026-04-21 16:00 A | 1811 | 100% |  | start no earlier than 2026-03-12 08:00 |
| 1813 |  | контроль наличия фитингов для подключения насосной фильтровальной станции к еврокубу | 60min | 2026-04-24 08:00 A | 2026-04-24 09:30 A |  | 100% |  | start no earlier than 2026-04-24 08:00 |
| 1814 |  | тест - наполнить канистру с куба гидролизатом через станцию+фильтр | 2h | 2026-04-27 09:00 A | 2026-04-27 11:00 A |  | 100% |  | start no earlier than 2026-04-27 09:00 |
| 1815 |  | фильтрованный гдз распылить форсунками штатным насосом - забивакет | 4h | 2026-05-13 09:00 A | 2026-05-13 13:00 A | 1814 | 100% |  | start no earlier than 2026-05-13 09:00 |
| 1816 |  | проект распыление моторчиком | 4h | 2026-09-01 09:00 | 2026-09-01 13:00 |  |  | 136.09d | start no earlier than 2026-09-01 09:00 |
| 1817 | 6.8 | **станция фильтраци куринный жир с еврокуба в промежут емкость. Насос + фильтр** | 46.5d? | 2026-03-05 09:00 A | 2026-04-24 14:00 A |  | 100% |  |  |
| 1818 |  | подбор производительный насос и фильтр для жира. Закачка с еврокуба, перекачка через фильтр | 1d? | 2026-03-05 09:00 A | 2026-03-05 18:00 A |  | 100% |  | start no earlier than 2026-03-05 09:00 |
| 1819 |  | заявка материалы | 1d? | 2026-03-06 09:00 A | 2026-03-06 18:00 A | 1818 | 100% |  | start no earlier than 2026-02-27 08:00 |
| 1820 |  | тест насосной станцией с фильтром | 1.12d? | 2026-04-20 09:00 A | 2026-04-20 18:00 A |  | 100% |  | start no earlier than 2026-04-20 09:00 |

| ID | WBS | Task | Duration | Start | Finish | Predecessors | Complete | Total float | Constraint |
| --- | --- | --- | --- | --- | --- | --- | --- | --- | --- |
| 1821 |  | сборка второй станции для жира на БГ11А | 6h | 2026-04-24 08:00 A | 2026-04-24 14:00 A |  | 100% |  | start no earlier than 2026-04-24 08:00 |
| 1822 | 6.9 | **мешалка гидролизата** | 156.5d | 2026-03-03 09:00 A | 2026-09-01 13:00 |  | 37% | 136.09d |  |
| 1823 |  | определить диаметр вала / где инструкция? Выяснить | 20min | 2026-08-28 09:00 A | 2026-08-28 09:20 A |  | 100% |  | start no earlier than 2026-08-28 09:00 |
| 1824 |  | согласовать договор /оплата счет | 1h | 2026-03-03 09:00 A | 2026-03-03 10:00 A |  | 100% |  | start no earlier than 2026-03-03 09:00 |
| 1825 |  | доставка | 0d | 2026-08-10 08:00 A | 2026-08-10 08:00 A |  | 100% |  | start no earlier than 2026-08-10 08:00 |
| 1826 |  | планирование технологии работы / какие нужны доработки | 15min | 2026-08-12 09:00 A | 2026-08-12 09:15 A |  | 100% |  | start no earlier than 2026-08-12 09:00 |
| 1827 |  | сборка и тест с операторами в 1ц. Можно приварить кронштейны под штабелер | 4h | 2026-08-12 09:00 A | 2026-08-12 13:00 A |  | 100% |  | start no earlier than 2026-08-12 09:00 |
| 1828 |  | составить чертеж кронштейна | 1h | 2026-08-17 09:00 A | 2026-08-17 10:00 A |  | 100% |  | start no earlier than 2026-08-17 09:00 |
| 1829 |  | заявка на лебедка | 15min | 2026-08-17 10:00 A | 2026-08-17 10:15 A | 1828 | 100% |  | start no earlier than 2026-08-14 09:00 |
| 1830 |  | конроль доставки | 15min | 2026-08-22 10:15 A | 2026-08-22 10:30 A | 1829FS+5d | 100% |  | start no earlier than 2026-08-14 09:00 |
| 1831 |  | монтаж лебедка | 6h | 2026-08-31 09:00 | 2026-08-31 16:00 | 1830FS+1d |  | 136.09d | start no earlier than 2026-08-31 09:00 |
| 1832 |  | монтаж кронштейн под лебедку | 6h | 2026-08-31 16:00 | 2026-09-01 13:00 | 1831 |  | 136.09d | start no earlier than 2026-08-31 09:00 |
| 1833 | 6.10 | **качественное нанесение жира тесты** | 84.5d? | 2026-03-02 09:00 A | 2026-06-04 13:00 A |  | 100% |  |  |
| 1834 | 6.10.1 | **испытания форсунка 2х фазная 1ц** | 2.25d | 2026-03-02 09:00 A | 2026-03-04 11:00 A |  | 100% |  |  |
| 1835 |  | подготовить кронштейн крепления форсунки к конвейеру | 2h | 2026-03-02 09:00 A | 2026-03-02 11:00 A |  | 100% |  | start no earlier than 2026-03-02 09:00 |
| 1836 |  | подготовить пневморедуктор, временно с НОТИС 3ц | 1h | 2026-03-02 11:00 A | 2026-03-02 12:00 A | 1835 | 100% |  | start no earlier than 2026-02-27 08:00 |
| 1837 |  | подготовить фильтр 1шт | 30min | 2026-03-02 12:00 A | 2026-03-02 12:30 A | 1836 | 100% |  | start no earlier than 2026-02-27 08:00 |
| 1838 |  | Тест форсунки на жирах, скооперироваться с технологами | 2h | 2026-03-04 09:00 A | 2026-03-04 11:00 A |  | 100% |  | start no earlier than 2026-03-04 09:00 |
| 1839 | 6.10.2 | **монтаж форсунки в линию** | 75.5d? | 2026-03-11 09:00 A | 2026-06-04 13:00 A |  | 100% |  |  |
| 1840 | 6.10.2.1 | **тест однофазная форсунка** | 38.25d? | 2026-03-11 09:00 A | 2026-04-22 11:00 A |  | 100% |  |  |
| 1841 |  | заявка пневморедуктор, фитинги насос - кран - 3х ходовой | 30min | 2026-03-11 09:00 A | 2026-03-11 09:30 A |  | 100% |  | start no earlier than 2026-03-11 09:00 |
| 1842 |  | проект рама для монтаж фильтров, редуктор, кронштейн форсунки | 1d? | 2026-03-11 09:30 A | 2026-03-12 09:30 A | 1841 | 100% |  | start no earlier than 2026-02-27 08:00 |
| 1843 |  | доставка | 5d | 2026-03-30 09:00 A | 2026-04-03 18:00 A |  | 100% |  | start no earlier than 2026-03-30 09:00 |
| 1844 |  | сборка рама, покраска | 2h | 2026-04-22 09:00 A | 2026-04-22 11:00 A | 1842 | 100% |  | start no earlier than 2026-04-22 09:00 |
| 1845 |  | монтаж 0,3 форсунки | 2h | 2026-04-22 09:00 A | 2026-04-22 11:00 A | 1843 | 100% |  | start no earlier than 2026-04-22 09:00 |
| 1846 | 6.11 | **тест однофазная форсунка** | 0.02d | 2026-03-16 09:00 A | 2026-03-16 09:10 A |  | 100% |  |  |
| 1847 |  | получить счет | 10min | 2026-03-16 09:00 A | 2026-03-16 09:10 A |  | 100% |  | start no earlier than 2026-03-16 09:00 |
| 1848 | 6.12 | **установить фильтры жир на 1 и 2 линию** | 86.25d | 2026-03-17 09:00 A | 2026-06-24 11:00 |  | 83% | 192.34d |  |
| 1849 |  | сборка система фильтров 2 фильтра на 2 линии подготовиь + рама | 4h | 2026-03-17 09:00 A | 2026-03-17 13:00 A |  | 100% |  | start no earlier than 2026-03-17 09:00 |
| 1850 |  | монтаж стационарно рама под фильтры | 4h | 2026-04-22 09:00 A | 2026-04-22 13:00 A | 1849 | 100% |  | start no earlier than 2026-04-22 09:00 |
| 1851 |  | калибровка PID регулятора подачи жира | 2h | 2026-05-13 09:00 A | 2026-05-13 11:00 A |  | 100% |  | start no earlier than 2026-05-13 09:00 |
| 1852 |  | подготовка для установить на 1 линию | 2h | 2026-06-24 09:00 | 2026-06-24 11:00 |  |  | 192.34d | start no earlier than 2026-06-24 09:00 |
| 1853 | 6.13 | **ТЕКО 0,4 или 1,5 поставить пленку с БЕСТРОМА 620мм** | 10.09d | 2026-03-13 09:00 A | 2026-03-23 09:45 A |  | 100% |  |  |
| 1854 |  | запрос возможности в ТЕКО | 30min | 2026-03-13 09:00 A | 2026-03-13 09:30 A |  | 100% |  | start no earlier than 2026-03-13 09:00 |
| 1855 |  | контроль ответ | 15min | 2026-03-23 09:30 A | 2026-03-23 09:45 A | 1854FS+10d | 100% |  | start no earlier than 2026-03-12 08:00 |
| 1856 | 6.14 | **фильера с вставками для 2ц** | 0.02d | 2025-02-21 09:00 A | 2025-02-21 09:10 A |  | 100% |  |  |
| 1857 |  | контроль изготовления | 10min | 2025-02-21 09:00 A | 2025-02-21 09:10 A |  | 100% |  | start no earlier than 2025-02-21 09:00 |
| 1858 | 6.15 | **ручка для экструдера крутиьт мотор на 1 и 2 линию** | 151.88d? | 2024-08-09 09:00 | 2025-02-18 17:00 |  |  | 587.72d |  |
| 1859 |  | изготовление | 1d? | 2025-02-18 09:00 | 2025-02-18 17:00 |  |  | 587.72d | start no earlier than 2025-02-18 09:00 |
| 1860 |  | составить чертежи / разместить изготовление | 1h | 2024-08-09 09:00 | 2024-08-09 10:00 |  |  | 739.47d | start no earlier than 2024-08-09 09:00 |
| 1861 | 6.16 | **охлаждение шкафов управления печью 1 2 3 линия** | 5d? | 2024-04-18 09:00 | 2024-04-24 18:00 |  |  | 816.59d |  |
| 1862 |  | выбор и заявка кондиционеры для щитов управления | 1d? | 2024-04-18 09:00 | 2024-04-18 18:00 |  |  | 816.59d | start no earlier than 2024-04-18 09:00 |
| 1863 |  | оплата / доставка | 1d? | 2024-04-19 09:00 | 2024-04-19 18:00 | 1862 |  | 816.59d | start no earlier than 2024-04-04 09:00 |
| 1864 |  | монтаж | 3d | 2024-04-22 09:00 | 2024-04-24 18:00 | 1863 |  | 816.59d | start no earlier than 2024-04-11 09:00 |
| 1865 | 6.17 | **подача гидролизат в смеситель насосом** | 25d? | 2024-03-25 09:00 | 2024-04-26 18:00 |  |  | 814.59d |  |
| 1866 |  | выбор насоса / заявка на насос | 1d? | 2024-03-25 09:00 | 2024-03-25 18:00 |  |  | 814.59d | start no earlier than 2024-03-25 09:00 |
| 1867 |  | проректирование автоматика, монтажная часть / заявка | 1d? | 2024-03-26 09:00 | 2024-03-26 18:00 | 1866 |  | 814.59d | start no earlier than 2024-03-22 09:00 |
| 1868 |  | поставка оборудования | 20d | 2024-03-27 09:00 | 2024-04-23 18:00 | 1867 |  | 814.59d | start no earlier than 2024-03-22 09:00 |
| 1869 |  | монтаж электрика | 1d? | 2024-04-24 09:00 | 2024-04-24 18:00 | 1868 |  | 814.59d | start no earlier than 2024-03-22 09:00 |
| 1870 |  | монтаж трубопровод | 1d? | 2024-04-25 09:00 | 2024-04-25 18:00 | 1869 |  | 814.59d | start no earlier than 2024-03-22 09:00 |
| 1871 |  | монтаж автоматика | 1d? | 2024-04-26 09:00 | 2024-04-26 18:00 | 1870 |  | 814.59d | start no earlier than 2024-03-22 09:00 |
| 1872 | 6.18 | **установить форсунки на подачу жир и гидролизат** | 107.38d | 2024-03-26 09:00 A | 2024-08-21 12:00 A |  | 100% |  |  |
| 1873 |  | выбор тип форсунок, заявка | 1d | 2024-03-26 09:00 A | 2024-03-26 18:00 A |  | 100% |  | start no earlier than 2024-03-26 09:00 |
| 1874 |  | проректирование / заявка на пневматику и электрику для управления форсунками | 1d | 2024-03-27 09:00 A | 2024-03-27 18:00 A | 1873 | 100% |  | start no earlier than 2024-03-22 09:00 |
| 1875 |  | тех решение / чертеж крепления форсунок | 1d | 2024-03-28 09:00 A | 2024-03-28 18:00 A | 1874 | 100% |  | start no earlier than 2024-03-22 09:00 |
| 1876 |  | доставка | 20d | 2024-03-29 09:00 A | 2024-04-25 18:00 A | 1873, 1875 | 100% |  | start no earlier than 2024-03-22 09:00 |
| 1877 |  | монтаж механника | 2h | 2024-08-21 09:00 A | 2024-08-21 11:00 A | 1876 | 100% |  | start no earlier than 2024-08-21 09:00 |
| 1878 |  | монтаж пневматика | 1h | 2024-08-21 11:00 A | 2024-08-21 12:00 A | 1877 | 100% |  | start no earlier than 2024-03-22 09:00 |
| 1879 | 6.19 | **модернизация откидной воронка загрузки в барабан дрожировки** | 10.62d | 2024-05-14 09:00 A | 2024-05-28 15:00 A |  | 100% |  |  |
| 1880 |  | составить эскиз / заказ шарниры (при остановке экструдера) | 1h | 2024-05-14 09:00 A | 2024-05-14 10:00 A |  | 100% |  | start no earlier than 2024-05-14 09:00 |
| 1881 |  | доставка | 10d | 2024-05-14 10:00 A | 2024-05-28 10:00 A | 1880 | 100% |  | start no earlier than 2024-03-14 09:00 |
| 1882 |  | монгтаж | 5h | 2024-05-28 10:00 A | 2024-05-28 15:00 A | 1881 | 100% |  | start no earlier than 2024-05-14 09:00 |
| 1883 |  | модернизация ножевого узла | 1d? | 2023-12-28 09:00 | 2023-12-28 18:00 |  |  | 900.59d | start no earlier than 2023-12-28 09:00 |
| 1884 | 6.21 | **модернизация дозации воды в прекондиционер** | 0.5d | 2023-12-25 09:00 A | 2023-12-25 14:00 A |  | 100% |  |  |
| 1885 |  | установить балансировочный кран 2 линия | 1h | 2023-12-25 09:00 A | 2023-12-25 10:00 A |  | 100% |  | start no earlier than 2023-12-25 09:00 |
| 1886 |  | установить расходомер 2 линия | 2h | 2023-12-25 10:00 A | 2023-12-25 12:00 A | 1885 | 100% |  | start no earlier than 2023-12-20 09:00 |
| 1887 |  | установить расходомер 2 линия | 2h | 2023-12-25 12:00 A | 2023-12-25 14:00 A | 1886 | 100% |  | start no earlier than 2023-12-20 09:00 |
| 1888 | 6.22 | **заменить шланг на высоктемпературный на жир** | 1.5d? | 2024-05-14 09:00 A | 2024-05-15 14:00 A |  | 100% |  |  |
| 1889 |  | заявка / подбор | 1h | 2024-05-14 09:00 A | 2024-05-14 10:00 A |  | 100% |  | start no earlier than 2024-05-14 09:00 |
| 1890 |  | доставка | 1d? | 2024-05-14 10:00 A | 2024-05-15 10:00 A | 1889 | 100% |  | start no earlier than 2023-12-13 08:00 |

| ID | WBS | Task | Duration | Start | Finish | Predecessors | Complete | Total float | Constraint |
| --- | --- | --- | --- | --- | --- | --- | --- | --- | --- |
| 1891 |  | замена | 4h | 2024-05-15 10:00 A | 2024-05-15 14:00 A | 1890 | 100% |  | start no earlier than 2024-01-15 09:00 |
| 1892 | 6.23 | **тепловая защита электромоторов мехнизмов** | 109.75d | 2023-12-28 09:00 A | 2024-05-28 16:00 |  | 2% | 791.84d |  |
| 1893 | 6.23.1 | **составить список эл моторов (нужен ток ) без теплового реле - от вибросита - до упаковки вся технология** | 76.25d | 2024-01-30 09:00 A | 2024-05-14 11:00 |  | 17% | 802.34d |  |
| 1894 |  | 5 цех | 2h | 2024-01-30 09:00 A | 2024-01-30 11:00 A |  | 100% |  | start no earlier than 2024-01-30 09:00 |
| 1895 |  | 1 цех | 4h | 2024-01-30 09:00 | 2024-01-30 13:00 |  |  | 878.09d | start no earlier than 2024-01-30 09:00 |
| 1896 |  | 2 цех | 4h | 2024-01-30 09:00 | 2024-01-30 13:00 |  |  | 878.09d | start no earlier than 2024-01-30 09:00 |
| 1897 |  | заполнитьт таблицу для заявки место-двиг-ток | 2h | 2024-05-14 09:00 | 2024-05-14 11:00 |  |  | 802.34d | start no earlier than 2024-05-14 09:00 |
| 1898 |  | переписать список мотор-редукторов | 2h | 2023-12-28 09:00 | 2023-12-28 11:00 |  |  | 889.59d | start no earlier than 2023-12-28 09:00 |
| 1899 |  | заявка тепл реле | 2h | 2024-05-14 09:00 | 2024-05-14 11:00 | 1898FS+1d |  | 791.84d | start no earlier than 2024-05-14 09:00 |
| 1900 |  | дост авка | 10d | 2024-05-14 11:00 | 2024-05-28 11:00 | 1899 |  | 791.84d | start no earlier than 2023-12-13 08:00 |
| 1901 |  | монтаж конвейер 2ц | 2h | 2024-05-28 11:00 | 2024-05-28 13:00 | 1899, 1900 |  | 791.84d | start no earlier than 2024-01-19 09:00 |
| 1902 |  | монтаж составить список | 2h | 2024-05-28 14:00 | 2024-05-28 16:00 | 1901 |  | 791.84d | start no earlier than 2023-12-13 08:00 |
| 1903 | 6.24 | **устройство контроля уровня сырья в большом бункере** | 14.03d | 2023-08-16 09:00 A | 2023-09-05 09:15 |  |  | 983.56d |  |
| 1904 |  | заявка на датчик | 15min | 2023-08-16 09:00 A | 2023-08-16 09:15 A |  | 100% |  | start no earlier than 2023-08-14 09:00 |
| 1905 |  | доставка | 10d | 2023-08-16 09:15 | 2023-08-30 09:15 | 1904 |  | 983.56d | start no earlier than 2023-03-10 09:00 |
| 1906 |  | выполнение монажных работ | 4d | 2023-08-30 09:15 | 2023-09-05 09:15 | 1905 |  | 983.56d | start no earlier than 2023-03-10 09:00 |
| 1907 | 6.25 | **конвейер с охладителя регулировка ленты - модернизация** | 6d | 2024-05-14 09:00 A | 2024-05-21 19:00 A |  | 100% |  |  |
| 1908 |  | выбор и заявка натяжные буксы | 2h | 2024-05-14 09:00 A | 2024-05-14 11:00 A |  | 100% |  | start no earlier than 2024-05-14 09:00 |
| 1909 |  | доставка | 5d | 2024-05-14 11:00 A | 2024-05-21 11:00 A | 1908 | 100% |  | start no earlier than 2023-10-30 09:00 |
| 1910 |  | монтаж | 1d | 2024-05-21 11:00 A | 2024-05-21 19:00 A | 1909 | 100% |  | start no earlier than 2023-12-01 09:00 |
| 1911 | 6.26 | **прекондиционер забивается отслоением слипшегося сырья** | 205d? | 2023-08-03 09:00 | 2024-05-14 18:00 |  |  | 0d |  |
| 1912 | 6.26.1 | **решение тех совет** | 1d? | 2023-08-03 09:00 | 2023-08-03 18:00 |  |  |  |  |
| 1913 |  | вар1 - доп лопатки на выходе | 1d? | 2024-05-14 09:00 | 2024-05-14 18:00 |  |  | 801.59d | start no earlier than 2024-05-14 09:00 |
| 1914 |  | вар 2 - вертикальные ворошители | 1d? | 2024-05-14 09:00 | 2024-05-14 18:00 |  |  | 801.59d | start no earlier than 2024-05-14 09:00 |
| 1915 |  | вар 3 - подача пара | 1d? | 2024-05-14 09:00 | 2024-05-14 18:00 |  |  | 801.59d | start no earlier than 2024-05-14 09:00 |
| 1916 | 6.27 | **фильтры на баки жиров перед насосами** | 454.12d | 2023-07-20 09:00 A | 2025-03-26 10:00 A |  | 100% |  |  |
| 1917 |  | утвердить тех решение | 1h | 2023-07-20 09:00 A | 2023-07-20 10:00 A |  | 100% |  | start no earlier than 2023-07-20 09:00 |
| 1918 |  | купить сетку в корпусе | 30min | 2024-05-14 09:00 A | 2024-05-14 09:30 A |  | 100% |  | start no earlier than 2024-05-14 09:00 |
| 1919 |  | купить 1/2 муфта для установки фитингов | 15min | 2025-03-26 09:00 A | 2025-03-26 09:15 A |  | 100% |  | start no earlier than 2025-03-26 08:00 |
| 1920 |  | проверка фитингов | 1h | 2025-03-26 09:00 A | 2025-03-26 10:00 A |  | 100% |  | start no earlier than 2025-03-26 08:00 |
| 1921 | 6.28 | **защита редутора шнеков при отказе маслянного насоса** | 20.12d? | 2023-08-02 09:00 | 2023-08-30 10:00 |  | 33% |  |  |
| 1922 |  | поиск фитинг для замера реле давления | 30min | 2023-07-28 09:00 A | 2023-07-28 09:30 A |  | 100% |  | start no earlier than 2023-07-28 09:00 |
| 1923 |  | заявка на фитинг | 1h | 2023-07-31 09:00 A | 2023-07-31 10:00 A | 1922 | 100% |  | start no earlier than 2023-07-31 09:00 |
| 1924 |  | доставка | 5d | 2023-07-31 10:00 A | 2023-08-07 10:00 A | 1923 | 100% |  | start no earlier than 2023-07-31 09:00 |
| 1925 |  | заявка реле потока 1/2 или 3/4 | 1h | 2026-03-19 09:00 | 2026-03-19 10:00 |  |  | 266.09d | start no earlier than 2026-03-19 09:00 |
| 1926 |  | доставка | 10d | 2026-03-19 10:00 | 2026-03-30 10:00 | 1925 |  | 266.09d | start no earlier than 2026-03-12 08:00 |
| 1927 |  | монтаж гидравлика | 2h | 2026-04-06 09:00 | 2026-04-06 11:00 | 1926 |  | 260.22d | start no earlier than 2026-04-06 09:00 |
| 1928 |  | монтаж электрика схема защиты + привязка к частотному приводу | 2h | 2026-04-06 11:00 | 2026-04-06 13:00 | 1927 |  | 260.09d | start no earlier than 2023-07-20 09:00 |
| 1929 | 6.29 | **подача сырья в упаковщки 1 цех** | 199.5d? | 2023-06-07 09:00 A | 2024-03-12 13:00 |  | 12% | 848.09d |  |
| 1930 |  | испытание пневмотранспорта напорная магистраль | 4h | 2024-03-12 09:00 A | 2024-03-12 13:00 A |  | 100% |  | start no earlier than 2024-03-12 09:00 |
| 1931 |  | технологическая схема подачи продукта в упаковщики | 1d? | 2023-06-19 09:00 | 2023-06-19 18:00 |  |  | 1038.59d | start no earlier than 2023-06-19 09:00 |
| 1932 |  | поиск / запрорс цен на диверторы | 2h | 2023-06-07 09:00 | 2023-06-07 11:00 |  |  | 1044.97d | start no earlier than 2023-06-07 09:00 |
| 1933 |  | поиск / запрос цены на эжекторный приемник | 2h | 2023-06-07 11:00 | 2023-06-07 13:00 | 1932 |  | 1044.97d | start no earlier than 2023-05-10 08:00 |
| 1934 |  | расчет трассы | 2d | 2023-06-07 14:00 | 2023-06-09 13:00 | 1933 |  | 1044.97d | start no earlier than 2023-05-10 08:00 |
| 1935 |  | подбор приобритение вентилятора | 1h | 2023-06-09 14:00 | 2023-06-09 15:00 | 1934 |  | 1044.97d | start no earlier than 2023-04-27 09:00 |
| 1936 | 6.30 | **защита тэн печи при отключении вентиляторов** | 160.25d? | 2023-06-09 09:00 | 2024-01-19 11:00 |  |  | 885.34d |  |
| 1937 |  | устиановить защиту на пускателе 380 1 линия | 2h | 2024-01-19 09:00 | 2024-01-19 11:00 |  |  | 885.34d | start no earlier than 2024-01-19 09:00 |
| 1938 |  | составить схему защиты | 1d? | 2023-06-09 09:00 | 2023-06-09 18:00 |  |  | 1038d | start no earlier than 2023-06-09 09:00 |
| 1939 |  | заявка | 1d? | 2023-06-12 09:00 | 2023-06-12 18:00 | 1938 |  | 1038d | start no earlier than 2023-04-25 09:00 |
| 1940 |  | оплата поставка | 5d | 2023-06-13 09:00 | 2023-06-19 18:00 | 1939 |  | 1038d | start no earlier than 2023-05-02 09:00 |
| 1941 |  | сборка и монтаж | 1d? | 2023-06-27 09:00 | 2023-06-27 17:00 | 1940 |  | 1032.72d | start no earlier than 2023-06-27 09:00 |
| 1942 | 7 | **техника** | 691.28d? | 2024-05-14 09:00 A | 2026-10-06 11:15 |  | 98% | 111.31d |  |
| 1943 |  | не заводится TRF, сломана шпилька колесо. Контроль приезда приемка работ | 1h | 2026-08-17 09:00 A | 2026-08-17 10:00 A |  | 100% |  | start no earlier than 2026-08-17 09:00 |
| 1944 | 7.2 | **капремонт погрузчика коматсу короткий** | 41.28d | 2026-08-13 09:00 A | 2026-10-06 11:15 |  | 91% | 111.31d |  |
| 1945 |  | заявка получить цену в тракресурс | 15min | 2026-08-13 09:00 A | 2026-08-13 09:15 A |  | 100% |  | start no earlier than 2026-08-13 09:00 |
| 1946 |  | заявка получить цену в форклифт | 15min | 2026-08-13 09:15 A | 2026-08-13 09:30 A | 1945 | 100% |  | start no earlier than 2026-08-13 09:00 |
| 1947 |  | получить КП 2 | 0d | 2026-08-17 09:00 A | 2026-08-17 09:00 A |  | 100% |  | start no earlier than 2026-08-17 09:00 |
| 1948 |  | решение о дате | 0d | 2026-09-07 09:00 | 2026-09-07 09:00 | 1946FS+1d |  | 132.59d | start no earlier than 2026-09-07 09:00 |
| 1949 |  | орг отправить погрузчик в ремонт / составить акт | 2h | 2026-09-08 09:00 A | 2026-09-08 11:00 A | 1946, 1948FS+1d | 100% |  | start no earlier than 2026-08-26 09:00 |
| 1950 |  | контроль сроков ремонта | 15min | 2026-10-06 11:00 | 2026-10-06 11:15 | 1949FS+20d |  | 111.31d | start no earlier than 2026-08-12 09:00 |
| 1951 |  | заказать по комплекту воздушных фильтров для погрузчиков | 1h | 2026-08-18 09:00 A | 2026-08-18 10:00 A |  | 100% |  | start no earlier than 2026-08-18 09:00 |
| 1952 |  | провкрить моточасы для проведения ТО | 1h | 2026-08-18 09:00 A | 2026-08-18 10:00 A |  | 100% |  | start no earlier than 2026-08-18 09:00 |
| 1953 |  | не заводиться trf погрузчик, посмотреть подачу топлива | 2h | 2026-05-25 08:00 A | 2026-05-25 10:00 A |  | 100% |  | start no earlier than 2026-05-25 08:00 |
| 1954 |  | ТО карбюратора ТРФ организовать | 1h | 2026-05-27 09:00 A | 2026-05-27 10:00 A |  | 100% |  | start no earlier than 2026-05-27 09:00 |
| 1955 |  | ренгулировка ремня погрузчик желтый №209490 контроль | 1h | 2026-05-14 09:00 A | 2026-05-14 10:00 A |  | 100% |  | start no earlier than 2026-05-14 09:00 |
| 1956 |  | ремонт генераторов -найти фирму | 1d? | 2026-05-07 09:00 A | 2026-05-07 18:00 A |  | 100% |  | start no earlier than 2026-05-07 09:00 |
| 1957 |  | греется мотор сменный погрузчик (вероятно помпа). Орг визит | 15min | 2026-04-27 09:00 A | 2026-04-27 09:15 A |  | 100% |  | start no earlier than 2026-04-27 08:00 |
| 1958 |  | установить вентиляторы на погрузчики | 2h | 2026-04-27 08:00 A | 2026-04-27 10:00 A |  | 100% |  | start no earlier than 2026-04-27 08:00 |
| 1959 |  | заменить шланги гидравлики погрузчик ТРФ | 1d? | 2026-04-21 09:00 A | 2026-04-21 18:00 A |  | 100% |  | start no earlier than 2026-04-21 09:00 |
| 1960 |  | пригласить тракресурс | 1h | 2026-04-21 09:00 A | 2026-04-21 10:00 A |  | 100% |  | start no earlier than 2026-04-21 09:00 |

| ID | WBS | Task | Duration | Start | Finish | Predecessors | Complete | Total float | Constraint |
| --- | --- | --- | --- | --- | --- | --- | --- | --- | --- |
| 1961 |  | проварить ковш трактора в слесарке | 4h | 2026-03-24 08:00 A | 2026-03-24 12:00 A |  | 100% |  | start no earlier than 2026-03-24 08:00 |
| 1962 |  | контроль доставки / приемка погрузчи коматсу | 1h | 2026-03-13 09:00 A | 2026-03-13 10:00 A |  | 100% |  | start no earlier than 2026-03-13 09:00 |
| 1963 |  | ремонт штабелер 5 цех ролик и опрное колесо. Контроль | 30min | 2026-03-13 09:00 A | 2026-03-13 09:30 A |  | 100% |  | start no earlier than 2026-03-13 09:00 |
| 1964 |  | ремонт ковш трактор | 6h | 2026-03-03 09:00 A | 2026-03-03 16:00 A |  | 100% |  | start no earlier than 2026-03-03 08:00 |
| 1965 | 7.17 | **ремонт цепи желтый вилочный + ручник** | 0.16d | 2025-07-28 09:00 A | 2025-07-28 10:15 A |  | 100% |  |  |
| 1966 |  | контроль даты визита | 15min | 2025-07-28 09:00 A | 2025-07-28 09:15 A |  | 100% |  | start no earlier than 2025-07-28 09:00 |
| 1967 |  | ремонт контроль \принять работы | 1h | 2025-07-28 09:15 A | 2025-07-28 10:15 A | 1966 | 100% |  | start no earlier than 2025-07-23 09:00 |
| 1968 |  | реморнт педаль газ на 3d принтере | 1h | 2025-07-23 09:00 A | 2025-07-23 10:00 A |  | 100% |  | start no earlier than 2025-07-23 09:00 |
| 1969 |  | реморнт педаль газ на 3d принтере | 1h | 2026-09-01 09:00 | 2026-09-01 10:00 |  |  | 136.47d | start no earlier than 2026-09-01 09:00 |
| 1970 |  | ТО штабелеры кайтымовская орг | 1h | 2025-07-23 09:00 A | 2025-07-23 10:00 A |  | 100% |  | start no earlier than 2025-07-23 09:00 |
| 1971 |  | заявка доводчик двери желт коматсу | 15min | 2024-05-14 09:00 A | 2024-05-14 09:15 A |  | 100% |  | start no earlier than 2024-05-14 09:00 |
| 1972 | 7.22 | **ошибка 02а22 штабелер PS16N 414** | 0.12d | 2024-05-14 09:00 A | 2024-05-14 10:00 A |  | 100% |  |  |
| 1973 |  | составить рекламацию / вызов специалистов | 1h | 2024-05-14 09:00 A | 2024-05-14 10:00 A |  | 100% |  | start no earlier than 2024-05-14 09:00 |
| 1974 | 7.23 | **неисправна кнопка стоп штабелер 5 цех** | 0.19d | 2024-05-14 09:00 A | 2024-05-14 10:30 A |  | 100% |  |  |
| 1975 |  | орг работы по замене калеса штабелера | 1h | 2024-05-14 09:00 A | 2024-05-14 10:00 A |  | 100% |  | start no earlier than 2024-05-14 09:00 |
| 1976 |  | орг забор штабелера на ремонт гидроциондра. Договор с сервисной компанией о дате, обменть штабелер с 2 цеха | 30min | 2024-05-14 10:00 A | 2024-05-14 10:30 A | 1975 | 100% |  | start no earlier than 2024-05-14 09:00 |
| 1977 | 7.24 | **ремонт стеклоочиститель вилочного** | 0.5d | 2024-05-14 09:00 A | 2024-05-14 13:00 A |  | 100% |  |  |
| 1978 |  | осмотр механизма чтто сломалось | 4h | 2024-05-14 09:00 A | 2024-05-14 13:00 A |  | 100% |  | start no earlier than 2024-05-14 09:00 |
| 1979 |  | заявка на покупку стеклоочист | 1h | 2024-05-14 09:00 A | 2024-05-14 10:00 A |  | 100% |  | start no earlier than 2024-05-14 09:00 |
| 1980 |  | купить ремень на генератор | 2h | 2024-05-14 09:00 A | 2024-05-14 11:00 A |  | 100% |  | start no earlier than 2024-05-14 09:00 |
| 1981 | 8 | **Лаборатория** | 0.06d | 2026-04-20 09:00 A | 2026-04-20 09:30 A |  | 100% |  |  |
| 1982 |  | Отнести старый бульбулятор в архив | 30min | 2026-04-20 09:00 A | 2026-04-20 09:30 A |  | 100% |  | start no earlier than 2026-04-20 09:00 |
| 1983 |  | Отнести короб от нового бульбулятора тоже в архив | 30min | 2026-04-20 09:00 A | 2026-04-20 09:30 A |  | 100% |  | start no earlier than 2026-04-20 09:00 |
| 1984 | 9 | **слесарное помещение** | 65d? | 2026-06-11 09:00 A | 2026-08-30 10:00 |  | 96% | 137.59d |  |
| 1985 |  | отвезти паллет возле слесарки в синий | 1h | 2026-08-30 09:00 A | 2026-08-30 10:00 A |  | 100% |  | start no earlier than 2026-08-30 09:00 |
| 1986 |  | заварить хомут от деко 5 ц. | 2h | 2026-07-02 09:00 A | 2026-07-02 11:00 A |  | 100% |  | start no earlier than 2026-07-02 09:00 |
| 1987 |  | доставить временно наш компрессор на 3 склад для обдува погрузчиков | 1h | 2026-06-29 09:00 A | 2026-06-29 10:00 A |  | 100% |  | start no earlier than 2026-06-29 09:00 |
| 1988 |  | ремонт 2-х ручных запайщиков- запчасти на складе (нагревательные блоки, тены) | 2h | 2026-06-27 09:00 A | 2026-06-27 11:00 A |  | 100% |  | start no earlier than 2026-06-27 09:00 |
| 1989 |  | оставляем порядок после своей смены в слесарке | 0.5h | 2026-06-12 09:00 | 2026-06-12 09:30 |  |  | 201.53d | start no earlier than 2026-06-12 09:00 |
| 1990 |  | Проверка напольных весов, почему не работают, возможно отошел контакт | 2h | 2026-07-24 09:00 A | 2026-07-24 11:00 A |  | 100% |  | start no earlier than 2026-07-24 09:00 |
| 1991 |  | уборка | 0.25d? | 2026-06-11 09:00 A | 2026-06-11 11:00 A |  | 100% |  |  |
| 1992 |  | проверить весы настольные (показывают вес больше, если получится калибровать) | 2h | 2026-06-11 09:00 A | 2026-06-11 11:00 A |  | 100% |  | start no earlier than 2026-06-11 09:00 |
| 1993 | 10 | **ЗИП ремонт** | 694.11d? | 2024-05-09 09:00 A | 2026-10-06 09:55 |  | 49% | 111.48d |  |
| 1994 |  | подготовить электродную группу для 2 цеха | 3h | 2026-08-25 09:00 A | 2026-08-25 12:00 A |  | 100% |  | start no earlier than 2026-08-25 08:00 |
| 1995 |  | пепенос трубы нерж с 3ц на синий склад | 1h | 2026-08-24 09:00 | 2026-08-24 10:00 |  |  | 142.47d | start no earlier than 2026-08-24 09:00 |
| 1996 |  | ремонт электрод парогенертора для 2ц | 4h | 2026-08-18 09:00 A | 2026-08-18 13:00 A |  | 100% |  | start no earlier than 2026-08-18 09:00 |
| 1997 |  | перевоз батареи свинец от погрузчика на синий склад | 30min | 2026-08-12 09:00 A | 2026-08-12 09:30 A |  | 100% |  | start no earlier than 2026-08-12 09:00 |
| 1998 | 10.5 | **заточка ножей** | 8.03d | 2026-08-13 09:00 A | 2026-08-21 09:15 A |  | 100% |  |  |
| 1999 |  | разместить ЛТ70 курьеру, отметиь журнал | 15min | 2026-08-13 09:00 A | 2026-08-13 09:15 A |  | 100% |  | start no earlier than 2026-08-13 09:00 |
| 2000 |  | контроль, орг забрать | 15min | 2026-08-21 09:00 A | 2026-08-21 09:15 A |  | 100% |  | start no earlier than 2026-08-21 09:00 |
| 2001 | 10.6 | **ножевой узел для 1ц** | 0.03d | 2026-08-13 09:00 A | 2026-08-13 09:15 A |  | 100% |  |  |
| 2002 |  | контроль поставки | 15min | 2026-08-13 09:00 A | 2026-08-13 09:15 A |  | 100% |  | start no earlier than 2026-08-13 09:00 |
| 2003 |  | подготовить электроды для парогенератора цех 1 | 4h | 2026-08-05 08:00 A | 2026-08-05 12:00 A |  | 100% |  | start no earlier than 2026-08-05 08:00 |
| 2004 |  | восстановить голову насоса гидрализата (в слесарке) подписать | 2h | 2026-08-01 09:00 A | 2026-08-01 11:00 A |  | 100% |  | start no earlier than 2026-08-01 09:00 |
| 2005 | 10.9 | **восстановить сетку спечи (она в слесарке)** | 1d? | 2026-08-14 09:00 | 2026-08-14 18:00 |  | 100% |  |  |
| 2006 |  | заказать сверла по нерж. М5 и М6 | 1d? | 2026-08-03 09:00 A | 2026-08-03 18:00 A |  | 100% |  | start no earlier than 2026-08-03 08:00 |
| 2007 |  | подготовить антиэлектроды по аналогии с нашими (все на складе) | 5h | 2026-08-01 09:00 A | 2026-08-01 15:00 A |  | 100% |  | start no earlier than 2026-08-01 09:00 |
| 2008 |  | подготовить электродную группу для парогенератора | 3h | 2026-06-12 09:00 A | 2026-06-12 12:00 A |  | 100% |  | start no earlier than 2026-06-12 09:00 |
| 2009 |  | собрать 2 стула для ИТР | 2h | 2026-06-07 09:00 A | 2026-06-07 11:00 A |  | 100% |  | start no earlier than 2026-06-07 09:00 |
| 2010 | 10.13 | **покрасить швейлеры возле слесарки(грунтовка, затем серый цвет)** | 0.25d | 2026-06-12 09:00 A | 2026-06-12 11:00 A |  | 100% |  |  |
| 2011 |  | болгаркой убрать сварочные сопли и покрасить | 2h | 2026-06-12 09:00 A | 2026-06-12 11:00 A |  | 100% |  | start no earlier than 2026-06-12 09:00 |
| 2012 |  | подготовить фильтры для кондиционеров, замена фильтр ткани. Находятся в слесарке | 2h | 2026-06-14 09:00 A | 2026-06-14 11:00 A |  | 100% |  | start no earlier than 2026-06-14 09:00 |
| 2013 | 10.15 | **заявка на фильеры от 02.06 1ц и 2ц** | 9.19d | 2026-06-02 09:00 A | 2026-06-11 10:30 A |  | 100% |  |  |
| 2014 |  | подготовить чертежи по ТЗ | 2h | 2026-06-02 09:00 A | 2026-06-02 11:00 A |  | 100% |  | start no earlier than 2026-06-02 09:00 |
| 2015 | 10.15.2 | **партия 1** | 8.19d | 2026-06-03 09:00 A | 2026-06-11 10:30 A |  | 100% |  |  |
| 2016 |  | разместить токарю заварка фильер + шлифвка | 30min | 2026-06-03 09:00 A | 2026-06-03 09:30 A |  | 100% |  | start no earlier than 2026-06-03 08:00 |
| 2017 |  | забрать заваренные / разместить на изготовление дюз | 30min | 2026-06-07 09:30 A | 2026-06-07 10:00 A | 2016FS+4d | 100% |  | start no earlier than 2026-06-03 08:00 |
| 2018 |  | забрать готовые | 30min | 2026-06-11 10:00 A | 2026-06-11 10:30 A | 2017FS+4d | 100% |  | start no earlier than 2026-06-03 08:00 |
| 2019 | 10.15.3 | **партия 2** | 5.12d | 2026-06-04 09:00 A | 2026-06-09 10:00 A |  | 100% |  |  |
| 2020 |  | разместить готовые балванки на прожиг отверстий | 30min | 2026-06-04 09:00 A | 2026-06-04 09:30 A |  | 100% |  | start no earlier than 2026-06-04 09:00 |
| 2021 |  | забрать готовые | 30min | 2026-06-09 09:30 A | 2026-06-09 10:00 A | 2020FS+5d | 100% |  | start no earlier than 2026-06-03 08:00 |
| 2022 | 10.16 | **зип тенов на печь 70 и 85 + шестерни питатель 70** | 37.06d | 2026-05-28 09:00 A | 2026-07-09 09:30 A |  | 100% |  |  |
| 2023 |  | запрос Настя, получить счет | 15min | 2026-05-28 09:00 A | 2026-05-28 09:15 A |  | 100% |  | start no earlier than 2026-05-28 09:00 |
| 2024 |  | оплата | 15min | 2026-06-04 09:00 A | 2026-06-04 09:15 A | 2023FS+2d | 100% |  | start no earlier than 2026-06-04 09:00 |
| 2025 |  | контроль поставки | 15min | 2026-07-09 09:15 A | 2026-07-09 09:30 A | 2024FS+30d | 100% |  | start no earlier than 2026-05-27 08:00 |
| 2026 |  | подготовка к инвентаризации | 3h | 2026-05-26 09:00 A | 2026-05-26 12:00 A |  | 100% |  | start no earlier than 2026-05-26 09:00 |
| 2027 |  | посчитать и записать какие и какое количество автоматов и контакторов есть в слесарке | 1h | 2026-05-23 09:00 A | 2026-05-23 10:00 A |  | 100% |  | start no earlier than 2026-05-23 09:00 |
| 2028 |  | передать весы (малые в 1 цех, большие в 5 цех) со слесарки | 1h | 2026-05-22 09:00 A | 2026-05-22 10:00 A |  | 100% |  | start no earlier than 2026-05-22 09:00 |
| 2029 |  | проверить работает или нет двигатель с накопительного стола цех 1- Валентин покажет. | 1h | 2026-05-19 08:00 A | 2026-05-19 09:00 A |  | 100% |  | start no earlier than 2026-05-19 08:00 |
| 2030 |  | наточить ножи для ц.2 | 1h | 2026-05-19 09:00 A | 2026-05-19 10:00 A |  | 100% |  | start no earlier than 2026-05-19 09:00 |

| ID | WBS | Task | Duration | Start | Finish | Predecessors | Complete | Total float | Constraint |
| --- | --- | --- | --- | --- | --- | --- | --- | --- | --- |
| 2031 |  | подготовка к инвентаризации (посчитать какие и метраж кабеля в слесарке и желтом нашей половине) | 2h | 2026-05-24 09:00 A | 2026-05-24 11:00 A |  | 100% |  | start no earlier than 2026-05-24 09:00 |
| 2032 |  | подготовить рабочее место в слесарке для работы на кровле Олега | 1h | 2026-05-15 09:00 A | 2026-05-15 10:00 A |  | 100% |  | start no earlier than 2026-05-15 09:00 |
| 2033 | 10.24 | **ремонт инсекютер с 1ц в слесарке. Повесить в цехе, зафиксировать в журнал мастера** | 0.12d | 2026-05-19 09:00 A | 2026-05-19 10:00 A |  | 100% |  |  |
| 2034 |  | взять светильник "антимуха" у Луговских и повесить на входе в корридор между раздевалками | 1h | 2026-05-19 09:00 A | 2026-05-19 10:00 A |  | 100% |  | start no earlier than 2026-05-19 09:00 |
| 2035 | 10.25 | **орг ремонт мотор с вращаюбщего барабана 1ц** | 0.16d | 2026-09-01 09:00 | 2026-09-01 10:15 |  |  | 136.44d |  |
| 2036 |  | подписать шильдик. На веревочке картонка / пластик | 15min | 2026-09-01 09:00 | 2026-09-01 09:15 |  |  | 136.44d | start no earlier than 2026-09-01 09:00 |
| 2037 |  | орг ремонт | 1h | 2026-09-01 09:15 | 2026-09-01 10:15 | 2036 |  | 136.44d | start no earlier than 2026-09-01 09:00 |
| 2038 |  | получить на складе резинки на двери прекондиционеров и выдать цех 1 и 2 | 1h | 2026-05-11 09:00 A | 2026-05-11 10:00 A |  | 100% |  | start no earlier than 2026-05-11 09:00 |
| 2039 |  | подготовить электродную группу для 1 цеха | 3h | 2026-05-11 09:00 A | 2026-05-11 12:00 A |  | 100% |  | start no earlier than 2026-05-11 09:00 |
| 2040 |  | на емкость нерж сделать сгон и поплавок | 4h | 2026-05-09 09:00 A | 2026-05-09 13:00 A |  | 100% |  | start no earlier than 2026-05-09 09:00 |
| 2041 |  | отвезти термоодеяло с слесарки в синий склад | 1h | 2026-05-11 09:00 A | 2026-05-11 10:00 A |  | 100% |  | start no earlier than 2026-05-11 09:00 |
| 2042 |  | приехали дроселя для светильников, восстановить не рабочие | 4h | 2026-05-12 09:00 A | 2026-05-12 13:00 A |  | 100% |  | start no earlier than 2026-05-12 09:00 |
| 2043 | 10.31 | **орг ремонт мотор с конв №2 1 линия 1ц** | 0.25d | 2026-09-01 09:00 | 2026-09-01 11:00 |  |  | 136.34d |  |
| 2044 |  | подписать шильдик | 60min | 2026-09-01 09:00 | 2026-09-01 10:00 |  |  | 136.34d | start no earlier than 2026-09-01 09:00 |
| 2045 |  | орг ремонт | 1h | 2026-09-01 10:00 | 2026-09-01 11:00 | 2044 |  | 136.34d | start no earlier than 2026-05-14 09:00 |
| 2046 |  | сборка редуктор с шлюз питателя (фото в чате 14.05) | 3h | 2026-09-01 09:00 | 2026-09-01 12:00 |  |  | 136.22d | start no earlier than 2026-09-01 09:00 |
| 2047 | 10.33 | **собрать мотор-редуктор прекондиционера в слесарке (сальники на складе в лотках снизу подписаны)** | 0.12d | 2026-06-15 09:00 A | 2026-06-15 10:00 A |  | 100% |  |  |
| 2048 |  | транспортировка в синий склад | 1h | 2026-06-15 09:00 A | 2026-06-15 10:00 A |  | 100% |  | start no earlier than 2026-06-15 09:00 |
| 2049 | 10.34 | **вскрыть листогиб** | 5.5d | 2026-05-09 09:00 A | 2026-05-15 13:00 A |  | 100% |  |  |
| 2050 |  | проверить работу листогиба (попробовать загнуть нерж) | 1h | 2026-05-09 09:00 A | 2026-05-09 10:00 A |  | 100% |  | start no earlier than 2026-05-09 09:00 |
| 2051 |  | как удлинить ручки, предложение | 5min | 2026-05-13 09:00 A | 2026-05-13 09:05 A |  | 100% |  | start no earlier than 2026-05-13 09:00 |
| 2052 |  | куда крепить стационарно. Синий склад /контейнер. Предложения. | 5min | 2026-05-13 09:00 A | 2026-05-13 09:05 A |  | 100% |  | start no earlier than 2026-05-13 09:00 |
| 2053 |  | изготовить раму для крепления к полу | 4h | 2026-05-15 09:00 A | 2026-05-15 13:00 A |  | 100% |  | start no earlier than 2026-05-15 09:00 |
| 2054 |  | усилить ручки | 1h | 2026-05-15 09:00 A | 2026-05-15 10:00 A |  | 100% |  | start no earlier than 2026-05-15 09:00 |
| 2055 |  | вывезти питатель на синий склад | 1h | 2026-05-05 09:00 A | 2026-05-05 10:00 A |  | 100% |  | start no earlier than 2026-05-05 09:00 |
| 2056 |  | транспортировка гильз и шнеков на синий склад (уложить по приходам из китая) | 3h | 2026-05-05 09:00 A | 2026-05-05 12:00 A |  | 100% |  | start no earlier than 2026-05-05 09:00 |
| 2057 |  | найти на синем складе комплектующие для инвентаризации с Алексеем | 3h | 2026-05-05 09:00 A | 2026-05-05 12:00 A |  | 100% |  | start no earlier than 2026-05-05 08:00 |
| 2058 |  | посчитать все валы от транспортеров, занести в таблицу учета | 4h | 2026-05-11 09:00 A | 2026-05-11 13:00 A |  | 100% |  | start no earlier than 2026-05-09 09:00 |
| 2059 |  | посчитать сколько валов для транспортеров Теко в слесарке | 1h | 2026-04-30 09:00 A | 2026-04-30 10:00 A |  | 100% |  | start no earlier than 2026-04-30 09:00 |
| 2060 |  | уборка остатки металл в контейнер | 1h | 2026-04-29 09:00 A | 2026-04-29 10:00 A |  | 100% |  | start no earlier than 2026-04-29 09:00 |
| 2061 | 10.41 | **ЗИП на ПГ антиэлектрод** | 39.88d? | 2026-05-13 09:00 A | 2026-06-26 17:00 A |  | 100% |  |  |
| 2062 |  | поиск в продаже труба нерж ф205 (проверить у Тимофеева диамтр) | 1h | 2026-05-13 09:00 A | 2026-05-13 10:00 A |  | 100% |  | start no earlier than 2026-05-13 09:00 |
| 2063 |  | заявка | 15min | 2026-05-13 10:00 A | 2026-05-13 10:15 A | 2062 | 100% |  | start no earlier than 2026-04-24 08:00 |
| 2064 |  | контроль доставки. Карабанов размещает у свои | 15min | 2026-05-19 09:00 A | 2026-05-19 09:15 A | 2063FS+5d | 100% |  | start no earlier than 2026-05-19 09:00 |
| 2065 |  | монтаж | 1d? | 2026-06-26 09:00 A | 2026-06-26 17:00 A | 2064FS+2d | 100% |  | start no earlier than 2026-06-26 09:00 |
| 2066 | 10.42 | **ремонт шуруповерт макита** | 48d | 2026-04-19 09:00 A | 2026-06-14 11:00 A |  | 100% |  |  |
| 2067 |  | разобрать шуруповерт макита, выяснить с редуктором проблема или нет | 2h | 2026-04-19 09:00 A | 2026-04-19 11:00 A |  | 100% |  | start no earlier than 2026-04-19 09:00 |
| 2068 |  | отправить фидео запрос о ремонте в сервисн центр | 1h | 2026-04-20 09:00 A | 2026-04-20 10:00 A |  | 100% |  | start no earlier than 2026-04-20 08:00 |
| 2069 |  | конртроль / решение о списании | 0d | 2026-04-27 09:00 A | 2026-04-27 09:00 A |  | 100% |  | start no earlier than 2026-04-27 09:00 |
| 2070 |  | попробовать собрать шуроповерт, находится в слесарке | 2h | 2026-06-14 09:00 A | 2026-06-14 11:00 A |  | 100% |  | start no earlier than 2026-06-14 09:00 |
| 2071 |  | взять винты пота м6х25 и перекрутить на сетке для печи | 1h | 2026-04-20 09:00 A | 2026-04-20 10:00 A |  | 100% |  | start no earlier than 2026-04-20 09:00 |
| 2072 | 10.44 | **шестерня питателя LT85** | 8.01d | 2026-04-08 09:00 A | 2026-04-17 09:05 |  | 94% | 250.58d |  |
| 2073 | 10.44.1 | **1. заказ с китая** | 8.01d | 2026-04-08 09:00 A | 2026-04-17 09:05 |  | 75% | 250.58d |  |
| 2074 |  | запрос / контроль | 15min | 2026-04-08 09:00 A | 2026-04-08 09:15 A |  | 100% |  | start no earlier than 2026-04-08 09:00 |
| 2075 |  | контроль | 5min | 2026-04-17 09:00 | 2026-04-17 09:05 |  |  | 250.58d | start no earlier than 2026-04-17 09:00 |
| 2076 | 10.44.2 | **2. изготовление по образцу** | 6.03d | 2026-04-08 09:00 A | 2026-04-15 09:15 A |  | 100% |  |  |
| 2077 |  | выяснить возможносить изготвления | 30min | 2026-04-08 09:00 A | 2026-04-08 09:30 A |  | 100% |  | start no earlier than 2026-04-08 09:00 |
| 2078 |  | отправить курьера | 15min | 2026-04-08 09:30 A | 2026-04-08 09:45 A | 2077 | 100% |  | start no earlier than 2026-04-06 09:00 |
| 2079 |  | контроль | 15min | 2026-04-15 09:00 A | 2026-04-15 09:15 A | 2078 | 100% |  | start no earlier than 2026-04-15 09:00 |
| 2080 |  | проверить наличие лент в ЗИП перед утилизаций б/у | 2h | 2026-03-31 09:00 A | 2026-03-31 11:00 A |  | 100% |  | start no earlier than 2026-03-31 08:00 |
| 2081 |  | соединители лент траснспортеры линий - проверить остаток | 30min | 2026-08-31 09:00 | 2026-08-31 09:30 |  |  | 137.53d | start no earlier than 2026-08-31 09:00 |
| 2082 | 10.47 | **освободить место на син склад / перенос в новый контейнер** | 1.5d | 2026-03-30 08:00 A | 2026-03-31 13:00 A |  | 100% |  |  |
| 2083 |  | перенести метал, норию в контейнер с синего склада | 4h | 2026-03-30 09:00 A | 2026-03-30 13:00 A |  | 100% |  | start no earlier than 2026-03-30 09:00 |
| 2084 |  | сборка стеллаж хранения металла | 4h | 2026-03-30 08:00 A | 2026-03-30 12:00 A |  | 100% |  | start no earlier than 2026-03-30 08:00 |
| 2085 |  | монтаж стеллаж хранения металла | 4h | 2026-03-31 09:00 A | 2026-03-31 13:00 A |  | 100% |  | start no earlier than 2026-03-31 09:00 |
| 2086 |  | загрузка мусор в трактор дерево, отход | 4h | 2026-03-31 09:00 A | 2026-03-31 13:00 A |  | 100% |  | start no earlier than 2026-03-31 08:00 |
| 2087 |  | заточка ножей 2ц орг | 30min | 2026-03-25 09:00 A | 2026-03-25 09:30 A |  | 100% |  | start no earlier than 2026-03-25 08:00 |
| 2088 |  | ремонт водонагреватель орг | 1h | 2026-03-23 09:00 A | 2026-03-23 10:00 A |  | 100% |  | start no earlier than 2026-03-23 09:00 |
| 2089 |  | ремонт парогенератор орг | 1h | 2026-03-23 09:00 A | 2026-03-23 10:00 A |  | 100% |  | start no earlier than 2026-03-23 09:00 |
| 2090 | 10.51 | **стеллаж для организации хранения металла** | 12.5d | 2026-03-23 09:00 A | 2026-04-06 13:00 A |  | 100% |  |  |
| 2091 |  | составить эскиз / расчет заявка металл | 4h | 2026-03-23 09:00 A | 2026-03-23 13:00 A |  | 100% |  | start no earlier than 2026-03-23 09:00 |
| 2092 |  | доставка | 10d | 2026-03-23 14:00 A | 2026-04-03 13:00 A | 2091 | 100% |  | start no earlier than 2026-03-20 08:00 |
| 2093 |  | сборка | 2d | 2026-04-03 14:00 A | 2026-04-06 13:00 A | 2092 | 100% |  | start no earlier than 2026-03-20 08:00 |
| 2094 |  | установить крыльчатку мотор-редуктор смесителя / перенос в контейнер | 30min | 2026-09-01 09:00 | 2026-09-01 09:30 |  |  | 136.53d | start no earlier than 2026-09-01 09:00 |
| 2095 | 10.53 | **изготовить ножевой узел для 2ц** | 11.04d | 2026-03-17 09:00 A | 2026-03-28 09:20 A |  | 100% |  |  |
| 2096 |  | получить счет | 10min | 2026-03-17 09:00 A | 2026-03-17 09:10 A |  | 100% |  | start no earlier than 2026-03-17 08:00 |
| 2097 |  | изготовление | 10d | 2026-03-17 09:10 A | 2026-03-27 09:10 A | 2096 | 100% |  | start no earlier than 2026-03-17 08:00 |
| 2098 |  | контроль | 5min | 2026-03-28 09:10 A | 2026-03-28 09:15 A | 2097FS+1d | 100% |  | start no earlier than 2026-03-17 08:00 |
| 2099 |  | орг доставка | 5min | 2026-03-28 09:15 A | 2026-03-28 09:20 A | 2098 | 100% |  | start no earlier than 2026-03-17 08:00 |
| 2100 |  | сгоревшие двигатели унести в контенер в коробку | 1h | 2026-03-15 09:00 A | 2026-03-15 10:00 A |  | 100% |  | start no earlier than 2026-03-15 09:00 |

| ID | WBS | Task | Duration | Start | Finish | Predecessors | Complete | Total float | Constraint |
| --- | --- | --- | --- | --- | --- | --- | --- | --- | --- |
| 2101 |  | ремонт головы насоса нгш57 гидродлизат 2шт | 2h | 2026-03-16 09:00 A | 2026-03-16 11:00 A |  | 100% |  | start no earlier than 2026-03-16 09:00 |
| 2102 |  | изготовить ножевой узел для 2ц | 0d | 2026-03-16 09:00 A | 2026-03-16 09:00 A |  | 100% |  | start no earlier than 2026-03-16 09:00 |
| 2103 |  | по всем цехам обход, проверка обратный клпан бойлеры / настройка температуры . Составить список под замену | 2h | 2026-09-01 09:00 | 2026-09-01 11:00 |  |  | 136.34d | start no earlier than 2026-09-01 09:00 |
| 2104 | 10.58 | **ремонт датчик расхода пара с линия 3** | 25.11d | 2026-09-01 09:00 | 2026-10-06 09:55 |  |  | 111.48d |  |
| 2105 |  | заявка взип | 15min | 2026-09-01 09:00 | 2026-09-01 09:15 |  |  | 111.48d | start no earlier than 2026-09-01 09:00 |
| 2106 |  | орг отправить в ремонт | 20min | 2026-09-01 09:15 | 2026-09-01 09:35 | 2105 |  | 111.48d | start no earlier than 2026-03-12 08:00 |
| 2107 |  | контроль | 0d | 2026-09-29 09:35 | 2026-09-29 09:35 | 2106FS+20d |  | 111.48d | start no earlier than 2026-04-17 09:00 |
| 2108 |  | орг забрать сремонта | 20min | 2026-10-06 09:35 | 2026-10-06 09:55 | 2107FS+5d |  | 111.48d | start no earlier than 2026-03-12 08:00 |
| 2109 |  | реставрация вал с охладителя. Полполнить расход ЗИП | 1h | 2026-09-01 09:00 | 2026-09-01 10:00 |  |  | 136.47d | start no earlier than 2026-09-01 09:00 |
| 2110 |  | ремонт датчик наличия сырья / собрать из 2х один | 3h | 2026-09-01 09:00 | 2026-09-01 12:00 |  |  | 136.22d | start no earlier than 2026-09-01 09:00 |
| 2111 | 10.61 | **ремонт бойлер с 5ц гардероб** | 11.04d | 2026-03-13 09:00 A | 2026-03-24 09:20 |  | 57% | 271.55d |  |
| 2112 |  | орг отправить в ремонт | 15min | 2026-03-13 09:00 A | 2026-03-13 09:15 A |  | 100% |  | start no earlier than 2026-03-13 09:00 |
| 2113 |  | контроль доставка / оплата | 5min | 2026-03-23 09:00 A | 2026-03-23 09:05 A | 2112FS+5d | 100% |  | start no earlier than 2026-03-23 09:00 |
| 2114 |  | орг доставка | 15min | 2026-03-24 09:05 | 2026-03-24 09:20 | 2113FS+1d |  | 271.55d | start no earlier than 2026-03-12 08:00 |
| 2115 |  | диагностика двигателей и редукторов в слесарке. Подробности Шуранов по тлф | 2h | 2026-09-01 09:00 | 2026-09-01 11:00 |  |  | 136.09d | start no earlier than 2026-09-01 09:00 |
| 2116 |  | которые в коробке с них снять крыльчатки | 2h | 2026-09-01 11:00 | 2026-09-01 13:00 | 2115 |  | 136.09d | start no earlier than 2026-03-06 08:00 |
| 2117 |  | ножевой узел 2ц заменаить подшипники. У мастера | 1h | 2026-03-04 08:00 A | 2026-03-04 09:00 A |  | 100% |  | start no earlier than 2026-03-04 08:00 |
| 2118 | 10.65 | **ремонт электродов ПГ в ЗИП** | 3.62d | 2026-03-08 09:00 A | 2026-03-11 15:00 A |  | 100% |  |  |
| 2119 |  | 2шт - шт | 6h | 2026-03-08 09:00 A | 2026-03-08 15:00 A |  | 100% |  | start no earlier than 2026-03-08 09:00 |
| 2120 |  | 1шт = 2ц | 6h | 2026-03-11 09:00 A | 2026-03-11 15:00 A |  | 100% |  | start no earlier than 2026-03-11 09:00 |
| 2121 |  | промер изношенных шнеков, подготовить таблицу и инструкцию для делегировать | 1h | 2026-03-03 09:00 A | 2026-03-03 10:00 A |  | 100% |  | start no earlier than 2026-03-03 09:00 |
| 2122 |  | заказ нутромер утерянные детали | 30min | 2026-03-06 09:00 A | 2026-03-06 09:30 A |  | 100% |  | start no earlier than 2026-03-06 09:00 |
| 2123 | 10.68 | **стопорнное кольцо для валов шнеков** | 0.09d | 2026-03-02 09:00 A | 2026-03-02 09:45 A |  | 100% |  |  |
| 2124 |  | заявка снабжение | 15min | 2026-03-02 09:00 A | 2026-03-02 09:15 A |  | 100% |  | start no earlier than 2026-03-02 09:00 |
| 2125 |  | заявка токарь | 15min | 2026-03-02 09:15 A | 2026-03-02 09:30 A | 2124 | 100% |  | start no earlier than 2026-02-27 08:00 |
| 2126 |  | заявка кита | 15min | 2026-03-02 09:30 A | 2026-03-02 09:45 A | 2125 | 100% |  | start no earlier than 2026-02-27 08:00 |
| 2127 | 10.69 | **быстрая замена шнеков - кондуктор для хранения и перемещения подготвленного ствола** | 2d | 2026-09-01 09:00 | 2026-09-03 03:00 |  |  | 134.59d |  |
| 2128 |  | проект кондуктора и траверсы перемещения ствола штабелером | 2h | 2026-09-01 09:00 | 2026-09-01 11:00 |  |  | 134.75d | start no earlier than 2026-09-01 09:00 |
| 2129 |  | сборка | 2d | 2026-09-02 11:00 | 2026-09-03 03:00 | 2128FS+1d |  | 134.59d | start no earlier than 2026-04-16 09:00 |
| 2130 |  | редуктор печи №7 установить подшипник 30207 | 2h | 2026-09-01 09:00 | 2026-09-01 11:00 |  |  | 136.34d | start no earlier than 2026-09-01 09:00 |
| 2131 | 10.71 | **заявка шкив на вал прекондиционер + разрезная вставка + спец шпильки** | 0.12d | 2025-08-04 09:00 | 2025-08-04 10:00 |  |  | 449.47d |  |
| 2132 |  | подбор шкив / заявка | 1h | 2025-08-04 09:00 | 2025-08-04 10:00 |  |  | 449.47d | start no earlier than 2025-08-04 09:00 |
| 2133 | 10.72 | **ремонт вал прекондиционер** | 12.02d | 2025-07-31 09:00 A | 2025-08-18 09:10 |  | 86% | 439.57d |  |
| 2134 |  | подготовить к отправке очистить | 1h | 2025-07-31 09:00 A | 2025-07-31 10:00 A |  | 100% |  | start no earlier than 2025-07-31 09:00 |
| 2135 |  | орг курьера / отправить | 5min | 2025-08-04 09:00 | 2025-08-04 09:05 | 2134 |  | 439.57d | start no earlier than 2025-08-04 09:00 |
| 2136 |  | контроль / забрать | 5min | 2025-08-18 09:05 | 2025-08-18 09:10 | 2135FS+10d |  | 439.57d | start no earlier than 2025-07-31 09:00 |
| 2137 | 10.73 | **ремонт вал в барабана жир 2л** | 158.01d | 2025-08-04 09:00 A | 2026-03-04 09:05 |  | 50% | 291.58d |  |
| 2138 |  | отправить на ремонт | 5min | 2025-08-04 09:00 | 2025-08-04 09:05 |  |  | 449.58d | start no earlier than 2025-08-04 09:00 |
| 2139 |  | контроль забрать | 5min | 2026-03-04 09:00 A | 2026-03-04 09:05 A | 2138FS+10d | 100% |  | start no earlier than 2026-03-04 09:00 |
| 2140 | 10.74 | **заявка эл мотор шибера в ЗИП** | 0.01d | 2025-02-19 09:00 | 2025-02-19 09:05 |  |  | 587.58d |  |
| 2141 |  | контроль | 5min | 2025-02-19 09:00 | 2025-02-19 09:05 |  |  | 587.58d | start no earlier than 2025-02-19 09:00 |
| 2142 |  | составить таблицу ЗИП наличия редукторов / где используется | 4h | 2025-02-21 09:00 | 2025-02-21 13:00 |  |  | 585.09d | start no earlier than 2025-02-21 09:00 |
| 2143 |  | составить таблицу соответсвия номеров подшипников - где используется | 4h | 2025-02-21 09:00 | 2025-02-21 13:00 |  |  | 585.09d | start no earlier than 2025-02-21 09:00 |
| 2144 |  | ремонт болгарки замена кнопки | 1h | 2024-10-21 09:00 A | 2024-10-21 10:00 A |  | 100% |  | start no earlier than 2024-10-21 09:00 |
| 2145 |  | сборка редуктор LT70 замена пружинные шайбы | 1d? | 2024-09-29 09:00 A | 2024-09-29 17:00 A |  | 100% |  | start no earlier than 2024-09-29 09:00 |
| 2146 | 10.79 | **прорверить наличие остатков** | 0d | 2024-09-25 08:00 A | 2024-09-25 08:05 A |  | 100% |  |  |
| 2147 |  | Манжет (армированная 2,2-75*100*10 ГОСТ 8752-79) | 5min | 2024-09-25 08:00 A | 2024-09-25 08:05 A |  | 100% |  | start no earlier than 2024-09-25 08:00 |
| 2148 |  | Манжет (армированная 1,2-80*105*10) | 5min | 2024-09-25 08:00 A | 2024-09-25 08:05 A |  | 100% |  | start no earlier than 2024-09-25 08:00 |
| 2149 |  | Манжет (армированная 2,2-80*105*10 ГОСТ 8752-79) | 5min | 2024-09-25 08:00 A | 2024-09-25 08:05 A |  | 100% |  | start no earlier than 2024-09-25 08:00 |
| 2150 |  | Манжет (армированная 2,2-55*80*10 ГОСТ 8752-79) | 5min | 2024-09-25 08:00 A | 2024-09-25 08:05 A |  | 100% |  | start no earlier than 2024-09-25 08:00 |
| 2151 |  | Масло (Для швейных машин) | 0.01d | 2024-09-25 08:00 A | 2024-09-25 08:05 A |  | 100% |  | start no earlier than 2024-09-25 08:00 |
| 2152 |  | Наконечник (ТМЛ 16-10-6 медный луженый) | 0.01d | 2024-09-25 08:00 A | 2024-09-25 08:05 A |  | 100% |  | start no earlier than 2024-09-25 08:00 |
| 2153 |  | Наконечник (ТМЛ 10-8-5 медный луженый) | 0.01d | 2024-09-25 08:00 A | 2024-09-25 08:05 A |  | 100% |  | start no earlier than 2024-09-25 08:00 |
| 2154 |  | Подшипник (56006-2RS (180106)SKF (30*5*10)) | 0.01d | 2024-09-25 08:00 A | 2024-09-25 08:05 A |  | 100% |  | start no earlier than 2024-09-25 08:00 |
| 2155 |  | Подшипник (51410/ART) | 0.01d | 2024-09-25 08:00 A | 2024-09-25 08:05 A |  | 100% |  | start no earlier than 2024-09-25 08:00 |
| 2156 |  | Подшипник (UCF 208 (40)) | 0.01d | 2024-09-25 08:00 A | 2024-09-25 08:05 A |  | 100% |  | start no earlier than 2024-09-25 08:00 |
| 2157 |  | Подшипник (6203.LLU/2ASU1/NTN) | 0.01d | 2024-09-25 08:00 A | 2024-09-25 08:05 A |  | 100% |  | start no earlier than 2024-09-25 08:00 |
| 2158 |  | Подшипник (22212(53512) SKF (60*110*28)) | 0.01d | 2024-09-25 08:00 A | 2024-09-25 08:05 A |  | 100% |  | start no earlier than 2024-09-25 08:00 |
| 2159 |  | Подшипник (UC 204 (480204) (20х47х17/31)) | 0.01d | 2024-09-25 08:00 A | 2024-09-25 08:05 A |  | 100% |  | start no earlier than 2024-09-25 08:00 |
| 2160 |  | Подшипник (6906-2RS (30*47*9)) | 0.01d | 2024-09-25 08:00 A | 2024-09-25 08:05 A |  | 100% |  | start no earlier than 2024-09-25 08:00 |
| 2161 |  | Подшипник (6003-2RS (180103) (17*35*10)) | 0.01d | 2024-09-25 08:00 A | 2024-09-25 08:05 A |  | 100% |  | start no earlier than 2024-09-25 08:00 |
| 2162 |  | Подшипник (6203-2RS (180203) (17*40*12)) | 0.01d | 2024-09-25 08:00 A | 2024-09-25 08:05 A |  | 100% |  | start no earlier than 2024-09-25 08:00 |
| 2163 |  | Подшипник (6002 2RS, SKF (180102, 15*32*9)) | 0.01d | 2024-09-25 08:00 A | 2024-09-25 08:05 A |  | 100% |  | start no earlier than 2024-09-25 08:00 |
| 2164 |  | Провод ПЩ-4 | 0.01d | 2024-09-25 08:00 A | 2024-09-25 08:05 A |  | 100% |  | start no earlier than 2024-09-25 08:00 |
| 2165 |  | Ремень клиновый А-1400 | 0.01d | 2024-09-25 08:00 A | 2024-09-25 08:05 A |  | 100% |  | start no earlier than 2024-09-25 08:00 |
| 2166 |  | Ремень клиновый В (Б)-1320 | 0.01d | 2024-09-25 08:00 A | 2024-09-25 08:05 A |  | 100% |  | start no earlier than 2024-09-25 08:00 |
| 2167 |  | Реле (тепловое РТИ-3353 23-32А) | 0.01d | 2024-09-25 08:00 A | 2024-09-25 08:05 A |  | 100% |  | start no earlier than 2024-09-25 08:00 |
| 2168 |  | Шланг (для дозирующих насосов черного цвета 6,4х9,6 мм) | 0.01d | 2024-09-25 08:00 A | 2024-09-25 08:05 A |  | 100% |  | start no earlier than 2024-09-25 08:00 |
| 2169 |  | Труба гофрированная (ПВХ 25мм с протяжкой легкая серая) | 0.01d | 2024-09-25 08:00 A | 2024-09-25 08:05 A |  | 100% |  | start no earlier than 2024-09-25 08:00 |
| 2170 |  | Шпонка призматическая (DIN 6885 A 18х11х 90мм) | 0.01d | 2024-09-25 08:00 A | 2024-09-25 08:05 A |  | 100% |  | start no earlier than 2024-09-25 08:00 |

| ID | WBS | Task | Duration | Start | Finish | Predecessors | Complete | Total float | Constraint |
| --- | --- | --- | --- | --- | --- | --- | --- | --- | --- |
| 2171 | 10.80 | **прорверить остатки подшипников** | 0d | 2024-09-10 08:00 A | 2024-09-10 08:05 A |  | 100% |  |  |
| 2172 |  | 180101АС17/6 ГПЗ | 5min | 2024-09-10 08:00 A | 2024-09-10 08:05 A |  | 100% |  | start no earlier than 2024-09-10 08:00 |
| 2173 |  | 180202 (6202 2RS) (15*35*11) SKF | 0.01d | 2024-09-10 08:00 A | 2024-09-10 08:05 A |  | 100% |  | start no earlier than 2024-09-10 08:00 |
| 2174 |  | 180206 (6206 2RS) (30*62*16) HIKI | 0.01d | 2024-09-10 08:00 A | 2024-09-10 08:05 A |  | 100% |  | start no earlier than 2024-09-10 08:00 |
| 2175 |  | 22212.EAW33C3 / SNR | 0.01d | 2024-09-10 08:00 A | 2024-09-10 08:05 A |  | 100% |  | start no earlier than 2024-09-10 08:00 |
| 2176 |  | 51407/NEUTR | 0.01d | 2024-09-10 08:00 A | 2024-09-10 08:05 A |  | 100% |  | start no earlier than 2024-09-10 08:00 |
| 2177 |  | 6001 ZZ.CM | 0.01d | 2024-09-10 08:00 A | 2024-09-10 08:05 A |  | 100% |  | start no earlier than 2024-09-10 08:00 |
| 2178 |  | 6201.VVC3/ITJ | 0.01d | 2024-09-10 08:00 A | 2024-09-10 08:05 A |  | 100% |  | start no earlier than 2024-09-10 08:00 |
| 2179 |  | 6205LLU (NTN) | 0.01d | 2024-09-10 08:00 A | 2024-09-10 08:05 A |  | 100% |  | start no earlier than 2024-09-10 08:00 |
| 2180 |  | 6206. VVC3/ITJ | 0.01d | 2024-09-10 08:00 A | 2024-09-10 08:05 A |  | 100% |  | start no earlier than 2024-09-10 08:00 |
| 2181 |  | 686-2RS/ART | 0.01d | 2024-09-10 08:00 A | 2024-09-10 08:05 A |  | 100% |  | start no earlier than 2024-09-10 08:00 |
| 2182 |  | 7512 (32212)(60*110*24) | 0.01d | 2024-09-10 08:00 A | 2024-09-10 08:05 A |  | 100% |  | start no earlier than 2024-09-10 08:00 |
| 2183 |  | HK1210/NEUTR | 0.01d | 2024-09-10 08:00 A | 2024-09-10 08:05 A |  | 100% |  | start no earlier than 2024-09-10 08:00 |
| 2184 |  | UC 205 Neutr | 0.01d | 2024-09-10 08:00 A | 2024-09-10 08:05 A |  | 100% |  | start no earlier than 2024-09-10 08:00 |
| 2185 |  | UCFC 210 ASAHI | 0.01d | 2024-09-10 08:00 A | 2024-09-10 08:05 A |  | 100% |  | start no earlier than 2024-09-10 08:00 |
| 2186 | 10.81 | **создать реестр документации на оборудование** | 2d? | 2024-09-10 09:00 | 2024-09-11 18:00 |  |  | 715.59d |  |
| 2187 |  | опись документации в наличии, сортировка | 1d? | 2024-09-10 09:00 | 2024-09-10 18:00 |  |  | 715.59d | start no earlier than 2024-09-10 09:00 |
| 2188 |  | оформление реестра наличия документации | 1d? | 2024-09-11 09:00 | 2024-09-11 18:00 | 2187 |  | 715.59d | start no earlier than 2024-09-06 08:00 |
| 2189 | 10.82 | **ремонт двигатель с шлюз питатель** | 0.02d | 2024-08-09 09:00 | 2024-08-09 09:10 |  |  | 739.57d |  |
| 2190 |  | контроль / орг курьер - | 10min | 2024-08-09 09:00 | 2024-08-09 09:10 |  |  | 739.57d | start no earlier than 2024-08-09 09:00 |
| 2191 | 10.83 | **организовать хранение зап. частей для производства в одном месте, создать склад и нести полную материальную ответственность** | 17d? | 2024-05-09 09:00 A | 2024-05-31 18:00 |  | 11% | 788.59d |  |
| 2192 |  | монтаж забор / ворота | 3d | 2024-05-09 09:00 A | 2024-05-10 09:00 A |  | 100% |  | start no earlier than 2024-05-09 09:00 |
| 2193 |  | монтаж ворота, забор | 1.12d? | 2024-05-13 09:00 | 2024-05-13 18:00 | 2192 |  | 788.59d | start no earlier than 2024-05-13 09:00 |
| 2194 |  | подготови доски для стеллажей на 3 складе | 1d? | 2024-05-20 09:00 | 2024-05-20 18:00 |  |  | 797.59d | start no earlier than 2024-05-18 09:00 |
| 2195 |  | переместить стеллажи на 2 этаж ГП + сборка | 2d? | 2024-05-13 18:00 | 2024-05-14 18:00 | 2193 |  | 795.59d | start no earlier than 2024-05-08 08:00 |
| 2196 |  | составить список всех позиций за забором для учета | 2d | 2024-05-14 09:00 | 2024-05-15 18:00 | 2193 |  | 788.59d | start no earlier than 2024-05-14 09:00 |
| 2197 |  | состаить список ЗИП склад 3 цех | 2d | 2024-05-16 09:00 | 2024-05-17 18:00 | 2196 |  | 788.59d | start no earlier than 2024-05-08 09:00 |
| 2198 |  | состаить список ЗИП склад слесарное помещение | 2d | 2024-05-20 09:00 | 2024-05-21 18:00 | 2197 |  | 788.59d | start no earlier than 2024-05-14 09:00 |
| 2199 |  | составить список ЗИП Контейнер | 2d | 2024-05-22 09:00 | 2024-05-23 18:00 | 2198 |  | 788.59d | start no earlier than 2024-05-14 09:00 |
| 2200 |  | перемещение ЗИП с 3 цеха на 2 этаж ГП | 3.88d | 2024-05-23 18:00 | 2024-05-27 18:00 | 2199, 2195 |  | 788.59d | start no earlier than 2024-05-14 09:00 |
| 2201 |  | перемещение ЗИП с контейнера на 2 этаж ГП | 3.88d | 2024-05-27 18:00 | 2024-05-29 18:00 | 2200 |  | 788.59d | start no earlier than 2024-05-14 09:00 |
| 2202 |  | перемещение ЗИП с слесарного помещения на 2 этаж ГП | 3.88d | 2024-05-29 18:00 | 2024-05-31 18:00 | 2201 |  | 788.59d | start no earlier than 2024-05-14 09:00 |
| 2203 | 10.84 | **клапан эл магнитный для парогенератора на подачу воды** | 0.06d | 2025-01-16 09:00 | 2025-01-16 09:30 |  |  | 613.53d |  |
| 2204 |  | контролль остатков, заявка на катушку | 30min | 2025-01-16 09:00 | 2025-01-16 09:30 |  |  | 613.53d | start no earlier than 2025-01-16 09:00 |
| 2205 | 10.85 | **вал с конвейера №1 разместить на ремонт** | 15.06d | 2024-05-14 09:00 | 2024-06-04 09:30 |  |  | 787.53d |  |
| 2206 |  | орг курьера | 15min | 2024-05-14 09:00 | 2024-05-14 09:15 |  |  | 787.53d | start no earlier than 2024-05-14 09:00 |
| 2207 |  | ремонт | 15d | 2024-05-14 09:15 | 2024-06-04 09:15 | 2206 |  | 787.53d | start no earlier than 2024-05-08 08:00 |
| 2208 |  | контроль, орг курьера забрать | 15min | 2024-06-04 09:15 | 2024-06-04 09:30 | 2207 |  | 787.53d | start no earlier than 2024-05-14 09:00 |
| 2209 |  | подшипник LMK20.UU/FBJ или NEUTR - 4шт ТЕКО после замены | 10min | 2024-05-14 09:00 | 2024-05-14 09:10 |  |  | 802.57d | start no earlier than 2024-05-14 09:00 |
| 2210 |  | UC204 подшипники | 10min | 2024-05-14 09:00 | 2024-05-14 09:10 |  |  | 802.57d | start no earlier than 2024-05-14 09:00 |
| 2211 |  | сетка на дробилку 37квт 5 цех 0,5мм и 0,7 мм - заявка ЕВРОМЕД | 1h | 2024-05-14 09:00 | 2024-05-14 10:00 |  |  | 802.47d | start no earlier than 2024-05-14 09:00 |
| 2212 | 11 | **ТО** | 974.12d? | 2023-03-10 09:00 A | 2026-09-01 10:00 |  | 32% | 136.47d |  |
| 2213 | 11.1 | **1 цех** | 142.25d? | 2024-04-04 09:00 | 2024-10-09 11:00 |  | 42% |  |  |
| 2214 |  | ТО ШУ печи №1 (замена кабеля, наконечников…) | 1h | 2026-08-27 09:00 | 2026-08-27 10:00 |  |  | 139.47d | start no earlier than 2026-08-27 09:00 |
| 2215 | 11.1.2 | **приточная вентиляция** | 128.12d | 2026-03-04 09:00 A | 2026-07-29 10:00 A |  | 100% |  |  |
| 2216 |  | замена оба фильтра | 1h | 2026-03-04 09:00 A | 2026-03-04 10:00 A |  | 100% |  | start no earlier than 2026-03-04 08:00 |
| 2217 |  | замена фильтра | 1h | 2026-04-15 09:00 A | 2026-04-15 10:00 A |  | 100% |  | start no earlier than 2026-04-15 09:00 |
| 2218 |  | Замена фильтра | 1h | 2026-07-29 09:00 A | 2026-07-29 10:00 A |  | 100% |  | start no earlier than 2026-07-29 08:00 |
| 2219 | 11.1.3 | **техническая вода** | 67.06d | 2026-03-11 09:00 A | 2026-05-27 09:30 A |  | 100% |  |  |
| 2220 |  | проверка гидроаккумулятора | 10min | 2026-03-11 09:00 A | 2026-03-11 09:10 A |  | 100% |  | start no earlier than 2026-03-11 09:00 |
| 2221 |  | замена фильтров | 10min | 2026-03-11 09:00 A | 2026-03-11 09:10 A |  | 100% |  | start no earlier than 2026-03-11 09:00 |
| 2222 |  | замена фильтров | 30min | 2026-05-27 09:00 A | 2026-05-27 09:30 A |  | 100% |  | start no earlier than 2026-03-11 09:00 |
| 2223 |  | замена фильтров | 30min | 2026-03-12 09:00 A | 2026-03-12 09:30 A |  | 100% |  | start no earlier than 2026-03-12 09:00 |
| 2224 | 11.1.4 | **линия 1** | 124.12d? | 2026-03-18 09:00 A | 2026-08-12 10:00 A |  | 100% |  |  |
| 2225 | 11.1.4.1 | **питатель экструдера** | 114.04d? | 2026-03-18 09:00 A | 2026-07-29 09:20 A |  | 100% |  |  |
| 2226 |  | замена подшипники | 1d? | 2026-04-08 09:00 A | 2026-04-08 17:00 A |  | 100% |  | start no earlier than 2026-04-08 09:00 |
| 2227 |  | контроль палстик втулки | 1h | 2026-05-13 09:00 A | 2026-05-13 10:00 A |  | 100% |  | start no earlier than 2026-05-13 09:00 |
| 2228 |  | контроль шестерен привода, редуктора | 10min | 2026-03-18 09:00 A | 2026-03-18 09:10 A |  | 100% |  | start no earlier than 2026-03-18 09:00 |
| 2229 |  | контроль состояние пластик втулки | 30min | 2026-06-02 09:00 A | 2026-06-02 09:30 A |  | 100% |  | start no earlier than 2026-06-02 09:00 |
| 2230 |  | Ревизия питателя | 20min | 2026-07-29 09:00 A | 2026-07-29 09:20 A |  | 100% |  | start no earlier than 2026-07-29 08:00 |
| 2231 | 11.1.4.2 | **прекондицинер экструдера** | 66.03d | 2026-05-13 09:00 A | 2026-07-29 09:15 A |  | 100% |  |  |
| 2232 |  | контроль привода, подшипников | 15min | 2026-05-13 09:00 A | 2026-05-13 09:15 A |  | 100% |  | start no earlier than 2026-05-13 09:00 |
| 2233 |  | контроль привода, подшипников | 15min | 2026-07-29 09:00 A | 2026-07-29 09:15 A |  | 100% |  | start no earlier than 2026-07-29 08:00 |
| 2234 | 11.1.4.3 | **парогенератор** | 105.12d | 2026-04-08 09:00 A | 2026-08-12 10:00 A |  | 100% |  |  |
| 2235 |  | вскрытие электородов, чистка | 1h | 2026-05-13 09:00 A | 2026-05-13 10:00 A |  | 100% |  | start no earlier than 2026-05-13 09:00 |
| 2236 |  | замена реле вкл насоса. (не вкл) | 2h | 2026-05-13 09:00 A | 2026-05-13 11:00 A |  | 100% |  | start no earlier than 2026-05-13 09:00 |
| 2237 |  | замена гофротрубы / закрепить жестко | 2h | 2026-04-08 09:00 A | 2026-04-08 11:00 A |  | 100% |  | start no earlier than 2026-04-08 09:00 |
| 2238 |  | чистка парогенератора, если нужно замена электродов | 2h | 2026-06-10 09:00 A | 2026-06-10 11:00 A |  | 100% |  | start no earlier than 2026-06-10 09:00 |
| 2239 |  | читска парогенератора, если нужно замена электродов | 2h | 2026-05-20 09:00 A | 2026-05-20 11:00 A |  | 100% |  | start no earlier than 2026-05-20 09:00 |
| 2240 |  | читска парогенератора, если нужно замена электродов | 1h | 2026-06-02 09:00 A | 2026-06-02 10:00 A |  | 100% |  | start no earlier than 2026-06-02 09:00 |

| ID | WBS | Task | Duration | Start | Finish | Predecessors | Complete | Total float | Constraint |
| --- | --- | --- | --- | --- | --- | --- | --- | --- | --- |
| 2241 |  | вскрытие электородов, чистка | 1h | 2026-08-12 09:00 A | 2026-08-12 10:00 A |  | 100% |  | start no earlier than 2026-08-12 09:00 |
| 2242 | 11.1.5 | **редуктор экструдера и маслянная станция** | 695.12d | 2024-04-04 09:00 A | 2026-09-01 10:00 |  | 41% | 136.47d |  |
| 2243 |  | чистка фильтра | 30min | 2026-06-02 09:00 A | 2026-06-02 09:30 A |  | 100% |  | start no earlier than 2026-06-02 09:00 |
| 2244 |  | муфта редутор-мотор | 15min | 2026-03-11 09:00 A | 2026-03-11 09:15 A |  | 100% |  | start no earlier than 2026-03-11 09:00 |
| 2245 |  | чистка фильтра | 30min | 2026-07-16 09:00 A | 2026-07-16 09:30 A |  | 100% |  | start no earlier than 2026-07-16 09:00 |
| 2246 |  | тэны и термпоры шнеков- прортяжка | 30min | 2025-02-25 09:00 | 2025-02-25 09:30 |  |  | 583.53d | start no earlier than 2025-02-25 09:00 |
| 2247 |  | Чистка фильтра | 30min | 2026-07-29 08:00 A | 2026-07-29 08:30 A |  | 100% |  | start no earlier than 2026-07-29 08:00 |
| 2248 | 11.1.5.6 | **шкаф управления экструдером** | 102.03d | 2026-03-31 09:00 A | 2026-07-29 09:15 A |  | 100% |  |  |
| 2249 |  | протяжка контактов | 30min | 2026-03-31 09:00 A | 2026-03-31 09:30 A |  | 100% |  | start no earlier than 2026-03-11 09:00 |
| 2250 |  | частотные привода экструдера, ножей, питателя - продувка | 30min | 2026-05-27 09:00 A | 2026-05-27 09:30 A |  | 100% |  | start no earlier than 2026-05-27 09:00 |
| 2251 |  | частотные привода экструдера, ножей, питателя - продувка | 15min | 2026-07-29 09:00 A | 2026-07-29 09:15 A |  | 100% |  | start no earlier than 2026-07-29 08:00 |
| 2252 | 11.1.5.7 | **блок тэнов сушки** | 82.03d | 2026-05-20 09:00 A | 2026-08-26 09:15 |  | 80% | 140.56d |  |
| 2253 |  | ревизия, замена отгоревших жил, проверка токов | 1h | 2026-05-20 09:00 A | 2026-05-20 10:00 A |  | 100% |  | start no earlier than 2026-05-20 09:00 |
| 2254 |  | ревизия/ проверка токов | 15min | 2026-08-26 09:00 | 2026-08-26 09:15 |  |  | 140.56d | start no earlier than 2026-08-26 09:00 |
| 2255 | 11.1.5.8 | **шкаф управления тэнами сушки** | 67.12d | 2026-06-10 09:00 A | 2026-09-01 10:00 |  | 29% | 136.47d |  |
| 2256 |  | протяжка контактов | 15min | 2026-06-10 09:00 | 2026-06-10 09:15 |  |  | 203.56d | start no earlier than 2026-06-10 09:00 |
| 2257 |  | замена неисправных жил | 1h | 2026-09-01 09:00 | 2026-09-01 10:00 |  |  | 136.47d | start no earlier than 2026-09-01 09:00 |
| 2258 |  | частотные привода экструдера, ножей, питателя - продувка | 30min | 2026-07-16 09:00 A | 2026-07-16 09:30 A |  | 100% |  | start no earlier than 2026-07-16 09:00 |
| 2259 |  | конвейер №1 с печи в дрожировщик прорверка подшипники, реуктор | 30min | 2025-02-15 09:00 | 2025-02-15 09:30 |  |  | 591.53d | start no earlier than 2025-02-15 09:00 |
| 2260 | 11.1.5.10 | **барабан смесительный дрожировка - прорверка подшипнки , реуктор** | 128d | 2026-03-04 08:00 A | 2026-07-29 08:15 A |  | 100% |  |  |
| 2261 |  | замена вал № 4 час | 2h | 2026-03-04 08:00 A | 2026-03-04 10:00 A |  | 100% |  | start no earlier than 2026-03-04 08:00 |
| 2262 |  | Дефектовка - проверить подачу, вибрации, посторонние шумы. | 15min | 2026-07-29 08:00 A | 2026-07-29 08:15 A |  | 100% |  | start no earlier than 2026-07-29 08:00 |
| 2263 | 11.1.5.11 | **печь** | 0.25d | 2026-07-16 09:00 A | 2026-07-16 11:00 A |  | 100% |  |  |
| 2264 |  | проверка состояния сетки, ремонт шплинтов | 2h | 2026-07-16 09:00 A | 2026-07-16 11:00 A |  | 100% |  | start no earlier than 2026-07-16 09:00 |
| 2265 |  | укоротить звено привода | 1h | 2026-07-16 09:00 A | 2026-07-16 10:00 A |  | 100% |  | start no earlier than 2026-07-16 09:00 |
| 2266 |  | конвейер №2 с дрожировки в охладитель - проверка подшипники , редуктор | 30min | 2025-02-15 09:00 | 2025-02-15 09:30 |  |  | 591.53d | start no earlier than 2025-02-15 09:00 |
| 2267 |  | охладитель сеточный - смазка, натяжка цепи. Проверка редуктор | 1h | 2025-02-16 09:00 | 2025-02-16 10:00 |  |  | 590.47d | start no earlier than 2025-02-16 09:00 |
| 2268 |  | вентиляторы обдува сушки | 2h | 2024-06-14 09:00 | 2024-06-14 11:00 |  |  | 779.34d | start no earlier than 2024-06-14 09:00 |
| 2269 |  | смеситель СМ-500 | 2h | 2024-04-10 09:00 | 2024-04-10 11:00 |  |  | 827.09d | start no earlier than 2024-04-10 09:00 |
| 2270 |  | шнек выгрузки смесителя | 2h | 2024-04-10 11:00 | 2024-04-10 13:00 | 2269 |  | 827.09d | start no earlier than 2024-01-03 09:00 |
| 2271 |  | электромотор экструдера | 2h | 2024-04-04 09:00 | 2024-04-04 11:00 |  |  | 831.34d | start no earlier than 2024-03-08 09:00 |
| 2272 |  | редуктор шнеков экструдера | 2h | 2024-04-04 09:00 | 2024-04-04 11:00 |  |  | 831.34d | start no earlier than 2024-01-26 09:00 |
| 2273 |  | чистка фильтр редутор шнеков | 1h | 2025-02-16 09:00 | 2025-02-16 10:00 |  |  | 590.47d | start no earlier than 2025-02-16 09:00 |
| 2274 |  | пневотранспорт вентилятор | 2h | 2024-05-07 09:00 | 2024-05-07 11:00 |  |  | 807.34d | start no earlier than 2024-05-07 09:00 |
| 2275 |  | пневотранспорт роторный питатель - проверка масла | 30min | 2025-02-16 09:00 | 2025-02-16 09:30 |  |  | 590.53d | start no earlier than 2025-02-16 09:00 |
| 2276 |  | пневотранспорт роторный питатель - проверка масла | 30min | 2026-07-29 09:00 A | 2026-07-29 09:30 A |  | 100% |  | start no earlier than 2026-07-29 08:00 |
| 2277 |  | привод сетки ПЕЧИ сушки - прорверка масла | 30min | 2025-02-16 09:00 | 2025-02-16 09:30 |  |  | 590.53d | start no earlier than 2025-02-16 09:00 |
| 2278 |  | привод сетки ПЕЧИ сушки - прорверка масла | 30min | 2026-07-29 09:00 A | 2026-07-29 09:30 A |  | 100% |  | start no earlier than 2026-07-29 08:00 |
| 2279 |  | насос подачи жира и смесительный узел, баки подогрева протяжка | 1h | 2025-02-15 09:00 | 2025-02-15 10:00 |  |  | 591.47d | start no earlier than 2025-02-15 09:00 |
| 2280 |  | дозатор сухой гидролизат - разборка, чистка, замена подшипников | 2h | 2026-08-18 09:00 A | 2026-08-18 11:00 A |  | 100% |  | start no earlier than 2026-08-18 09:00 |
| 2281 |  | проверка передаточн число редуктора/сравнить с 2л. Проверить остатки для замены на менее скоростной | 1h | 2026-08-20 09:00 | 2026-08-20 10:00 |  |  | 145.47d | start no earlier than 2026-08-20 09:00 |
| 2282 |  | Осмотр цепи и сетки | 1h | 2026-07-29 09:00 A | 2026-07-29 10:00 A |  | 100% |  | start no earlier than 2026-07-29 08:00 |
| 2283 | 11.1.6 | **линия 2** | 0.25d? | 2023-12-29 09:00 | 2023-12-29 11:00 |  | 41% |  |  |
| 2284 | 11.1.6.1 | **питатель экструдера** | 114.04d | 2026-03-18 09:00 A | 2026-07-29 09:20 A |  | 100% |  |  |
| 2285 |  | контроль состояние пластик втулки | 30min | 2026-06-02 09:00 A | 2026-06-02 09:30 A |  | 100% |  | start no earlier than 2026-06-02 09:00 |
| 2286 |  | замена подшипники | 1h | 2026-04-08 09:00 A | 2026-04-08 10:00 A |  | 100% |  | start no earlier than 2026-04-08 09:00 |
| 2287 |  | замена шестеренок -взять у Веры на складе | 2h | 2026-05-20 09:00 A | 2026-05-20 11:00 A |  | 100% |  | start no earlier than 2026-05-20 09:00 |
| 2288 |  | контроль пластик втулки | 30min | 2026-05-13 09:00 A | 2026-05-13 09:30 A |  | 100% |  | start no earlier than 2026-05-13 09:00 |
| 2289 |  | контроль шестерен привода, редуктора | 10min | 2026-03-18 09:00 A | 2026-03-18 09:10 A |  | 100% |  | start no earlier than 2026-03-18 09:00 |
| 2290 |  | Ревизия питателя | 20min | 2026-07-29 09:00 A | 2026-07-29 09:20 A |  | 100% |  | start no earlier than 2026-07-29 08:00 |
| 2291 | 11.1.6.2 | **прекондицинер экструдера** | 66.03d | 2026-05-13 09:00 A | 2026-07-29 09:15 A |  | 100% |  |  |
| 2292 |  | контроль привода, подшипников | 15min | 2026-05-13 09:00 A | 2026-05-13 09:15 A |  | 100% |  | start no earlier than 2026-05-13 09:00 |
| 2293 |  | контроль привода, подшипников | 15min | 2026-07-29 09:00 A | 2026-07-29 09:15 A |  | 100% |  | start no earlier than 2026-07-29 08:00 |
| 2294 | 11.1.6.3 | **парогенератор** | 76.12d | 2026-05-13 09:00 A | 2026-08-12 10:00 A |  | 100% |  |  |
| 2295 |  | вскрытие электородов, чистка | 1h | 2026-05-13 09:00 A | 2026-05-13 10:00 A |  | 100% |  | start no earlier than 2026-05-13 09:00 |
| 2296 |  | вскрытие электородов, чистка | 1h | 2026-08-12 09:00 A | 2026-08-12 10:00 A |  | 100% |  | start no earlier than 2026-08-12 09:00 |
| 2297 |  | тэны и термпоры шнеков- прортяжка | 30min | 2024-04-10 09:00 | 2024-04-10 09:30 |  |  | 827.53d | start no earlier than 2024-04-10 09:00 |
| 2298 |  | Чистка парогенератора | 1h | 2026-07-29 09:00 A | 2026-07-29 10:00 A |  | 100% |  | start no earlier than 2026-07-29 08:00 |
| 2299 | 11.1.6.6 | **шкаф управления экструдером** | 121.03d | 2026-03-11 09:00 A | 2026-07-29 09:15 A |  | 100% |  |  |
| 2300 |  | протяжка контактов | 30min | 2026-03-11 09:00 A | 2026-03-11 09:30 A |  | 100% |  | start no earlier than 2026-03-11 09:00 |
| 2301 |  | частотные привода экструдера, ножей, питателя - продувка | 30min | 2026-05-27 09:00 A | 2026-05-27 09:30 A |  | 100% |  | start no earlier than 2026-05-27 09:00 |
| 2302 |  | частотные привода экструдера, ножей, питателя - продувка | 15min | 2026-07-16 09:00 A | 2026-07-16 09:15 A |  | 100% |  | start no earlier than 2026-07-16 09:00 |
| 2303 |  | частотные привода экструдера, ножей, питателя - продувка | 15min | 2026-07-29 09:00 A | 2026-07-29 09:15 A |  | 100% |  | start no earlier than 2026-07-29 08:00 |
| 2304 | 11.1.6.7 | **редуктор экструдера и маслянная станция** | 59d | 2026-05-20 09:00 A | 2026-07-29 08:30 A |  | 100% |  |  |
| 2305 |  | чистка фильтра | 30min | 2026-06-02 09:00 A | 2026-06-02 09:30 A |  | 100% |  | start no earlier than 2026-06-02 09:00 |
| 2306 |  | чистка фильтра | 30min | 2026-05-20 09:00 A | 2026-05-20 09:30 A |  | 100% |  | start no earlier than 2026-05-20 09:00 |
| 2307 |  | муфта редутор-мотор проверка состояния | 30min | 2026-05-27 09:00 A | 2026-05-27 09:30 A |  | 100% |  | start no earlier than 2026-05-27 09:00 |
| 2308 |  | чистка фильтра | 30min | 2026-07-16 09:00 A | 2026-07-16 09:30 A |  | 100% |  | start no earlier than 2026-07-16 09:00 |
| 2309 |  | Чистка фильтра | 30min | 2026-07-29 08:00 A | 2026-07-29 08:30 A |  | 100% |  | start no earlier than 2026-07-29 08:00 |
| 2310 | 11.1.6.8 | **блок тэнов сушки - протяжка** | 86.12d | 2026-05-20 09:00 A | 2026-09-01 10:00 |  | 75% | 136.47d |  |

| ID | WBS | Task | Duration | Start | Finish | Predecessors | Complete | Total float | Constraint |
| --- | --- | --- | --- | --- | --- | --- | --- | --- | --- |
| 2311 |  | ревизия, замена отгоревших жил, проверка токов | 3h | 2026-05-20 09:00 A | 2026-05-20 12:00 A |  | 100% |  | start no earlier than 2026-05-20 09:00 |
| 2312 |  | ревизия, замена отгоревших жил, проверка токов | 1h | 2026-09-01 09:00 | 2026-09-01 10:00 |  |  | 136.47d | start no earlier than 2026-09-01 09:00 |
| 2313 | 11.1.6.9 | **шкаф управления тэнами сушки** | 76.03d | 2026-05-20 09:00 A | 2026-08-19 09:15 |  | 83% | 146.56d |  |
| 2314 |  | протяжка контактов | 15min | 2026-05-20 09:00 A | 2026-05-20 09:15 A |  | 100% |  | start no earlier than 2026-05-20 09:00 |
| 2315 |  | замена неисправных жил | 1h | 2026-05-20 09:00 A | 2026-05-20 10:00 A |  | 100% |  | start no earlier than 2026-05-20 09:00 |
| 2316 |  | ревизия/ проверка токов | 15min | 2026-08-19 09:00 | 2026-08-19 09:15 |  |  | 146.56d | start no earlier than 2026-08-19 09:00 |
| 2317 |  | конвейер №1 с печи в дрожировщик прорверка подшипники, реуктор | 30min | 2024-10-04 09:00 | 2024-10-04 09:30 |  |  | 694.53d | start no earlier than 2024-10-04 09:00 |
| 2318 |  | барабан смесительный дрожировка - прорверка подшипнки , реуктор | 30min | 2024-10-04 09:00 | 2024-10-04 09:30 |  |  | 694.53d | start no earlier than 2024-10-04 09:00 |
| 2319 |  | конвейер №2 с дрожировки в охладитель - проверка подшипники , редуктор | 30min | 2024-10-04 09:00 | 2024-10-04 09:30 |  |  | 694.53d | start no earlier than 2024-10-04 09:00 |
| 2320 |  | охладитель сеточный - смазка, натяжка цепи. Проверка редуктор | 1h | 2024-10-04 09:00 | 2024-10-04 10:00 |  |  | 694.47d | start no earlier than 2024-10-04 09:00 |
| 2321 |  | вентиляторы обдува сушки | 2h | 2024-06-14 09:00 | 2024-06-14 11:00 |  |  | 779.34d | start no earlier than 2024-06-14 09:00 |
| 2322 |  | смеситель СМ-500 | 2h | 2024-04-10 09:00 | 2024-04-10 11:00 |  |  | 827.09d | start no earlier than 2024-04-10 09:00 |
| 2323 |  | шнек выгрузки смесителя | 2h | 2024-04-10 11:00 | 2024-04-10 13:00 | 2322 |  | 827.09d | start no earlier than 2024-01-03 09:00 |
| 2324 |  | электромотор экструдера раборка замена подшипников / есть шум | 6h | 2026-08-27 09:00 | 2026-08-27 15:00 |  |  | 138.97d | start no earlier than 2026-08-27 09:00 |
| 2325 |  | редуктор шнеков экструдера | 2h | 2024-10-04 09:00 | 2024-10-04 11:00 |  |  | 694.34d | start no earlier than 2024-10-04 09:00 |
| 2326 |  | пневотранспорт вентилятор | 2h | 2024-05-07 09:00 | 2024-05-07 11:00 |  |  | 807.34d | start no earlier than 2024-05-07 09:00 |
| 2327 |  | пневотранспорт роторный питатель - проверка масла | 30min | 2024-10-04 09:00 | 2024-10-04 09:30 |  |  | 694.53d | start no earlier than 2024-10-04 09:00 |
| 2328 |  | привод сетки ПЕЧИ сушки - прорверка масла | 30min | 2024-10-04 09:00 | 2024-10-04 09:30 |  |  | 694.53d | start no earlier than 2024-10-04 09:00 |
| 2329 |  | насос подачи жира и смесительный узел, баки подогрева | 2h | 2023-12-28 09:00 | 2023-12-28 11:00 |  |  | 901.34d | start no earlier than 2023-12-28 09:00 |
| 2330 |  | дозатор сухой гидролизат - разборка, чистка, замена подшипников | 2h | 2026-08-20 09:00 | 2026-08-20 11:00 |  |  | 145.34d | start no earlier than 2026-08-20 09:00 |
| 2331 | 11.1.6.24 | **Насос гидролизата** | 101d | 2026-04-01 09:00 A | 2026-07-29 08:30 A |  | 100% |  |  |
| 2332 |  | Дефектовка - проверить подачу, вибрации, посторонние шумы. | 30min | 2026-04-01 09:00 A | 2026-04-01 09:30 A |  | 100% |  | start no earlier than 2026-04-01 09:00 |
| 2333 |  | Дефектовка - проверить подачу, вибрации, посторонние шумы. | 30min | 2026-07-29 08:00 A | 2026-07-29 08:30 A |  | 100% |  | start no earlier than 2026-07-29 08:00 |
| 2334 | 11.1.7 | **Квадропак** | 46.5d | 2026-04-22 09:00 A | 2026-06-15 13:00 A |  | 100% |  |  |
| 2335 |  | проверить резьбу крепления встряхивателя №1, закрепить | 1h | 2026-06-02 09:00 A | 2026-06-02 10:00 A |  | 100% |  | start no earlier than 2026-06-02 09:00 |
| 2336 |  | Замена резинки на воздушном редукторе находящемся под мультиголовой (весы) | 1h | 2026-04-22 09:00 A | 2026-04-22 10:00 A |  | 100% |  | start no earlier than 2026-04-22 09:00 |
| 2337 |  | ТО узла пайки. Чистка тен/ревизия термоизолятора пневморедуктора | 1h | 2026-05-27 09:00 A | 2026-05-27 10:00 A |  | 100% |  | start no earlier than 2026-05-27 09:00 |
| 2338 |  | ревизия привод встряхивателя | 30min | 2026-05-27 09:00 A | 2026-05-27 09:30 A |  | 100% |  | start no earlier than 2026-05-27 09:00 |
| 2339 |  | ревизия протяжки кинематики низ / верх | 30min | 2026-05-27 09:00 A | 2026-05-27 09:30 A |  | 100% |  | start no earlier than 2026-05-27 09:00 |
| 2340 |  | ревизия вакуумный насос | 15min | 2026-05-27 09:00 A | 2026-05-27 09:15 A |  | 100% |  | start no earlier than 2026-05-27 09:00 |
| 2341 |  | замена вал выход | 4h | 2026-06-15 09:00 A | 2026-06-15 13:00 A |  | 100% |  | start no earlier than 2026-06-15 09:00 |
| 2342 |  | проверить пневмоцилиндр на встряхивателе, если нужно заменить | 1h | 2026-05-20 09:00 A | 2026-05-20 10:00 A |  | 100% |  | start no earlier than 2026-05-20 09:00 |
| 2343 | 11.1.8 | **Парогенератор** | 8.25d | 2026-06-02 09:00 A | 2026-06-10 11:00 |  | 33% | 203.34d |  |
| 2344 |  | читска парогенератора, если нужно замена электродов | 2h | 2026-06-10 09:00 | 2026-06-10 11:00 |  |  | 203.34d | start no earlier than 2026-06-10 09:00 |
| 2345 |  | читска парогенератора, если нужно замена электродов | 1h | 2026-06-02 09:00 A | 2026-06-02 10:00 A |  | 100% |  | start no earlier than 2026-06-02 09:00 |
| 2346 | 11.1.9 | **Дражжировка** | 0.25d | 2026-08-27 09:00 | 2026-08-27 11:00 |  |  | 139.34d |  |
| 2347 |  | Проверка подшипников на барабанах | 15min | 2026-08-27 09:00 | 2026-08-27 09:15 |  |  | 139.56d | start no earlier than 2026-08-27 09:00 |
| 2348 |  | Проверка фильтров | 10min | 2026-08-27 09:00 | 2026-08-27 09:10 |  |  | 139.57d | start no earlier than 2026-08-27 09:00 |
| 2349 |  | Ревизия насоса гидролизата | 2h | 2026-08-27 09:00 | 2026-08-27 11:00 |  |  | 139.34d | start no earlier than 2026-08-27 09:00 |
| 2350 | 11.1.10 | **жиротопка и насос перекачки жира** | 664.03d | 2024-04-10 08:00 A | 2026-07-29 09:15 |  | 25% | 163.56d |  |
| 2351 |  | блок тэнов -протяжка | 30min | 2024-04-10 08:00 | 2024-04-10 08:30 |  |  | 827.53d | start no earlier than 2024-04-10 08:00 |
| 2352 |  | насос, фильтр - осмотр, чистка | 15min | 2024-04-25 09:00 | 2024-04-25 09:15 |  |  | 816.56d | start no earlier than 2024-04-25 09:00 |
| 2353 |  | насос, фильтр - осмотр, чистка | 15min | 2026-07-29 09:00 A | 2026-07-29 09:15 A |  | 100% |  | start no earlier than 2026-07-29 08:00 |
| 2354 | 11.1.11 | **упаковщкики** | 452.25d | 2025-02-14 09:00 A | 2026-08-26 11:00 |  | 15% | 140.34d |  |
| 2355 |  | упаковщик ТЕКО 0,4кг | 2h | 2025-02-16 09:00 A | 2025-02-16 11:00 A |  | 100% |  | start no earlier than 2025-02-16 09:00 |
| 2356 |  | упаковщик ТЕКО 0,4кг | 2h | 2026-08-26 09:00 | 2026-08-26 11:00 |  |  | 140.34d | start no earlier than 2026-08-26 09:00 |
| 2357 |  | упаковщик НОТИС | 2h | 2025-02-16 09:00 | 2025-02-16 11:00 |  |  | 590.34d | start no earlier than 2025-02-16 09:00 |
| 2358 |  | упаковщик ТЕКО 1.5кг | 2h | 2025-02-16 09:00 | 2025-02-16 11:00 |  |  | 590.34d | start no earlier than 2025-02-16 09:00 |
| 2359 |  | упаковщик КВАДРОПАК | 2h | 2025-02-16 09:00 | 2025-02-16 11:00 |  |  | 590.34d | start no earlier than 2025-02-16 09:00 |
| 2360 |  | нория и вибробункер КВАДРОПАК | 2h | 2025-02-16 09:00 | 2025-02-16 11:00 |  |  | 590.34d | start no earlier than 2025-02-16 09:00 |
| 2361 |  | запайщик 1 | 2h | 2025-02-17 09:00 | 2025-02-17 11:00 |  |  | 589.34d | start no earlier than 2025-02-17 09:00 |
| 2362 |  | запайщик 2 | 2h | 2025-02-17 09:00 | 2025-02-17 11:00 |  |  | 589.34d | start no earlier than 2025-02-17 09:00 |
| 2363 |  | конвейер гп ТЕКО 1,5 | 2h | 2025-02-14 09:00 | 2025-02-14 11:00 |  |  | 592.34d | start no earlier than 2025-02-14 09:00 |
| 2364 |  | конвейер гп ТЕКО 0,4 | 2h | 2025-02-14 09:00 | 2025-02-14 11:00 |  |  | 592.34d | start no earlier than 2025-02-14 09:00 |
| 2365 |  | накопительный стол 1,5 | 2h | 2025-02-15 09:00 | 2025-02-15 11:00 |  |  | 591.34d | start no earlier than 2025-02-15 09:00 |
| 2366 |  | накопительный стол 0,4 | 2h | 2025-02-15 09:00 | 2025-02-15 11:00 |  |  | 591.34d | start no earlier than 2025-02-15 09:00 |
| 2367 |  | Осмотр всех упаковщиков/транспортеров/накопительных столов/ всех щитков оборудования | 2h | 2026-07-29 09:00 A | 2026-07-29 11:00 A |  | 100% |  | start no earlier than 2026-07-29 08:00 |
| 2368 | 11.1.12 | **электрооборудование** | 694d? | 2024-04-04 09:00 A | 2026-08-29 10:00 |  | 12% | 137.59d |  |
| 2369 |  | ВРУ1 | 15min | 2026-05-20 09:00 | 2026-05-20 09:15 |  |  | 222.56d | start no earlier than 2026-05-20 09:00 |
| 2370 |  | ВРУ2 | 15min | 2026-05-20 09:00 | 2026-05-20 09:15 |  |  | 222.56d | start no earlier than 2026-05-20 09:00 |
| 2371 |  | ЩР1 экструдер | 15min | 2026-05-20 09:00 | 2026-05-20 09:15 |  |  | 222.56d | start no earlier than 2026-05-20 09:00 |
| 2372 |  | ЩР2 упаковка №1 | 15min | 2026-05-20 09:00 | 2026-05-20 09:15 |  |  | 222.56d | start no earlier than 2026-05-20 09:00 |
| 2373 |  | ЩР3 упаковка №2 | 15min | 2026-05-20 09:00 | 2026-05-20 09:15 |  |  | 222.56d | start no earlier than 2026-05-20 09:00 |
| 2374 |  | ЩР жиротопка и зона жиров | 1h | 2026-05-20 09:00 | 2026-05-20 10:00 |  |  | 222.47d | start no earlier than 2026-05-20 09:00 |
| 2375 | 11.1.12.7 | **Компрессор 1 цех** | 69d? | 2026-06-07 09:00 A | 2026-08-29 10:00 |  | 20% | 137.59d |  |
| 2376 |  | продувка радиаторов осушителя и компрессора, слив конденсата | 1h | 2026-06-07 09:00 A | 2026-06-07 10:00 A |  | 100% |  | start no earlier than 2026-06-07 09:00 |
| 2377 |  | продувка радиаторов осушителя и компрессора, слив конденсата | 1h | 2026-08-29 09:00 A | 2026-08-29 10:00 A |  | 100% |  | start no earlier than 2026-08-29 09:00 |
| 2378 |  | <Новая задача> | 1d? | 2026-08-28 09:00 | 2026-08-28 18:00 |  |  | 137.59d | start no earlier than 2026-08-28 08:00 |
| 2379 |  | осушитель 1 цех | 2h | 2024-04-04 09:00 | 2024-04-04 11:00 |  |  | 831.34d | start no earlier than 2023-12-28 09:00 |
| 2380 |  | осушитель 1 цех/слить конденсат | 30min | 2026-07-29 09:00 | 2026-07-29 09:30 |  |  | 163.53d | start no earlier than 2026-07-29 08:00 |

| ID | WBS | Task | Duration | Start | Finish | Complete | Total float | Constraint |
| --- | --- | --- | --- | --- | --- | --- | --- | --- |
| 2381 |  | бойлер 1 1 цех раковина | 2h | 2024-04-04 09:00 | 2024-04-04 11:00 |  | 831.34d | start no earlier than 2023-12-28 09:00 |
| 2382 |  | бойлер 2 1 цех раковина | 2h | 2024-04-04 09:00 | 2024-04-04 11:00 |  | 831.34d | start no earlier than 2023-12-28 09:00 |
| 2383 |  | бойлер 3 1 цех душ | 2h | 2024-04-04 09:00 | 2024-04-04 11:00 |  | 831.34d | start no earlier than 2023-12-28 09:00 |
| 2384 |  | насосная станция 1 цех | 2h | 2024-04-04 09:00 | 2024-04-04 11:00 |  | 831.34d | start no earlier than 2023-12-28 09:00 |
| 2385 |  | фильтр приточной вентиляции | 2h | 2024-04-04 09:00 | 2024-04-04 11:00 |  | 831.34d |  |
| 2386 |  | пульт управления вентиляцией, частототные приводы | 2h | 2024-04-04 09:00 | 2024-04-04 11:00 |  | 831.34d | start no earlier than 2023-12-28 09:00 |
| 2387 |  | кондиционер 1 продувка фильтров внутр / очистка наруж блок | 30min | 2026-06-02 09:00 A | 2026-06-02 09:30 A | 100% |  | start no earlier than 2026-06-02 09:00 |
| 2388 |  | кондиционер 2 продувка фильтров внутр / очистка наруж блок | 30min | 2026-06-02 09:00 A | 2026-06-02 09:30 A | 100% |  | start no earlier than 2026-06-02 09:00 |
| 2389 |  | кондиционер 3 продувка фильтров внутр / очистка наруж блок | 30min | 2026-06-02 09:00 A | 2026-06-02 09:30 A | 100% |  | start no earlier than 2026-06-02 09:00 |
| 2390 |  | кондиционер 1 продувка фильтров внутр / очистка наруж блок (керхер взять у Мейхера) | 30min | 2026-06-10 09:00 | 2026-06-10 09:30 |  | 203.53d | start no earlier than 2026-06-10 09:00 |
| 2391 |  | кондиционер 2 продувка фильтров внутр / очистка наруж блок (керхер взять у Мейхера) | 30min | 2026-06-10 09:00 | 2026-06-10 09:30 |  | 203.53d | start no earlier than 2026-06-10 09:00 |
| 2392 |  | кондиционер 3 продувка фильтров внутр / очистка наруж блок (керхер взять у Мейхера) | 30min | 2026-06-10 09:00 | 2026-06-10 09:30 |  | 203.53d | start no earlier than 2026-06-10 09:00 |
| 2393 |  | электроштабелер упаковка | 2h | 2023-12-28 09:00 | 2023-12-28 11:00 |  | 901.34d | start no earlier than 2023-12-28 09:00 |
| 2394 |  | электроштабелер навески | 2h | 2023-12-28 09:00 | 2023-12-28 11:00 |  | 901.34d | start no earlier than 2023-12-28 09:00 |
| 2395 | 11.2 | **2 цех** | 973d? | 2023-03-10 09:00 A | 2026-08-29 09:30 | 54% | 137.59d |  |
| 2396 |  | обдув пыли с вентиляции и балки кровли зона жир + экструдер + упаковка | 3h | 2026-08-20 09:00 | 2026-08-20 12:00 |  | 145.22d | start no earlier than 2026-08-20 09:00 |
| 2397 | 11.2.2 | **линия 3** | 971.12d? | 2023-03-10 09:00 A | 2026-08-27 10:00 | 94% | 139.47d |  |
| 2398 | 11.2.2.1 | **прекондицинер экструдера** | 676.03d? | 2024-04-18 09:00 A | 2026-08-20 09:15 | 99% | 145.56d |  |
| 2399 |  | замена заднего подшипника ведомый вал | 8h | 2026-05-26 09:00 A | 2026-05-26 17:00 A | 100% |  | start no earlier than 2026-05-26 09:00 |
| 2400 |  | замена подшипников | 1h | 2024-04-18 09:00 A | 2024-04-18 10:00 A | 100% |  | start no earlier than 2024-04-18 08:00 |
| 2401 |  | Ревизия масла редуктора | 30min | 2024-04-18 09:00 A | 2024-04-18 09:30 A | 100% |  | start no earlier than 2024-04-18 08:00 |
| 2402 |  | контроль крепления лопаток | 30min | 2026-05-21 09:00 A | 2026-05-21 09:30 A | 100% |  | start no earlier than 2026-03-05 09:00 |
| 2403 |  | шприцевание подшипников | 1h | 2026-05-21 08:00 A | 2026-05-21 09:00 A | 100% |  | start no earlier than 2026-05-21 08:00 |
| 2404 |  | Ревизия масла редуктора | 15min | 2026-07-21 09:00 A | 2026-07-21 09:15 A | 100% |  | start no earlier than 2026-07-21 09:00 |
| 2405 |  | шприцевание подшипников | 30min | 2026-07-21 09:00 A | 2026-07-21 09:30 A | 100% |  | start no earlier than 2026-07-21 09:00 |
| 2406 |  | Осмотр подшипников | 15min | 2026-07-30 09:00 A | 2026-07-30 09:15 A | 100% |  | start no earlier than 2026-07-30 09:00 |
| 2407 |  | Осмотр подшипников | 1d? | 2026-08-06 09:00 A | 2026-08-06 18:00 A | 100% |  | start no earlier than 2026-08-06 09:00 |
| 2408 |  | Осмотр подшипников / смазка / по необходимости замена | 1h | 2026-08-13 09:00 A | 2026-08-13 10:00 A | 100% |  | start no earlier than 2026-08-13 09:00 |
| 2409 |  | Осмотр подшипников / смазка | 15min | 2026-08-20 09:00 | 2026-08-20 09:15 |  | 145.56d | start no earlier than 2026-08-20 09:00 |
| 2410 | 11.2.2.2 | **парогенератор** | 675d | 2024-04-18 10:00 A | 2026-08-19 10:00 | 92% | 146.47d |  |
| 2411 |  | читска | 1h | 2024-04-18 10:00 A | 2024-04-18 11:00 A | 100% |  | start no earlier than 2024-04-18 08:00 |
| 2412 |  | замена гильзы | 1h | 2024-04-18 10:00 A | 2024-04-18 11:00 A | 100% |  | start no earlier than 2024-04-18 08:00 |
| 2413 |  | чистка | 2h | 2026-03-05 09:30 A | 2026-03-05 11:30 A | 100% |  | start no earlier than 2026-03-04 09:00 |
| 2414 |  | прорвеп срабатывания защитного клапана | 10min | 2026-03-05 09:30 A | 2026-03-05 09:40 A | 100% |  | start no earlier than 2024-10-03 09:00 |
| 2415 |  | читска | 1h | 2026-03-19 09:00 A | 2026-03-19 10:00 A | 100% |  | start no earlier than 2026-03-19 09:00 |
| 2416 |  | чистка | 1h | 2026-03-12 09:00 A | 2026-03-12 10:00 A | 100% |  | start no earlier than 2026-03-12 09:00 |
| 2417 |  | чистка | 1h | 2026-05-14 09:00 A | 2026-05-14 10:00 A | 100% |  | start no earlier than 2026-05-14 09:00 |
| 2418 |  | чистка | 2h | 2026-07-14 09:00 A | 2026-07-14 11:00 A | 100% |  | start no earlier than 2026-07-14 09:00 |
| 2419 |  | Чистка | 1h | 2026-07-30 09:00 A | 2026-07-30 10:00 A | 100% |  | start no earlier than 2026-07-30 09:00 |
| 2420 |  | Чистка | 1h | 2026-08-06 09:00 A | 2026-08-06 10:00 A | 100% |  | start no earlier than 2026-08-06 09:00 |
| 2421 |  | Чистка | 1h | 2026-08-13 09:00 A | 2026-08-13 10:00 A | 100% |  | start no earlier than 2026-08-13 09:00 |
| 2422 |  | Чистка | 1h | 2026-08-19 09:00 | 2026-08-19 10:00 |  | 146.47d | start no earlier than 2026-08-19 09:00 |
| 2423 | 11.2.2.3 | **привод сетки ПЕЧИ сушки** | 676.04d | 2024-04-18 08:00 A | 2026-08-20 09:20 | 89% | 145.55d |  |
| 2424 |  | прорверка масла редуктор / натяжка цепи/ ремень | 30min | 2024-04-18 08:00 A | 2024-04-18 08:30 A | 100% |  | start no earlier than 2024-04-18 08:00 |
| 2425 |  | прорверка масла редуктор / натяжка цепи/ ремень | 30min | 2026-03-05 09:00 A | 2026-03-05 09:30 A | 100% |  | start no earlier than 2026-03-05 09:00 |
| 2426 |  | прорверка масла редуктор / натяжка цепи/ ремень | 30min | 2026-03-19 09:00 A | 2026-03-19 09:30 A | 100% |  | start no earlier than 2026-03-19 09:00 |
| 2427 |  | прорверка масла редуктор / натяжка цепи/ ремень/осмотр сетки | 30min | 2026-07-14 09:00 A | 2026-07-14 09:30 A | 100% |  | start no earlier than 2026-07-14 09:00 |
| 2428 |  | прорверка масла редуктор / натяжка цепи/ ремень/осмотр сетки | 30min | 2026-07-30 09:00 A | 2026-07-30 09:30 A | 100% |  | start no earlier than 2026-07-30 09:00 |
| 2429 |  | прорверка масла редуктор / натяжка цепи/ ремень/осмотр сетки | 20min | 2026-08-13 09:00 A | 2026-08-13 09:20 A | 100% |  | start no earlier than 2026-08-13 09:00 |
| 2430 |  | прорверка масла редуктор / натяжка цепи/ ремень/осмотр сетки | 20min | 2026-08-20 09:00 | 2026-08-20 09:20 |  | 145.55d | start no earlier than 2026-08-20 09:00 |
| 2431 | 11.2.2.4 | **блок тэнов сушки** | 669.12d | 2024-04-18 08:00 A | 2026-08-13 10:00 A | 100% |  |  |
| 2432 |  | вскрыть все блоки | 1h | 2024-04-18 08:00 A | 2024-04-18 09:00 A | 100% |  | start no earlier than 2024-04-18 08:00 |
| 2433 |  | ревизия / замена критичных | 4h | 2024-04-18 09:00 A | 2024-04-18 13:00 A | 100% |  | start no earlier than 2024-04-18 08:00 |
| 2434 |  | ревизия | 1h | 2026-03-19 09:00 A | 2026-03-19 10:00 A | 100% |  | start no earlier than 2026-03-19 09:00 |
| 2435 |  | ревизия | 1h | 2026-05-14 09:00 A | 2026-05-14 10:00 A | 100% |  | start no earlier than 2026-05-14 09:00 |
| 2436 |  | ревизия перемычек | 1h | 2026-08-13 09:00 A | 2026-08-13 10:00 A | 100% |  | start no earlier than 2026-08-13 09:00 |
| 2437 |  | нория 1 загрзка в смеситель | 4h | 2023-03-10 09:00 A | 2023-03-10 13:00 A | 100% |  |  |
| 2438 | 11.2.2.6 | **смеситель СМ-1500** | 151.12d | 2026-03-05 09:00 A | 2026-08-27 10:00 | 78% | 139.47d |  |
| 2439 |  | контроль масла | 15min | 2026-03-05 09:00 A | 2026-03-05 09:15 A | 100% |  | start no earlier than 2026-03-05 09:00 |
| 2440 |  | контроль масла | 15min | 2026-03-05 09:00 | 2026-03-05 09:15 |  | 290.56d | start no earlier than 2026-03-05 09:00 |
| 2441 |  | замена сальника | 4h | 2026-04-16 09:00 A | 2026-04-16 13:00 A | 100% |  | start no earlier than 2026-04-16 09:00 |
| 2442 |  | контроль масла | 15min | 2026-07-30 09:00 | 2026-07-30 09:15 |  | 162.56d | start no earlier than 2026-07-30 09:00 |
| 2443 |  | ревизия подшипникой красного смесителя, просыпается мука со стороны редуктора | 1h | 2026-08-13 09:00 A | 2026-08-13 10:00 A | 100% |  | start no earlier than 2026-08-13 09:00 |
| 2444 |  | ревизия подшипникой красного смесителя, просыпается мука со стороны редуктора | 1h | 2026-08-27 09:00 | 2026-08-27 10:00 |  | 139.47d | start no earlier than 2026-08-27 09:00 |
| 2445 | 11.2.2.7 | **нория 2 выгрузки смесителя** | 138.02d | 2026-03-05 09:00 A | 2026-08-13 09:10 | 84% | 152.57d |  |
| 2446 |  | смазка подшипников | 30min | 2026-03-05 09:00 A | 2026-03-05 09:30 A | 100% |  | start no earlier than 2026-03-05 09:00 |
| 2447 |  | Осмотр подшипников/смазка по необходимости | 30min | 2026-07-30 09:00 | 2026-07-30 09:30 |  | 162.53d | start no earlier than 2026-07-30 09:00 |
| 2448 |  | ревизия крепления редуктора | 15min | 2026-03-05 09:00 A | 2026-03-05 09:15 A | 100% |  | start no earlier than 2026-03-05 09:00 |
| 2449 |  | ревизия ленты, обрезать нитки | 4h | 2026-03-26 09:00 A | 2026-03-26 13:00 A | 100% |  | start no earlier than 2026-03-26 09:00 |
| 2450 |  | вскрыть для чистки | 10min | 2026-05-19 09:00 A | 2026-05-19 09:10 A | 100% |  | start no earlier than 2026-05-21 09:00 |

| ID | WBS | Task | Duration | Start | Finish | Predecessors | Complete | Total float | Constraint |
| --- | --- | --- | --- | --- | --- | --- | --- | --- | --- |
| 2451 |  | Вскрыть, осмотреть ленту | 30min | 2026-07-30 09:00 | 2026-07-30 09:30 |  |  | 162.53d | start no earlier than 2026-07-30 09:00 |
| 2452 |  | вскрыть для чистки, осмотреть ленту, закрыить после чистки | 10min | 2026-08-13 09:00 A | 2026-08-13 09:10 A |  | 100% |  | start no earlier than 2026-08-13 09:00 |
| 2453 | 11.2.2.8 | **бункер-накопитель с шнековой разкгрузкой синий** | 76.12d | 2026-05-14 09:00 A | 2026-08-13 10:00 A |  | 100% |  |  |
| 2454 |  | смазка подшипников, ревизия редуктора (нужно разбирать все для смазки). Задний | 4h | 2026-05-14 09:00 A | 2026-05-14 13:00 A |  | 100% |  | start no earlier than 2026-05-14 09:00 |
| 2455 |  | смазка подшипников, ревизия редуктора (нужно разбирать все для смазки). Передний | 4h | 2026-05-28 09:00 A | 2026-05-28 13:00 A |  | 100% |  | start no earlier than 2026-05-28 09:00 |
| 2456 |  | Осмотр редуктора со стороны мойки, скрипит | 1h | 2026-08-13 09:00 A | 2026-08-13 10:00 A |  | 100% |  | start no earlier than 2026-08-13 09:00 |
| 2457 | 11.2.3 | **питатель экструдера** | 130.25d | 2026-03-26 09:00 A | 2026-08-27 11:00 |  | 60% | 139.34d |  |
| 2458 |  | замена сальников питателя, сыпит муку | 4h | 2026-07-22 09:00 | 2026-07-22 13:00 |  |  | 168.09d | start no earlier than 2026-07-22 09:00 |
| 2459 |  | ревизия подшипников, редутора, привода. Разборка/сборка (нужно разбирать) | 1h | 2026-03-26 09:00 A | 2026-03-26 10:00 A |  | 100% |  | start no earlier than 2026-03-26 09:00 |
| 2460 |  | ревизия подшипников, редутора, привода. Разборка/сборка (нужно разбирать) | 1h | 2026-08-19 09:00 | 2026-08-19 10:00 |  |  | 146.47d | start no earlier than 2026-08-19 09:00 |
| 2461 |  | замена шетсерен и подшипников узла. Поставили новый комплект | 4h | 2026-04-03 08:00 A | 2026-04-03 12:00 A |  | 100% |  | start no earlier than 2026-04-03 08:00 |
| 2462 |  | ревизия шестерни мал редуктора | 1h | 2026-04-16 09:00 | 2026-04-16 10:00 |  |  | 251.47d | start no earlier than 2026-04-16 09:00 |
| 2463 |  | ревизия шестерни мал редуктора | 2h | 2026-08-13 09:00 A | 2026-08-13 11:00 A |  | 100% |  | start no earlier than 2026-08-13 09:00 |
| 2464 |  | ревизия шестерни мал редуктора | 2h | 2026-08-27 09:00 A | 2026-08-27 11:00 A |  | 100% |  | start no earlier than 2026-08-27 09:00 |
| 2465 | 11.2.4 | **привод прекондиционера** | 0.06d | 2026-03-05 09:00 A | 2026-03-05 09:30 A |  | 100% |  |  |
| 2466 |  | проверка масла | 5min | 2026-03-05 09:00 A | 2026-03-05 09:05 A |  | 100% |  | start no earlier than 2026-03-05 09:00 |
| 2467 |  | контроль крепления шестерен | 5min | 2026-03-05 09:00 A | 2026-03-05 09:05 A |  | 100% |  | start no earlier than 2026-03-05 09:00 |
| 2468 |  | ревизия подшипников и стопорных винтов | 30min | 2026-03-05 09:00 A | 2026-03-05 09:30 A |  | 100% |  | start no earlier than 2026-03-05 09:00 |
| 2469 | 11.2.5 | **мотор-редуктор привод шнеков** | 0.25d | 2026-08-20 09:00 | 2026-08-20 11:00 |  |  | 145.34d |  |
| 2470 |  | замена масла | 2h | 2026-08-20 09:00 | 2026-08-20 11:00 |  |  | 145.34d | start no earlier than 2026-08-20 09:00 |
| 2471 | 11.2.6 | **редуктор шнеков экструдера - проверка масла** | 444.03d | 2025-02-17 09:00 A | 2026-08-20 09:15 |  | 94% | 145.56d |  |
| 2472 |  | чистка фильтра редуктора | 15min | 2026-03-05 09:00 A | 2026-03-05 09:15 A |  | 100% |  | start no earlier than 2026-03-05 09:00 |
| 2473 |  | контоль цепи муфты привода | 5min | 2026-03-05 09:15 A | 2026-03-05 09:20 A | 2472, 2474, 2475, 2477, 2481, 2482 | 100% |  | start no earlier than 2026-03-04 08:00 |
| 2474 |  | чистка фильтра редуктора | 15min | 2026-03-19 09:00 A | 2026-03-19 09:15 A |  | 100% |  | start no earlier than 2026-03-19 09:00 |
| 2475 |  | чистка фильтра редуктора | 15min | 2026-06-18 09:00 A | 2026-06-18 09:15 A |  | 100% |  | start no earlier than 2026-06-18 09:00 |
| 2476 |  | чистка фильтра редуктора | 30min | 2026-08-06 08:00 A | 2026-08-06 08:30 A |  | 100% |  | start no earlier than 2026-08-06 08:00 |
| 2477 |  | чистка фильтра редуктора | 15min | 2026-07-14 09:00 A | 2026-07-14 09:15 A |  | 100% |  | start no earlier than 2026-07-14 09:00 |
| 2478 |  | тэны и термпоры шнеков | 2h | 2025-02-17 09:00 A | 2025-02-17 11:00 A |  | 100% |  | start no earlier than 2025-02-17 09:00 |
| 2479 |  | проверка масла | 5min | 2026-08-06 09:00 A | 2026-08-06 09:05 A |  | 100% |  | start no earlier than 2026-08-06 09:00 |
| 2480 |  | Проверка масла | 10min | 2026-07-30 09:00 A | 2026-07-30 09:10 A |  | 100% |  | start no earlier than 2026-07-30 09:00 |
| 2481 |  | чистка фильтра редуктора | 15min | 2026-08-13 09:00 A | 2026-08-13 09:15 A |  | 100% |  | start no earlier than 2026-08-13 09:00 |
| 2482 |  | чистка фильтра редуктора | 15min | 2026-08-20 09:00 | 2026-08-20 09:15 |  |  | 145.56d | start no earlier than 2026-08-20 09:00 |
| 2483 | 11.2.7 | **шкаф управления экструдером** | 145.02d | 2026-03-05 09:00 A | 2026-08-20 09:10 |  | 86% | 145.57d |  |
| 2484 |  | продувка частотного привода | 10min | 2026-03-05 09:00 A | 2026-03-05 09:10 A |  | 100% |  | start no earlier than 2026-03-05 09:00 |
| 2485 |  | продувка частотного привода | 10min | 2026-08-06 09:00 A | 2026-08-06 09:10 A |  | 100% |  | start no earlier than 2026-08-06 09:00 |
| 2486 |  | уложить и закрепить провода | 5min | 2026-03-05 09:10 A | 2026-03-05 09:15 A | 2484, 2488, 2489, 2485, 2490, 2491 | 100% |  | start no earlier than 2026-03-04 08:00 |
| 2487 |  | протяжка контактов | 5min | 2026-03-05 09:15 A | 2026-03-05 09:20 A | 2486 | 100% |  | start no earlier than 2026-03-04 08:00 |
| 2488 |  | продувка частотного привода | 10min | 2026-03-19 09:00 A | 2026-03-19 09:10 A |  | 100% |  | start no earlier than 2026-03-19 09:00 |
| 2489 |  | продувка частотного привода | 10min | 2026-05-14 09:00 A | 2026-05-14 09:10 A |  | 100% |  | start no earlier than 2026-05-14 09:00 |
| 2490 |  | продувка частотного привода | 10min | 2026-08-13 09:00 A | 2026-08-13 09:10 A |  | 100% |  | start no earlier than 2026-08-13 09:00 |
| 2491 |  | продувка частотного привода | 10min | 2026-08-20 09:00 | 2026-08-20 09:10 |  |  | 145.57d | start no earlier than 2026-08-20 09:00 |
| 2492 | 11.2.8 | **пневотранспорт роторный питатель** | 137.04d | 2026-03-19 09:00 A | 2026-08-27 09:20 |  | 39% | 139.55d |  |
| 2493 |  | замена на ЗИП / вывод на ремонт промывку | 2h | 2026-06-25 09:00 | 2026-06-25 11:00 |  |  | 191.34d | start no earlier than 2026-06-25 09:00 |
| 2494 |  | проверка масла - высок температурная смазка | 1h | 2026-03-19 09:00 A | 2026-03-19 10:00 A |  | 100% |  | start no earlier than 2026-03-19 09:00 |
| 2495 |  | Ревизия узлов/масла | 30min | 2026-07-30 09:00 A | 2026-07-30 09:30 A |  | 100% |  | start no earlier than 2026-07-30 09:00 |
| 2496 |  | Ревизия узлов/масла | 20min | 2026-08-27 09:00 | 2026-08-27 09:20 |  |  | 139.55d | start no earlier than 2026-08-27 09:00 |
| 2497 | 11.2.9 | **печь - валы этажей, подшипники, цепи** | 131.06d | 2026-03-19 09:00 A | 2026-08-20 09:30 |  | 86% | 145.53d |  |
| 2498 |  | осмотр смазка | 30min | 2026-03-19 09:00 A | 2026-03-19 09:30 A |  | 100% |  | start no earlier than 2026-03-19 09:00 |
| 2499 |  | осмотр смазка сетки | 2h | 2026-05-14 09:00 A | 2026-05-14 11:00 A |  | 100% |  | start no earlier than 2026-05-14 09:00 |
| 2500 |  | натяжка цепей | 30min | 2026-08-13 09:00 A | 2026-08-13 09:30 A |  | 100% |  | start no earlier than 2026-08-13 09:00 |
| 2501 |  | натяжка цепей, контроль привода | 30min | 2026-08-20 09:00 | 2026-08-20 09:30 |  |  | 145.53d | start no earlier than 2026-08-20 09:00 |
| 2502 | 11.2.10 | **вентиляторы обдува сушки** | 1d? | 2026-03-05 09:00 A | 2026-03-05 18:00 |  |  | 289.59d |  |
| 2503 |  | чистка крыльчатки | 1d? | 2026-03-05 09:00 | 2026-03-05 18:00 |  |  | 289.59d | start no earlier than 2026-03-05 09:00 |
| 2504 |  | замена подшипников | 1d? | 2026-03-05 09:00 | 2026-03-05 18:00 |  |  | 289.59d | start no earlier than 2026-03-05 09:00 |
| 2505 | 11.2.11 | **шкаф управления тэнами сушки главный** | 145.02d | 2026-03-05 09:00 A | 2026-08-20 09:10 |  | 85% | 145.57d |  |
| 2506 |  | протяжка контактов, продувка шкафа, частотного привода | 10min | 2026-03-05 09:00 A | 2026-03-05 09:10 A |  | 100% |  | start no earlier than 2026-03-05 09:00 |
| 2507 |  | протяжка контактов, продувка шкафа, частотного привода | 10min | 2026-07-14 09:00 A | 2026-07-14 09:10 A |  | 100% |  | start no earlier than 2026-07-14 09:00 |
| 2508 |  | осмотср замена подгоревших кабелей | 30min | 2026-05-21 09:00 A | 2026-05-21 09:30 A |  | 100% |  | start no earlier than 2026-05-21 09:00 |
| 2509 |  | протяжка контактов, продувка шкафа, частотного привода | 30min | 2026-08-06 09:00 | 2026-08-06 09:30 |  |  | 157.53d | start no earlier than 2026-08-06 08:00 |
| 2510 |  | осмотср замена подгоревших кабелей | 30min | 2026-05-21 09:00 A | 2026-05-21 09:30 A |  | 100% |  | start no earlier than 2026-05-21 09:00 |
| 2511 |  | продуть, протяжка контактов | 1h | 2026-05-21 08:00 A | 2026-05-21 09:00 A |  | 100% |  | start no earlier than 2026-05-21 08:00 |
| 2512 |  | осмотср замена подгоревших кабелей | 30min | 2026-07-14 09:00 A | 2026-07-14 09:30 A |  | 100% |  | start no earlier than 2026-07-14 09:00 |
| 2513 |  | осмотср замена подгоревших кабелей | 1h | 2026-08-13 09:00 A | 2026-08-13 10:00 A |  | 100% |  | start no earlier than 2026-08-13 09:00 |
| 2514 |  | продувка | 10min | 2026-08-20 09:00 | 2026-08-20 09:10 |  |  | 145.57d | start no earlier than 2026-08-20 09:00 |
| 2515 | 11.2.12 | **шкаф управления тэнами твердотельный** | 145.02d | 2026-03-05 09:00 A | 2026-08-20 09:10 |  | 88% | 145.57d |  |
| 2516 |  | продувка, протяжка | 10min | 2026-03-05 09:00 A | 2026-03-05 09:10 A |  | 100% |  | start no earlier than 2026-03-05 09:00 |
| 2517 |  | продувка, протяжка | 10min | 2026-07-14 09:00 A | 2026-07-14 09:10 A |  | 100% |  | start no earlier than 2026-07-14 09:00 |
| 2518 |  | продувка, протяжка | 10min | 2026-08-06 09:00 A | 2026-08-06 09:10 A |  | 100% |  | start no earlier than 2026-08-06 08:00 |
| 2519 |  | замена подгоревших кабелей | 30min | 2026-08-13 09:00 A | 2026-08-13 09:30 A |  | 100% |  | start no earlier than 2026-08-13 09:00 |
| 2520 |  | продувка, протяжка | 10min | 2026-08-06 09:00 A | 2026-08-06 09:10 A |  | 100% |  | start no earlier than 2026-08-06 08:00 |

| ID | WBS | Task | Duration | Start | Finish | Predecessors | Complete | Total float | Constraint |
| --- | --- | --- | --- | --- | --- | --- | --- | --- | --- |
| 2521 |  | продувка, протяжка | 10min | 2026-08-20 09:00 | 2026-08-20 09:10 |  |  | 145.57d | start no earlier than 2026-08-20 09:00 |
| 2522 | 11.2.13 | **конвейер №1 с печи в дрожировщик** | 138.03d | 2026-03-05 09:00 A | 2026-08-13 09:15 A |  | 100% |  |  |
| 2523 |  | ослабить ленту для чистки барабана / натяжка после чистки | 30min | 2026-03-05 09:00 A | 2026-03-05 09:30 A |  | 100% |  | start no earlier than 2026-03-05 09:00 |
| 2524 |  | ревизия люфтов, фиксации смазки подшипников | 30min | 2026-03-05 09:00 A | 2026-03-05 09:30 A |  | 100% |  | start no earlier than 2026-03-05 09:00 |
| 2525 |  | ослабить ленту для чистки барабана / натяжка после чистки | 10min | 2026-03-12 09:00 A | 2026-03-12 09:10 A |  | 100% |  | start no earlier than 2026-03-12 09:00 |
| 2526 |  | чистка ленты контроль операторов, если нужно ослаить | 15min | 2026-08-13 09:00 A | 2026-08-13 09:15 A |  | 100% |  | start no earlier than 2026-08-13 09:00 |
| 2527 | 11.2.14 | **барабан смесительный дрожировка** | 749.03d | 2023-12-28 09:00 A | 2026-08-13 09:15 |  | 81% | 152.56d |  |
| 2528 |  | ревизия состяния валов, подшипников | 2h | 2026-02-25 09:00 A | 2026-02-25 11:00 A |  | 100% |  | start no earlier than 2026-02-25 09:00 |
| 2529 |  | ремонт вала временный. 11 час | 2h | 2026-02-25 09:00 A | 2026-02-25 11:00 A |  | 100% |  | start no earlier than 2026-02-25 09:00 |
| 2530 |  | замена подшипников мотора привода | 2h | 2026-02-25 09:00 A | 2026-02-25 11:00 A |  | 100% |  | start no earlier than 2026-02-25 09:00 |
| 2531 |  | заменаить вал дрожировки по стрелкам на 11час / после прихода с ремонта | 2h | 2026-04-30 09:00 A | 2026-04-30 11:00 A |  | 100% |  | start no earlier than 2026-04-30 09:00 |
| 2532 |  | насос подачи жира и смесительный узел, баки подогрева | 2h | 2023-12-28 09:00 | 2023-12-28 11:00 |  |  | 901.34d | start no earlier than 2023-12-28 09:00 |
| 2533 |  | Осмотр подшипников редукторов | 20min | 2026-07-30 09:00 A | 2026-07-30 09:20 A |  | 100% |  | start no earlier than 2026-07-30 09:00 |
| 2534 |  | Осмотр подшипников редукторов | 15min | 2026-08-13 09:00 A | 2026-08-13 09:15 A |  | 100% |  | start no earlier than 2026-08-13 09:00 |
| 2535 | 11.2.15 | **Узел подачи гидролизата** | 22.04d | 2026-07-14 09:00 A | 2026-08-13 09:20 A |  | 100% |  |  |
| 2536 |  | Дефектовка/ выяснить причу почему еле крутит/ устранить | 2h | 2026-07-14 09:00 A | 2026-07-14 11:00 A |  | 100% |  | start no earlier than 2026-07-14 09:00 |
| 2537 |  | осмотр цепи, редуктора, протяжка | 20min | 2026-08-13 09:00 A | 2026-08-13 09:20 A |  | 100% |  | start no earlier than 2026-08-13 09:00 |
| 2538 | 11.2.16 | **конвейер №2 с дрожировки в охладитель** | 138.03d | 2026-03-05 09:00 A | 2026-08-13 09:15 A |  | 100% |  |  |
| 2539 |  | ослабить ленту для чистки барабана / натяжка после чистки | 30min | 2026-03-05 09:00 A | 2026-03-05 09:30 A |  | 100% |  | start no earlier than 2026-03-05 09:00 |
| 2540 |  | ревизия люфтов, фиксации смазки подшипников | 30min | 2026-03-05 09:00 A | 2026-03-05 09:30 A |  | 100% |  | start no earlier than 2026-03-05 09:00 |
| 2541 |  | ослабить ленту для чистки барабана / натяжка после чистки | 10min | 2026-03-12 09:00 A | 2026-03-12 09:10 A |  | 100% |  | start no earlier than 2026-03-12 09:00 |
| 2542 |  | чистка ленты контроль операторов, если нужно ослаить | 15min | 2026-08-13 09:00 A | 2026-08-13 09:15 A |  | 100% |  | start no earlier than 2026-08-13 09:00 |
| 2543 |  | чистка ленты контроль операторов, если нужно ослаить | 15min | 2026-08-13 09:00 A | 2026-08-13 09:15 A |  | 100% |  | start no earlier than 2026-08-13 09:00 |
| 2544 | 11.2.17 | **охладитель сеточный** | 677d? | 2024-04-18 09:00 A | 2026-08-20 18:00 |  | 42% | 144.59d |  |
| 2545 |  | ревизия осей сетки, замена шплинтов | 2h | 2024-04-18 09:00 A | 2024-04-18 11:00 A |  | 100% |  | start no earlier than 2024-04-18 08:00 |
| 2546 |  | ревизия привода - масло, ремень (не проверено масло) | 10min | 2026-03-19 09:00 A | 2026-03-19 09:10 A |  | 100% |  | start no earlier than 2026-03-05 09:00 |
| 2547 |  | ревизия привода - масло, ремень (не проверено масло) | 10min | 2026-07-14 09:00 | 2026-07-14 09:10 |  |  | 174.57d | start no earlier than 2026-07-14 09:00 |
| 2548 |  | ревизия состояния сетки | 2h | 2026-07-14 09:00 A | 2026-07-14 11:00 A |  | 100% |  | start no earlier than 2026-07-14 08:00 |
| 2549 |  | ревизия состояния сетки | 1h | 2026-07-30 09:00 A | 2026-07-30 10:00 A |  | 100% |  | start no earlier than 2026-07-30 09:00 |
| 2550 |  | ревизия состояния сетки | 1d? | 2026-08-20 09:00 | 2026-08-20 18:00 |  |  | 144.59d | start no earlier than 2026-08-20 09:00 |
| 2551 |  | контроль натяжки цепей | 20min | 2026-03-05 09:00 A | 2026-03-05 09:20 A |  | 100% |  | start no earlier than 2026-03-05 09:00 |
| 2552 |  | текущий ремонт силиконовых уплотнений | 30min | 2026-03-05 09:00 A | 2026-03-05 09:30 A |  | 100% |  | start no earlier than 2026-03-05 09:00 |
| 2553 |  | осмотр ремней, натяжка цепей, ремонт силиконовых отбортовок | 1h | 2026-05-14 09:00 A | 2026-05-14 10:00 A |  | 100% |  | start no earlier than 2026-05-14 09:00 |
| 2554 |  | осмотр ремней, натяжка цепей, ремонт силиконовых отбортовок | 1h | 2026-07-14 09:00 | 2026-07-14 10:00 |  |  | 174.47d | start no earlier than 2026-07-14 09:00 |
| 2555 |  | осмотр ремней, натяжка цепей, ремонт силиконовых отбортовок | 1h | 2026-07-30 09:00 A | 2026-07-30 10:00 A |  | 100% |  | start no earlier than 2026-07-30 09:00 |
| 2556 |  | осмотр ремней, натяжка цепей, ремонт силиконовых отбортовок | 1h | 2026-08-20 09:00 | 2026-08-20 10:00 |  |  | 145.47d | start no earlier than 2026-08-20 09:00 |
| 2557 |  | осмотр ремней, натяжка цепей, ремонт силиконовых отбортовок | 1h | 2026-08-20 09:00 | 2026-08-20 10:00 |  |  | 145.47d | start no earlier than 2026-08-20 09:00 |
| 2558 | 11.2.18 | **конвейер 3 с охладителя в упаковку** | 0.03d | 2026-08-12 09:00 | 2026-08-12 09:15 |  |  | 153.56d |  |
| 2559 |  | ослабить ленту для чистки барабана / натяжка после чистки | 15min | 2026-08-12 09:00 | 2026-08-12 09:15 |  |  | 153.56d | start no earlier than 2026-08-12 09:00 |
| 2560 |  | ревизия люфтов, фиксации, смазки подшипников | 15min | 2026-08-12 09:00 | 2026-08-12 09:15 |  |  | 153.56d | start no earlier than 2026-08-12 09:00 |
| 2561 | 11.2.19 | **упаковка** | 704.25d | 2023-12-28 09:00 A | 2026-06-18 11:00 |  | 50% | 197.34d |  |
| 2562 |  | НОТИС 1 | 2h | 2023-12-28 09:00 | 2023-12-28 11:00 |  |  | 901.34d | start no earlier than 2023-12-28 09:00 |
| 2563 |  | НОТИС 2 | 2h | 2023-12-28 09:00 | 2023-12-28 11:00 |  |  | 901.34d | start no earlier than 2023-12-28 09:00 |
| 2564 |  | запайщик 1 | 2h | 2026-06-18 09:00 A | 2026-06-18 11:00 A |  | 100% |  | start no earlier than 2026-06-18 09:00 |
| 2565 |  | запайщик 2 | 2h | 2026-06-18 09:00 A | 2026-06-18 11:00 A |  | 100% |  | start no earlier than 2026-06-18 09:00 |
| 2566 | 11.2.20 | **квадропак** | 0.25d | 2026-08-27 09:00 | 2026-08-27 11:00 |  |  | 139.34d |  |
| 2567 |  | смазка вращающиющихся механизмов | 30min | 2026-08-27 09:00 | 2026-08-27 09:30 |  |  | 139.44d | start no earlier than 2026-08-27 09:00 |
| 2568 |  | протяжка креплений поворотных лап захвата | 30min | 2026-08-27 09:30 | 2026-08-27 10:00 | 2567 |  | 139.38d | start no earlier than 2026-03-05 09:00 |
| 2569 |  | чистка вала ленты выгрзного транспортера | 30min | 2026-08-27 10:00 | 2026-08-27 10:30 | 2568 |  | 139.34d | start no earlier than 2026-03-31 08:00 |
| 2570 |  | осмотр приводной системы нории / смазка | 30min | 2026-08-27 10:30 | 2026-08-27 11:00 | 2569 |  | 139.34d | start no earlier than 2026-08-12 09:00 |
| 2571 |  | осмотр приводной системы нории / смазка | 30min | 2026-08-27 10:30 | 2026-08-27 11:00 | 2569 |  | 139.34d | start no earlier than 2026-08-20 09:00 |
| 2572 | 11.2.21 | **БЕСТРОМ** | 756.12d | 2023-12-28 09:00 A | 2026-08-20 10:00 |  | 61% | 145.47d |  |
| 2573 |  | чистка тен с демантожем | 2.5h | 2026-03-05 09:00 A | 2026-03-05 11:30 A |  | 100% |  | start no earlier than 2026-03-05 09:00 |
| 2574 |  | ослабить ленту для чистки барабана / натяжка после чистки | 10min | 2026-03-12 09:00 A | 2026-03-12 09:10 A |  | 100% |  | start no earlier than 2026-03-12 09:00 |
| 2575 |  | чистка тенов | 1h | 2026-05-14 09:00 A | 2026-05-14 10:00 A |  | 100% |  | start no earlier than 2026-05-14 09:00 |
| 2576 |  | чистка тенов | 2h | 2026-07-14 09:00 | 2026-07-14 11:00 |  |  | 174.34d | start no earlier than 2026-07-14 09:00 |
| 2577 |  | конвейер и вибробункер БЕСТРОМ | 2h | 2023-12-28 09:00 | 2023-12-28 11:00 |  |  | 901.34d | start no earlier than 2023-12-28 09:00 |
| 2578 |  | бестром чистка тен, проверка тефлона, роликов (согласовать с мастером) | 2h | 2026-07-08 09:00 A | 2026-07-08 11:00 A |  | 100% |  | start no earlier than 2026-07-08 09:00 |
| 2579 |  | бестром чистка тен, проверка тефлона, роликов (согласовать с мастером) | 1h | 2026-07-30 09:00 A | 2026-07-30 10:00 A |  | 100% |  | start no earlier than 2026-07-30 09:00 |
| 2580 |  | бестром чистка тен, проверка тефлона, роликов (согласовать с мастером) | 1h | 2026-08-13 09:00 A | 2026-08-13 10:00 A |  | 100% |  | start no earlier than 2026-08-13 09:00 |
| 2581 |  | бестром чистка тен, проверка тефлона, роликов (согласовать с мастером) | 1h | 2026-08-20 09:00 | 2026-08-20 10:00 |  |  | 145.47d | start no earlier than 2026-08-20 09:00 |
| 2582 | 11.2.22 | **электрооборудование** | 206.06d? | 2023-12-28 09:00 | 2024-10-03 09:30 |  |  | 695.53d |  |
| 2583 |  | ВРУ3 | 30min | 2024-10-03 09:00 | 2024-10-03 09:30 |  |  | 695.53d | start no earlier than 2024-10-03 09:00 |
| 2584 |  | ВРУ4 | 2h | 2023-12-28 09:00 | 2023-12-28 11:00 |  |  | 901.34d | start no earlier than 2023-12-28 09:00 |
| 2585 |  | ВРУ5 | 2h | 2023-12-28 09:00 | 2023-12-28 11:00 |  |  | 901.34d | start no earlier than 2023-12-28 09:00 |
| 2586 |  | ВРУ6 | 2h | 2023-12-28 09:00 | 2023-12-28 11:00 |  |  | 901.34d | start no earlier than 2023-12-28 09:00 |
| 2587 |  | ЩР4 у печи | 2h | 2023-12-28 09:00 | 2023-12-28 11:00 |  |  | 901.34d | start no earlier than 2023-12-28 09:00 |
| 2588 |  | ЩО1 у печи | 30min | 2024-10-03 09:00 | 2024-10-03 09:30 |  |  | 695.53d | start no earlier than 2024-10-03 09:00 |
| 2589 |  | ЩР5 у жиротопки | 2h | 2023-12-28 09:00 | 2023-12-28 11:00 |  |  | 901.34d | start no earlier than 2023-12-28 09:00 |
| 2590 |  | ЩР6 упаковка стна жир | 2h | 2023-12-28 09:00 | 2023-12-28 11:00 |  |  | 901.34d | start no earlier than 2023-12-28 09:00 |

| ID | WBS | Task | Duration | Start | Finish | Complete | Total float | Constraint |
| --- | --- | --- | --- | --- | --- | --- | --- | --- |
| 2591 |  | ЩР7 упаковка колонна | 2h | 2023-12-28 09:00 | 2023-12-28 11:00 |  | 901.34d | start no earlier than 2023-12-28 09:00 |
| 2592 |  | ЩР8 склад навесок | 2h | 2023-12-28 09:00 | 2023-12-28 11:00 |  | 901.34d | start no earlier than 2023-12-28 09:00 |
| 2593 |  | ЩР9 2 этаж | 2h | 2023-12-28 09:00 | 2023-12-28 11:00 |  | 901.34d | start no earlier than 2023-12-28 09:00 |
| 2594 |  | электрокотел 1 - 2 цех | 2h | 2023-12-28 09:00 | 2023-12-28 11:00 |  | 901.34d | start no earlier than 2023-12-28 09:00 |
| 2595 |  | электрокотел 2 - 2 цех | 1d? | 2023-12-28 09:00 | 2023-12-28 18:00 |  | 900.59d | start no earlier than 2023-12-28 09:00 |
| 2596 |  | электрокотел 3 - 2 цех | 1d? | 2023-12-28 09:00 | 2023-12-28 18:00 |  | 900.59d | start no earlier than 2023-12-28 09:00 |
| 2597 |  | бойлер 4 2 цех раковина | 1d? | 2023-12-28 09:00 | 2023-12-28 18:00 |  | 900.59d | start no earlier than 2023-12-28 09:00 |
| 2598 |  | бойлер 5 2 цех душ М | 1d? | 2023-12-28 09:00 | 2023-12-28 18:00 |  | 900.59d | start no earlier than 2023-12-28 09:00 |
| 2599 |  | бойлер 6 2 цех душ Ж | 1d? | 2023-12-28 09:00 | 2023-12-28 18:00 |  | 900.59d | start no earlier than 2023-12-28 09:00 |
| 2600 |  | насос санитарный | 1d? | 2023-12-28 09:00 | 2023-12-28 18:00 |  | 900.59d | start no earlier than 2023-12-28 09:00 |
| 2601 | 11.2.23 | **Компрессор 2 цех** | 20d | 2026-08-06 09:00 A | 2026-08-29 09:30 A | 100% |  |  |
| 2602 |  | продувка фильтров | 30min | 2026-08-06 09:00 A | 2026-08-06 09:30 A | 100% |  | start no earlier than 2026-08-06 09:00 |
| 2603 |  | слив конденсат с осушителя | 30min | 2026-08-06 09:00 A | 2026-08-06 09:30 A | 100% |  | start no earlier than 2026-08-06 09:00 |
| 2604 |  | слив конденсат с осушителя | 30min | 2026-08-20 09:00 A | 2026-08-20 09:30 A | 100% |  | start no earlier than 2026-08-20 09:00 |
| 2605 |  | продувка фильтров | 30min | 2026-08-29 09:00 A | 2026-08-29 09:30 A | 100% |  | start no earlier than 2026-08-29 09:00 |
| 2606 |  | слив конденсат с осушителя | 30min | 2026-08-29 09:00 A | 2026-08-29 09:30 A | 100% |  | start no earlier than 2026-08-29 09:00 |
| 2607 |  | слив конденсат с осушителя | 30min | 2026-08-29 09:00 A | 2026-08-29 09:30 A | 100% |  | start no earlier than 2026-08-29 09:00 |
| 2608 | 11.2.24 | **насосная станция 2 цех** | 151.06d | 2026-03-05 09:00 A | 2026-08-27 09:30 | 50% | 139.53d |  |
| 2609 |  | замена фильтров | 30min | 2026-03-05 09:00 A | 2026-03-05 09:30 A | 100% |  | start no earlier than 2026-03-05 09:00 |
| 2610 |  | замена фильтров | 30min | 2026-08-27 09:00 | 2026-08-27 09:30 |  | 139.53d | start no earlier than 2026-08-27 09:00 |
| 2611 | 11.2.25 | **приточнго-вытяжная венгтиляция и смесительный узел** | 0.12d | 2026-04-16 09:00 | 2026-04-16 10:00 |  | 251.47d |  |
| 2612 |  | замена фильтра | 1h | 2026-04-16 09:00 | 2026-04-16 10:00 |  | 251.47d | start no earlier than 2026-04-16 09:00 |
| 2613 | 11.2.26 | **кондиционер 1** | 676.04d? | 2024-04-18 09:00 A | 2026-08-20 09:20 | 97% | 145.55d |  |
| 2614 |  | чистка фильтра | 1h | 2024-04-18 09:00 A | 2024-04-18 10:00 A | 100% |  | start no earlier than 2024-04-18 08:00 |
| 2615 |  | чистка фильтра | 20min | 2026-03-05 09:00 A | 2026-03-05 09:20 A | 100% |  | start no earlier than 2026-03-05 09:00 |
| 2616 |  | чистка фильтров | 1d? | 2026-06-25 09:00 A | 2026-06-25 17:00 A | 100% |  | start no earlier than 2026-06-25 09:00 |
| 2617 |  | чистка фильтров | 20min | 2026-07-14 09:00 A | 2026-07-14 09:20 A | 100% |  | start no earlier than 2026-07-14 09:00 |
| 2618 |  | чистка фильтров | 20min | 2026-08-13 09:00 A | 2026-08-13 09:20 A | 100% |  | start no earlier than 2026-08-13 09:00 |
| 2619 |  | чистка фильтров | 20min | 2026-08-20 09:00 | 2026-08-20 09:20 |  | 145.55d | start no earlier than 2026-08-20 09:00 |
| 2620 | 11.2.27 | **кондиционер 2** | 676.04d? | 2024-04-18 09:00 A | 2026-08-20 09:20 | 97% | 145.55d |  |
| 2621 |  | чистка фильтров | 1d? | 2026-06-25 09:00 A | 2026-06-25 17:00 A | 100% |  | start no earlier than 2026-06-25 09:00 |
| 2622 |  | чистка фильтра | 1h | 2024-04-18 09:00 A | 2024-04-18 10:00 A | 100% |  | start no earlier than 2024-04-18 08:00 |
| 2623 |  | чистка фильтра | 20min | 2026-03-05 09:00 A | 2026-03-05 09:20 A | 100% |  | start no earlier than 2026-03-05 09:00 |
| 2624 |  | чистка фильтров | 20min | 2026-07-14 09:00 A | 2026-07-14 09:20 A | 100% |  | start no earlier than 2026-07-14 09:00 |
| 2625 |  | чистка фильтров | 20min | 2026-08-13 09:00 A | 2026-08-13 09:20 A | 100% |  | start no earlier than 2026-08-13 09:00 |
| 2626 |  | чистка фильтров | 20min | 2026-08-13 09:00 A | 2026-08-13 09:20 A | 100% |  | start no earlier than 2026-08-13 09:00 |
| 2627 |  | чистка фильтров | 20min | 2026-08-20 09:00 | 2026-08-20 09:20 |  | 145.55d | start no earlier than 2026-08-20 09:00 |
| 2628 | 11.2.28 | **кондиционер 3** | 145.04d | 2026-03-05 09:00 A | 2026-08-20 09:20 | 80% | 145.55d |  |
| 2629 |  | чистка фильтра | 20min | 2026-03-05 09:00 A | 2026-03-05 09:20 A | 100% |  | start no earlier than 2026-03-05 09:00 |
| 2630 |  | чистка фильтров | 20min | 2026-07-14 09:00 A | 2026-07-14 09:20 A | 100% |  | start no earlier than 2026-07-14 09:00 |
| 2631 |  | чистка фильтров | 20min | 2026-08-13 09:00 A | 2026-08-13 09:20 A | 100% |  | start no earlier than 2026-08-13 09:00 |
| 2632 |  | чистка фильтров | 20min | 2026-08-13 09:00 A | 2026-08-13 09:20 A | 100% |  | start no earlier than 2026-08-13 09:00 |
| 2633 |  | чистка фильтров | 20min | 2026-08-20 09:00 | 2026-08-20 09:20 |  | 145.55d | start no earlier than 2026-08-20 09:00 |
| 2634 | 11.2.29 | **электроштабелер** | 2.38d | 2026-08-11 09:00 A | 2026-08-13 12:00 A | 100% |  |  |
| 2635 | 11.2.29.1 | **хруст в колесе устранить** | 2.38d | 2026-08-11 09:00 A | 2026-08-13 12:00 A | 100% |  |  |
| 2636 |  | хруст с правой стороны штабелера- ревизия, скорее всего подшипник (экструдер). Осмотр, доложить | 15min | 2026-08-11 09:00 A | 2026-08-11 09:15 A | 100% |  | start no earlier than 2026-08-11 09:00 |
| 2637 |  | ремонт замена подшипник колесо штабелер | 3h | 2026-08-13 09:00 A | 2026-08-13 12:00 A | 100% |  | start no earlier than 2026-08-13 09:00 |
| 2638 | 11.3 | **3 цех** | 1d? | 2023-12-28 09:00 | 2023-12-28 18:00 |  | 900.59d |  |
| 2639 | 11.3.1 | **электрооборудование** | 1d? | 2023-12-28 09:00 | 2023-12-28 18:00 |  | 900.59d |  |
| 2640 |  | ВРУ7 | 1d? | 2023-12-28 09:00 | 2023-12-28 18:00 |  | 900.59d | start no earlier than 2023-12-28 09:00 |
| 2641 |  | ОЩР | 1d? | 2023-12-28 09:00 | 2023-12-28 18:00 |  | 900.59d | start no earlier than 2023-12-28 09:00 |
| 2642 |  | электрокотел 4 - 3 цех | 1d? | 2023-12-28 09:00 | 2023-12-28 18:00 |  | 900.59d | start no earlier than 2023-12-28 09:00 |
| 2643 |  | электрокотел 5 - 3 цех | 1d? | 2023-12-28 09:00 | 2023-12-28 18:00 |  | 900.59d | start no earlier than 2023-12-28 09:00 |
| 2644 |  | электрокотел 6 - 3 цех | 1d? | 2023-12-28 09:00 | 2023-12-28 18:00 |  | 900.59d | start no earlier than 2023-12-28 09:00 |
| 2645 |  | электроштабелер 1 | 1d? | 2023-12-28 09:00 | 2023-12-28 18:00 |  | 900.59d | start no earlier than 2023-12-28 09:00 |
| 2646 |  | электроштабелер 2 | 1d? | 2023-12-28 09:00 | 2023-12-28 18:00 |  | 900.59d | start no earlier than 2023-12-28 09:00 |
| 2647 |  | вилочный погрузчик 1 | 1d? | 2023-12-28 09:00 | 2023-12-28 18:00 |  | 900.59d | start no earlier than 2023-12-28 09:00 |
| 2648 |  | вилочный погрузчик 2 | 1d? | 2023-12-28 09:00 | 2023-12-28 18:00 |  | 900.59d | start no earlier than 2023-12-28 09:00 |
| 2649 | 11.4 | **5 цех** | 717.25d? | 2023-12-28 09:00 A | 2026-07-03 11:00 | 10% | 184.34d |  |
| 2650 |  | насосная станция 5 цех | 1d? | 2023-12-28 09:00 | 2023-12-28 18:00 |  | 900.59d | start no earlier than 2023-12-28 09:00 |
| 2651 |  | растариватель | 1d? | 2023-12-28 09:00 | 2023-12-28 18:00 |  | 900.59d | start no earlier than 2023-12-28 09:00 |
| 2652 | 11.4.3 | **шнек 1 растариватель-смеситель** | 78.25d | 2026-04-03 09:00 A | 2026-07-03 11:00 | 67% | 0d |  |
| 2653 |  | замена подшипник нижний | 2h | 2026-04-03 09:00 A | 2026-04-03 11:00 A | 100% |  |  |
| 2654 |  | ревизия подшипник верхний - не снимается.ревизия - все ок, мазка | 2h | 2026-04-03 09:00 A | 2026-04-03 11:00 A | 100% |  |  |
| 2655 |  | осмотр износа, смазка | 2h | 2026-07-03 09:00 | 2026-07-03 11:00 |  |  |  |
| 2656 |  | смеситель СМ1500 | 1d? | 2023-12-28 09:00 | 2023-12-28 18:00 |  | 900.59d | start no earlier than 2023-12-28 09:00 |
| 2657 | 11.4.5 | **шнек 2 смеситель -дробилка** | 81.5d? | 2026-03-24 09:00 A | 2026-06-26 13:00 | 67% | 190.09d |  |
| 2658 |  | ремонт вала, т.к съело посадку на верх подшипник | 1d? | 2026-03-24 09:00 A | 2026-03-24 18:00 A | 100% |  | start no earlier than 2026-03-24 09:00 |
| 2659 |  | осмотр износа | 4h | 2026-06-26 09:00 | 2026-06-26 13:00 |  | 190.09d | start no earlier than 2026-06-26 09:00 |
| 2660 | 11.4.6 | **дробилка ДМС3** | 0.5d | 2026-05-10 09:00 | 2026-05-10 13:00 |  | 232.09d |  |

| ID | WBS | Task | Duration | Start | Finish | Predecessors | Complete | Total float | Constraint |
| --- | --- | --- | --- | --- | --- | --- | --- | --- | --- |
| 2661 |  | замена подшипник буксы сторона мотора | 4h | 2026-05-10 09:00 | 2026-05-10 13:00 |  |  | 232.09d | start no earlier than 2026-05-10 09:00 |
| 2662 |  | шнек 3 дробилка-накопитель | 1d? | 2023-12-28 09:00 | 2023-12-28 18:00 |  |  | 900.59d | start no earlier than 2023-12-28 09:00 |
| 2663 |  | дробилка 11квт | 1d? | 2023-12-28 09:00 | 2023-12-28 18:00 |  |  | 900.59d | start no earlier than 2023-12-28 09:00 |
| 2664 |  | дробилка 7,5квт | 1d? | 2023-12-28 09:00 | 2023-12-28 18:00 |  |  | 900.59d | start no earlier than 2023-12-28 09:00 |
| 2665 |  | вибросито А | 1d? | 2023-12-28 09:00 | 2023-12-28 18:00 |  |  | 900.59d | start no earlier than 2023-12-28 09:00 |
| 2666 |  | вибросито Б | 1d? | 2023-12-28 09:00 | 2023-12-28 18:00 |  |  | 900.59d | start no earlier than 2023-12-28 09:00 |
| 2667 | 11.4.12 | **электрооборудование** | 1d? | 2023-12-28 09:00 | 2023-12-28 18:00 |  |  | 900.59d |  |
| 2668 |  | ВРУ7 | 1d? | 2023-12-28 09:00 | 2023-12-28 18:00 |  |  | 900.59d | start no earlier than 2023-12-28 09:00 |
| 2669 |  | ЩР2 | 1d? | 2023-12-28 09:00 | 2023-12-28 18:00 |  |  | 900.59d | start no earlier than 2023-12-28 09:00 |
| 2670 |  | котельная газовая 5 цех | 1d? | 2023-12-28 09:00 | 2023-12-28 18:00 |  |  | 900.59d | start no earlier than 2023-12-28 09:00 |
| 2671 |  | бойлеры душ | 1d? | 2023-12-28 09:00 | 2023-12-28 18:00 |  |  | 900.59d | start no earlier than 2023-12-28 09:00 |
| 2672 |  | вентилятор вытяжной в дробилке | 1d? | 2023-12-28 09:00 | 2023-12-28 18:00 |  |  | 900.59d | start no earlier than 2023-12-28 09:00 |
| 2673 | 11.5 | **адм корпус** | 1d? | 2023-12-28 09:00 | 2023-12-28 18:00 |  |  | 900.59d |  |
| 2674 |  | бойлер туалет | 1d? | 2023-12-28 09:00 | 2023-12-28 18:00 |  |  | 900.59d | start no earlier than 2023-12-28 09:00 |
| 2675 |  | ОЩР | 1d? | 2023-12-28 09:00 | 2023-12-28 18:00 |  |  | 900.59d | start no earlier than 2023-12-28 09:00 |
| 2676 | 11.6 | **склад упаковки** | 1d? | 2023-12-28 09:00 | 2023-12-28 18:00 |  |  | 900.59d |  |
| 2677 | 11.6.1 | **электрооборудование** | 1d? | 2023-12-28 09:00 | 2023-12-28 18:00 |  |  | 900.59d |  |
| 2678 |  | ЩО и ЩР | 1d? | 2023-12-28 09:00 | 2023-12-28 18:00 |  |  | 900.59d | start no earlier than 2023-12-28 09:00 |
| 2679 |  | санитарный насос | 1d? | 2023-12-28 09:00 | 2023-12-28 18:00 |  |  | 900.59d | start no earlier than 2023-12-28 09:00 |
| 2680 | 11.7 | **цех наполнителей** | 1d? | 2023-12-28 09:00 | 2023-12-28 18:00 |  |  | 900.59d |  |
| 2681 |  | ЩО и ЩР | 1d? | 2023-12-28 09:00 | 2023-12-28 18:00 |  |  | 900.59d | start no earlier than 2023-12-28 09:00 |
| 2682 |  | комппрессор | 1d? | 2023-12-28 09:00 | 2023-12-28 18:00 |  |  | 900.59d | start no earlier than 2023-12-28 09:00 |
| 2683 |  | конвейер загрузки | 1d? | 2023-12-28 09:00 | 2023-12-28 18:00 |  |  | 900.59d | start no earlier than 2023-12-28 09:00 |
| 2684 |  | дозатор НОТИС | 1d? | 2023-12-28 09:00 | 2023-12-28 18:00 |  |  | 900.59d | start no earlier than 2023-12-28 09:00 |
| 2685 |  | запайщик | 1d? | 2023-12-28 09:00 | 2023-12-28 18:00 |  |  | 900.59d | start no earlier than 2023-12-28 09:00 |
| 2686 |  | вилочный погрузчик тойота | 1d? | 2023-12-28 09:00 | 2023-12-28 18:00 |  |  | 900.59d | start no earlier than 2023-12-28 09:00 |
| 2687 |  | Установка розетки под литийионный аккумклятор 3-х фазный, установить рядом с существующей ВРУ | 2h | 2026-07-08 09:00 | 2026-07-08 11:00 |  |  | 180.34d | start no earlier than 2026-07-08 08:00 |
| 2688 | 12 | **синий склад** | 102d | 2026-05-07 09:00 A | 2026-09-04 18:00 |  | 33% | 132.59d |  |
| 2689 |  | установить на место крышки вентиляторов | 1h | 2026-08-17 09:00 A | 2026-08-17 10:00 A |  | 100% |  | start no earlier than 2026-08-17 09:00 |
| 2690 |  | монтаж включателя света с улицы, возле вход. Двери | 3h | 2026-09-04 09:00 | 2026-09-04 12:00 |  |  | 133.22d | start no earlier than 2026-09-04 09:00 |
| 2691 |  | расширить проем вверху для проезда погрузчиков, врезаются | 1d | 2026-09-04 09:00 | 2026-09-04 18:00 |  |  |  | start no earlier than 2026-09-04 09:00 |
| 2692 |  | замерить диаметр крыльчатки двигателя экструдера, инфу передать мне | 1h | 2026-06-13 09:00 A | 2026-06-13 10:00 A |  | 100% |  | start no earlier than 2026-06-13 09:00 |
| 2693 |  | найти амперметры 30А и 150А (сказать кол-во) | 2h | 2026-06-10 09:00 A | 2026-06-10 11:00 A |  | 100% |  | start no earlier than 2026-06-10 09:00 |
| 2694 |  | монтаж секции стеллажа | 9h | 2026-09-04 09:00 | 2026-09-04 18:00 |  |  | 132.59d | start no earlier than 2026-09-04 09:00 |
| 2695 |  | Навести порядок на входе в синий склад | 2h | 2026-07-23 09:00 A | 2026-07-23 11:00 A |  | 100% |  | start no earlier than 2026-07-24 09:00 |
| 2696 |  | проверить и подписать все материалы в синем складе с Алексеем | 4h | 2026-05-07 09:00 A | 2026-05-07 13:00 A |  | 100% |  | start no earlier than 2026-05-07 09:00 |
| 2697 | 13 | **хим лаб** | 716.25d? | 2024-01-11 08:00 A | 2026-07-13 11:00 A |  | 100% |  |  |
| 2698 |  | замена кран РР | 2h | 2026-07-13 09:00 A | 2026-07-13 11:00 A |  | 100% |  | start no earlier than 2026-07-13 09:00 |
| 2699 |  | ремонт термоконтроллера - замена реле / перепаять с сзоны ALARM | 1h | 2026-06-09 09:00 A | 2026-06-09 10:00 A |  | 100% |  | start no earlier than 2026-06-09 09:00 |
| 2700 | 13.3 | **усилить питание хим лаб, что бы не отключался автомат при вкл быт приборов** | 0.12d | 2026-05-29 09:00 A | 2026-05-29 10:00 A |  | 100% |  |  |
| 2701 |  | переключение питания хим лаб на отдельный ШУ | 1h | 2026-05-29 09:00 A | 2026-05-29 10:00 A |  | 100% |  | start no earlier than 2026-05-29 09:00 |
| 2702 | 13.4 | **ремонт бойлер вода - ПУН** | 12.25d | 2026-05-14 08:00 A | 2026-05-28 11:00 A |  | 100% |  |  |
| 2703 |  | замена из ЗИП | 1h | 2026-05-14 08:00 A | 2026-05-14 09:00 A |  | 100% |  | start no earlier than 2026-05-14 08:00 |
| 2704 |  | диагностика неисправности. Бойлер в слесарне | 1h | 2026-05-14 08:00 A | 2026-05-14 09:00 A |  | 100% |  | start no earlier than 2026-05-14 08:00 |
| 2705 |  | заявка предохарнитель | 30min | 2026-05-15 09:00 A | 2026-05-15 09:30 A | 2704 | 100% |  | start no earlier than 2026-05-15 08:00 |
| 2706 |  | контроль поставки | 15min | 2026-05-22 09:30 A | 2026-05-22 09:45 A | 2705FS+7d | 100% |  | start no earlier than 2026-05-15 08:00 |
| 2707 |  | заменить на бойлере в слесарке термостата WY-S37A | 2h | 2026-05-28 09:00 A | 2026-05-28 11:00 A |  | 100% |  | start no earlier than 2026-05-28 09:00 |
| 2708 | 13.5 | **ремонт дистилятор** | 35d? | 2026-04-27 09:00 A | 2026-06-06 02:00 A |  | 100% |  |  |
| 2709 |  | заявка тен | 1h | 2026-04-27 09:00 A | 2026-04-27 10:00 A |  | 100% |  | start no earlier than 2026-04-27 09:00 |
| 2710 |  | доставка | 1d? | 2026-06-05 09:00 A | 2026-06-05 18:00 A | 2709 | 100% |  | finish no earlier than 2026-06-05 18:00 |
| 2711 |  | замена. Больше не выбиывает | 1d? | 2026-06-05 18:00 A | 2026-06-06 02:00 A | 2710 | 100% |  | start no earlier than 2026-05-13 09:00 |
| 2712 | 13.6 | **ремонт АКВ_шесть** | 35d? | 2026-04-27 09:00 A | 2026-06-05 18:00 A |  | 100% |  |  |
| 2713 |  | заявка тен | 1h | 2026-04-27 09:00 A | 2026-04-27 10:00 A |  | 100% |  | start no earlier than 2026-04-27 09:00 |
| 2714 |  | доставка | 1d? | 2026-06-05 09:00 A | 2026-06-05 18:00 A | 2713 | 100% |  | finish no earlier than 2026-06-05 18:00 |
| 2715 |  | замена | 2h | 2026-05-24 09:00 A | 2026-05-24 11:00 A |  | 100% |  | start no earlier than 2026-05-24 09:00 |
| 2716 |  | проверить прибор | 1d? | 2026-05-06 09:00 A | 2026-05-06 18:00 A |  | 100% |  | start no earlier than 2026-05-06 08:00 |
| 2717 |  | датчик температуры ?? Заявка | 1d? | 2026-04-27 09:00 A | 2026-04-27 18:00 A |  | 100% |  | start no earlier than 2026-04-27 08:00 |
| 2718 |  | дистилятор отключается ?? Заявка | 1d? | 2026-04-27 09:00 A | 2026-04-27 18:00 A |  | 100% |  | start no earlier than 2026-04-27 08:00 |
| 2719 |  | перенос старый прибор в архив 5ц | 30min | 2026-04-20 09:00 A | 2026-04-20 09:30 A |  | 100% |  | start no earlier than 2026-04-20 08:00 |
| 2720 |  | замена 2 вентилятора | 4h | 2024-01-16 08:00 A | 2024-01-16 12:00 A |  | 100% |  | start no earlier than 2024-01-16 08:00 |
| 2721 |  | ремонт соленоид | 2h | 2024-01-16 08:00 A | 2024-01-16 10:00 A |  | 100% |  | start no earlier than 2024-01-16 08:00 |
| 2722 |  | ремонт вытяжка №2 диагностика вентилятор | 30min | 2024-01-11 08:00 A | 2024-01-11 08:30 A |  | 100% |  | start no earlier than 2024-01-11 08:00 |
| 2723 |  | замена насос " агрегат | 1h | 2024-01-11 08:00 A | 2024-01-11 09:00 A |  | 100% |  | start no earlier than 2024-01-11 08:00 |
| 2724 |  | замена тен по доставке | 2h | 2026-03-17 09:00 A | 2026-03-17 11:00 A |  | 100% |  | start no earlier than 2026-03-17 09:00 |
| 2725 | 14 | **цех наполнителей** | 210.12d | 2025-07-14 09:00 A | 2026-04-10 10:00 A |  | 100% |  |  |
| 2726 |  | взять со склада АКБ и клеммы заменить на погрузчике, старый АКБ отдать на 2 этаж склад | 1h | 2026-04-10 09:00 A | 2026-04-10 10:00 A |  | 100% |  | start no earlier than 2026-04-10 09:00 |
| 2727 |  | поменять пневмоцилиндр на нотис | 1h | 2026-04-09 09:00 A | 2026-04-09 10:00 A |  | 100% |  | start no earlier than 2026-04-10 09:00 |
| 2728 |  | проверить дист. Воду в АКБ погрузчика | 1h | 2026-04-01 09:00 A | 2026-04-01 10:00 A |  | 100% |  | start no earlier than 2026-04-01 09:00 |
| 2729 |  | просверлить больше, нарезать резьбу для крепления стола запайщика, резьба сорвана | 1h | 2026-03-20 09:00 A | 2026-03-20 10:00 A |  | 100% |  | start no earlier than 2026-03-20 09:00 |
| 2730 |  | ремонт компрессор. Проверка конденсаторов/не запускается мотор. Ключь у кладовщиков | 4h | 2025-07-14 09:00 A | 2025-07-14 13:00 A |  | 100% |  | start no earlier than 2025-07-14 09:00 |

| ID | WBS | Task | Duration | Start | Finish | Predecessors | Complete | Total float | Constraint |
| --- | --- | --- | --- | --- | --- | --- | --- | --- | --- |
| 2731 |  | ТО компрессор / конвейер / запайщик | 2h | 2026-03-09 09:00 A | 2026-03-09 11:00 A |  | 100% |  | start no earlier than 2026-03-09 09:00 |
| 2732 | 15 | **офис** | 977.5d? | 2023-03-10 09:00 A | 2026-09-04 13:00 |  | 97% | 133.09d |  |
| 2733 |  | демонтаж шурупы с наличиников | 10min | 2026-07-10 09:00 A | 2026-07-10 09:10 A |  | 100% |  | start no earlier than 2026-07-10 09:00 |
| 2734 |  | взять на складе ламочку Е27 малого размера и поменять в муж. Туалете и закрыть плафоном | 1h | 2026-06-29 09:00 A | 2026-06-29 10:00 A |  | 100% |  | start no earlier than 2026-06-29 09:00 |
| 2735 |  | собрать аккуратно стеллаж для Буслаева (стеллаж на складе у Веры, подписан буквами ГД, мечковская) | 3h | 2026-06-13 09:00 A | 2026-06-13 12:00 A |  | 100% |  | start no earlier than 2026-06-13 09:00 |
| 2736 |  | посмотреть что с розеткой у Ширяевой в кабинете | 1h | 2026-06-22 09:00 A | 2026-06-22 10:00 A |  | 100% |  | start no earlier than 2026-06-22 09:00 |
| 2737 |  | бухгалтерия настройка язычка двери, что бы дверь закрывалась без усилия | 1h | 2026-05-28 09:00 A | 2026-05-28 10:00 A |  | 100% |  | start no earlier than 2026-05-28 09:00 |
| 2738 | 15.6 | **полка мебельная** | 30.12d | 2026-05-18 09:00 A | 2026-06-22 10:00 A |  | 100% |  |  |
| 2739 |  | заявка крепеж | 15min | 2026-05-18 09:00 A | 2026-05-18 09:15 A |  | 100% |  | start no earlier than 2026-05-18 09:00 |
| 2740 |  | контроль доставка | 15min | 2026-05-27 09:15 A | 2026-05-27 09:30 A | 2739FS+7d | 100% |  | start no earlier than 2026-05-15 08:00 |
| 2741 |  | крепеж полки у Юли в кабинете (уголки на складе) | 1h | 2026-06-22 09:00 A | 2026-06-22 10:00 A | 2740 | 100% |  | start no earlier than 2026-06-22 09:00 |
| 2742 |  | монтаж диплом на стену нач хим лаб | 30min | 2026-05-15 09:00 A | 2026-05-15 09:30 A |  | 100% |  | start no earlier than 2026-05-15 09:00 |
| 2743 |  | монтаж розеток в серверной продолжить | 2h | 2026-04-23 09:00 A | 2026-04-23 11:00 A |  | 100% |  | start no earlier than 2026-04-23 09:00 |
| 2744 |  | ремонт стул в столовая, спинка | 1h | 2026-04-21 09:00 A | 2026-04-21 10:00 A |  | 100% |  | start no earlier than 2026-04-21 09:00 |
| 2745 | 15.10 | **полочка под пк** | 0.12d | 2026-06-26 09:00 A | 2026-06-26 10:00 A |  | 100% |  |  |
| 2746 |  | замер | 1h | 2026-06-26 09:00 A | 2026-06-26 10:00 A |  | 100% |  | start no earlier than 2026-06-26 09:00 |
| 2747 |  | прикрутить декоративную пластину на ручке в столовой | 1h | 2026-04-15 09:00 A | 2026-04-15 10:00 A |  | 100% |  | start no earlier than 2026-04-17 08:00 |
| 2748 |  | монтаж розеток 4 шт. в серверной | 2h | 2026-04-15 09:00 A | 2026-04-15 11:00 A |  | 100% |  | start no earlier than 2026-04-17 08:00 |
| 2749 |  | протянуть кабель UTP от кабинета Курдюмовой до переговорки | 3h | 2026-04-17 08:00 A | 2026-04-17 11:00 A |  | 100% |  | start no earlier than 2026-04-17 08:00 |
| 2750 |  | убрать шнурок у Курдюмовой в кабинете | 1h | 2026-04-17 08:00 A | 2026-04-17 09:00 A |  | 100% |  | start no earlier than 2026-04-17 08:00 |
| 2751 |  | ремонт кровля над каб Курдюмовой | 20d | 2026-06-15 09:00 A | 2026-07-07 18:00 A |  | 100% |  | start no earlier than 2026-06-15 09:00 |
| 2752 |  | ремонт крепеж пано каб продаж | 1h | 2026-03-24 08:00 A | 2026-03-24 09:00 A |  | 100% |  | start no earlier than 2026-03-24 08:00 |
| 2753 |  | крепить розетку для проектора | 2h | 2025-04-09 09:00 A | 2025-04-09 11:00 A |  | 100% |  | start no earlier than 2025-04-09 09:00 |
| 2754 |  | упорядочить кабеля под тв | 2h | 2025-04-09 09:00 A | 2025-04-09 11:00 A |  | 100% |  | start no earlier than 2025-04-09 09:00 |
| 2755 |  | выбивает автомат у Монича, нет селективности, замена автоматов. Ремонт освещения корридор | 4h | 2026-09-04 09:00 | 2026-09-04 13:00 |  |  | 133.09d | start no earlier than 2026-09-04 09:00 |
| 2756 |  | монтаж ключница для пожарной двери 2 и 3 этаж | 1h | 2026-03-16 09:00 A | 2026-03-16 10:00 A |  | 100% |  | start no earlier than 2026-03-16 09:00 |
| 2757 |  | замена регистр отопления нач снабжения | 2h | 2026-09-04 09:00 | 2026-09-04 11:00 |  |  | 133.34d | start no earlier than 2026-09-04 09:00 |
| 2758 |  | сделать заглушки в комнату пищи | 30min | 2026-09-01 09:00 | 2026-09-01 09:30 |  |  | 136.53d | start no earlier than 2026-09-01 09:00 |
| 2759 | 15.23 | **вентиляция в переговорке и к приема пищи** | 863d? | 2023-03-10 09:00 A | 2026-04-20 18:00 A |  | 100% |  |  |
| 2760 |  | взять на желтом складе (наша половина) вентилятор канальный и проверить работает или нет | 1h | 2023-03-10 09:00 A | 2023-03-10 10:00 A |  | 100% |  |  |
| 2761 |  | заявка на КП = 300к | 4h | 2026-03-13 09:00 A | 2026-03-13 13:00 A |  | 100% |  | start no earlier than 2026-03-13 09:00 |
| 2762 |  | монтаж ВК200 + кабель | 6h | 2026-04-20 09:00 A | 2026-04-20 16:00 A |  | 100% |  | start no earlier than 2026-04-20 08:00 |
| 2763 |  | установка на крыше офиса, приточка в переговорку | 1d? | 2026-04-20 09:00 A | 2026-04-20 18:00 A |  | 100% |  | start no earlier than 2026-04-20 09:00 |
| 2764 | 15.24 | **подсветка продукции в пепреговорке вращающийся лаезерный круг с эмблемой** | 0.12d | 2026-03-13 09:00 A | 2026-03-13 10:00 A |  | 100% |  |  |
| 2765 |  | найти поставщика / узнать стоимость | 1h | 2026-03-13 09:00 A | 2026-03-13 10:00 A |  | 100% |  | start no earlier than 2026-03-13 09:00 |
| 2766 | 16 | **склад упаковки** | 129.5d? | 2026-04-02 09:00 A | 2026-09-03 13:00 |  | 98% | 134.09d |  |
| 2767 |  | переделать крепление рамы наруж блока - к МК задния, анкера убрать | 4h | 2026-09-03 09:00 | 2026-09-03 13:00 |  |  | 134.09d | start no earlier than 2026-09-03 09:00 |
| 2768 |  | установить светильники над столом Веры и перенести светильник над стеллажами | 3h | 2026-08-25 09:00 | 2026-08-25 12:00 |  |  | 141.22d | start no earlier than 2026-08-25 09:00 |
| 2769 |  | втягиваем кабель 5х4 от реф, для подключения кондиционера, место установки щитка покажу- подключаем кондиционер | 1.25d? | 2026-07-31 08:00 A | 2026-07-31 18:00 A |  | 100% |  | start no earlier than 2026-07-31 08:00 |
| 2770 |  | сделать акты списания по результатам инвентаризации | 1d? | 2026-06-22 09:00 A | 2026-06-22 18:00 A |  | 100% |  | start no earlier than 2026-06-22 09:00 |
| 2771 | 16.5 | **установить бойлер** | 13.25d | 2026-06-01 09:00 A | 2026-06-16 11:00 A |  | 100% |  |  |
| 2772 |  | монтаж кабель + розетка с щитка 1 этажа на 2 этаж | 4h | 2026-06-03 09:00 A | 2026-06-03 13:00 A |  | 100% |  | start no earlier than 2026-06-03 09:00 |
| 2773 |  | монтаж бойлер на стену | 2h | 2026-06-01 09:00 A | 2026-06-01 11:00 A | 2772 | 100% |  | start no earlier than 2026-06-01 09:00 |
| 2774 |  | подключение сантехника | 2h | 2026-06-16 09:00 A | 2026-06-16 11:00 A | 2773 | 100% |  | start no earlier than 2026-06-16 09:00 |
| 2775 |  | отремонтировать ручку на входной двери | 1h | 2026-05-16 09:00 A | 2026-05-16 10:00 A |  | 100% |  | start no earlier than 2026-05-16 09:00 |
| 2776 | 16.7 | **анкерить стеллажи** | 33d | 2026-05-15 09:00 A | 2026-06-21 13:00 A |  | 100% |  |  |
| 2777 |  | заявка анкеры | 30min | 2026-05-15 09:00 A | 2026-05-15 09:30 A |  | 100% |  | start no earlier than 2026-05-15 09:00 |
| 2778 |  | контроль доставка | 15min | 2026-05-27 09:30 A | 2026-05-27 09:45 A | 2777FS+10d | 100% |  | start no earlier than 2026-05-14 08:00 |
| 2779 |  | монтаж / указать доделать оставшиеся анкера | 4h | 2026-06-21 09:00 A | 2026-06-21 13:00 A | 2778 | 100% |  | start no earlier than 2026-06-21 09:00 |
| 2780 |  | заменить тросик на воротах | 2h | 2026-04-29 09:00 A | 2026-04-29 11:00 A |  | 100% |  | start no earlier than 2026-04-29 09:00 |
| 2781 | 16.9 | **замена двери** | 41.12d? | 2026-04-02 09:00 A | 2026-05-20 10:00 A |  | 100% |  |  |
| 2782 |  | заказ замерщика / получить счет | 1h | 2026-04-02 09:00 A | 2026-04-02 10:00 A |  | 100% |  | start no earlier than 2026-04-02 08:00 |
| 2783 |  | изготовление | 40d | 2026-04-02 10:00 A | 2026-05-19 10:00 A | 2782 | 100% |  | start no earlier than 2026-04-02 08:00 |
| 2784 |  | замена | 1d? | 2026-05-19 10:00 A | 2026-05-20 10:00 A | 2783 | 100% |  | start no earlier than 2026-04-02 08:00 |
| 2785 | 17 | **РЭФ контейнеры** | 216.59d? | 2026-05-28 09:00 A | 2027-03-10 14:45 |  | 14% | 0d |  |
| 2786 |  | уложить палеты в проходе к площадке / вырубить кусты с дворником | 1h | 2026-05-28 09:00 A | 2026-05-28 10:00 A |  | 100% |  | start no earlier than 2026-05-28 09:00 |
| 2787 |  | монтаж площадка обслуживания внешнего блока. 4 стойки труба 100 + лист 5 | 7h | 2026-05-28 09:00 A | 2026-05-28 16:00 A |  | 100% |  | start no earlier than 2026-05-28 09:00 |
| 2788 | 17.3 | **ремонт сплит система холодильная камера №1** | 24.12d | 2026-08-12 09:00 A | 2026-09-10 10:00 |  | 20% | 129.47d |  |
| 2789 |  | отправить фото участка | 15min | 2026-08-12 09:00 A | 2026-08-12 09:15 A |  | 100% |  | start no earlier than 2026-08-12 09:00 |
| 2790 |  | получить счет на ремонт | 15min | 2026-09-01 09:00 | 2026-09-01 09:15 |  |  | 129.47d | start no earlier than 2026-09-01 09:00 |
| 2791 |  | оплата | 15min | 2026-09-02 09:15 | 2026-09-02 09:30 | 2790FS+1d |  | 129.47d | start no earlier than 2026-09-01 09:00 |
| 2792 |  | контроль даты ремонта | 15min | 2026-09-09 09:30 | 2026-09-09 09:45 | 2791FS+5d |  | 129.47d | start no earlier than 2026-08-10 08:00 |
| 2793 |  | приемка работ | 15min | 2026-09-10 09:45 | 2026-09-10 10:00 | 2792FS+1d |  | 129.47d | start no earlier than 2026-08-10 08:00 |
| 2794 | 17.4 | **монтаж холодильной машины №2** | 6.59d? | 2027-03-02 09:00 | 2027-03-10 14:45 |  |  | 0d |  |
| 2795 |  | решение какую ставить машину - на весну | 30min | 2027-03-02 09:00 | 2027-03-02 09:30 |  |  | 0d | start no earlier than 2027-03-02 09:00 |
| 2796 |  | заключение договор | 3d | 2027-03-02 09:30 | 2027-03-05 09:30 | 2795 |  | 0d | start no earlier than 2026-08-12 09:00 |
| 2797 |  | оплата | 15min | 2027-03-08 09:30 | 2027-03-08 09:45 | 2796FS+1d |  | 0d | start no earlier than 2026-08-18 09:00 |
| 2798 |  | контроль доставки , начала работ | 1d? | 2027-03-08 09:45 | 2027-03-09 09:45 | 2797 |  | 0d | start no earlier than 2026-08-10 08:00 |
| 2799 | 17.4.5 | **монтаж кабель силовой** | 0.5d | 2027-03-09 09:45 | 2027-03-09 14:45 | 2798 |  | 0d |  |
| 2800 |  | проверка поставки | 15min | 2027-03-09 09:45 | 2027-03-09 10:00 |  |  | 0.47d | start no earlier than 2026-08-10 08:00 |

| ID | WBS | Task | Duration | Start | Finish | Predecessors | Complete | Total float | Constraint |
| --- | --- | --- | --- | --- | --- | --- | --- | --- | --- |
| 2801 |  | монтаж | 4h | 2027-03-09 09:45 | 2027-03-09 14:45 |  |  | 0d | start no earlier than 2026-08-10 08:00 |
| 2802 |  | монтаж | 1d? | 2027-03-09 14:45 | 2027-03-10 14:45 | 2799 |  | 0d | start no earlier than 2026-08-10 08:00 |
| 2803 | 17.5 | **утепление контейнера №2 под рефрежератор** | 0.5d | 2026-08-21 09:00 | 2026-08-21 13:00 |  |  | 0d |  |
| 2804 |  | продолжить выравнивание пены по периметру ножовкой для будующей установки профлиста (задание, если нечем заняться) | 2h | 2026-08-21 09:00 | 2026-08-21 11:00 |  |  |  | start no earlier than 2026-08-21 09:00 |
| 2805 |  | установка профлиста | 2h | 2026-08-21 11:00 | 2026-08-21 13:00 | 2804 |  | 144.09d | start no earlier than 2026-08-11 09:00 |
| 2806 | 18 | **обучение** | 670.5d? | 2024-05-14 09:00 A | 2026-09-07 13:00 |  | 39% | 132.09d |  |
| 2807 | 18.1 | **инструкция управлления дозаций жира** | 1.5d | 2026-09-04 09:00 | 2026-09-07 13:00 |  |  | 132.09d |  |
| 2808 |  | подготовка гидравлической и функциональной схем системы | 4h | 2026-09-04 09:00 | 2026-09-04 13:00 |  |  | 132.09d | start no earlier than 2026-09-04 09:00 |
| 2809 |  | описание принципов регулирования | 4h | 2026-09-04 14:00 | 2026-09-04 18:00 | 2808 |  | 132.09d | start no earlier than 2026-08-31 09:00 |
| 2810 |  | пошаговый алогритм действий по операциям замена фильтров, остановка пуск, настройка режимов | 4h | 2026-09-07 09:00 | 2026-09-07 13:00 | 2809 |  | 132.09d | start no earlier than 2026-08-31 09:00 |
| 2811 |  | настройка и ремонты упаковщиков | 1h | 2026-02-27 09:00 A | 2026-02-27 10:00 A |  | 100% |  | start no earlier than 2026-02-27 08:00 |
| 2812 |  | подготовить памятку по чистке ножа для бестром | 4h | 2026-09-04 09:00 | 2026-09-04 13:00 |  |  | 133.09d | start no earlier than 2026-09-04 09:00 |
| 2813 |  | бестром | 2h | 2025-09-02 09:00 A | 2025-09-02 11:00 A |  | 100% |  | start no earlier than 2025-09-02 09:00 |
| 2814 |  | квадропак | 2h | 2025-09-02 11:00 A | 2025-09-02 13:00 A | 2813 | 100% |  | start no earlier than 2025-09-02 09:00 |
| 2815 |  | инструкция парогенератор управление по датчику давления | 4h | 2025-01-16 09:00 A | 2025-01-16 13:00 A |  | 100% |  | start no earlier than 2025-01-16 09:00 |
| 2816 |  | инструкция по работе на теко 1.5 новый | 2d | 2025-01-17 09:00 A | 2025-01-20 18:00 A | 2815 | 100% |  | start no earlier than 2025-01-17 09:00 |
| 2817 |  | инструкция ремонт запайщика | 1d? | 2025-01-17 09:00 A | 2025-01-17 18:00 A |  | 100% |  | start no earlier than 2025-01-17 09:00 |
| 2818 |  | Составить список ЗИП - ежедневно вносить приход / расход | 1h | 2024-05-14 09:00 | 2024-05-14 10:00 |  |  | 802.47d | start no earlier than 2024-05-14 09:00 |
| 2819 |  | составить инструкцию по затягиванию фильеры и соосности муфты | 4h | 2024-05-14 09:00 | 2024-05-14 13:00 |  |  | 802.09d | start no earlier than 2024-05-14 09:00 |
| 2820 |  | составитьт инструкцию настройка бестром - формирование шва | 4h | 2024-05-14 09:00 | 2024-05-14 13:00 |  |  | 802.09d | start no earlier than 2024-05-14 09:00 |
| 2821 |  | составитьт инструкцию настройка бестром - заправка ленты зип лок | 4h | 2024-05-14 09:00 | 2024-05-14 13:00 |  |  | 802.09d | start no earlier than 2024-05-14 09:00 |
| 2822 | 18.13 | **формирование шаблона настройки оборудования** | 4d | 2024-09-06 09:00 A | 2024-09-11 18:00 |  | 67% | 715.59d |  |
| 2823 | 18.13.1 | **БЕСТРОМ** | 2.25d | 2024-09-06 09:00 A | 2024-09-10 11:00 A |  | 100% |  |  |
| 2824 |  | определить базовые точки относительно которых будет проводится замер в 3х плоскостях - флажки верх, флажки низ, смыкание ножа, центр трубы | 1h | 2024-09-06 09:00 A | 2024-09-06 10:00 A |  | 100% |  | start no earlier than 2024-09-06 08:00 |
| 2825 |  | обвести в PAINT фото методику измерений, присвоить \имя каждому размеру | 2h | 2024-09-06 10:00 A | 2024-09-06 12:00 A | 2824 | 100% |  | start no earlier than 2024-09-06 09:00 |
| 2826 |  | создать карту / таблицу настройки. Размер-дата-фио | 2h | 2024-09-09 09:00 A | 2024-09-09 11:00 A | 2825 | 100% |  | start no earlier than 2024-09-09 09:00 |
| 2827 |  | оформить ведение карты в журнал | 2h | 2024-09-10 09:00 A | 2024-09-10 11:00 A | 2826 | 100% |  | start no earlier than 2024-09-10 09:00 |
| 2828 | 18.13.2 | **ТЕКО 1.5** | 0.88d | 2024-09-10 11:00 A | 2024-09-11 10:00 A | 2823 | 100% |  |  |
| 2829 |  | определить базовые точки относительно которых будет проводится замер в 3х плоскостях - флажки верх, флажки низ, смыкание ножа, центр трубы | 1h | 2024-09-10 11:00 A | 2024-09-10 12:00 A |  | 100% |  | start no earlier than 2024-09-10 09:00 |
| 2830 |  | обвести в PAINT фото методику измерений, присвоить \имя каждому размеру | 2h | 2024-09-10 12:00 A | 2024-09-10 15:00 A | 2829 | 100% |  | start no earlier than 2024-09-06 08:00 |
| 2831 |  | создать карту / таблицу настройки. Размер-дата-фио | 2h | 2024-09-10 15:00 A | 2024-09-10 17:00 A | 2830 | 100% |  | start no earlier than 2024-09-06 08:00 |
| 2832 |  | оформить ведение карты в журнал | 2h | 2024-09-10 17:00 A | 2024-09-11 10:00 A | 2831 | 100% |  | start no earlier than 2024-09-06 08:00 |
| 2833 | 18.13.3 | **ТЕКО 0,4** | 0.88d | 2024-09-11 10:00 | 2024-09-11 18:00 | 2828 |  | 715.59d |  |
| 2834 |  | определить базовые точки относительно которых будет проводится замер в 3х плоскостях - флажки верх, флажки низ, смыкание ножа, центр трубы | 1h | 2024-09-11 10:00 | 2024-09-11 11:00 |  |  | 715.59d | start no earlier than 2024-09-06 08:00 |
| 2835 |  | обвести в PAINT фото методику измерений, присвоить \имя каждому размеру | 2h | 2024-09-11 11:00 | 2024-09-11 13:00 | 2834 |  | 715.59d | start no earlier than 2024-09-06 08:00 |
| 2836 |  | создать карту / таблицу настройки. Размер-дата-фио | 2h | 2024-09-11 14:00 | 2024-09-11 16:00 | 2835 |  | 715.59d | start no earlier than 2024-09-06 08:00 |
| 2837 |  | оформить ведение карты в журнал | 2h | 2024-09-11 16:00 | 2024-09-11 18:00 | 2836 |  | 715.59d | start no earlier than 2024-09-06 08:00 |
| 2838 | 18.14 | **наполнение базы данных по занятиям, запись видео уроки** | 7.12d | 2024-09-09 09:00 A | 2024-09-16 10:00 |  | 5% | 711.47d |  |
| 2839 |  | заяавка фотокамера, штатив | 1h | 2024-09-09 09:00 A | 2024-09-09 10:00 A |  | 100% |  | start no earlier than 2024-09-09 09:00 |
| 2840 |  | доставка | 5d | 2024-09-09 10:00 | 2024-09-14 10:00 | 2839 |  | 713.47d | start no earlier than 2024-09-06 08:00 |
| 2841 | 18.14.3 | **Бестром** | 0.12d | 2024-09-16 09:00 A | 2024-09-16 10:00 A |  | 100% |  |  |
| 2842 |  | урок 1 | 1h | 2024-09-16 09:00 A | 2024-09-16 10:00 A | 2840 | 100% |  | start no earlier than 2024-09-16 09:00 |
| 2843 | 19 | **администрантивные** | 140.75d | 2026-03-19 09:00 A | 2026-09-01 16:00 |  | 87% | 135.84d |  |
| 2844 |  | спсиание материалов | 6h | 2026-09-01 09:00 | 2026-09-01 16:00 |  |  | 135.84d | start no earlier than 2026-09-01 09:00 |
| 2845 |  | составить список остатков шнеков в таблицу зип | 2h | 2026-09-01 09:00 | 2026-09-01 11:00 |  |  | 136.34d | start no earlier than 2026-09-01 09:00 |
| 2846 |  | подготовить спсток перчаток | 3h | 2026-03-19 09:00 A | 2026-03-19 12:00 A |  | 100% |  | start no earlier than 2026-03-19 08:00 |
| 2847 |  | подготовка данных дебеторская задолжность | 3h | 2026-03-19 09:00 A | 2026-03-19 12:00 A |  | 100% |  | start no earlier than 2026-03-19 08:00 |
| 2848 |  | договор по ремонту стиральных машинок. Переговоры | 1h | 2026-09-01 09:00 | 2026-09-01 10:00 |  |  | 136.47d | start no earlier than 2026-09-01 09:00 |
| 2849 |  | Составить список на год ППР (планово-предупредительные работы) на оборудовании Цеха №1, Цеха №2, Цеха навесок. | 2h | 2026-09-01 09:00 | 2026-09-01 11:00 |  |  | 136.34d | start no earlier than 2026-09-01 09:00 |
| 2850 | 19.7 | **Ключи на шкафы** | 115.25d | 2026-04-16 09:00 A | 2026-09-01 11:00 |  | 98% | 136.34d |  |
| 2851 |  | Заказать | 30min | 2026-04-16 09:00 A | 2026-04-16 09:30 A |  | 100% |  | start no earlier than 2026-04-16 09:00 |
| 2852 |  | доставить | 10d | 2026-04-16 09:30 A | 2026-04-28 09:30 A | 2851 | 100% |  | start no earlier than 2026-04-14 09:00 |
| 2853 |  | контроль доставка | 15min | 2026-05-15 09:00 A | 2026-05-15 09:15 A |  | 100% |  | start no earlier than 2026-05-15 09:00 |
| 2854 |  | Повешать на веревочку ключи на все шкафы ВРУ и электрощитки (ключи на складе) | 2h | 2026-09-01 09:00 | 2026-09-01 11:00 | 2852 |  | 136.34d | start no earlier than 2026-09-01 09:00 |
| 2855 |  | Расписаться в нашем кабинете | 10min | 2026-07-28 09:00 A | 2026-07-28 09:10 A |  | 100% |  | start no earlier than 2026-07-28 09:00 |
| 2856 | 20 | **ТБ** | 987.25d? | 2023-06-06 09:00 A | 2026-12-15 11:00 |  | 39% | 61.34d |  |
| 2857 |  | инструктаж по ТБ оформить | 1h | 2026-08-31 09:00 | 2026-08-31 10:00 |  |  | 137.47d | start no earlier than 2026-08-31 09:00 |
| 2858 |  | выполнить перелкаду похарных шлангов офис, 1ц | 2h | 2026-12-15 09:00 | 2026-12-15 11:00 |  |  | 61.34d | start no earlier than 2026-12-15 09:00 |
| 2859 |  | маркировка лестниц / оформление журналов | 2h | 2026-08-31 09:00 | 2026-08-31 11:00 |  |  | 137.34d | start no earlier than 2026-08-31 09:00 |
| 2860 |  | внеплановый инструктаж персонала при аварии на проризводстве | 2h | 2025-03-26 09:00 A | 2025-03-26 11:00 A |  | 100% |  | start no earlier than 2025-03-26 08:00 |
| 2861 |  | заявка на табличики НЕ ВКЛЮЧАТЬ | 10min | 2025-03-26 09:00 A | 2025-03-26 09:10 A |  | 100% |  | start no earlier than 2025-03-26 08:00 |
| 2862 |  | офорить наряд допуск на монтаж кабеля КПП | 30min | 2024-08-05 09:00 A | 2024-08-05 09:30 A |  | 100% |  | start no earlier than 2024-08-05 09:00 |
| 2863 |  | составить схемы кабельных линий по производству | 5d | 2026-09-01 09:00 | 2026-09-07 18:00 |  |  | 131.59d | start no earlier than 2026-09-01 09:00 |
| 2864 |  | организация аттестации электроперсонала | 10d | 2024-05-14 09:00 A | 2024-05-27 18:00 A |  | 100% |  | start no earlier than 2024-05-14 09:00 |
| 2865 |  | расклеить таблички на стремянки | 1h | 2023-10-18 09:00 A | 2023-10-18 10:00 A |  | 100% |  | start no earlier than 2023-10-18 09:00 |
| 2866 |  | вести журнал учета такелажных средств, механизмов и приспособлений | 1h | 2026-09-01 09:00 | 2026-09-01 10:00 |  |  | 136.47d | start no earlier than 2026-09-01 09:00 |
| 2867 |  | комплект сиз для высотных работ | 1h | 2023-06-09 09:00 A | 2023-06-09 10:00 A |  | 100% |  | start no earlier than 2023-06-09 09:00 |
| 2868 |  | тестер индикторная отвертка | 1h | 2024-05-14 09:00 A | 2024-05-14 10:00 A |  | 100% |  | start no earlier than 2024-05-14 09:00 |
| 2869 |  | заявка на диэл коврик, галоши, перчатки, маска, таблички | 1h | 2026-09-01 09:00 | 2026-09-01 10:00 |  |  | 136.47d | start no earlier than 2026-09-01 09:00 |
| 2870 |  | заявка спецодежда наладчикам | 1d? | 2024-05-14 09:00 A | 2024-05-14 18:00 A |  | 100% |  | start no earlier than 2024-05-14 09:00 |

| ID | WBS | Task | Duration | Start | Finish | Predecessors | Complete | Total float | Constraint |
| --- | --- | --- | --- | --- | --- | --- | --- | --- | --- |
| 2871 |  | аттестация охрана труда | 10d | 2024-05-14 09:00 | 2024-05-27 18:00 |  |  | 792.59d | start no earlier than 2024-05-14 09:00 |
| 2872 | 20.16 | **испытание стеллажей** | 914d? | 2023-06-06 09:00 A | 2026-09-02 18:00 |  | 11% | 134.59d |  |
| 2873 |  | оплата испытания стеллажей контроль | 0d | 2023-06-06 09:00 A | 2023-06-06 09:00 A |  | 100% |  | start no earlier than 2023-06-06 09:00 |
| 2874 |  | орг испытание стеллажей | 1h | 2023-07-11 09:00 A | 2023-07-11 10:00 A |  | 100% |  | start no earlier than 2023-07-11 09:00 |
| 2875 |  | график осмотров стеллажей | 1d? | 2026-08-31 09:00 | 2026-08-31 18:00 | 2873 |  | 134.59d | start no earlier than 2026-08-31 09:00 |
| 2876 |  | табличка КП | 1d? | 2026-09-01 09:00 | 2026-09-01 18:00 | 2875 |  | 134.59d | start no earlier than 2023-04-27 08:00 |
| 2877 |  | журнал технического освидетельствования стеллажей | 1d? | 2026-09-02 09:00 | 2026-09-02 18:00 | 2876 |  | 134.59d | start no earlier than 2023-04-27 08:00 |
| 2878 |  | запрос стоимости ремонта стеллажей в 5ц | 2h | 2026-08-18 09:00 A | 2026-08-18 11:00 A |  | 100% |  | start no earlier than 2026-08-18 09:00 |
| 2879 |  | контрольизг | 15min | 2026-08-27 09:00 | 2026-08-27 09:15 |  |  | 139.56d | start no earlier than 2026-08-27 09:00 |
| 2880 | 21 | **офис** | 0.12d | 2025-06-11 09:00 A | 2025-06-11 10:00 A |  | 100% |  |  |
| 2881 |  | ремонт светильник моргает , бухгалтерия | 1h | 2025-06-11 09:00 A | 2025-06-11 10:00 A |  | 100% |  | start no earlier than 2025-06-11 09:00 |
| 2882 | 22 | **территория** | 450.16d? | 2025-02-20 09:00 A | 2026-09-01 10:15 |  | 49% | 136.44d |  |
| 2883 |  | отсыпать спуск для парковки между цех 2 и 3 | 1d? | 2026-08-26 09:00 | 2026-08-26 18:00 |  |  | 139.59d | start no earlier than 2026-08-26 08:00 |
| 2884 |  | отсыпать тропинку до КТПН | 1d? | 2026-08-27 09:00 | 2026-08-27 18:00 |  |  | 138.59d | start no earlier than 2026-08-27 09:00 |
| 2885 | 22.3 | **орг водосток КПП - 5ц** | 0.03d | 2026-08-31 09:00 | 2026-08-31 09:15 |  |  | 137.56d |  |
| 2886 |  | получить КП от Вугара | 15min | 2026-08-31 09:00 | 2026-08-31 09:15 |  |  | 137.56d | start no earlier than 2026-08-31 09:00 |
| 2887 | 22.4 | **орг водосток между 4 и5А** | 0.03d | 2026-08-31 09:00 | 2026-08-31 09:15 |  |  | 137.56d |  |
| 2888 |  | получить КП от Вугара | 15min | 2026-08-31 09:00 | 2026-08-31 09:15 |  |  | 137.56d | start no earlier than 2026-08-31 09:00 |
| 2889 | 22.5 | **Белявский выравнивание стены** | 16.16d | 2026-08-13 09:00 A | 2026-09-01 10:15 |  | 13% | 136.44d |  |
| 2890 |  | оформить план работ, эскиз предложенный ГИП Глуходед | 1h | 2026-08-31 09:00 | 2026-08-31 10:00 |  |  | 136.44d | start no earlier than 2026-08-31 09:00 |
| 2891 |  | поиск подрядчика на перекладку панели | 1h | 2026-08-31 09:00 | 2026-08-31 10:00 |  |  | 137.47d | start no earlier than 2026-08-31 09:00 |
| 2892 |  | звонок по решению от варианта ремонта Белявского | 20min | 2026-08-13 09:00 A | 2026-08-13 09:20 A |  | 100% |  | start no earlier than 2026-08-13 09:00 |
| 2893 |  | ожидание КП от бригады Белявского | 0d | 2026-08-20 09:00 A | 2026-08-20 09:00 A | 2892FS+1d | 100% |  | start no earlier than 2026-08-20 09:00 |
| 2894 |  | согл работы с ГД | 0d | 2026-08-31 10:00 | 2026-08-31 10:00 | 2893FS+1d, 2890 |  | 136.44d | start no earlier than 2026-08-31 09:00 |
| 2895 |  | заказ кран | 15min | 2026-09-01 10:00 | 2026-09-01 10:15 | 2894FS+1d |  | 136.44d | start no earlier than 2026-08-13 09:00 |
| 2896 |  | замена тусклых или не рабочих ламп на мухоловках 1,2,5 цех.Схемы расположения предоставлю (количество ламп, которые поменял указать в отчете) | 4h | 2026-08-06 09:00 A | 2026-08-06 13:00 A |  | 100% |  | start no earlier than 2026-08-06 08:00 |
| 2897 | 22.7 | **КПП ревизия прожектор, не горит** | 1.12d | 2026-07-08 09:00 A | 2026-07-09 10:00 |  | 25% | 179.47d |  |
| 2898 |  | Сфотать шильдик от прожектора кпп | 20min | 2026-07-08 09:00 A | 2026-07-08 09:20 A |  | 100% |  | start no earlier than 2026-07-08 08:00 |
| 2899 |  | монтаж прожетора | 1h | 2026-07-09 09:00 | 2026-07-09 10:00 |  |  | 179.47d | start no earlier than 2026-07-09 09:00 |
| 2900 |  | установить люки колодцев на всей территории | 4h | 2026-07-06 09:00 | 2026-07-06 13:00 |  |  |  | start no earlier than 2026-07-06 09:00 |
| 2901 | 22.9 | **установить пост для зарядки эл мобиль директору** | 1d? | 2026-06-03 09:00 | 2026-06-03 18:00 |  |  | 209.59d |  |
| 2902 |  | заявка на щиток / кабель | 1d? | 2026-06-03 09:00 | 2026-06-03 18:00 |  |  | 209.59d | start no earlier than 2026-06-03 08:00 |
| 2903 |  | уборка строительный мусор задний двор 5А склад | 2h | 2026-05-27 09:00 | 2026-05-27 11:00 |  |  | 217.34d | start no earlier than 2026-05-27 09:00 |
| 2904 |  | поправить бетонную крышку колодца. Дренаж вдоль забора колодец №2 | 2h | 2026-05-27 09:00 | 2026-05-27 11:00 |  |  | 217.34d | start no earlier than 2026-05-27 09:00 |
| 2905 |  | расчистить камни, для доступа к люку. Дренаж вдоль забора колодец №2 | 2h | 2026-05-27 09:00 | 2026-05-27 11:00 |  |  | 217.34d | start no earlier than 2026-05-27 09:00 |
| 2906 |  | проверка всех стемянок по цехам, приклеить бумажки о проверке | 1d? | 2026-06-26 09:00 A | 2026-06-26 18:00 A |  | 100% |  | start no earlier than 2026-06-26 09:00 |
| 2907 |  | в 1,2,3 цехе ближе к утру выключить все оборудование, кроме камер охраны КПП- подготовка к фогации | 2h | 2026-04-30 08:00 A | 2026-04-30 10:00 A |  | 100% |  | start no earlier than 2026-04-30 08:00 |
| 2908 |  | заизолировать гофру в местах разрыва (гофра с кабелем для рефрежераторов возле нашего склада) | 1h | 2026-04-26 09:00 A | 2026-04-26 10:00 A |  | 100% |  | start no earlier than 2026-04-26 09:00 |
| 2909 |  | ремонт стен сосед Белявский | 5d | 2026-04-16 09:00 | 2026-04-21 18:00 |  |  | 246.59d | start no earlier than 2026-04-16 08:00 |
| 2910 | 22.17 | **выезд ул.Писемского** | 18.03d | 2026-08-11 09:00 A | 2026-09-01 09:15 |  | 89% | 136.56d |  |
| 2911 | 22.17.1 | **топосъемка** | 18.03d | 2026-08-11 09:00 A | 2026-09-01 09:15 |  | 67% | 136.56d |  |
| 2912 |  | получить старт от ГД | 0d | 2026-08-31 09:00 | 2026-08-31 09:00 |  |  | 136.56d | start no earlier than 2026-08-31 09:00 |
| 2913 |  | поск исполнителя / запрос счет | 30min | 2026-08-11 09:00 A | 2026-08-11 09:30 A |  | 100% |  | start no earlier than 2026-08-11 09:00 |
| 2914 |  | контроль оплата | 15min | 2026-09-01 09:00 | 2026-09-01 09:15 | 2913FS+5d, 2912FS+1d |  | 136.56d | start no earlier than 2026-08-24 09:00 |
| 2915 | 22.17.2 | **геология** | 18.03d | 2026-08-11 09:00 A | 2026-09-01 09:15 |  | 99% | 136.56d |  |
| 2916 |  | поск исполнителя / запрос счет | 30min | 2026-08-11 09:00 A | 2026-08-11 09:30 A |  | 100% |  | start no earlier than 2026-08-11 09:00 |
| 2917 |  | контроль оплата | 0min | 2026-09-01 09:15 | 2026-09-01 09:15 | 2916FS+5d, 2914 |  | 136.56d | start no earlier than 2026-08-10 08:00 |
| 2918 | 22.17.3 | **проект дорога** | 18.03d | 2026-08-11 09:00 A | 2026-09-01 09:15 |  | 99% | 136.56d |  |
| 2919 |  | поск исполнителя / запрос счет | 30min | 2026-08-11 09:00 A | 2026-08-11 09:30 A |  | 100% |  | start no earlier than 2026-08-11 09:00 |
| 2920 |  | получить счет / договор | 0d | 2026-08-13 09:00 A | 2026-08-13 09:00 A |  | 100% |  | start no earlier than 2026-08-13 09:00 |
| 2921 |  | контроль оплата | 0min | 2026-09-01 09:15 | 2026-09-01 09:15 | 2919FS+5d, 2917 |  | 136.56d | start no earlier than 2026-08-10 08:00 |
| 2922 | 22.17.4 | **проект бетонная подушка** | 18.03d | 2026-08-11 09:00 A | 2026-09-01 09:15 |  | 99% | 136.56d |  |
| 2923 |  | поск исполнителя / запрос счет | 30min | 2026-08-11 09:00 A | 2026-08-11 09:30 A |  | 100% |  | start no earlier than 2026-08-11 09:00 |
| 2924 |  | получить счет / договор | 0d | 2026-08-13 09:00 A | 2026-08-13 09:00 A |  | 100% |  | start no earlier than 2026-08-13 09:00 |
| 2925 |  | контроль оплата | 0min | 2026-09-01 09:15 | 2026-09-01 09:15 | 2923FS+5d, 2921 |  | 136.56d | start no earlier than 2026-08-10 08:00 |
| 2926 | 22.18 | **асфальтирование дороги до 5ц** | 14.25d? | 2026-08-11 09:00 A | 2026-08-26 11:00 A |  | 100% |  |  |
| 2927 |  | составить схему площади дороги / 3 корректировки | 2h | 2026-08-11 09:00 A | 2026-08-11 11:00 A |  | 100% |  | start no earlier than 2026-08-11 09:00 |
| 2928 |  | получить цену исполнителя | 1d | 2026-08-11 11:00 A | 2026-08-12 11:00 A | 2927 | 100% |  | start no earlier than 2026-08-10 08:00 |
| 2929 |  | согл с ГД | 1d | 2026-08-11 09:00 A | 2026-08-11 18:00 A | 2928 | 100% |  | start no earlier than 2026-08-10 08:00 |
| 2930 |  | получить счет от Вугара | 0h | 2026-08-12 09:00 A | 2026-08-12 09:00 A |  | 100% |  | start no earlier than 2026-08-12 09:00 |
| 2931 |  | будет ли Вугар оформлятся как подрядчик? Соглаосвать с ГД | 15min | 2026-08-17 09:00 A | 2026-08-17 09:15 A |  | 100% |  | start no earlier than 2026-08-17 09:00 |
| 2932 |  | корректировка чертеж объем работ | 1d? | 2026-08-20 09:00 A | 2026-08-20 18:00 A |  | 100% |  | start no earlier than 2026-08-20 09:00 |
| 2933 |  | подготовка смета | 2h | 2026-08-26 09:00 A | 2026-08-26 11:00 A |  | 100% |  | start no earlier than 2026-08-26 09:00 |
| 2934 |  | контроль сроков завоза техники | 15min | 2026-08-14 09:00 A | 2026-08-14 09:15 A |  | 100% |  | start no earlier than 2026-08-14 09:00 |
| 2935 |  | монтаж | 1d? | 2026-08-19 09:00 A | 2026-08-19 18:00 A | 2929, 2930 | 100% |  | start no earlier than 2026-08-19 09:00 |
| 2936 |  | взять роутер у нас в кабинете - подключить к UTP кабелю | 1d? | 2026-04-13 09:00 A | 2026-04-13 18:00 A |  | 100% |  | start no earlier than 2026-04-13 09:00 |
| 2937 |  | в цехе 2, 3, 4 и 5 убавить температуры на нагревателях и газ. Котлах | 4h | 2026-03-31 09:00 A | 2026-03-31 13:00 A |  | 100% |  | start no earlier than 2026-03-31 08:00 |
| 2938 |  | перенос камеры на 10см ниже КПП | 3h | 2026-03-21 09:00 A | 2026-03-21 12:00 A |  | 100% |  | start no earlier than 2026-03-21 09:00 |
| 2939 |  | запуск контейнер рэф | 2h | 2026-03-20 09:00 A | 2026-03-20 11:00 A |  | 100% |  | start no earlier than 2026-03-20 09:00 |
| 2940 | 22.23 | **выровнить контейнеры, перекос двери** | 5.25d | 2026-03-19 09:00 A | 2026-03-24 11:00 A |  | 100% |  |  |

| ID | WBS | Task | Duration | Start | Finish | Predecessors | Complete | Total float | Constraint |
| --- | --- | --- | --- | --- | --- | --- | --- | --- | --- |
| 2941 |  | заявка кран | 30min | 2026-03-19 09:00 A | 2026-03-19 09:30 A |  | 100% |  | start no earlier than 2026-03-19 09:00 |
| 2942 |  | работа по выравниванию | 2h | 2026-03-24 09:00 A | 2026-03-24 11:00 A | 2941FS+1d | 100% |  | start no earlier than 2026-03-24 09:00 |
| 2943 | 22.24 | **двойной шлагбаум замрзает** | 5.01d | 2025-02-20 09:00 A | 2025-02-27 09:05 A |  | 100% |  |  |
| 2944 |  | вызов сервисного инженера контроль даты | 5min | 2025-02-27 09:00 A | 2025-02-27 09:05 A |  | 100% |  | start no earlier than 2025-02-27 09:00 |
| 2945 |  | осмотр с сервисн инжзенером | 1h | 2025-02-20 09:00 A | 2025-02-20 10:00 A |  | 100% |  | start no earlier than 2025-02-20 09:00 |
| 2946 | 23 | **ежедневные обходы и осмотры** | 513.5d | 2024-05-14 09:00 A | 2026-03-06 13:00 |  | 16% | 289.09d |  |
| 2947 |  | цех 1 | 20min | 2024-05-14 09:00 | 2024-05-14 09:20 |  |  | 800.01d | start no earlier than 2024-05-14 09:00 |
| 2948 |  | цех 2 | 20min | 2024-05-14 09:00 | 2024-05-14 09:20 |  |  | 802.55d | start no earlier than 2024-05-14 09:00 |
| 2949 |  | цех навесок | 20min | 2024-05-14 09:20 | 2024-05-14 09:40 | 2947 |  | 800.01d | start no earlier than 2024-05-14 09:00 |
| 2950 |  | техника | 20h | 2024-05-14 09:40 | 2024-05-16 14:40 | 2949 |  | 800.01d | start no earlier than 2024-05-14 09:00 |
| 2951 |  | вести журнал осмотров стеллажей | 20min | 2024-05-14 09:00 | 2024-05-14 09:20 |  |  | 802.55d | start no earlier than 2024-05-14 09:00 |
| 2952 |  | оперативная работа | 4h | 2026-03-06 09:00 A | 2026-03-06 13:00 A |  | 100% |  | start no earlier than 2026-03-06 09:00 |
| 2953 | 24 | **замена шнеков** | 946.5d? | 2023-03-29 09:00 A | 2026-08-14 13:00 |  | 2% | 151.09d |  |
| 2954 |  | посчитать количество шнеков и гильз для цех1 и цех 2 | 2h | 2026-04-03 09:00 | 2026-04-03 11:00 |  |  | 262.34d | start no earlier than 2026-04-03 09:00 |
| 2955 |  | вести список и учет замены шнеков | 1h | 2024-05-14 09:00 | 2024-05-14 10:00 |  |  | 802.47d | start no earlier than 2024-05-14 09:00 |
| 2956 |  | линия 3 - было 3/приход спец12-3/спец14-9 | 1d? | 2024-04-15 09:00 A | 2024-04-15 18:00 A |  | 100% |  | start no earlier than 2024-04-15 08:00 |
| 2957 |  | линия3 | 42d | 2023-10-16 09:00 | 2023-12-12 18:00 |  |  | 912.59d | start no earlier than 2023-10-16 09:00 |
| 2958 |  | линия3 | 30d | 2023-12-12 09:00 | 2024-01-22 18:00 |  |  | 883.59d | start no earlier than 2023-12-12 09:00 |
| 2959 |  | линия3 | 45d | 2024-01-24 09:00 | 2024-03-26 18:00 |  |  | 837.59d | start no earlier than 2024-01-24 09:00 |
| 2960 |  | линия3 | 11d | 2023-03-29 09:00 | 2023-04-12 18:00 |  |  | 1086.59d | start no earlier than 2023-03-29 09:00 |
| 2961 |  | линия3 | 1d? | 2023-04-12 09:00 | 2023-04-12 18:00 |  |  | 1086.59d | start no earlier than 2023-04-12 09:00 |
| 2962 |  | линия 3 | 1.5d? | 2024-05-08 08:00 A | 2024-05-09 11:00 A |  | 100% |  | start no earlier than 2024-05-08 08:00 |
| 2963 |  | диния 3 | 1.12d? | 2024-05-20 09:00 | 2024-05-20 18:00 |  |  | 797.59d | start no earlier than 2024-05-20 09:00 |
| 3094 |  | замена линия 3, была струшка | 4h | 2026-08-14 09:00 A | 2026-08-14 13:00 A |  | 100% |  | start no earlier than 2026-08-14 09:00 |

## Version 2 (saved 2026-09-07, file 07.09.26.mpp)

Note of the change: ок

Last finish stays 2027-03-10. Complete tasks 1859 → 1974.

Added:

| ID | Task | Duration | Start | Finish | Predecessors | Constraint | Resources |
| --- | --- | --- | --- | --- | --- | --- | --- |
| 2 | Разобрать улитки с охладителя 2 линия, 4 улитки на печах и улитки циклонов - замена подшипников, каких нет сообщить | 2d | 2026-09-07 09:00 | 2026-09-08 18:00 |  | start no earlier than 2026-09-05 09:00 | Макаревич А |
| 3 | Ревизия утечек воздуха на квадропаке (важно проверить пневмораспределителях) и вакуумную систему | 2h | 2026-09-06 09:00 | 2026-09-06 11:00 |  | start no earlier than 2026-09-06 09:00 | Дедов В |
| 4 | Комплексное ТО квадропака, проверка всех соединений, протяжка болтов на всех узлах | 4h | 2026-09-06 09:00 | 2026-09-06 13:00 |  | start no earlier than 2026-09-06 09:00 | Дедов В |
| 5 | Сделать основную кнопку на НОТИСЕ, чтоб срабатывало от нее, а не от блока управления | 1h | 2026-09-07 09:00 | 2026-09-07 10:00 |  | start no earlier than 2026-09-05 09:00 | Дедов В |
| 6 | Убрать все кабеля на полу в зоне фасовки, теко-нотис (кабельный менеджмент) | 2h | 2026-09-07 09:00 | 2026-09-07 11:00 |  | start no earlier than 2026-09-05 09:00 | Дедов В |
| 7 | Клемная коробка на жирах сделать, сейчас вся висит на хомутах 2 линия | 1h | 2026-09-07 09:00 | 2026-09-07 10:00 |  | start no earlier than 2026-09-05 09:00 | Дедов В |
| 8 | Дефектовка двигателя от питателя прекондиционера/ прозвонить (возможно подготовить для сдачи на перемотку) | 2h | 2026-09-04 09:00 | 2026-09-04 11:00 |  | start no earlier than 2026-09-04 09:00 | Бобренок В |
| 9 | Ошибка на баке жиротопки 2 линия Err.4 /разобраться и устранить причину | 1h | 2026-09-04 09:00 | 2026-09-04 10:00 |  | start no earlier than 2026-09-04 09:00 | Бобренок В |
| 10 | Установить новые газлифты, которые получил Бобренок на жиротопку 2 этаж | 2h | 2026-09-07 09:00 | 2026-09-07 11:00 |  | start no earlier than 2026-09-07 09:00 | Тимофеев В |
| 11 | **Не работают роль ставни на жирах, не стопоряться сделать/устранить неисправность** | 1d | 2026-09-08 09:00 | 2026-09-08 18:00 |  |  | Тимофеев В |
| 12 | Вызвать подрядчика/контроль | 10min | 2026-09-08 09:00 | 2026-09-08 09:10 |  | start no earlier than 2026-09-08 09:00 | Зорькин В |
| 14 | согласовать с подрядчиком дату ремонта | 10min | 2026-09-08 09:00 | 2026-09-08 09:10 |  | start no earlier than 2026-09-08 09:00 | Зорькин В |
| 15 | закреить отбойник корридор навесок (заанкерить) | 1h | 2026-09-03 09:00 | 2026-09-03 10:00 |  | start no earlier than 2026-09-03 08:00 | Бобренок В |
| 16 | Переподключение кондиционера срежима кондиционера на автоматический | 15min | 2026-09-02 09:00 A | 2026-09-02 09:15 A |  | start no earlier than 2026-09-02 09:00 | Бобренок В |
| 17 | Замена редуктора поворотного стола | 1h | 2026-09-02 09:00 A | 2026-09-02 10:00 A |  | start no earlier than 2026-09-02 09:00 | Бобренок В |
| 18 | Программирование частотника теко 0,4 привод смещения ленты | 2h | 2026-09-02 09:00 A | 2026-09-02 11:00 A |  | start no earlier than 2026-09-02 09:00 | Тимофеев В |
| 19 | Прозвонить кабель паллетных весов ошибка Error 10 | 1h | 2026-09-07 09:00 | 2026-09-07 10:00 |  | start no earlier than 2026-09-05 09:00 | Дедов В |
| 20 | Замена подшипников на ножевом узле | 2h | 2026-09-01 09:00 A | 2026-09-01 11:00 A |  | start no earlier than 2026-09-01 09:00 | Бундин В |
| 21 | Замена насоса на водяной рубашке жиротопке 2 этаж | 2h | 2026-09-01 09:00 A | 2026-09-01 11:00 A |  | start no earlier than 2026-09-01 09:00 | Бундин В |
| 22 | Замена контактора 1 линия 2 зона экструдера | 1h | 2026-09-01 09:00 A | 2026-09-01 10:00 A |  | start no earlier than 2026-09-01 09:00 | Бундин В |
| 23 | Редуктор смесителя 1 линия, собрать информацию, что не так, что нужно сделать | 30min | 2026-09-02 09:00 A | 2026-09-02 09:30 A |  | start no earlier than 2026-09-02 09:00 | Тимофеев В |
| 24 | Ремонт мухобойки 1 цех в корридоре завоза навесок | 1h | 2026-09-01 09:00 A | 2026-09-01 10:00 A |  | start no earlier than 2026-09-01 09:00 | Труфанов А |
| 130 | Ремонт клавиатуры от головы нотис, клаву получить на складе, голову взять у нас в кабинете | 1h | 2026-09-01 09:00 A | 2026-09-01 10:00 A |  | start no earlier than 2026-09-01 08:00 | Бундин В |
| 131 | Вернуть голову с восстановленной клавиатурой на НОТИС в 3 цех | 30min | 2026-09-04 09:00 | 2026-09-04 09:30 |  | start no earlier than 2026-09-04 09:00 | Тимофеев В |
| 164 | Сделать перегородки в бункер дозатора для увеличения объема секций | 3h | 2026-09-02 09:00 A | 2026-09-02 12:00 A |  | start no earlier than 2026-09-04 09:00 | Тимофеев В |
| 177 | заменить амперметры неиспрвные на ШУ 1 и 2 линия (они на складе приехали сегодня новые посмотреть фото в выдаче) | 1h | 2026-09-04 09:00 | 2026-09-04 10:00 |  | start no earlier than 2026-09-04 09:00 | Бобренок В |
| 680 | Ремонт насоса от 2 линии 1 цех, статор взять на складе | 2h | 2026-09-04 09:00 | 2026-09-04 11:00 |  | start no earlier than 2026-09-04 09:00 | Тимофеев В |
| 703 | Смазка подшипников привода охладителя | 1h | 2026-09-10 09:00 | 2026-09-10 10:00 |  |  | Бобренок В |
| 704 | Обрезать пенку пвх на двери в охладителе ,сделать ее ровной | 1h | 2026-09-07 09:00 | 2026-09-07 10:00 |  | start no earlier than 2026-09-05 09:00 | Макаревич А |
| 705 | Переборка парогенератора, поиск неисправности (подключили перемычку между реле времени) | 4h | 2026-09-02 09:00 A | 2026-09-02 13:00 A |  | start no earlier than 2026-09-02 09:00 | Бобренок В |
| 707 | **Подготовить электрическую часть для подключения второго насоса без частотника (продолжаем эту задачу)** | 0.12d | 2026-09-10 09:00 | 2026-09-10 10:00 |  |  | Тимофеев В |
| 708 | установить на линию доп насос (резервный) | 1h | 2026-09-10 09:00 | 2026-09-10 10:00 |  | start no earlier than 2026-09-10 09:00 | Тимофеев В |
| 709 | Подумать место установки автомата | 10min | 2026-09-03 09:00 A | 2026-09-03 09:10 A |  | start no earlier than 2026-09-03 09:00 | Тимофеев В |
| 710 | ТО редуктора печи 2 цех, лежит в слесарке | 2h | 2026-09-07 09:00 | 2026-09-07 11:00 |  | start no earlier than 2026-09-05 09:00 | Макаревич А |
| 711 | Ремонт парогенератора, замена реле давления + отвалился контакт + замена мембраны | 1h | 2026-09-02 09:00 A | 2026-09-02 10:00 A |  | start no earlier than 2026-09-02 08:00 | Труфанов А |
| 712 | Замена редуктора на печи | 2h | 2026-09-01 09:00 A | 2026-09-01 11:00 A |  | start no earlier than 2026-09-01 09:00 | Бундин В |
| 713 | проверка котлов на приточку (замена клапана и тена на большую мощность) | 2h | 2026-09-07 09:00 | 2026-09-07 11:00 |  | start no earlier than 2026-09-07 09:00 | Дедов В |
| 725 | Разорвать контур от насоса и сделать слив в раковину | 1h | 2026-09-01 09:00 A | 2026-09-01 10:00 A | 724FS+1d | start no earlier than 2026-09-01 09:00 | Некрасов А; Тимофеев В |
| 795 | закрыть отверстие от ручки (заварить) | 30min | 2026-09-03 09:00 A | 2026-09-03 09:30 A |  | start no earlier than 2026-09-03 09:00 | Некрасов А |
| 910 | Замена силовой платы, где сгорела 1 ТТР | 2h | 2026-08-31 08:00 A | 2026-08-31 11:00 A |  | start no earlier than 2026-08-31 08:00 | Дедов В |
| 911 | Не работает блок тенов, заказать | 10min | 2026-09-01 09:00 | 2026-09-01 09:10 |  | start no earlier than 2026-09-01 08:00 | Зорькин В |
| 912 | Контроль доставки | 5min | 2026-09-09 09:00 | 2026-09-09 09:05 |  | start no earlier than 2026-09-09 09:00 | Зорькин В |
| 1290 | изготовить промежуточную емкость для прекондера, подача воды, сделать по аналогу 3 цеха | 2h | 2026-09-04 09:00 | 2026-09-04 11:00 |  | start no earlier than 2026-09-04 09:00 | Макаревич А |
| 1291 | **отмена** | 77.31d? | 2026-08-11 09:00 A | 2026-11-26 11:30 |  |  |  |
| 1308 | По схемам Труфанова разобраться с автоматикой шкафа и подключить 3 датчика уровня и подписать, где и что находится +кнопки и переключатели на шкафу тоже подписать | 3h | 2026-09-07 09:00 | 2026-09-07 12:00 |  | start no earlier than 2026-09-05 09:00 | Дедов В |
| 1309 | **установить ограничитель на дверь что бы попадала под движение рольворот** | 6.19d | 2026-09-04 09:00 | 2026-09-14 10:30 |  |  |  |
| 1338 | Монтаж/позиционирование квадропака | 5h | 2026-09-02 09:00 A | 2026-09-02 15:00 A |  | start no earlier than 2026-09-02 09:00 | Труфанов А |
| 1344 | подключение вводный кабель (питание) информация у Труфанова | 2h | 2026-09-04 09:00 | 2026-09-04 11:00 | 1343 | start no earlier than 2026-09-04 09:00 | Бундин В; Труфанов А |
| 1346 | Установка квадропака (позиционирование нижней машины) информация у Труфанова | 2h | 2026-09-02 09:00 | 2026-09-02 11:00 |  | start no earlier than 2026-09-02 09:00 | Труфанов А; Бундин В |
| 1347 | Выставить опоры верхней рамы и лестницы по уровню | 1h | 2026-09-02 09:00 A | 2026-09-02 10:00 A |  | start no earlier than 2026-09-02 08:00 | Бундин В |
| 1348 | Редуктор стола повернуть кабелем к электрощиту (на столе) | 30min | 2026-09-02 09:00 A | 2026-09-02 09:30 A |  | start no earlier than 2026-09-02 08:00 | Бундин В |
| 1349 | Провод от редуктора и кнопки в гофре закрепить по раме стола завести в шкаф | 30min | 2026-09-02 09:00 A | 2026-09-02 09:30 A |  | start no earlier than 2026-09-02 08:00 | Бундин В |
| 1354 | покрасить перемычки система безопасности) | 2h | 2026-09-07 09:00 | 2026-09-07 11:00 | 1353FS+1d | start no earlier than 2026-09-07 09:00 | Тимофеев В |
| 1384 | замена тепловых реле, получить на складе | 1h | 2026-09-03 09:00 | 2026-09-03 10:00 | 1383FS+1d | start no earlier than 2026-09-03 09:00 | Бобренок В |
| 1577 | Сказать параметры, шильдик насосной станции передать зорькину | 15min | 2026-09-04 09:00 | 2026-09-04 09:15 |  | start no earlier than 2026-09-04 09:00 | Тимофеев В |
| 1578 | воставноить заземление на обоих ситах | 2h | 2026-09-04 09:00 | 2026-09-04 11:00 |  | start no earlier than 2026-09-04 09:00 | Бобренок В |
| 1579 | востановить контакт пульт тельфера у стены (переменный контакт при движении кабеля у пульта) | 1h | 2026-09-03 09:00 | 2026-09-03 10:00 |  | start no earlier than 2026-09-03 08:00 | Бобренок В |
| 1599 | Прокнуть греющий кабель | 3h | 2026-09-07 09:00 | 2026-09-07 12:00 | 1600 |  | Некрасов А; Макаревич А |
| 1600 | Подключение греющего кабеля | 3h | 2026-09-07 09:00 | 2026-09-07 12:00 |  | start no earlier than 2026-09-07 09:00 | Некрасов А |
| 1679 | контроль доставки | 15min | 2026-05-29 17:45 A | 2026-05-29 18:00 A | 1678SF+15d | start no earlier than 2026-05-12 08:00 | Шуранов Ю |
| 1775 | Ремонт паука с растаривателя, оценить состояние. | 2h | 2026-09-02 09:00 A | 2026-09-02 11:00 A |  | start no earlier than 2026-09-02 09:00 | Тимофеев В |
| 1842 | **Замена насосной станции** | 9.25d | 2026-09-01 09:00 A | 2026-09-14 11:00 |  |  |  |
| 1843 | Замена насоса | 2h | 2026-09-01 09:00 A | 2026-09-01 11:00 A |  | start no earlier than 2026-09-01 09:00 | Бундин В |
| 1844 | Заявка на станцию | 15min | 2026-09-02 09:00 | 2026-09-02 09:15 |  | start no earlier than 2026-09-02 08:00 | Зорькин В |
| 1845 | контроль доставки | 5min | 2026-09-11 09:00 | 2026-09-11 09:05 |  | start no earlier than 2026-09-11 09:00 | Зорькин В |
| 1846 | установка новой насосной станции | 2h | 2026-09-14 09:00 | 2026-09-14 11:00 |  | start no earlier than 2026-09-14 09:00 | Некрасов А |
| 1895 | Установить 3-х фазную вилку для мешалки рядом с частотником | 2h | 2026-08-31 08:00 A | 2026-08-31 11:00 A |  | start no earlier than 2026-08-31 08:00 | Дедов В |
| 1896 | Установить розетку для электротали, проложить кабель к розетке возле мухобойки | 3h | 2026-08-31 08:00 A | 2026-08-31 12:00 A |  | start no earlier than 2026-08-31 08:00 | Дедов В |
| 1897 | Подключить таль к розетке, проложить гофру | 1h | 2026-09-02 09:00 A | 2026-09-02 10:00 A |  | start no earlier than 2026-09-02 09:00 | Бундин В |
| 2007 | Настройка даты на пробнике, нужно приподнять на 3-5 мм (ждем решение технологов, информация поменялась, читать письмо от 01.09.2026) | 3h | 2026-09-11 09:00 | 2026-09-11 12:00 |  | start no earlier than 2026-09-11 09:00 | Тимофеев В |
| 2060 | ремонт оборотные сетки-поддоны от печи от 2ц | 2h | 2026-09-03 09:00 | 2026-09-03 11:00 |  | start no earlier than 2026-09-03 08:00 | Бобренок В |
| 2130 | заявка | 15min | 2026-05-13 10:00 A | 2026-05-13 10:15 A | 2129 | start no earlier than 2026-04-24 08:00 | Зорькин В |
| 2279 | **ЗИП заказ (заявки)** | 1.02d | 2026-09-04 09:00 A | 2026-09-07 09:10 |  |  |  |
| 2280 | контактор для тельфера 5ц 24 переменка | 15min | 2026-09-04 09:00 A | 2026-09-04 09:15 A |  | start no earlier than 2026-09-04 09:00 | Зорькин В |
| 2281 | Наконечники штырьевые для сборки схем (получить инфу у Тимофеева) | 10min | 2026-09-07 09:00 | 2026-09-07 09:10 |  | start no earlier than 2026-09-07 09:00 | Зорькин В |
| 2282 | Газ в слесарку, закончился | 10min | 2026-09-07 09:00 | 2026-09-07 09:10 |  | start no earlier than 2026-09-07 09:00 | Зорькин В |
| 2417 | **Дражжировка** | 0.25d | 2026-08-27 09:00 | 2026-08-27 11:00 |  |  |  |
| 2481 | Замена водяного фильтра на прекондиционере/парогенератор (нет фильтров не меняли в следующее ТО на 10.09.26) | 15min | 2026-09-03 09:00 | 2026-09-03 09:15 |  | start no earlier than 2026-09-03 09:00 | Труфанов А |
| 2495 | Чистка | 1h | 2026-09-02 08:00 A | 2026-09-02 10:00 A |  | start no earlier than 2026-09-02 08:00 | Бобренок В |
| 2496 | Убрать грязь с парогенератора, привести в порядок внешний вид, где что отлеплено, прилепить | 20min | 2026-09-03 09:00 A | 2026-09-03 09:20 A |  | start no earlier than 2026-09-03 09:00 | Тимофеев В |
| 2505 | прорверка масла редуктор / натяжка цепи/ ремень/осмотр сетки | 20min | 2026-08-20 09:00 | 2026-08-20 09:20 |  | start no earlier than 2026-08-20 09:00 | Некрасов А |
| 2520 | контроль масла | 15min | 2026-09-03 09:00 A | 2026-09-03 09:15 A |  | start no earlier than 2026-09-03 09:00 | Тимофеев В |
| 2527 | Вскрыть, осмотреть ленту (держится на одном | 30min | 2026-09-03 09:00 A | 2026-09-03 09:30 A |  | start no earlier than 2026-09-03 09:00 | Тимофеев В |
| 2533 | Осмотр | 5min | 2026-09-03 09:00 A | 2026-09-03 09:05 A |  | start no earlier than 2026-09-03 09:00 | Тимофеев В |
| 2542 | ревизия шестерен питателя | 1h | 2026-09-03 09:00 A | 2026-09-03 10:00 A |  | start no earlier than 2026-09-03 09:00 | Некрасов А |
| 2547 | Осмотр шестерён(стоит звон), подшипников, сальников | 30min | 2026-09-03 09:00 A | 2026-09-03 09:30 A |  | start no earlier than 2026-09-03 09:00 | Тимофеев В |
| 2550 | Проверка масла (долил уровень) | 10min | 2026-09-03 09:00 A | 2026-09-03 09:10 A |  | start no earlier than 2026-09-03 09:00 | Труфанов А |
| 2563 | Чистка фильтра | 15min | 2026-09-03 09:00 A | 2026-09-03 09:15 A |  | start no earlier than 2026-09-03 09:00 | Труфанов А |
| 2573 | продувка частотного привода | 10min | 2026-09-03 09:00 A | 2026-09-03 09:10 A |  | start no earlier than 2026-09-03 09:00 | Труфанов А |
| 2578 | Ревизия узлов/масла (смазку свежую набил) | 20min | 2026-09-03 09:00 A | 2026-09-03 09:20 A |  | start no earlier than 2026-09-03 09:00 | Труфанов А |
| 2619 | Осмотр подшипников редукторов | 15min | 2026-09-03 09:00 A | 2026-09-03 09:15 A |  | start no earlier than 2026-09-03 09:00 | Тимофеев В |
| 2620 | Осмотр соединений фитингов, трехходового крана бежит/не бежит | 10min | 2026-09-03 09:00 A | 2026-09-03 09:10 A |  | start no earlier than 2026-09-03 09:00 | Тимофеев В |
| 2624 | Осмотр/ревизия насоса гидролизата, проверка всех соединений | 10min | 2026-09-03 09:00 A | 2026-09-03 09:10 A |  | start no earlier than 2026-09-03 09:00 | Тимофеев В |
| 2627 | ревизия люфтов, фиксации смазки подшипников | 30min | 2026-03-05 09:00 A | 2026-03-05 09:30 A |  | start no earlier than 2026-03-05 09:00 | Тимофеев В |
| 2646 | Ревизия сетки, контроль роспуска, подогнуть, где что можно, что бы не зацепилось | 1h | 2026-09-10 09:00 | 2026-09-10 10:00 |  | start no earlier than 2026-09-10 09:00 | Макаревич А |
| 2648 | ослабить ленту для чистки барабана / натяжка после чистки | 15min | 2026-08-12 09:00 A | 2026-08-12 09:15 A |  | start no earlier than 2026-08-12 09:00 | Тимофеев В |
| 2650 | ослабить ленту для чистки барабана / натяжка после чистки | 15min | 2026-09-03 09:00 A | 2026-09-03 09:15 A |  | start no earlier than 2026-09-03 09:00 | Макаревич А |
| 2656 | запайщик 1 проверка перемычек/тефлона замена при необходимости | 2h | 2026-09-03 09:00 A | 2026-09-03 11:00 A |  | start no earlier than 2026-09-03 09:00 | Макаревич А |
| 2657 | запайщик 1 проверка перемычек/тефлона замена при необходимости | 2h | 2026-09-03 09:00 A | 2026-09-03 11:00 A |  | start no earlier than 2026-09-03 09:00 | Макаревич А |
| 2664 | осмотр приводной системы нории / смазка | 30min | 2026-09-03 09:00 A | 2026-09-03 09:30 A |  | start no earlier than 2026-09-03 09:00 | Макаревич А |
| 2665 | протяжка креплений поворотных лап захвата | 30min | 2026-09-03 09:00 A | 2026-09-03 09:30 A |  | start no earlier than 2026-09-03 09:00 | Макаревич А |
| 2666 | снимать ковши для доступка к подшинику, нуждающего в смазке( сообщил Некрасов) | 2h | 2026-09-10 09:00 | 2026-09-10 11:00 |  | start no earlier than 2026-09-10 09:00 | Некрасов А |
| 2669 | ослабить ленту для чистки барабана / натяжка после чистки | 10min | 2026-03-12 09:00 A | 2026-03-12 09:10 A |  | start no earlier than 2026-03-12 09:00 | Бундин В |
| 2677 | бестром чистка тен, проверка тефлона, роликов (согласовать с мастером) | 1h | 2026-09-03 09:00 A | 2026-09-03 10:00 A |  | start no earlier than 2026-09-03 09:00 | Макаревич А |
| 2678 | Замена линейного подшипника ISKRA KH2030-PP (согласование с Домоводовым) не делали, все норм там) | 2h | 2026-09-03 09:00 A | 2026-09-03 11:00 A |  | start no earlier than 2026-09-03 09:00 | Макаревич А |
| 2679 | ослабить ленту для чистки барабана / натяжка после чистки | 10min | 2026-09-10 09:00 | 2026-09-10 09:10 |  | start no earlier than 2026-09-10 09:00 | Макаревич А |
| 2680 | Замена поролоновой губки на горизонтальных тенах запайки пакетов | 30min | 2026-09-10 09:00 | 2026-09-10 09:30 |  | start no earlier than 2026-09-10 09:00 | Макаревич А |
| 2700 | ЩР4 у печи продувка | 10min | 2026-09-03 09:00 A | 2026-09-03 09:10 A |  | start no earlier than 2026-09-03 09:00 | Труфанов А |
| 2701 | ЩО1 у печи продувка | 10min | 2026-09-03 09:00 A | 2026-09-03 09:10 A |  | start no earlier than 2026-09-03 09:00 | Труфанов А |
| 2709 | слив конденсат с осушителя | 30min | 2026-09-03 09:00 A | 2026-09-03 09:30 A |  | start no earlier than 2026-09-03 09:00 | Макаревич А |
| 2710 | продувка фильтров (дать размеры фильтра) | 30min | 2026-09-10 09:00 | 2026-09-10 09:30 |  | start no earlier than 2026-09-10 09:00 | Макаревич А |
| 2713 | замена фильтров (перенос замены на 10.09.26 закончились) | 30min | 2026-09-03 09:00 | 2026-09-03 09:30 |  | start no earlier than 2026-09-03 09:00 | Труфанов А |
| 2893 | получить счет на ремонт | 15min | 2026-09-01 09:00 | 2026-09-01 09:15 |  | start no earlier than 2026-09-01 09:00 | Домоводов К |
| 2957 | Повешать на веревочку ключи на все шкафы ВРУ и электрощитки (ключи на складе, веревочки взять на производстве, нитки) | 2h | 2026-09-04 09:00 | 2026-09-04 11:00 | 2955 | start no earlier than 2026-09-04 09:00 | Бобренок В |
| 3029 | Сборка рамы и навеса для мусорки 2 ц возле 1 КПП | 4h | 2026-09-04 09:00 | 2026-09-04 13:00 |  | start no earlier than 2026-09-04 09:00 | Некрасов А; Макаревич А |
| 3030 | Покраска рамы новой мусорки, стоит у ворот навесок 2 цех | 1h | 2026-09-04 09:00 | 2026-09-04 10:00 |  | start no earlier than 2026-09-04 09:00 | Некрасов А; Макаревич А |
| 3031 | Монтаж дверей на мусорку собираем раму (петли привезем после обеда) | 3h | 2026-09-04 09:00 | 2026-09-04 12:00 |  | start no earlier than 2026-09-04 09:00 | Некрасов А; Макаревич А |
| 3041 | монтаж | 1d? | 2026-08-19 09:00 A | 2026-08-19 18:00 A | 3035, 3036 | start no earlier than 2026-08-19 09:00 | Подрядчик |

Removed: 151 заменить амперметры неиспрвные на ШУ 1 и 2 линия (они на складе); 662 отмена; 676 проверка котлов на приточку; 688 монтаж трасс и насос; 758 закрыть отверстие от ручки; 1249 изготовить промежуточную емкость для прекондера, подача воды, сделать по аналогу 3 цеха, покрасить везде; 1297 подключение вводный кабель; 1303 покрасить перемычки; 2451 Вскрыть, осмотреть ленту; 2496 Ревизия узлов/масла; 2610 замена фильтров; 2854 Повешать на веревочку ключи на все шкафы ВРУ и электрощитки (ключи на складе)

Changed:

| ID | Task | Start | Finish | Duration | Complete | Total float | Other |
| --- | --- | --- | --- | --- | --- | --- | --- |
| 1 | **1 цех** |  |  | 439.5d? → 431.5d? |  |  |  |
| 13 | получить счет на ремонт | 2026-09-01 09:00 → 2026-09-08 09:00 (+7d) | 2026-09-01 09:15 → 2026-09-08 18:00 (+7d) | 15min → 1d |  | 129.47d → 130.59d | constraint start no earlier than 2026-09-01 09:00 → start no earlier than 2026-09-08 09:00; resources Домоводов К → Зорькин В |
| 25 | капает с кондиционера ближе к жировику (устранить) | 2026-08-31 09:00 A | 2026-08-31 11:00 A |  | 0% → 100% | 137.34d → none |  |
| 27 | чистка фильтра кондиционера между печками | 2026-08-31 09:00 A | 2026-08-31 10:00 A |  | 0% → 100% |  |  |
| 28 | ревизия приточной вентиляции (протяжка контактов и т.д.) | 2026-08-30 09:00 → 2026-08-31 09:00 A (+1d) | 2026-08-30 12:00 → 2026-08-31 12:00 A (+1d) |  | 0% → 100% |  | constraint start no earlier than 2026-08-30 09:00 → start no earlier than 2026-08-31 09:00 |
| 30 | улитка на подиуме за цехом, прикрутить отвод в бок (отвод под подиумом) | 2026-08-31 09:00 A | 2026-08-31 10:00 A |  | 0% → 100% |  |  |
| 31 | течет вода с поломоечной машинки - разобраться | 2026-08-29 09:00 → 2026-08-31 09:00 A (+2d) | 2026-08-29 11:00 → 2026-08-31 11:00 A (+2d) |  | 0% → 100% |  | constraint start no earlier than 2026-08-29 09:00 → start no earlier than 2026-08-31 09:00 |
| 33 | замена пошипников |  |  | 2h → 1h |  |  |  |
| 35 | **продумать как сделать герметичную крышку на смесителе сухого гидрализата** |  | 2026-09-02 17:00 → 2026-09-07 11:00 (+5d) | 4.88d? → 7.25d | 25% → 40% | 134.72d → 132.34d |  |
| 38 | установка на струбцинах с уплотнителями | 2026-09-02 09:00 → 2026-09-07 09:00 (+5d) | 2026-09-02 17:00 → 2026-09-07 11:00 (+5d) | 1d? → 2h |  | 134.72d → 132.34d | constraint start no earlier than 2026-09-02 09:00 → start no earlier than 2026-09-07 09:00 |
| 39 | **метал от тенов печи, устранить причину** |  | 2026-09-02 13:00 → 2026-09-07 13:00 (+5d) | 7.5d → 10.5d |  | 135.09d → 132.09d |  |
| 41 | вскрыть 2 зону и посмотреть какой тен (мойка) | 2026-09-02 09:00 A → 2026-08-31 09:00 A (-2d) | 2026-09-02 10:00 A → 2026-08-31 10:00 A (-2d) |  |  |  |  |
| 44 | замена заброкованных осмотром тенов | 2026-09-02 09:00 → 2026-09-07 09:00 (+5d) | 2026-09-02 13:00 → 2026-09-07 13:00 (+5d) |  |  | 135.09d → 132.09d | constraint start no earlier than 2026-09-02 09:00 → start no earlier than 2026-09-07 09:00 |
| 46 | перемонтаж частотный привод сух гидролизат | 2026-09-01 09:00 → 2026-09-02 09:00 A (+1d) | 2026-09-01 11:00 → 2026-09-02 11:00 A (+1d) |  | 0% → 100% | 136.34d → none | constraint start no earlier than 2026-09-01 09:00 → start no earlier than 2026-09-04 09:00 |
| 47 | поменять светильник где вывозят готовую продукцию (с люлки) | 2026-08-31 09:00 A | 2026-08-31 11:00 A |  | 0% → 100% | 137.34d → none |  |
| 49 | изготовление герметичной крышки под мойкой экструдера (объясню по телефону) занкрепить на анкера |  | 2026-08-19 10:00 A → 2026-08-19 11:00 A |  |  |  |  |
| 53 | стиральная машинка проверка насоса слива, разборка, фото шильдик. Не качает. |  | 2026-08-15 11:00 A → 2026-08-17 11:00 A (+2d) |  |  |  |  |
| 54 | **настройка пробники на толстую цветную пленку** |  |  | 12.38d? → 9.38d? |  |  |  |
| 59 | изготовление крепления вспомогательной протяжки |  | 2026-08-21 15:00 A → 2026-08-21 16:00 A |  |  |  |  |
| 62 | жалобы, что пробники бьют периодически током- проверить соединения, контакты и т.д. |  | 2026-08-26 09:00 A → 2026-08-26 10:00 A |  |  |  |  |
| 64 | **ТЕКО ремонт кнопки, которую снял Бобренок В , вернуть то что снял с 3ц** |  |  | 20.16d → 17.16d | 44% → 56% |  |  |
| 67 | контроль поставки | 2026-09-04 09:00 A | 2026-09-04 09:15 A |  | 0% → 100% | 132.47d → none |  |
| 75 | ТО пробники и Теко 0,4 (чистка тен, ножей, смазка) |  | 2026-08-05 12:00 A → 2026-08-05 13:00 A |  |  |  |  |
| 76 | **палетообмостчик заказ** |  | 2026-09-29 02:00 → 2026-09-28 12:05 (-1d) | 37d? → 33.39d | 7% → 27% | 116.59d → 117.21d |  |
| 78 | **согласвоание договор** |  |  | 4.89d → 2.89d |  |  |  |
| 82 | доставка конетроль |  | 2026-09-25 18:00 → 2026-09-25 09:05 | 1d? → 5min |  | 116d → 117.21d |  |
| 83 | монтаж | 2026-09-28 18:00 → 2026-09-28 09:05 | 2026-09-29 02:00 → 2026-09-28 12:05 (-1d) | 1d? → 3h |  | 116d → 117.21d |  |
| 84 | **замена сетка печи линия 1** |  | 2026-10-02 17:45 → 2026-10-06 09:45 (+4d) | 40.97d? → 39.09d? |  | 112.62d → 111.5d |  |
| 88 | контроль доставки | 2026-10-01 09:00 → 2026-10-02 09:00 (+1d) | 2026-10-01 09:15 → 2026-10-02 09:15 (+1d) |  |  | 112.91d → 111.5d |  |
| 89 | приемка | 2026-10-01 09:15 → 2026-10-02 09:15 (+1d) | 2026-10-01 09:45 → 2026-10-02 09:45 (+1d) |  |  | 112.91d → 111.5d |  |
| 90 | замена | 2026-10-02 09:45 → 2026-10-05 09:45 (+3d) | 2026-10-02 17:45 → 2026-10-06 09:45 (+4d) |  |  | 112.62d → 111.5d |  |
| 91 | **зависает диспелей на расходомере 2л** |  |  | 19.06d → 16.06d |  |  |  |
| 98 | **перенос вентилятор охладителя линия2 в реверс, убрать шкаф** |  | 2026-09-04 19:15 → 2026-09-18 13:00 (+14d) | 15d → 23.5d |  | 132.59d → 123.09d |  |
| 102 | конроль поставки | 2026-09-03 10:00 → 2026-09-04 10:00 (+1d) | 2026-09-03 10:15 → 2026-09-04 10:15 (+1d) |  |  | 132.56d → 131.44d |  |
| 103 | сборка рама | 2026-09-04 10:15 → 2026-09-07 10:15 (+3d) | 2026-09-04 15:15 → 2026-09-07 15:15 (+3d) |  |  | 132.56d → 131.44d | constraint start no earlier than 2026-09-02 09:00 → start no earlier than 2026-09-07 09:00 |
| 104 | модернизация венттилятора | 2026-09-04 15:15 → 2026-09-18 09:00 (+14d) | 2026-09-04 19:15 → 2026-09-18 13:00 (+14d) |  |  | 132.56d → 123.09d | constraint start no earlier than 2026-08-12 09:00 → start no earlier than 2026-09-18 09:00 |
| 105 | **ревизия красного смесителя 2 линия (просыпается мука)** |  | 2026-09-02 11:00 → 2026-09-01 11:00 (-1d) | 13.25d → 11.25d | 31% → 92% | 135.34d → 136.34d |  |
| 108 | контроль поставки | 2026-08-25 09:30 → 2026-08-26 09:30 (+1d) | 2026-08-25 09:45 → 2026-08-26 09:45 (+1d) |  |  | 140.38d → 140.5d |  |
| 109 | замена | 2026-09-02 09:00 → 2026-09-01 09:00 A (-1d) | 2026-09-02 11:00 → 2026-09-01 11:00 A (-1d) |  | 0% → 100% | 135.34d → none | constraint start no earlier than 2026-09-02 09:00 → start no earlier than 2026-09-04 09:00 |
| 110 | шум зл двигателя 2 линия / смазка |  | 2026-08-10 09:00 A → 2026-08-10 10:00 A |  |  |  |  |
| 124 | **снять камеру зона экструдера и повесить на жирах со стороны экструдера, монтаж кабель** | 2026-09-02 09:00 → 2026-09-09 09:00 (+7d) | 2026-09-02 11:00 → 2026-09-09 11:00 (+7d) |  |  | 135.34d → 130.34d |  |
| 125 | на мойке попробовать снять камеру | 2026-09-02 09:00 → 2026-09-09 09:00 (+7d) | 2026-09-02 11:00 → 2026-09-09 11:00 (+7d) |  |  | 135.34d → 130.34d | constraint start no earlier than 2026-09-02 09:00 → start no earlier than 2026-09-09 09:00 |
| 127 | слив конденсата с компрессора и продуть радиаторы и фильтры |  | 2026-07-31 09:00 A → 2026-07-31 10:00 A |  |  |  |  |
| 128 | Ревизия головы от Нотис/заключение |  | 2026-07-27 09:00 A → 2026-07-27 10:00 A |  |  |  |  |
| 129 | Снять клавиатуру с головы нотис, подготовить ее к замене лежит на верстаке |  | 2026-07-29 08:30 A → 2026-07-29 09:30 A |  |  |  |  |
| 137 | **выполнить смотровые люки состояния цепи средниий и верхние этажи. На торцевой крышке с стороны экструдера.** |  | 2026-09-02 17:00 → 2026-09-02 18:00 | 39.88d → 37d |  | 134.72d → 134.59d |  |
| 141 | монтаж 2 линия | 2026-09-02 13:00 → 2026-09-02 14:00 | 2026-09-02 17:00 → 2026-09-02 18:00 |  |  | 134.72d → 134.59d |  |
| 147 | **сборка дозатор на квадропак** |  | 2026-09-03 13:00 → 2026-09-07 11:00 (+4d) | 45.5d → 42.25d | 80% → 82% | 134.09d → 132.34d |  |
| 148 | установить переключатель блокировки сброса дозатором |  | 2026-08-15 09:30 A → 2026-08-17 09:30 A (+2d) |  |  |  |  |
| 149 | упорядочить схему |  | 2026-08-15 09:30 A → 2026-08-17 09:30 A (+2d) |  |  |  |  |
| 150 | транспортировка дозатора в слесарку |  |  | 2h → 1h |  |  |  |
| 151 | установить розетку для дозатора. Вывод кабель сверлить платформу, что бы он был не под ногами и удобен при уборке |  | 2026-07-09 10:00 A → 2026-07-09 11:00 A |  |  |  |  |
| 152 | закрепить монитор фото Зорькин |  | 2026-07-09 10:00 A → 2026-07-09 11:00 A |  |  |  |  |
| 156 | монтаж кабель выравнивания потенциалов площадка дозатора и площадка квадропака |  | 2026-08-15 09:30 A → 2026-08-17 09:30 A (+2d) |  |  |  |  |
| 162 | сверлить для крепления перил | 2026-09-03 09:00 → 2026-09-04 09:00 (+1d) | 2026-09-03 11:00 → 2026-09-04 11:00 (+1d) |  |  | 134.22d → 133.09d | constraint start no earlier than 2026-09-03 09:00 → start no earlier than 2026-09-04 09:00 |
| 163 | закрыть металлом пустые места между площадками квадропак и дозатор | 2026-09-03 11:00 → 2026-09-07 09:00 (+4d) | 2026-09-03 13:00 → 2026-09-07 11:00 (+4d) |  |  | 134.09d → 132.34d | constraint start no earlier than 2026-08-27 09:00 → start no earlier than 2026-09-07 09:00 |
| 168 | **установить датчик давления на экструдер** |  |  | 47.5d → 42.5d |  |  |  |
| 171 | установить датчики давления через гидравлические шланги |  | 2026-07-06 10:00 A → 2026-07-06 11:00 A |  |  |  |  |
| 175 | печь №1 ревизия/замена перемычек |  | 2026-07-04 13:00 A → 2026-07-06 13:00 A (+2d) |  |  |  |  |
| 190 | подготовить чертеж раковины, проверить материал |  |  |  |  |  | constraint start no earlier than 2026-08-31 09:00 → start no earlier than 2026-09-07 09:00 |
| 195 | прикрутить розетку возле ШУ приточки |  | 2026-07-04 10:00 A → 2026-07-06 10:00 A (+2d) |  |  |  |  |
| 207 | заказать спицы не пустые | 2026-08-31 09:00 → 2026-09-01 09:00 (+1d) | 2026-08-31 09:15 → 2026-09-01 09:15 (+1d) |  |  | 137.56d → 136.56d | constraint start no earlier than 2026-08-31 09:00 → start no earlier than 2026-09-01 09:00 |
| 208 | отключить кондеры и продуть внешние блоки кондиционеров 1 ц. |  | 2026-06-20 11:00 A → 2026-06-22 11:00 A (+2d) |  |  |  |  |
| 211 | слив конденсата с компрессора и продуть радиаторы и фильтры |  | 2026-06-14 10:00 A → 2026-06-15 10:00 A (+1d) |  |  |  |  |
| 219 | модернизация опроры пневмоцилиндра встряживателя №1 квадропак | 2026-09-02 09:00 → 2026-09-07 09:00 (+5d) | 2026-09-02 13:00 → 2026-09-07 13:00 (+5d) |  |  | 135.09d → 132.09d | constraint start no earlier than 2026-09-02 09:00 → start no earlier than 2026-09-07 09:00 |
| 223 | подключить частотный привод насос жир 2 линия/ при остановке |  | 2026-06-07 11:00 A → 2026-06-08 11:00 A (+1d) |  |  |  |  |
| 224 | **жиротопка текет сальник насоса** |  |  | 41.03d? → 36.03d? |  |  |  |
| 225 | замена насос из зип |  | 2026-06-28 10:00 A → 2026-06-29 10:00 A (+1d) |  |  |  |  |
| 226 | замена сальник на снятом насосе |  | 2026-06-28 11:00 A → 2026-06-29 10:00 A (+1d) |  |  |  |  |
| 230 | замена сальника |  | 2026-08-05 17:00 A → 2026-08-05 18:00 A |  |  |  |  |

| ID | Task | Start | Finish | Duration | Complete | Total float | Other |
| --- | --- | --- | --- | --- | --- | --- | --- |
| 234 | **на аппликаторе настроить печать QR-кода на пакет, чтобы не размазывало (по тел. Объясню)** |  |  | 5.12d → 3.12d |  |  |  |
| 237 | целкает аппликатор -разобраться, устранить |  | 2026-06-03 09:00 A → 2026-06-03 10:00 A |  |  |  |  |
| 238 | **установить резервную трубку/штангу с форсункой на подачу жира** |  | 2026-09-10 17:00 → 2026-09-10 18:00 | 8.88d → 9d |  | 128.72d → 128.59d |  |
| 242 | сборка в мастерской |  | 2026-09-09 15:00 → 2026-09-09 16:00 |  |  | 128.75d → 128.59d |  |
| 243 | монтаж на линию | 2026-09-10 15:00 → 2026-09-10 16:00 | 2026-09-10 17:00 → 2026-09-10 18:00 |  |  | 128.72d → 128.59d |  |
| 244 | **установить автоматику запуска шнека + смеситель по датчику уровня сырья в бункере экструдера** |  |  | 72.12d? → 62.12d? |  |  |  |
| 247 | доставка контроль | 2026-06-11 11:00 → 2026-06-15 11:00 (+4d) | 2026-06-11 11:05 → 2026-06-15 11:05 (+4d) |  |  | 200.73d → 189.32d |  |
| 248 | контроль поставки | 2026-06-12 11:05 → 2026-06-16 11:05 (+4d) | 2026-06-12 11:10 → 2026-06-16 11:10 (+4d) |  |  | 200.73d → 189.32d |  |
| 249 | сборка ШУ |  | 2026-06-24 17:00 → 2026-06-24 18:00 |  |  | 191.12d → 183.59d |  |
| 250 | монтаж в линию | 2026-06-24 17:00 → 2026-06-25 09:00 (+1d) | 2026-06-25 01:00 → 2026-06-25 18:00 |  |  | 191.12d → 183.59d |  |
| 255 | **рассекатели после шлюзовика 1 и 2 линия сделать, чтобы корм равномерно ложился по поверхности сетки** |  |  | 7.25d → 5.25d |  |  |  |
| 257 | **установить зубчатую пластину для выравнивания слоя на входе в печь** |  |  | 7.25d → 5.25d |  |  |  |
| 263 | **проверка вентилятор упавший в зимний период. Тест на месте** |  |  | 8.25d → 6.25d |  |  |  |
| 264 | изготовить подиум под улитку |  | 2026-06-05 15:00 A → 2026-06-05 16:00 A |  |  |  |  |
| 268 | устранить провисание патрубка подачи ГДЗ линия 2 | 2026-08-31 09:00 A | 2026-08-31 10:00 A |  | 0% → 100% | 137.47d → none |  |
| 270 | **перевод насосов ГДЗ на канистры с трассой на насос > 1/2** |  |  | 5.25d → 3.25d |  | 211.34d → 201.34d |  |
| 273 | **с тена печей осыпается оребрение, попадая в продукт** |  |  | 14.5d → 10.5d |  |  |  |
| 281 | **заменить фитинги с гайками (они на складе) на жирах 1 + 2 линия** |  |  | 34.25d → 28d |  |  |  |
| 290 | **установка фосунок - подача жира 1 линия** |  |  | 27.12d? → 22.12d? |  | 181.47d → 176.47d |  |
| 295 | **конв №2 линия 2 нижний вал нет защиты подшипников (был фетр)** |  | 2026-09-02 12:15 A → 2026-09-01 10:15 A (-1d) | 11.41d → 9.16d |  |  |  |
| 299 | монтаж уплотнения | 2026-09-02 10:15 A → 2026-08-31 09:00 A (-2d) | 2026-09-02 12:15 A → 2026-08-31 11:00 A (-2d) |  |  |  |  |
| 305 | посмотреть приточку, выпадает часто в аварию по насосу |  | 2026-05-18 10:00 A → 2026-05-18 11:00 A |  |  |  |  |
| 307 | закрепить встиряхиватель полного пакета №1 квадропак |  | 2026-05-14 09:00 A → 2026-05-14 10:00 A |  |  |  |  |
| 309 | устранить потерю мощности печи в 2х фазах |  | 2026-05-12 10:00 A → 2026-05-12 11:00 A |  |  |  |  |
| 313 | **парогенератор 1ц ремонт по гарантии** |  |  | 35d? → 30d? |  |  |  |
| 321 | **отодвинуть миксер подачи сухого гидрализата, чтобы сыпал не на ребра барабана, а на обод выхода** |  | 2026-05-08 11:00 A → 2026-05-08 12:00 A | 0.25d → 0.38d |  |  |  |
| 322 | перекрутить платформу миксера подачи сухого гидрализата снизу, чтобы дуло не задевало барабан |  | 2026-05-08 11:00 A → 2026-05-08 12:00 A |  |  |  |  |
| 323 | монтаж светильник в районе ВРУ сверху (зона экструдера) |  | 2026-05-16 11:00 A → 2026-05-18 11:00 A (+2d) |  |  |  |  |
| 324 | закрепить трубу п/п на фасовке в углу, где стеллаж на клипсы к стене |  | 2026-05-07 09:00 A → 2026-05-07 10:00 A |  |  |  |  |
| 325 | прикрутить пускатели запуска вытяжки перед лестницей на 2 этаж зона экструдера и розетки |  | 2026-05-06 10:00 A → 2026-05-06 11:00 A |  |  |  |  |
| 327 | подключить через счетчик подачу жира |  | 2026-05-05 10:00 A → 2026-05-05 11:00 A |  |  |  |  |
| 330 | на жиротопке установить газ лифты (они на складе) |  | 2026-05-05 09:00 A → 2026-05-05 10:00 A |  |  |  |  |
| 331 | **дверь вход в столовую вкрыть заглушки и установить личинку с ключами (взять на складе)** |  |  | 18.12d → 14.12d |  |  |  |
| 334 | замена |  | 2026-05-30 10:00 A → 2026-06-01 10:00 A (+2d) |  |  |  |  |
| 337 | установить транспортер на 1 линии |  | 2026-05-04 09:00 A → 2026-05-04 10:00 A |  |  |  |  |
| 338 | собрать транспортер ковшевой (валы приехали, фетр на складе) |  | 2026-04-30 12:00 A → 2026-04-30 13:00 A |  |  |  |  |
| 346 | **модернизация трассы слива зона мойки экструдеров** |  |  | 23d? → 20d? |  |  |  |
| 349 | монтаж |  | 2026-05-06 17:30 A → 2026-05-07 09:30 A (+1d) |  |  |  |  |
| 362 | **замена ленты на транспортере тип 2 2 линия (дособрать)** |  | 2026-04-25 13:00 A → 2026-04-27 13:00 A (+2d) |  |  |  |  |
| 364 | установка ковшей со старой ленты на новую со склада 400х 5120мм |  | 2026-04-25 13:00 A → 2026-04-27 13:00 A (+2d) |  |  |  |  |
| 369 | **заменить фильтры на жиротопка** | 2026-08-31 09:00 → 2026-09-01 09:00 (+1d) | 2026-09-14 11:15 → 2026-09-15 11:15 (+1d) |  |  | 127.31d → 126.31d |  |
| 370 | выяснить тип фильтров, заказ катриджи | 2026-08-31 09:00 → 2026-09-01 09:00 (+1d) | 2026-08-31 10:00 → 2026-09-01 10:00 (+1d) |  |  | 127.34d → 126.31d | constraint start no earlier than 2026-08-31 09:00 → start no earlier than 2026-09-01 09:00 |
| 371 | контроль | 2026-09-14 10:00 → 2026-09-15 10:00 (+1d) | 2026-09-14 10:15 → 2026-09-15 10:15 (+1d) |  |  | 127.34d → 126.31d |  |
| 372 | замена | 2026-09-14 10:15 → 2026-09-15 10:15 (+1d) | 2026-09-14 11:15 → 2026-09-15 11:15 (+1d) |  |  | 127.31d → 126.31d |  |
| 373 | проверить напряжение в розетке конатушка вывоза готовой продукции |  | 2026-04-19 10:00 A → 2026-04-20 10:00 A (+1d) |  |  |  |  |
| 374 | **обслуживание инсекьюеров, утлизация отработанных ламп** |  |  | 110.25d → 94.25d |  |  |  |
| 375 | Составить список ламп по цехам и передать Зорькину |  | 2026-04-21 10:00 A → 2026-04-21 11:00 A |  |  |  |  |
| 377 | доставка |  | 2026-05-04 10:30 A → 2026-05-05 10:30 A (+1d) |  |  |  |  |
| 385 | проверить гидроаккумуляторы парогенераторов 1 и 2 линия и 100литровый в комнате стабилизации воды, если нужно качаем 2 очка. |  | 2026-04-19 11:00 A → 2026-04-20 11:00 A (+1d) |  |  |  |  |
| 388 | на питателе заменить втулки линия 1 и 2 |  | 2026-04-15 10:00 A → 2026-04-15 11:00 A |  |  |  |  |
| 396 | на пнемоулитку поставить пистолет (зона экструдера) |  | 2026-04-11 10:00 A → 2026-04-13 10:00 A (+2d) |  |  |  |  |
| 404 | доставка |  | 2026-05-04 18:00 A → 2026-05-05 18:00 A (+1d) |  |  |  |  |
| 405 | **установка газ лифт** |  |  | 82.04d → 69.04d |  |  |  |
| 411 | убрать диммер за еврокубом, где завозят навески (провода заизолировать и спрятать в кабель-канал) |  | 2026-04-10 09:00 A → 2026-04-10 10:00 A |  |  |  |  |
| 412 | закрыть монтажную коробку над дверью зона жиров выход |  | 2026-04-09 09:00 A → 2026-04-09 10:00 A |  |  |  |  |
| 414 | монтаж витой пары от аппликатора до шкафа где вывозят ГП справа |  | 2026-04-09 12:00 A → 2026-04-09 13:00 A |  |  |  |  |
| 416 | замена шнек+гильзы (б/у) на 2 линии |  | 2026-04-09 12:00 A → 2026-04-09 13:00 A |  |  |  |  |
| 419 | замена ленеты | 2026-09-02 09:00 → 2026-09-07 09:00 (+5d) | 2026-09-02 13:00 → 2026-09-07 13:00 (+5d) |  |  | 135.09d → 132.09d | constraint start no earlier than 2026-09-02 09:00 → start no earlier than 2026-09-07 09:00 |
| 424 | забрать 2 рохли с пандуса, снять колеса в зип (зад- перед), а сами рохли в контейнер |  | 2026-04-04 12:00 A → 2026-04-06 12:00 A (+2d) |  |  |  |  |
| 429 | изготовить крышку на приямок слива канализации под раковинами зона экструдер. Из нерж, с ручкой. |  | 2026-04-02 12:00 A → 2026-04-02 13:00 A |  |  |  |  |
| 430 | выпрямить погнутые роль-ворота на рампе - в сторону слесарки (нужно откутить левую направляшку и вставить воротину на место) |  | 2026-04-02 09:00 A → 2026-04-02 10:00 A |  |  |  |  |
| 431 | **выключатель света на входе в гидролизатную закрепить сам рычаг переключения, проскальзывает** |  | 2026-04-25 10:00 A → 2026-04-27 10:00 A (+2d) | 17.12d → 15.12d |  |  |  |
| 433 | замена выключателя (выключатель в слесарке тебе показывал) |  | 2026-04-25 10:00 A → 2026-04-27 10:00 A (+2d) |  |  |  |  |
| 434 | на пандусе 1 цеха справа - пометить шнеки и гильзы что они рабочие и вывести в контейнер |  | 2026-04-01 10:00 A → 2026-04-01 11:00 A |  |  |  |  |
| 435 | взять с контейнера пысос- проверить рабочий или нет (если работает выдать в 1 цех) |  | 2026-04-01 10:00 A → 2026-04-01 11:00 A |  |  |  |  |
| 436 | заменить плату интерфейса RS485 |  | 2026-04-04 10:00 A → 2026-04-06 10:00 A (+2d) |  |  |  |  |
| 437 | замена шнеки 1 линия |  | 2026-03-31 12:00 A → 2026-03-31 13:00 A |  |  |  |  |
| 438 | замер износ шнеков |  |  | 2h → 1h |  |  |  |
| 439 | почистить канальные вентиляторы вытяжки в курилке |  | 2026-03-28 11:00 A → 2026-03-30 11:00 A (+2d) |  |  |  |  |
| 442 | **замена ленты конвейер 2 линия 2** |  |  | 14.38d → 12.38d |  |  |  |

| ID | Task | Start | Finish | Duration | Total float | Other |
| --- | --- | --- | --- | --- | --- | --- |
| 443 | взять ленту 400мм и начать крепить ковши для транспортера тип 2 (посчитать количество на транспортере) |  | 2026-04-07 18:00 A → 2026-04-08 10:00 A (+1d) | 8h → 9h |  |  |
| 445 | заменить на штабелере второй АКБ в зоне экструдера |  | 2026-03-28 10:00 A → 2026-03-30 10:00 A (+2d) |  |  |  |
| 447 | вход охладителя 1 линии - нужно на среднем лотке между уровнями сделать сбоков шторки (фото скину) |  | 2026-03-28 11:00 A → 2026-03-30 11:00 A (+2d) |  |  |  |
| 448 | на первой линии под выходом из печи прикрутить на стенку оргстекло (Слава готовил по размерам оргстекло) |  | 2026-03-28 10:00 A → 2026-03-30 10:00 A (+2d) |  |  |  |
| 458 | пульт управления кондиционером в зоне экструдера- закрепить гофру и заизолировать разрыв гофры, закрепить к стенке |  | 2026-03-24 09:00 A → 2026-03-24 10:00 A |  |  |  |
| 459 | блок питания для весов на жирах развалился, стянуть изолентой |  | 2026-03-24 09:00 A → 2026-03-24 10:00 A |  |  |  |
| 460 | **ремонт /отключить 2 вентилятора охладитель 1 линия** |  | 2026-05-04 18:00 A → 2026-07-15 18:00 A (+72d) |  |  |  |
| 461 | заказать в зип |  | 2026-05-04 18:00 A → 2026-07-15 18:00 A (+72d) |  |  |  |
| 462 | заменить 2 вентилятора |  | 2026-04-04 10:00 A → 2026-04-06 10:00 A (+2d) |  |  |  |
| 463 | демонтаж крышка лотка в проеме между краем площадки вентиляции приточной и проемом ворот вход в кооридор завода навесок |  | 2026-05-04 18:00 A → 2026-07-15 18:00 A (+72d) |  |  |  |
| 465 | слить конденсат и продуть все радиаторы компрессор |  | 2026-03-21 10:00 A → 2026-03-23 10:00 A (+2d) |  |  |  |
| 466 | закрепить аварийную кнопку в гидролизатной (фото в чате будет) / пожарный выключатель |  | 2026-03-22 10:00 A → 2026-03-23 10:00 A (+1d) |  |  |  |
| 467 | кнопки на управление ворот зона жиров поднять и закпепить выше |  | 2026-03-18 10:00 A → 2026-03-18 11:00 A |  |  |  |
| 468 | закрепить все отбойники где завозят навески экструдерщики |  | 2026-03-18 10:00 A → 2026-03-18 11:00 A |  |  |  |
| 469 | закрыить все электро шкафы |  | 2026-03-17 08:30 A → 2026-03-17 09:30 A |  |  |  |
| 470 | поломоечная машинка устранить течь |  | 2026-03-17 09:00 A → 2026-03-17 10:00 A |  |  |  |
| 471 | закрыить крышку на пробниках, задняя стенка прикрутить |  | 2026-03-17 08:30 A → 2026-03-17 09:30 A |  |  |  |
| 473 | монтаж крючков под халаты. Получить у мастера |  | 2026-03-17 09:00 A → 2026-03-17 10:00 A |  |  |  |
| 475 | монтаж 1 линия расходомер / кабель / блок питания | 2026-09-02 09:00 A → 2026-09-07 09:00 A (+5d) | 2026-09-02 12:00 → 2026-09-07 12:00 (+5d) |  |  | constraint start no earlier than 2026-09-02 09:00 → start no earlier than 2026-09-07 09:00 |
| 478 | **разделить воду в экструдер и парогенераторы** |  | 2026-09-23 20:30 → 2026-09-24 12:30 (+1d) | 157d → 135.44d | 119.59d → 119.16d |  |
| 480 | доставка |  | 2026-03-30 10:00 A → 2026-04-02 10:00 A (+3d) |  |  |  |
| 491 | **монтаж на линия 1** |  | 2026-09-23 20:30 → 2026-09-24 12:30 (+1d) | 18d → 18.44d | 119.59d → 119.16d |  |
| 494 | сборка корпус |  | 2026-09-22 14:30 → 2026-09-22 15:30 |  | 119.44d → 119.16d |  |
| 495 | монтаж линия 1 | 2026-09-23 14:30 → 2026-09-23 15:30 | 2026-09-23 20:30 → 2026-09-24 12:30 (+1d) |  | 119.44d → 119.16d |  |
| 496 | подключть конденсатор к насосу, запуск системы |  | 2026-05-27 09:00 A → 2026-05-27 10:00 A |  |  |  |
| 500 | бойлер на экструдере - установить трубку на клапан сброса и смонтировать её ы раковину |  | 2026-03-14 10:00 A → 2026-03-16 10:00 A (+2d) |  |  |  |
| 501 | смазать дверную ручку (входную) |  | 2026-03-15 10:00 A → 2026-03-16 10:00 A (+1d) |  |  |  |
| 502 | сделать ручку дверную (вход на упаковку) |  | 2026-03-15 10:00 A → 2026-03-16 10:00 A (+1d) |  |  |  |
| 503 | дверная ручка в туалет (подкрутить) |  | 2026-03-15 10:00 A → 2026-03-16 10:00 A (+1d) |  |  |  |
| 504 | штабелер экструдера натянуть цепь |  | 2026-03-13 09:00 A → 2026-03-13 10:00 A |  |  |  |
| 505 | установить розетку возле роутера. Место монтажа фото от Шуранова |  | 2026-03-14 11:00 A → 2026-03-16 11:00 A (+2d) |  |  |  |
| 506 | линия 1 лоток охладителя под конвейером (по фото) - поднять на 3см, что бы не цеплял сетку. Снять / пересверлить крепеж |  | 2026-03-14 11:00 A → 2026-03-16 11:00 A (+2d) |  |  |  |
| 507 | изготовтиь полочку для роутера с "крышей. Двух скатная". |  | 2026-03-14 13:00 A → 2026-03-16 13:00 A (+2d) |  |  |  |
| 508 | **АКБ штабелер на навесках** |  | 2026-05-01 18:00 A → 2026-05-12 18:00 A (+11d) | 45d → 43d |  |  |
| 511 | доставыка\ |  | 2026-05-01 18:00 A → 2026-05-12 18:00 A (+11d) |  |  |  |
| 513 | замена шнеков на 1 линии по команде. Подготовить / старые увезти |  | 2026-03-14 10:00 A → 2026-03-16 10:00 A (+2d) |  |  |  |
| 514 | **установить принтер датаматрикс на пролистыватель** |  |  | 146d? → 122d? |  |  |
| 518 | **заменить мятый профлист коррдиор подачи навесок** |  |  | 41.25d → 32.25d |  |  |
| 520 | доставка |  | 2026-03-23 10:00 A → 2026-03-27 10:00 A (+4d) |  |  |  |
| 522 | **заменить плинтус стена вдольпечи 2** |  |  | 13.06d? → 11.06d? |  |  |
| 524 | доставка |  | 2026-03-23 09:30 A → 2026-03-27 09:30 A (+4d) |  |  |  |
| 526 | **заменить аллюминевый скотч на швах вентиляции** |  |  | 24.25d → 18.25d |  |  |
| 528 | доставка |  | 2026-03-22 09:20 A → 2026-03-26 09:20 A (+4d) |  |  |  |
| 530 | **замена скорлупа утеплитель горячих труб печи** |  |  | 22d → 16d |  |  |
| 532 | доставка |  | 2026-03-23 10:00 A → 2026-03-27 10:00 A (+4d) |  |  |  |
| 534 | **купить прокатный запайщик** |  | 2026-07-01 10:00 A → 2026-07-13 10:00 A (+12d) | 93.12d? → 85.12d? |  |  |
| 538 | доставка |  | 2026-07-01 10:00 A → 2026-07-13 10:00 A (+12d) |  |  |  |
| 539 | приемка / сборка |  | 2026-06-29 17:00 A → 2026-06-29 18:00 A |  |  |  |
| 542 | **установить крышку печи торцевую с стороны экструдера на шарниры** |  |  | 14.5d → 12.5d |  |  |
| 544 | доставка |  | 2026-03-16 09:05 A → 2026-03-20 09:05 A (+4d) |  |  |  |
| 546 | монтаж линия 1 и 2 печи (чтобы открывалась и не мешала открыванию лотку сверху) |  |  |  |  | resources Бундин В → Макаревич А |
| 547 | **квадропак заменить пружины на лапках** |  |  | 13.12d → 10.12d |  |  |
| 551 | **звонок на ворота по привозу навесок** |  | 2026-04-25 11:00 A → 2026-04-27 11:00 A (+2d) | 47.25d → 37.25d |  |  |
| 553 | доставка |  | 2026-03-21 18:00 A → 2026-03-25 18:00 A (+4d) |  |  |  |
| 554 | монтаж кнопка и звонок на складе (кнопку устанавливаем справа от ворот- звонок возле ВРУ слева |  | 2026-04-25 11:00 A → 2026-04-27 11:00 A (+2d) |  |  |  |
| 555 | **установить профлист на левую стену** |  |  | 57d? → 47d? |  |  |
| 558 | доставка |  | 2026-03-30 09:30 A → 2026-04-02 09:30 A (+3d) |  |  |  |
| 563 | **модернизация вентиляции** |  | 2026-09-01 11:30 → 2026-09-07 11:00 (+6d) | 146.31d → 126.25d | 136.28d → 132.34d |  |
| 565 | контроль доставки | 2026-08-31 09:15 → 2026-09-01 09:15 (+1d) | 2026-08-31 09:30 → 2026-09-01 09:30 (+1d) |  | 136.41d → 135.28d |  |
| 566 | монтаж | 2026-09-01 09:30 → 2026-09-07 09:00 (+6d) | 2026-09-01 11:30 → 2026-09-07 11:00 (+6d) |  | 136.28d → 132.34d | constraint start no earlier than 2026-08-10 08:00 → start no earlier than 2026-09-07 09:00 |
| 569 | **заменаить фитинги на жирах** |  |  | 56.12d → 44.12d |  |  |
| 571 | доставка |  | 2026-03-03 09:30 A → 2026-03-05 09:30 A (+2d) |  |  |  |
| 576 | **жиротопка замена воздухоотводчиков** |  |  | 32.12d → 24.12d |  |  |
| 578 | доставка |  | 2026-03-09 09:15 A → 2026-03-11 09:15 A (+2d) |  |  |  |
| 580 | **увеличить освещение в зоне квадропака** |  | 2026-03-15 10:00 A → 2026-03-19 10:00 A (+4d) |  |  |  |
| 583 | доставка |  | 2026-03-15 10:00 A → 2026-03-19 10:00 A (+4d) |  |  |  |
| 585 | **установить орг стекло/нерж на обратный ход ленты на раму конвейера** |  |  | 48.25d → 38.25d |  |  |
| 587 | доставка |  | 2026-03-13 09:30 A → 2026-03-17 09:30 A (+4d) |  |  |  |
| 595 | **ремонт приточной вентиляции** |  |  | 60.25d → 47.25d |  |  |
| 597 | доставка |  | 2026-03-16 09:30 A → 2026-03-20 09:30 A (+4d) |  |  |  |

| ID | Task | Start | Finish | Duration | Complete | Total float | Other |
| --- | --- | --- | --- | --- | --- | --- | --- |
| 601 | доставка |  | 2026-03-12 10:00 A → 2026-03-16 10:00 A (+4d) |  |  |  |  |
| 605 | доставка |  | 2026-03-14 09:30 A → 2026-03-18 09:30 A (+4d) |  |  |  |  |
| 608 | доставка |  | 2026-03-14 09:30 A → 2026-03-18 09:30 A (+4d) |  |  |  |  |
| 616 | **баки жир 2 линия устноавить наконечники. От 23.05.25** |  |  | 297.25d → 265.25d |  |  |  |
| 618 | доставка |  | 2025-04-21 09:30 A → 2025-04-23 09:30 A (+2d) |  |  |  |  |
| 620 | **установить фильтры на жир** |  | 2025-09-15 18:00 A → 2025-09-16 10:00 A (+1d) | 103d? → 89.12d? |  |  |  |
| 623 | замена |  | 2025-09-15 18:00 A → 2025-09-16 10:00 A (+1d) |  |  |  |  |
| 625 | **палетные ворота подача навесок + подача жир** |  |  | 16d? → 14d? |  |  |  |
| 632 | **квадропак некрасивый шов - золотинка** |  |  | 116.25d → 104.25d |  |  |  |
| 639 | **режет кабель ЛУКАС силовой в лотке эстакада у КПП** |  |  | 493.5d → 444.5d |  | 251.09d → 234.09d |  |
| 642 | **ШР2.2 замена автомат на циклон на номинальный** |  | 2026-04-16 10:30 A → 2026-04-17 09:30 A (+1d) | 5.19d → 5.06d |  |  |  |
| 644 | достьавка |  | 2026-04-16 09:30 A → 2026-04-17 09:30 A (+1d) |  |  |  |  |
| 646 | **кронштейн фотометки ТЕКО усилить** |  | 2024-09-21 11:00 A → 2024-09-25 10:00 A (+4d) | 10.25d → 10.12d |  |  |  |
| 648 | доставка |  | 2024-09-21 10:00 A → 2024-09-25 10:00 A (+4d) |  |  |  |  |
| 649 | замена |  | 2024-09-21 11:00 A → 2024-09-23 10:00 A (+2d) |  |  |  |  |
| 650 | **квадропак греет пневмоцилиндр термоножа** |  |  | 19.5d → 14.5d |  |  |  |
| 652 | доставка |  | 2024-09-23 10:00 A → 2024-09-26 10:00 A (+3d) |  |  |  |  |
| 654 | **ремонт комппрессора - сдать по гарантии** |  |  | 806.12d → 739.12d |  |  |  |
| 657 | **убрать кабеля с пола на упаковке 1 цех** | 2026-08-31 09:00 → 2026-09-01 09:00 (+1d) | 2026-08-31 09:10 → 2026-09-01 09:10 (+1d) |  |  | 137.57d → 136.57d |  |
| 658 | проверить на актуальность | 2026-08-31 09:00 → 2026-09-01 09:00 (+1d) | 2026-08-31 09:10 → 2026-09-01 09:10 (+1d) |  |  | 137.57d → 136.57d | constraint start no earlier than 2026-08-31 09:00 → start no earlier than 2026-09-01 09:00 |
| 660 | **убрать кабеля с пола и заменить переноски штатными розетками - участок жира 1 цех** | 2026-08-31 09:00 → 2026-09-01 09:00 (+1d) | 2026-08-31 09:05 → 2026-09-01 09:05 (+1d) |  |  | 137.58d → 136.58d |  |
| 661 | проверить на актуальность | 2026-08-31 09:00 → 2026-09-01 09:00 (+1d) | 2026-08-31 09:05 → 2026-09-01 09:05 (+1d) |  |  | 137.58d → 136.58d | constraint start no earlier than 2026-08-31 09:00 → start no earlier than 2026-09-01 09:00 |
| 664 | **Барабаны 2 линия дражжировка** |  | 2026-05-13 18:00 A → 2026-05-14 18:00 A (+1d) | 19d → 18d |  |  |  |
| 667 | доставка |  | 2026-05-13 18:00 A → 2026-05-14 18:00 A (+1d) |  |  |  |  |
| 671 | **Звонок на экструдер** |  | 2026-04-25 11:00 A → 2026-04-27 10:00 A (+2d) | 16.25d → 14.12d |  |  |  |
| 673 | монтаж звонка |  | 2026-04-25 10:00 A → 2026-04-27 10:00 A (+2d) |  |  |  |  |
| 674 | монтаж кнопки за воротами |  | 2026-04-25 11:00 A → 2026-04-27 10:00 A (+2d) |  |  |  |  |
| 675 | **Насос гидролизата** | 2026-04-22 08:00 A → 2026-08-04 09:00 A (+104d) | 2026-09-02 10:00 → 2026-08-31 09:05 (-2d) | 111.12d → 19.01d | 91% → 80% | 135.47d → 137.58d |  |
| 678 | **Дражжировка конвейер №1 после печки** | 2026-09-02 09:00 → 2026-04-22 08:00 A (-133d) | 2026-09-02 10:00 → 2026-09-09 10:00 (+7d) | 0.12d → 100.12d | 0% → 77% | 135.47d → 130.47d |  |
| 679 | Поставить резьбовые клепки на боковой кожух, где кончается лента | 2026-09-02 09:00 → 2026-09-09 09:00 (+7d) | 2026-09-02 10:00 → 2026-09-09 10:00 (+7d) |  |  | 135.47d → 130.47d | constraint start no earlier than 2026-09-02 09:00 → start no earlier than 2026-09-09 09:00 |
| 683 | **дражжировка** |  | 2026-04-22 14:00 A → 2026-04-22 15:00 A | 0.5d → 0.62d |  |  |  |
| 684 | Установка рамы для фильтров |  | 2026-04-22 11:00 A → 2026-04-22 12:00 A |  |  |  |  |
| 686 | кронштейн под пульт расходомера |  | 2026-04-22 14:00 A → 2026-04-22 15:00 A |  |  |  |  |
| 689 | **отмена** | 2026-08-11 09:00 A → 2026-04-22 09:00 (-111d) | 2026-11-25 19:30 → 2026-07-29 16:00 A (-119d) | 80d? → 70.75d | 2% → 100% | 74.59d → none |  |
| 690 | **Парогенератор** |  |  |  | 8% → 100% |  |  |
| 692 | Осмотр стоек где стоит реле давления до расширительного бачка | 2026-07-27 09:00 A | 2026-07-27 09:30 A |  | 0% → 100% | 164.72d → none |  |
| 693 | Составить список материала для ремонта и изготовления стоек | 2026-07-27 09:30 A | 2026-07-27 10:00 A |  | 0% → 100% | 164.72d → none |  |
| 694 | Заказать недостающий материал | 2026-07-27 09:00 A | 2026-07-27 09:20 A |  | 0% → 100% | 165.55d → none |  |
| 695 | Изготовление стоек | 2026-07-29 09:00 A | 2026-07-29 12:00 A |  | 0% → 100% | 162.84d → none |  |
| 696 | Замена стойки под реле давления | 2026-07-29 12:00 A | 2026-07-29 16:00 A |  | 0% → 100% | 162.84d → none |  |
| 697 | Составить список материалов или заключение по 2-м частотникам из 1 цеха от теко 0,4 (поворотный стол и конвейер) | 2026-07-27 08:00 A | 2026-07-27 09:00 → 2026-07-27 10:00 A |  | 0% → 100% | 165.5d → none |  |
| 698 | Взять трубку в нашем кабинете и насверлить по всей длине симметрично отверстия самым маленьким сверлом которое у нас есть (по этому заданию позвонить) | 2026-07-28 08:00 A | 2026-07-28 11:00 → 2026-07-28 12:00 A |  | 0% → 100% | 164.34d → none |  |
| 702 | **2 цех** |  |  | 257d? → 249d? | 81% → 87% |  |  |
| 706 | **Дражжировка** | 2026-07-26 09:00 A → 2026-09-03 09:00 A (+39d) | 2026-07-26 11:00 A → 2026-09-10 10:00 (+46d) | 0d → 5.12d | 100% → 14% | none → 129.47d |  |
| 718 | монтаж и подключение розетки для кондиционера в кабинет ОТК |  | 2026-08-26 10:00 A → 2026-08-26 11:00 A |  |  |  |  |
| 719 | сливной шланг от кондиционеров наш кабинет и Шелепова спрятать в кабель канал 30х25 (он на складе) |  | 2026-08-26 10:00 A → 2026-08-26 11:00 A |  |  |  |  |
| 720 | сливной шланг от кондиционеров кабинет Сапелина спрятать в кабель канал 30х25 (он на складе) с 10 до 11ч | 2026-08-31 09:00 A | 2026-08-31 10:00 A |  | 0% → 100% | 137.47d → none |  |
| 722 | **дренаж кондиционеров жир и упаковка установить отдельный насос от жиров** | 2026-08-24 09:00 A | 2026-09-24 14:30 → 2026-09-24 09:30 A | 23.56d → 23.06d | 0% → 100% | 119.03d → none |  |
| 723 | заявка насос | 2026-08-24 09:00 A | 2026-08-24 09:30 A |  | 0% → 100% | 119.03d → none |  |
| 724 | контроль доставка | 2026-09-02 09:30 A | 2026-09-23 09:30 → 2026-09-24 09:30 A (+1d) |  | 0% → 100% | 119.03d → none |  |
| 728 | течь кондиционер жиры - контроль работы слива | 2026-08-31 09:00 A | 2026-08-31 09:30 A |  | 0% → 100% | 137.53d → none |  |
| 729 | контроль замена фитинги или трубки жир, устранить возможность произвольного срыва | 2026-09-03 09:00 → 2026-09-01 09:00 A (-2d) | 2026-09-03 09:30 → 2026-09-01 09:30 A (-2d) |  | 0% → 100% | 134.53d → none |  |
| 730 | **разгрузка синего накопителя, в реверс шнек + окно** |  |  | 6.12d → 5.12d |  |  |  |
| 734 | перенос розетка на стену инсекютер корридор у ОТК |  | 2026-08-15 10:00 A → 2026-08-17 10:00 A (+2d) |  |  |  |  |
| 735 | перенос инсекютер ниже на фасовке, для возможности доступа операторами | 2026-09-01 09:00 → 2026-09-04 09:00 (+3d) | 2026-09-01 10:00 → 2026-09-04 10:00 (+3d) |  |  | 136.47d → 133.47d | constraint start no earlier than 2026-09-01 09:00 → start no earlier than 2026-09-04 09:00 |
| 739 | **установить сифон ф110 в линию слива жиров** |  | 2026-08-31 11:15 → 2026-09-07 11:00 (+7d) | 16.28d → 18.25d |  | 137.31d → 132.34d |  |
| 742 | монтаж | 2026-08-31 09:15 → 2026-09-07 09:00 (+7d) | 2026-08-31 11:15 → 2026-09-07 11:00 (+7d) |  |  | 137.31d → 132.34d | constraint start no earlier than 2026-08-26 09:00 → start no earlier than 2026-09-07 09:00 |
| 743 | **установить инсекютер дополнительный на экструдер** |  | 2026-09-02 12:00 → 2026-09-07 12:00 (+5d) | 9.38d → 11.38d |  | 135.22d → 132.22d |  |
| 745 | контроль доставки | 2026-08-31 09:15 → 2026-09-01 09:15 (+1d) | 2026-08-31 09:30 → 2026-09-01 09:30 (+1d) |  |  | 137.28d → 136.16d |  |
| 746 | монтаж розетка / кабель | 2026-09-02 09:00 → 2026-09-07 09:00 (+5d) | 2026-09-02 12:00 → 2026-09-07 12:00 (+5d) |  |  | 135.22d → 132.22d | constraint start no earlier than 2026-09-02 09:00 → start no earlier than 2026-09-07 09:00 |
| 753 | монтаж каркас + обшивка |  |  | 3.34d → 2d |  |  |  |
| 754 | **установить кондиционер контролерам ОТК в 2ц** |  |  | 8.38d → 7.38d |  |  |  |
| 759 | **усиление подогрев приточной вентиляции** |  |  | 20.53d? → 19.53d? |  |  |  |
| 764 | собрать 4 стула и тумбочку. Находятся у мастера |  | 2026-08-10 12:00 A → 2026-08-10 13:00 A |  |  |  |  |
| 766 | закрыить все эл щщитки на ключь |  | 2026-08-10 09:00 A → 2026-08-10 10:00 A |  |  |  |  |
| 767 | установить отбойник склад навесок, стена мойки |  | 2026-08-10 09:00 A → 2026-08-10 10:00 A |  |  |  |  |
| 768 | **обеспечить не менее +15 зимой в зоне хранения навесок** |  | 2026-09-30 11:45 → 2026-10-01 09:45 (+1d) | 44.34d? → 42.09d? |  | 115.25d → 114.5d |  |
| 778 | **тепловые завесы в 2ц зона подачи навесок** |  | 2026-09-30 11:45 → 2026-10-01 09:45 (+1d) | 33.34d? → 33.09d? |  | 115.25d → 114.5d |  |
| 779 | **монтаж теплокалориферов** |  | 2026-09-30 11:45 → 2026-10-01 09:45 (+1d) | 20.34d? → 21.09d? |  | 115.25d → 114.5d |  |
| 781 | контроль оплаты\ | 2026-09-04 11:00 → 2026-09-07 09:00 (+3d) | 2026-09-04 11:15 → 2026-09-07 09:15 (+3d) |  |  | 115.25d → 114.5d | constraint start no earlier than 2026-08-10 08:00 → start no earlier than 2026-09-07 09:00 |

| ID | Task | Start | Finish | Duration | Complete | Total float | Predecessors | Other |
| --- | --- | --- | --- | --- | --- | --- | --- | --- |
| 782 | контроль доставки | 2026-09-25 11:15 → 2026-09-28 09:15 (+3d) | 2026-09-25 11:30 → 2026-09-28 09:30 (+3d) |  |  | 115.25d → 114.5d |  |  |
| 783 | приемка | 2026-09-28 11:30 → 2026-09-29 09:30 (+1d) | 2026-09-28 11:45 → 2026-09-29 09:45 (+1d) |  |  | 115.25d → 114.5d |  |  |
| 784 | монтаж калориферов | 2026-09-29 11:45 → 2026-09-30 09:45 (+1d) | 2026-09-30 11:45 → 2026-10-01 09:45 (+1d) |  |  | 115.25d → 114.5d |  |  |
| 785 | **монтаж кабель** |  |  | 18.38d? → 17.38d? |  |  |  |  |
| 791 | **дверь в мойку сделать герметичный притвор** |  | 2026-08-16 11:00 A → 2026-08-17 11:00 A (+1d) | 2.25d → 1.25d |  |  |  |  |
| 793 | монтаж резинки на клей |  | 2026-08-16 11:00 A → 2026-08-17 11:00 A (+1d) |  |  |  |  |  |
| 794 | **на дверь в мойку установить мощный доводчик** |  | 2026-09-03 09:15 → 2026-09-07 11:00 (+4d) | 10.03d → 11.25d | 28% → 36% | 134.56d → 132.34d |  |  |
| 800 | монтаж | 2026-09-01 09:15 → 2026-09-07 09:00 (+6d) | 2026-09-01 11:15 → 2026-09-07 11:00 (+6d) |  |  | 136.31d → 132.34d |  | constraint start no earlier than 2026-08-10 08:00 → start no earlier than 2026-09-07 09:00 |
| 801 | **пролистыватель с апликтором заказ** |  | 2026-09-21 17:15 → 2026-09-25 09:15 (+4d) | 33.91d? → 34.03d? |  | 121.69d → 118.56d |  |  |
| 803 | **согласвоание договор** |  |  | 5.02d → 3.02d |  |  |  |  |
| 807 | доставка конетроль | 2026-09-18 09:00 → 2026-09-23 09:00 (+5d) | 2026-09-18 09:15 → 2026-09-23 09:15 (+5d) |  |  | 121.97d → 118.56d |  |  |
| 808 | монтаж | 2026-09-21 09:15 → 2026-09-24 09:15 (+3d) | 2026-09-21 17:15 → 2026-09-25 09:15 (+4d) |  |  | 121.69d → 118.56d |  |  |
| 809 | **вентиляция мойка приточно-вытяжная 1ц 2 линия** |  | 2026-08-25 18:30 → 2026-08-26 10:30 (+1d) | 12d → 9.19d |  | 140.59d → 140.41d |  |  |
| 810 | монтаж вытяжной трубы в колектор. После переноса вентиляторов отключен | 2026-08-16 09:00 → 2026-08-17 09:00 (+1d) | 2026-08-16 13:00 → 2026-08-17 13:00 (+1d) |  |  | 149.09d → 147.09d |  |  |
| 814 | монтаж |  | 2026-08-25 18:30 → 2026-08-26 10:30 (+1d) |  |  | 140.59d → 140.41d |  |  |
| 815 | **выполнить обрамление двери в охладитель, что бы скрыть поверхность** |  | 2026-09-01 11:15 → 2026-09-03 11:00 (+2d) | 15.28d → 14.25d | 10% → 90% | 136.31d → 134.34d |  |  |
| 818 | монтаж | 2026-09-01 09:15 → 2026-09-03 09:00 A (+2d) | 2026-09-01 11:15 → 2026-09-03 11:00 A (+2d) |  | 0% → 100% | 136.31d → none |  | constraint start no earlier than 2026-08-26 09:00 → start no earlier than 2026-09-03 09:00; resources Некрасов А → Труфанов А |
| 819 | **ремонт осушителя компрессора 2ц** |  | 2026-09-01 10:00 → 2026-09-07 10:00 (+6d) | 19.12d → 20.12d |  | 136.47d → 132.47d |  |  |
| 820 | проверка давления фреона | 2026-09-01 09:00 → 2026-09-07 09:00 (+6d) | 2026-09-01 10:00 → 2026-09-07 10:00 (+6d) |  |  | 136.47d → 132.47d |  | constraint start no earlier than 2026-09-01 09:00 → start no earlier than 2026-09-07 09:00 |
| 830 | взять у нас в кабинете крышки (обработать) защиты на вентиляторы охладителя | 2026-09-01 09:00 → 2026-09-08 09:00 (+7d) | 2026-09-01 13:00 → 2026-09-08 13:00 (+7d) |  |  |  |  | constraint start no earlier than 2026-09-01 09:00 → start no earlier than 2026-09-08 09:00 |
| 831 | заменить резинки на красном баке (выдать, если будет остановка, поменять) | 2026-09-01 09:00 → 2026-08-31 09:00 A (-1d) | 2026-09-01 10:00 → 2026-08-31 10:00 A (-1d) |  | 0% → 100% |  |  | constraint start no earlier than 2026-09-01 09:00 → start no earlier than 2026-08-31 09:00 |
| 833 | **закрутить болты на петлях двери печи** | 2026-09-03 09:00 → 2026-09-02 09:00 A (-1d) | 2026-09-03 10:00 → 2026-09-02 10:00 A (-1d) |  | 0% → 100% | 134.47d → none |  |  |
| 834 | попробовать закрутить на винтовые заклепки | 2026-09-03 09:00 → 2026-09-02 09:00 A (-1d) | 2026-09-03 10:00 → 2026-09-02 10:00 A (-1d) |  | 0% → 100% | 134.47d → none |  | constraint start no earlier than 2026-09-03 09:00 → start no earlier than 2026-09-04 09:00 |
| 835 | установка фильтров на подачу жира (осн. + резерв) |  | 2026-08-06 10:00 A → 2026-08-06 11:00 A |  |  |  |  |  |
| 836 | эксперимент с лейкой подача жиров |  | 2026-08-06 09:00 A → 2026-08-06 10:00 A |  |  |  |  |  |
| 839 | поломоечная машинка вырезать из силикона шторку захвата воды |  | 2026-08-03 10:00 A → 2026-08-03 11:00 A |  |  |  |  |  |
| 844 | слить конденсат с компрессора |  | 2026-08-02 09:30 A → 2026-08-03 09:30 A (+1d) |  |  |  |  |  |
| 845 | **продолжить изготовление приемной горловины по аналогии 3 ц.** |  |  |  | 86% → 100% |  |  |  |
| 849 | Корректировка горловины, сделать более плотные зазоры, посмотреть по месту | 2026-09-03 09:00 → 2026-09-04 09:00 A (+1d) | 2026-09-03 11:00 → 2026-09-04 11:00 A (+1d) |  | 0% → 100% | 134.34d → none |  | constraint start no earlier than 2026-09-03 09:00 → start no earlier than 2026-09-04 09:00; resources Макаревич А; Труфанов А → Макаревич А |
| 852 | слить конденсат с компрессора |  | 2026-07-30 09:00 A → 2026-07-30 10:00 A |  |  |  |  |  |
| 859 | замерить демонтированные шнеки, заполнить ьабличку Зорькина |  | 2026-07-11 10:00 A → 2026-07-13 10:00 A (+2d) |  |  |  |  |  |
| 870 | подключение тепловой защиты на приточке и вытяжке |  | 2026-06-23 10:00 A → 2026-06-23 11:00 A |  |  |  |  |  |
| 871 | заменить фильтр приточка 2 этаж и указать кол-во остатка на складе |  | 2026-06-20 10:00 A → 2026-06-22 10:00 A (+2d) |  |  |  |  |  |
| 873 | проверка теко 0,4 -пакет запаенный |  | 2026-06-18 09:00 A → 2026-06-18 10:00 A |  |  |  |  |  |
| 875 | чистка парогенератора |  | 2026-06-18 10:00 A → 2026-06-18 11:00 A |  |  |  |  |  |
| 876 | слив конденсата с компрессора и продуть радиаторы и фильтры |  | 2026-06-20 10:00 A → 2026-06-22 10:00 A (+2d) |  |  |  |  |  |
| 884 | **ворота выход готовой продукции (прикрутить ролик, ролик у нас в кабинете)** |  | 2026-06-11 17:00 A → 2026-06-11 18:00 | 0.88d? → 1d? | 100% → 99% | none → 0d |  |  |
| 885 | выкл. Ручной режим |  | 2026-06-11 17:00 A → 2026-06-11 18:00 A |  |  |  |  |  |
| 887 | сверлить сетку от фильеры, сверлом на станке, все отверстия. |  | 2026-06-06 13:00 A → 2026-06-08 13:00 A (+2d) |  |  |  |  |  |
| 891 | законтрогаить шпильки-ножки запайщиков |  | 2026-06-06 10:00 A → 2026-06-08 10:00 A (+2d) |  |  |  |  |  |
| 892 | **нория квадропак -устранить просыпание** |  | 2026-06-04 17:00 A → 2026-06-04 18:00 A | 0.88d? → 1d? |  |  |  |  |
| 893 | добавить частоту частотника до 70 на норию |  | 2026-06-04 17:00 A → 2026-06-04 18:00 A |  |  |  |  |  |
| 902 | ж гардероб душ кабина осмотр гидрозатвор - сильный запах |  | 2026-05-30 11:00 A → 2026-06-01 11:00 A (+2d) |  |  |  |  |  |
| 903 | ремонт кресло , паук находится на складе у Веры |  | 2026-06-13 10:00 A → 2026-06-15 10:00 A (+2d) |  |  |  |  |  |
| 906 | **ремонт эл котел №3 охладитель** |  | 2026-09-01 11:00 → 2026-09-11 11:00 (+10d) | 72.25d? → 70.25d? | 90% → 91% | 136.34d → 128.34d |  |  |
| 909 | котел №3 проверка платы силовой управления тенами (после откл управления перегрелся пошел дым) на складе есть платы 2 шт. для ЗОТА. Слава плату заменил грешит на д температуры | 2026-09-01 09:00 A | 2026-09-01 11:00 A |  | 0% → 100% | 136.34d → none |  |  |
| 913 | замена | 2026-06-18 09:00 A → 2026-09-11 09:00 (+85d) | 2026-06-18 13:00 A → 2026-09-11 11:00 (+85d) | 4h → 2h | 100% → 0% | none → 128.34d | 949 → none | constraint start no earlier than 2026-06-18 09:00 → start no earlier than 2026-09-11 09:00; resources Тимофеев В → Дедов В |
| 915 | замена задних подшипников на прекондиционере (посмотреть итальянские на складе) |  |  | 7h → 6h |  |  |  |  |
| 916 | перемотать трубы скотчем серым и по низу стык улиток "загерметизировать" |  | 2026-05-25 10:00 A → 2026-05-25 11:00 A |  |  |  |  |  |
| 917 | **изготовить мойка малая из нерж** |  | 2026-06-01 12:00 A → 2026-06-01 13:00 A | 0.38d → 0.5d |  |  |  |  |
| 918 | подключить мойку на месте (по телефону обсудим) |  | 2026-06-01 12:00 A → 2026-06-01 13:00 A |  |  |  |  |  |
| 925 | лопнул шланг от насосной станции до редуктора- заменить |  | 2026-05-25 09:00 A → 2026-05-25 10:00 A |  |  |  |  |  |
| 926 | установить влагоотделитель на квадропак |  | 2026-05-25 09:00 A → 2026-05-25 10:00 A |  |  |  |  |  |
| 928 | закрепить на доп. Клипсы трубу-воздух к стене за бестромом |  | 2026-05-23 10:00 A → 2026-05-25 10:00 A (+2d) |  |  |  |  |  |
| 933 | чистка парогенератора, если нужно замена электродов |  | 2026-05-21 10:00 A → 2026-05-21 11:00 A |  |  |  |  |  |
| 934 | чистка фильтра редуктора экструдера, проверка уровня масла |  | 2026-05-21 09:00 A → 2026-05-21 10:00 A |  |  |  |  |  |
| 935 | проверить пневмоцилиндры на встряхивателях квадропака |  | 2026-05-21 09:00 A → 2026-05-21 10:00 A |  |  |  |  |  |
| 938 | в зоне фасовки сделать конструкцию, чтобы не выпадала макулатура | 2026-08-31 09:00 A | 2026-08-31 15:00 → 2026-08-31 16:00 A |  | 0% → 100% | 136.97d → none |  |  |
| 947 | **бестром замена линейный подшипник прижима красных ремней** |  |  | 30.5d → 24.5d |  |  |  |  |
| 950 | замена | 2026-06-04 09:00 A → 2026-06-18 09:00 A (+14d) | 2026-06-04 10:00 A → 2026-06-18 13:00 A (+14d) | 1h → 4h |  |  | 956 → 949 | constraint start no earlier than 2026-06-04 09:00 → start no earlier than 2026-06-18 09:00; resources Бобренок В → Тимофеев В |
| 954 | **заменить гофра унитаз правый отсек** |  |  | 20.12d → 16.12d |  |  |  |  |
| 956 | доставка |  | 2026-05-18 09:15 A → 2026-05-20 09:15 A (+2d) |  |  |  |  |  |
| 957 | замена | 2026-05-25 08:00 A → 2026-06-04 09:00 A (+10d) | 2026-05-25 11:00 A → 2026-06-04 10:00 A (+10d) | 3h → 1h |  |  | none → 956 | constraint start no earlier than 2026-05-25 08:00 → start no earlier than 2026-06-04 09:00; resources Дедов В → Бобренок В |
| 960 | прикрутить лоток выше на 1 ярусе, задевает сетку со сторону редуктора |  | 2026-05-08 09:00 A → 2026-05-08 10:00 A |  |  |  |  |  |
| 963 | добавить воду в систему отопления зота охладитель |  | 2026-05-09 10:00 A → 2026-05-11 10:00 A (+2d) |  |  |  |  |  |
| 970 | заменить фильтр на приточку 2 этаж |  | 2026-05-07 09:00 A → 2026-05-07 10:00 A |  |  |  |  |  |
| 976 | **подготовить ТРМ для парогенератора цех 2** |  |  | 0.12d → 0d |  |  |  |  |
| 979 | монтаж свет на фасовке |  | 2026-05-05 17:00 A → 2026-05-05 18:00 A |  |  |  |  |  |
| 980 | заменить кулер в ШУ на жирах |  | 2026-04-29 09:00 A → 2026-04-29 10:00 A |  |  |  |  |  |
| 982 | закрепить на подножке резинку на штабелере зона экструдера (можно на саморез/клепки) |  | 2026-04-29 09:00 A → 2026-04-29 10:00 A |  |  |  |  |  |

| ID | Task | Start | Finish | Duration | Complete | Total float | Predecessors | Other |
| --- | --- | --- | --- | --- | --- | --- | --- | --- |
| 992 | демонтаж инсектютерной ламп на очистку / продуть |  | 2026-04-27 09:00 A → 2026-04-27 10:00 A |  |  |  |  |  |
| 994 | **замена дроселя инсекцидной лампы** |  | 2026-05-25 11:00 A → 2026-05-25 12:00 A | 20.25d → 17.38d |  |  |  |  |
| 996 | замена | 2026-05-12 09:00 A → 2026-05-25 08:00 A (+13d) | 2026-05-12 10:00 A → 2026-05-25 12:00 A (+13d) | 1h → 3h |  |  |  | constraint start no earlier than 2026-05-12 09:00 → start no earlier than 2026-05-25 08:00; resources Бундин В → Дедов В |
| 997 | доставка |  | 2026-05-15 18:00 A → 2026-05-18 18:00 A (+3d) |  |  |  |  |  |
| 998 | замена | 2025-02-20 09:00 A → 2026-05-12 09:00 A (+446d) | 2025-02-20 10:00 A → 2026-05-12 10:00 A (+446d) |  |  |  | 1276 → none | constraint start no earlier than 2025-02-20 09:00 → start no earlier than 2026-05-12 09:00; resources Некрасов А → Бундин В |
| 1004 | сделать ТО Бестром (чистка тен и т.д.) |  | 2026-04-22 10:00 A → 2026-04-22 11:00 A |  |  |  |  |  |
| 1018 | **ограждение палетообмотчика** |  |  | 22.25d → 19.25d |  |  |  |  |
| 1019 | **подготовка и монтаж рамы** |  | 2026-04-27 13:00 A → 2026-04-27 16:00 A | 8.5d → 6.75d |  |  |  |  |
| 1020 | изготовить ограждения для палетообмотчика (размеры обговорим) |  | 2026-04-17 18:00 A → 2026-04-20 11:00 A (+3d) |  |  |  |  |  |
| 1021 | очистка, покраска рам ограждения. Быстросохн грунт-эмаль по ржавчине 3в1. |  | 2026-04-20 12:00 A → 2026-04-20 13:00 A |  |  |  |  |  |
| 1023 | приварить пластины под стойки ограждения и закрепить к полу, чтобы оператор был вне зоны опасности) |  | 2026-04-25 15:00 A → 2026-04-27 16:00 A (+2d) |  |  |  |  |  |
| 1024 | **обклеить рамы лентой** |  |  | 19.25d → 17.25d |  |  |  |  |
| 1026 | доставка |  | 2026-05-04 09:15 A → 2026-05-05 09:15 A (+1d) |  |  |  |  |  |
| 1028 | **монтаж сетки на раму** |  | 2026-05-04 14:15 A → 2026-05-05 09:15 A (+1d) | 10.53d → 10.03d |  |  |  |  |
| 1030 | доставка сетка |  | 2026-05-04 09:15 A → 2026-05-05 09:15 A (+1d) |  |  |  |  |  |
| 1037 | **сделать горловину на быстросъемах прекондиционер** |  |  | 4.88d? → 3.88d? |  |  |  |  |
| 1039 | установка |  | 2026-08-20 17:00 A → 2026-08-20 18:00 A |  |  |  |  |  |
| 1041 | сделать или мусоросборник на лотке выхода экструдера, или обратный лоток в сторону охдадителя (обсудим по телефону) | 2026-08-31 09:00 A | 2026-08-31 13:00 A |  | 0% → 100% | 137.09d → none |  |  |
| 1044 | починить стул Шелепову (выстучать середину и посадить на хомут) |  | 2026-04-11 10:00 A → 2026-04-13 10:00 A (+2d) |  |  |  |  |  |
| 1045 | не работает вентилятор третий справа, плохой контакт- прикрутить |  | 2026-04-10 09:00 A → 2026-04-10 10:00 A |  |  |  |  |  |
| 1046 | взять канистру со склада и сделать подачу снизу, взять сгон с канистры 2 линии (канистру я видел в гидрализатной 1 ц.) |  | 2026-04-26 10:00 A → 2026-04-27 10:00 A (+1d) |  |  |  |  |  |
| 1047 | сделать лоток под канистру рыбий жир - подача в прекондиционер |  | 2026-04-11 12:00 A → 2026-04-13 12:00 A (+2d) |  |  |  |  |  |
| 1048 | перескочила цепь на 2ом ярусе охладителя -поправить |  | 2026-04-10 09:00 A → 2026-04-10 10:00 A |  |  |  |  |  |
| 1049 | **установка фосунок - подача жира 2 линия** |  | 2026-04-30 17:25 A → 2026-04-30 18:00 A | 5.93d → 5d |  |  |  |  |
| 1052 | сборка кронштейн для фильтров + счетчик |  | 2026-04-30 13:25 A → 2026-04-30 14:25 A |  |  |  |  |  |
| 1053 | монтаж на линию фильтры + кронштейн + форсунка |  | 2026-04-30 17:25 A → 2026-04-30 18:00 A |  |  |  |  |  |
| 1062 | **установить водоподготовку на парогенератор** |  | 2026-09-04 18:00 → 2026-09-07 18:00 (+3d) | 126d? → 109d? | 2% → 3% | 132.59d → 131.59d |  |  |
| 1067 | монтаж (установка) | 2026-09-04 09:00 → 2026-09-07 09:00 (+3d) | 2026-09-04 18:00 → 2026-09-07 18:00 (+3d) | 1.12d? → 1d? |  | 132.59d → 131.59d |  | constraint start no earlier than 2026-09-04 09:00 → start no earlier than 2026-09-07 09:00 |
| 1068 | **изготовить сетку перед фильерой экструдера от костей** |  | 2026-05-01 12:15 A → 2026-05-01 18:00 A | 12.41d → 11d |  |  |  |  |
| 1070 | разместить заказ |  | 2026-04-18 12:00 A → 2026-04-20 10:00 A (+2d) |  |  |  |  |  |
| 1071 | изготовление |  | 2026-04-30 12:00 A → 2026-05-01 18:00 A (+1d) |  |  |  |  |  |
| 1076 | доставка |  | 2026-04-29 10:00 A → 2026-05-01 10:00 A (+2d) |  |  |  |  |  |
| 1077 | монтаж |  | 2026-06-13 10:00 A → 2026-06-15 10:00 A (+2d) |  |  |  |  |  |
| 1081 | закрепить шкаф управления приточной вентиляцией |  | 2026-04-01 08:30 A → 2026-04-01 09:30 A |  |  |  |  |  |
| 1082 | установить пневмо пистолеты на охладители с длинным носиком (у мастеров) |  | 2026-04-01 09:00 A → 2026-04-01 10:00 A |  |  |  |  |  |
| 1083 | утечка группа безопасности котел склад навесок устранить |  | 2026-03-31 08:30 A → 2026-03-31 09:30 A |  |  |  |  |  |
| 1085 | изготовить 2 лотка 700х400х50 мм из нерж под транспортерную ленту транспортер №1 и №2 |  | 2026-04-04 15:00 A → 2026-04-06 16:00 A (+2d) |  |  |  |  |  |
| 1088 | **замена ленты нория** |  |  | 5.5d → 4.5d |  |  |  |  |
| 1090 | подготовка кондуктора |  |  | 3h → 2h |  |  |  |  |
| 1091 | подготовить к установке норийную ленту, ковши, болты |  | 2026-03-29 00:00 A → 2026-03-31 17:00 A (+2d) |  |  |  |  |  |
| 1097 | оперативная замена шнеков |  |  | 7h → 6h |  |  |  |  |
| 1106 | ящик возле нашего кабинета- прибить или прикрутить дно |  | 2026-03-22 10:00 A → 2026-03-23 10:00 A (+1d) |  |  |  |  |  |
| 1107 | слить конденсат, почистить фильтры и продуть радиаторы |  | 2026-03-21 10:00 A → 2026-03-23 10:00 A (+2d) |  |  |  |  |  |
| 1112 | перенос отбойник ГП с стороны эл щита, что бы не входл палет |  | 2026-03-19 10:00 A → 2026-03-19 11:00 A |  |  |  |  |  |
| 1115 | выдать уплотнение на крышки прекондиционера |  | 2026-03-19 08:30 A → 2026-03-19 09:30 A |  |  |  |  |  |
| 1118 | **забивает лоток прекондиционер/экструдер, передалать** |  | 2026-09-01 14:00 → 2026-09-01 15:00 | 1.5d → 1.62d |  | 136.09d → 135.97d |  |  |
| 1120 | изготовление воронки |  | 2026-09-01 14:00 → 2026-09-01 15:00 |  |  | 136.09d → 135.97d |  |  |
| 1121 | уложить в лоток пучек управления заслонками, отвязать от батареи |  | 2026-03-17 09:00 A → 2026-03-17 10:00 A |  |  |  |  |  |
| 1122 | распред коробка подкл вентилятора которого уже нет (кондиционер №3 жиры) - облогородить |  | 2026-03-17 08:30 A → 2026-03-17 09:30 A |  |  |  |  |  |
| 1129 | **сточить острый край лотка загрузки в охладитель** |  |  | 1.12d → 0.12d |  |  |  |  |
| 1130 | вывезти люльку, вывезти бойлер, провода на жирах спрятать в коробку |  | 2026-03-15 10:00 A → 2026-03-16 10:00 A (+1d) |  |  |  |  |  |
| 1133 | **изготовить сетку после барабана по аналогии с сущ 10мм** |  | 2026-03-16 10:00 A → 2026-03-16 13:00 A | 4.12d → 2.5d |  |  |  |  |
| 1134 | на лоток загрузки в охладитель - установить доп борт с левой стороны, такой же как с правой (съемный) |  | 2026-03-15 13:00 A → 2026-03-16 13:00 A (+1d) |  |  |  |  |  |
| 1137 | изготовить кожух на шестерни прекондиционера |  | 2026-04-03 15:00 A → 2026-04-03 16:00 A |  |  |  |  |  |
| 1143 | доставка |  | 2026-05-31 09:45 A → 2026-06-04 09:45 A (+4d) |  |  |  |  |  |
| 1146 | **установить сирену при отключении автомата ПГ** |  |  | 36.12d → 28.12d |  |  |  |  |
| 1148 | доставка |  | 2026-03-23 09:30 A → 2026-03-27 09:30 A (+4d) |  |  |  |  |  |
| 1150 | **установить сирену на отключение автоматов в печи** |  | 2026-03-31 10:00 A → 2026-04-01 18:00 A (+1d) | 19.12d → 16d |  |  |  |  |
| 1152 | доставка |  | 2026-03-18 09:45 A → 2026-03-20 09:45 A (+2d) |  |  |  |  |  |
| 1154 | доставка сирены |  | 2026-03-28 18:00 A → 2026-04-01 18:00 A (+4d) |  |  |  |  |  |
| 1160 | **замена поликарбанат на перегородках металопрофилем** |  |  | 84.75d → 68.75d |  |  |  |  |
| 1163 | доставка |  | 2026-03-30 11:00 A → 2026-04-02 11:00 A (+3d) |  |  |  |  |  |
| 1164 | из металлопрофиля 3м. Обшиваем охладитель внутри и снаружи + утеплитель |  |  | 6h → 5h |  |  |  |  |
| 1167 | замена насос гидролизата |  |  | 2h → 1h |  |  |  |  |
| 1178 | **переключить освещение на автолномный выключатель, запитанный от системы освещения, а не от оборудования.** |  |  | 21.38d → 15.38d |  |  |  |  |
| 1184 | **сетки на дно печи в зип изготовить** |  |  | 14.5d → 10.5d |  |  |  |  |
| 1186 | доставка |  | 2026-03-20 10:00 A → 2026-03-24 10:00 A (+4d) |  |  |  |  |  |
| 1188 | закрепить лоток для совка с спиртом. Изготовить усилит косынку |  | 2026-03-07 11:00 A → 2026-03-09 11:00 A (+2d) |  |  |  |  |  |
| 1189 | **установить монтажную коробку квадропак. Инструктаж Шуранов по тлф** |  | 2026-03-06 09:00 A → 2026-03-06 10:00 A | 0d → 0.12d |  |  |  |  |
| 1190 | Не уходит вода в душевой кабине, посмотреть, устранить. |  | 2026-03-06 09:00 A → 2026-03-06 10:00 A |  |  |  |  |  |

| ID | Task | Start | Finish | Duration | Complete | Total float | Predecessors | Other |
| --- | --- | --- | --- | --- | --- | --- | --- | --- |
| 1197 | закреить поликарбанат по периметру |  | 2026-03-08 13:00 A → 2026-03-09 13:00 A (+1d) |  |  |  |  |  |
| 1198 | смазать ручки и шарниры дверей |  | 2026-03-08 10:00 A → 2026-03-09 10:00 A (+1d) |  |  |  |  |  |
| 1199 | **сделать ровным порог вход в мойку экструдера** |  |  | 30.5d → 23.5d |  |  |  |  |
| 1203 | доставка |  | 2026-03-14 09:30 A → 2026-03-18 09:30 A (+4d) |  |  |  |  |  |
| 1205 | востановить профлист. Проход навески экструдер. Обрезками с 3ц, цвет любой |  | 2026-03-08 14:00 A → 2026-03-09 15:00 A (+1d) |  |  |  |  |  |
| 1207 | **установить отбойники в углы проезд навесок** |  |  | 31.25d → 24.25d |  |  |  |  |
| 1209 | доставка |  | 2026-03-23 09:10 A → 2026-03-27 09:10 A (+4d) |  |  |  |  |  |
| 1211 | **наростить ножки на бестроме бункер, вместо деревянной** |  |  | 5.38d → 3.38d |  |  |  |  |
| 1215 | **увеличить освещение в зоне квадропака** |  | 2026-04-26 00:00 A → 2026-04-28 17:00 A (+2d) | 51d → 41.88d |  |  |  |  |
| 1218 | доставка |  | 2026-03-12 10:00 A → 2026-03-16 10:00 A (+4d) |  |  |  |  |  |
| 1219 | монтаж светильников зона фасовки 8 светильников, операторы помогут |  | 2026-04-26 00:00 A → 2026-04-28 17:00 A (+2d) |  |  |  |  |  |
| 1224 | **монтаж дозации жира в экструдер** |  |  | 45.25d? → 34.25d? |  | 251.34d → 234.34d |  |  |
| 1234 | Прокинуть интерфейсный кабель от черной коробочки до нового частотника на синем бункере (проложить так чтоб ни где ничего не торчало) | 2026-03-05 08:00 → 2026-03-05 09:00 | 2026-03-05 11:00 → 2026-03-05 12:00 |  |  | 290.34d → 264.22d |  |  |
| 1237 | **настройка блокировок отключения котла, если отключена приточка** |  |  | 156.25d → 130.25d | 5% → 7% |  |  |  |
| 1240 | Доставка |  | 2026-03-20 09:10 → 2026-03-24 09:10 (+4d) |  |  | 275.45d → 251.57d |  |  |
| 1241 | Замена | 2026-09-01 09:00 A | 2026-09-01 11:00 A |  | 0% → 100% | 136.34d → none |  |  |
| 1243 | **установить на охладитель ролики + скольжение трубы** |  | 2026-09-03 17:00 → 2026-09-11 18:00 (+8d) | 2.88d? → 9d? |  | 133.72d → 127.59d |  |  |
| 1245 | установить держатели труб | 2026-09-03 09:00 → 2026-09-11 09:00 (+8d) | 2026-09-03 17:00 → 2026-09-11 18:00 (+8d) |  |  | 133.72d → 127.59d |  | constraint start no earlier than 2026-09-03 09:00 → start no earlier than 2026-09-11 09:00 |
| 1246 | **установить паровопровод для очистки сетки печи на мойке парогенератором** |  |  | 10.75d → 8.75d |  |  |  |  |
| 1253 | **установка ворот шлюз в проходе вент камеры** |  |  | 144d? → 119d? |  |  |  |  |
| 1259 | доставка |  | 2026-03-12 09:30 A → 2026-03-16 09:30 A (+4d) |  |  |  |  |  |
| 1261 | **установить концевики блокировки открывания роль ворот, если не закрыты шлюз** |  |  | 130d → 109d |  |  |  |  |
| 1262 | **установить доводчики на ворота в зоне навесок** |  | 2026-06-14 11:00 A → 2026-06-15 11:00 A (+1d) | 0d → 0.25d |  |  |  |  |
| 1263 | пробурить для задвижек ворот в полу отверстия -фиксация для проезда штабелера |  | 2026-06-14 11:00 A → 2026-06-15 11:00 A (+1d) |  |  |  |  |  |
| 1266 | доставка |  | 2026-03-15 10:00 A → 2026-03-17 10:00 A (+2d) |  |  |  |  |  |
| 1270 | **схема блокировки роль ворот при открытым шлюзе + авт закрытие + датчик препятствия** |  | 2026-09-01 18:00 → 2026-09-07 13:00 (+6d) | 2d → 5.5d |  | 135.59d → 132.09d |  |  |
| 1272 | монтаж | 2026-09-01 14:00 → 2026-09-07 09:00 (+6d) | 2026-09-01 18:00 → 2026-09-07 13:00 (+6d) |  |  | 135.59d → 132.09d |  | constraint start no earlier than 2026-08-15 09:00 → start no earlier than 2026-09-07 09:00 |
| 1274 | **замена реле безопасности бойлер ж** |  |  | 98.12d → 91.12d |  |  |  |  |
| 1277 | замена | 2026-09-01 09:00 → 2025-02-20 09:00 A (-558d) | 2026-09-01 10:00 → 2025-02-20 10:00 A (-558d) |  | 0% → 100% | 136.47d → none | 1383FS+1d → 1276 | constraint start no earlier than 2026-09-01 09:00 → start no earlier than 2025-02-20 09:00; resources Бундин В → Некрасов А |
| 1283 | установить провод заземления на дверь шкафа упр сушки | 2024-01-06 09:00 → 2024-01-08 09:00 (+2d) | 2024-01-06 10:00 → 2024-01-08 10:00 (+2d) |  |  | 894.5d → 827.47d |  |  |
| 1284 | **Палетообмотчик** |  |  | 59.06d → 50.06d |  |  |  |  |
| 1286 | доставка |  | 2026-06-07 18:00 A → 2026-06-11 18:00 A (+4d) |  |  |  |  |  |
| 1289 | **разделить воду на ПГ и экструдер** | 2026-09-01 09:00 → 2026-09-04 09:00 (+3d) | 2026-09-01 11:00 → 2026-09-04 11:00 (+3d) |  |  |  |  |  |
| 1292 | **найти места утечки тепла под потолком- перемерзает труба подачи воды в 3 цех** |  | 2026-11-25 19:30 → 2026-11-26 11:30 (+1d) | 80d? → 77.31d? |  | 74.59d → 74.28d |  |  |
| 1298 | монтаж |  | 2026-11-25 19:30 → 2026-11-26 11:30 (+1d) |  |  | 74.59d → 74.28d |  |  |
| 1299 | **вентиляция** |  |  | 14.25d → 11.25d |  |  |  |  |
| 1306 | Осмотреть/устранить течь раковины возле туалета |  | 2026-07-29 09:00 A → 2026-07-29 10:00 A |  |  |  |  |  |
| 1307 | **3 цех** | 2025-08-30 09:00 A → 2025-09-01 09:00 A (+2d) |  | 320d? → 288d? |  |  |  |  |
| 1310 | заявка | 2026-07-07 09:00 A → 2026-09-04 09:00 (+59d) | 2026-07-07 10:00 A → 2026-09-04 09:15 (+59d) | 1h → 15min | 100% → 0% | none → 127.41d |  | constraint start no earlier than 2026-07-07 09:00 → start no earlier than 2026-09-04 09:00 |
| 1311 | контроль доставки | 2026-08-31 09:00 → 2026-09-11 09:15 (+11d) | 2026-08-31 09:10 → 2026-09-11 09:30 (+11d) | 10min → 15min |  | 136.45d → 127.41d | 1352FS+5d → 1310FS+5d | constraint start no earlier than 2026-08-31 09:00 → start no earlier than 2026-09-03 08:00 |
| 1312 | монтаж | 2026-09-17 09:00 → 2026-09-14 09:30 (-3d) | 2026-10-07 18:00 → 2026-09-14 10:30 (-23d) | 15d → 1h |  | 109.59d → 127.41d | 1334FS+10d → 1311FS+1d | constraint start no earlier than 2026-08-10 08:00 → start no earlier than 2026-09-03 08:00; resources Подрядчик → Некрасов А |
| 1316 | закрыить металлом 1.5мм щель стена / площадка загрузки муки. Между рольворотой и стеной с окнами |  | 2026-08-15 11:00 A → 2026-08-17 11:00 A (+2d) |  |  |  |  |  |
| 1317 | закрыть щель битумной лентой стык площадка-профлист стенка. Полоску клеить из нутри, обезжирить. |  | 2026-08-16 11:00 A → 2026-08-17 11:00 A (+1d) |  |  |  |  |  |
| 1318 | монтаж светильник в корридор / лестница на площадку жиров |  | 2026-08-16 12:00 A → 2026-08-17 12:00 A (+1d) |  |  |  |  |  |
| 1319 | **ломает гранулу после печи** |  |  | 14.5d? → 13.5d? |  |  |  |  |
| 1324 | изготовить новый отвод 90 с фланцем, учесть степеньку. Позвонить Юре | 2026-09-03 09:00 → 2026-09-04 09:00 (+1d) | 2026-09-03 13:00 → 2026-09-04 13:00 (+1d) |  |  | 134.09d → 133.09d |  | constraint start no earlier than 2026-09-03 09:00 → start no earlier than 2026-09-04 09:00 |
| 1326 | переварить фланец на угловом соединении (объясню по телефону). То же самое | 2026-09-03 09:00 → 2026-09-04 09:00 (+1d) | 2026-09-03 09:00 → 2026-09-04 09:00 (+1d) |  |  | 134.59d → 133.59d |  | constraint start no earlier than 2026-09-03 09:00 → start no earlier than 2026-09-04 09:00 |
| 1330 | **доп мощности для приточной вентиляции** |  |  | 35d? → 34d? |  |  |  |  |
| 1332 | составить ТЗ на монтаж кабеля |  | 2026-08-24 18:00 A → 2026-08-25 18:00 A (+1d) |  |  |  |  |  |
| 1335 | монтаж | 2026-07-28 09:00 A → 2026-09-17 09:00 (+51d) | 2026-07-28 13:00 A → 2026-10-07 18:00 (+71d) | 4h → 15d | 100% → 0% | none → 109.59d | 1353FS+1d → 1334FS+10d | constraint start no earlier than 2026-07-28 09:00 → start no earlier than 2026-08-10 08:00; resources Макаревич А → Подрядчик |
| 1337 | **сборка квадропака 3 цех** |  | 2026-08-19 11:00 → 2026-09-04 11:00 (+16d) | 5.25d → 15.25d | 31% → 52% | 146.34d → 133.34d |  |  |
| 1345 | подключениекомпрессор | 2026-08-17 10:00 → 2026-09-03 09:00 A (+17d) | 2026-08-17 11:00 → 2026-09-03 10:00 A (+17d) |  | 0% → 100% | 148.34d → none | подключение вводный кабель → 1344 | constraint start no earlier than 2026-08-17 09:00 → start no earlier than 2026-09-03 09:00 |
| 1351 | **карусель добавить перемычку снизу, чтобы не выпал мешок** |  | 2026-09-01 11:10 → 2026-09-07 11:00 (+6d) | 11.27d → 14.25d |  | 136.32d → 132.34d |  |  |
| 1353 | контроль доставки | 2026-07-17 10:00 A → 2026-08-31 09:00 (+45d) | 2026-07-17 10:00 A → 2026-08-31 09:10 (+45d) | 0d → 10min | 100% → 0% | none → 136.32d | 1310FS+10d → 1352FS+5d | constraint start no earlier than 2026-07-14 08:00 → start no earlier than 2026-08-31 09:00 |
| 1355 | убрать битумную ленту снаружи мезонина |  | 2026-08-04 09:00 A → 2026-08-04 10:00 A |  |  |  |  |  |
| 1356 | хорошо закрепить шланг подачи воды в прекондеционер |  | 2026-08-04 10:00 A → 2026-08-04 11:00 A |  |  |  |  |  |
| 1357 | на выходе ротаметра поменять шланг большего диаметра |  | 2026-07-31 09:00 A → 2026-07-31 10:00 A |  |  |  |  |  |
| 1359 | не набирает заданную температуру 4 зона экструдера- разобраться |  | 2026-07-30 10:00 A → 2026-07-30 11:00 A |  |  |  |  |  |
| 1361 | **установить зеркало сферическое на бункер** |  |  | 17.5d → 15.5d |  |  |  |  |
| 1362 | заявка | 2026-03-19 09:00 A → 2026-07-07 09:00 A (+110d) | 2026-03-19 09:30 A → 2026-07-07 10:00 A (+110d) | 30min → 1h |  |  |  | constraint start no earlier than 2026-03-19 09:00 → start no earlier than 2026-07-07 09:00 |
| 1363 | контроль доставки | 2026-05-31 12:00 A → 2026-07-17 10:00 A (+47d) | 2026-06-01 12:00 A → 2026-07-17 10:00 A (+46d) | 1d? → 0d |  |  | 1464 → 1362FS+10d | constraint start no earlier than 2026-05-29 09:00 → start no earlier than 2026-07-14 08:00; resources Шуранов Ю → Зорькин В |
| 1364 | монтаж | 2026-05-29 09:00 A → 2026-07-28 09:00 A (+60d) | 2026-05-29 18:00 A → 2026-07-28 13:00 A (+60d) | 1d? → 4h |  |  | none → 1363FS+1d | constraint start no earlier than 2026-05-29 09:00 → start no earlier than 2026-07-28 09:00; resources Некрасов А → Макаревич А |
| 1369 | **вода идет не стабильно** |  |  | 6.38d → 4.38d |  |  |  |  |
| 1381 | **на тепловых реле 1 и 2 смесителя добавить порог выключения** |  |  |  | 17% → 33% |  |  |  |
| 1383 | доставка контроль | 2026-08-28 09:00 A | 2026-08-28 09:15 A |  | 0% → 100% | 137.44d → none |  |  |
| 1385 | сделать ручки с резьбой для снятия матрицы экструдера |  | 2026-07-04 11:00 A → 2026-07-06 11:00 A (+2d) |  |  |  |  |  |
| 1387 | сделать откидную крышку на ножевом узле (расскажу как) |  | 2026-07-04 17:00 A → 2026-07-06 18:00 A (+2d) |  |  |  |  |  |
| 1388 | подклинивает охладитель (все ярусы)- разобраться почему |  | 2026-07-11 11:00 A → 2026-07-13 11:00 A (+2d) |  |  |  |  |  |
| 1391 | **установка частотника на шнек подачи со смесителей на ногу опоры шнека в разрыв питания шнека** |  | 2026-07-04 10:00 A → 2026-07-06 10:00 A (+2d) |  |  |  |  |  |
| 1392 | демонтировать частотник шнека (в слесарку) |  | 2026-07-04 10:00 A → 2026-07-06 10:00 A (+2d) |  |  |  |  |  |

| ID | Task | Start | Finish | Duration | Complete | Total float | Predecessors | Other |
| --- | --- | --- | --- | --- | --- | --- | --- | --- |
| 1397 | изготовить фильтры на установки охлаждения |  | 2026-07-06 17:00 → 2026-07-06 18:00 |  |  | 181.72d → 176.59d |  |  |
| 1399 | закрепить датчик сырья лопаткой в горке, под магнитом. Бункер экструдера |  | 2026-06-27 13:00 A → 2026-06-29 13:00 A (+2d) |  |  |  |  |  |
| 1400 | над магнитом сделать приемную воронку, борта, чтобы не пересыпалось сырье |  | 2026-06-27 13:00 A → 2026-06-29 13:00 A (+2d) |  |  |  |  |  |
| 1401 | удлинить воронку смесителя до горловины шнека. Приготовить сварщику, обяснить что нужно сделать. Вместо вибратора |  | 2026-06-27 13:00 A → 2026-06-29 13:00 A (+2d) |  |  |  |  |  |
| 1411 | вскрыть парогенератор, чистка электродов- фото |  | 2026-06-25 11:00 A → 2026-06-25 12:00 A |  |  |  |  |  |
| 1415 | **взять на складе у Веры кронштейн под щетку, закрепить на него саму щетку и прикрутить на мезонине навесок в сторону ворот** |  |  | 30.38d → 28.38d |  |  |  |  |
| 1423 | капает с улитки вытяжки печи- просверлить сверло 6мм |  | 2026-06-20 10:00 A → 2026-06-22 10:00 A (+2d) |  |  |  |  |  |
| 1436 | **модернизация схема ШУ жиротопки - отключается циркуляц насос при достжении температуры** |  |  | 6.5d → 5.5d |  |  |  |  |
| 1437 | изучить схему, согласовать предложения модернизации |  | 2026-06-07 10:00 A → 2026-06-08 10:00 A (+1d) |  |  |  |  |  |
| 1439 | **сборка квадропак с системой дозации** |  |  | 64.5d → 56.5d | 27% → 31% |  |  |  |
| 1440 | сборка нория |  | 2026-07-17 17:00 → 2026-07-17 18:00 |  |  | 169.72d → 166.59d |  |  |
| 1441 | сборка площадка | 2026-07-17 17:00 → 2026-07-20 09:00 (+3d) | 2026-07-20 12:00 → 2026-07-20 13:00 | 7h → 4h |  | 169.72d → 166.59d |  |  |
| 1442 | монтаж весы | 2026-07-20 12:00 → 2026-07-20 14:00 | 2026-07-20 17:00 → 2026-07-20 18:00 | 5h → 4h |  | 169.72d → 166.59d |  |  |
| 1443 | подключить квадропак / пусконаладка |  |  |  |  |  |  | resources Тимофеев В; Зорькин В → Зорькин В; Труфанов А |
| 1447 | устранить заусенцы пол площадки жиротопки. Рвет тряпку уборщица. |  | 2026-05-31 13:00 A → 2026-06-01 13:00 A (+1d) |  |  |  |  |  |
| 1448 | **востановить насос циркуляция воды на жиротопке** |  |  | 10.32d → 8.32d |  |  |  |  |
| 1449 | разборка насос / выяснить причину заклинивания |  | 2026-06-06 10:00 A → 2026-06-08 10:00 A (+2d) |  |  |  |  |  |
| 1453 | **жиротопка** |  | 2026-06-22 11:00 A → 2026-06-22 13:00 A | 10.25d → 9.5d |  |  |  |  |
| 1457 | восстановить работу пускателя на насос перекачки с бака в бак |  | 2026-06-20 13:00 A → 2026-06-22 13:00 A (+2d) |  |  |  |  |  |
| 1459 | **трасса нерж жиротопка- баки, найти утечки устранить** |  | 2026-05-23 15:00 A → 2026-05-25 16:00 A (+2d) | 0d → 0.75d |  |  |  |  |
| 1460 | заварить места утечки и восстановить утеплитель + греющий кабель |  | 2026-05-23 15:00 A → 2026-05-25 16:00 A (+2d) |  |  |  |  |  |
| 1462 | покрасить конструкцию |  | 2026-05-31 11:00 A → 2026-06-01 11:00 A (+1d) |  |  |  |  |  |
| 1464 | заказать щетку и битумную ленту |  | 2026-05-31 12:00 A → 2026-06-01 10:00 A (+1d) |  |  |  |  |  |
| 1465 | контроль доставки | 2026-08-14 09:15 A → 2026-05-31 12:00 A (-75d) | 2026-08-14 09:30 A → 2026-06-01 18:00 A (-74d) | 15min → 1d? |  |  | 1602FS+3d → 1464 | constraint start no earlier than 2026-08-10 08:00 → start no earlier than 2026-05-29 09:00; resources Зорькин В → Шуранов Ю |
| 1467 | монтаж | 2026-09-15 09:15 → 2026-05-29 09:00 A (-109d) | 2026-10-06 09:15 → 2026-05-29 18:00 A (-130d) | 15d → 1d? | 0% → 100% | 111.56d → none | 1595FS+10d → none | constraint start no earlier than 2026-08-10 08:00 → start no earlier than 2026-05-29 09:00; resources Подрядчик → Некрасов А |
| 1471 | проверить насос подачи жира со 2 бака на барабаны, Викторович его разобрал |  | 2026-05-19 10:00 A → 2026-05-19 11:00 A |  |  |  |  |  |
| 1472 | проверить рабочий или нет циркуляционный насос для змеевика на жиротопке |  | 2026-05-19 09:00 A → 2026-05-19 10:00 A |  |  |  |  |  |
| 1475 | **ремонт ворот рольставня** |  |  | 6.12d → 4.12d |  |  |  |  |
| 1481 | **автоматика управления смесителями** |  |  | 95.38d → 80.38d |  |  |  |  |
| 1482 | поменять местами переключатели управления смесителями левый что бы включал поперечный смеситель |  | 2026-07-12 11:00 A → 2026-07-13 11:00 A (+1d) |  |  |  |  |  |
| 1483 | сделать подключение красных смесителей по схеме Домоводова |  | 2026-05-19 07:00 A → 2026-05-20 16:00 A (+1d) |  |  |  |  |  |
| 1484 | доработка схемы управления смесителями по логике ТЗ, упорядочить монтаж, промаркировать соденения |  | 2026-05-04 17:00 A → 2026-05-04 18:00 A |  |  |  |  |  |
| 1486 | **установить воздуховод на 300мм на красные смесители** |  |  | 9.25d → 6.25d |  |  |  |  |
| 1491 | проверить почему не запускается приточная вентиляция в вент. Камере 7,5кВт |  | 2026-04-29 09:00 A → 2026-04-29 10:00 A |  |  |  |  |  |
| 1497 | установить отбойники на стеллажи |  | 2026-04-18 15:00 A → 2026-04-20 10:00 A (+2d) | 5h → 6h |  |  |  |  |
| 1499 | **сборка квадропак** |  | 2026-05-24 11:00 A → 2026-05-25 11:00 A (+1d) | 16d → 13.25d |  |  |  |  |
| 1501 | установить перед пневмораспределителями влагоотделитель |  | 2026-05-24 11:00 A → 2026-05-25 11:00 A (+1d) |  |  |  |  |  |
| 1503 | крепление магистрали компрессора. Зона дрожировки |  | 2026-03-08 10:00 A → 2026-03-09 10:00 A (+1d) |  |  |  |  |  |
| 1504 | Собрать транспортер тип2 (уточнить у Шуранова)/ доделать |  | 2026-03-08 12:00 A → 2026-03-09 12:00 A (+1d) |  |  |  |  |  |
| 1505 | **Покраска лестницы** |  | 2026-05-01 01:00 A → 2026-05-01 18:00 A | 53d → 43d |  |  |  |  |
| 1507 | Доставка |  | 2026-03-14 09:20 A → 2026-03-18 09:20 A (+4d) |  |  |  |  |  |
| 1510 | покарска потолок в корридоре |  | 2026-05-01 01:00 A → 2026-05-01 18:00 A |  |  |  |  |  |
| 1521 | сборка рычага | 2026-06-06 09:15 → 2026-06-08 09:15 (+2d) | 2026-06-06 14:15 → 2026-06-08 14:15 (+2d) |  |  | 207.06d → 197.06d |  |  |
| 1522 | сделать напраляшку на шибере регулируемую- сыпит в одну сторону |  | 2026-06-17 17:00 A → 2026-06-17 18:00 A |  |  |  |  |  |
| 1524 | **заменить сопряжение смесителей на гибк вставку** |  |  | 36.25d → 29.25d |  |  |  |  |
| 1525 | заявка | 2026-06-05 09:00 A → 2026-03-19 09:00 A (-78d) | 2026-06-05 10:00 A → 2026-03-19 09:30 A (-78d) | 1h → 30min |  |  |  | constraint start no earlier than 2026-06-05 09:00 → start no earlier than 2026-03-19 09:00; resources Шуранов Ю → Зорькин В |
| 1526 | доставка |  | 2026-04-04 09:30 A → 2026-04-09 09:30 A (+5d) |  |  |  | 1362 → 1525 |  |
| 1528 | **приточная вентиляция** |  |  | 52.25d → 41.25d |  | 237.34d → 222.34d |  |  |
| 1533 | монтаж перемычек от автомата на ТВ реле . Звонить Дедову |  | 2026-03-20 17:00 → 2026-03-20 18:00 |  |  | 274.72d → 252.59d |  |  |
| 1536 | тест герметичности. жиропровод нерж оборудовать греющим кабелем + утеплитель. | 2026-05-31 09:00 → 2026-06-01 09:00 (+1d) | 2026-05-31 11:00 → 2026-06-01 11:00 (+1d) |  |  | 213.34d → 202.34d |  |  |
| 1540 | подготовить отражатели тепла на подшипники печи линия 4 | 2025-08-30 09:00 → 2025-09-01 09:00 (+2d) | 2025-08-30 17:00 → 2025-09-01 18:00 (+2d) |  |  | 428.72d → 396.59d |  |  |
| 1541 | усилить раму прекондиционера |  | 2026-04-28 16:00 A → 2026-04-28 18:00 A |  |  |  |  |  |
| 1543 | труба выход пара греет шнек - переместить |  | 2026-06-19 17:00 → 2026-06-19 18:00 |  |  | 195.72d → 187.59d |  |  |
| 1547 | **Люки на колодцы** |  | 2026-06-08 11:30 → 2026-06-12 11:30 (+4d) |  |  | 205.28d → 193.28d |  |  |
| 1550 | Доставка, контроль |  | 2026-06-08 09:30 A → 2026-06-12 09:30 A (+4d) |  |  |  |  |  |
| 1551 | установка люков на колодцы | 2026-06-08 09:30 → 2026-06-12 09:30 (+4d) | 2026-06-08 11:30 → 2026-06-12 11:30 (+4d) |  |  | 205.28d → 193.28d |  |  |
| 1560 | **Дражжировка** | 2026-08-27 09:00 → 2026-07-26 09:00 A (-32d) | 2026-08-27 11:00 → 2026-07-26 11:00 A (-32d) | 0.25d → 0d | 0% → 100% | 139.34d → none |  |  |
| 1565 | реверс направления кнопок движения вперед-назад ричтрака |  | 2026-07-14 10:00 A → 2026-07-14 11:00 A |  |  |  |  |  |
| 1567 | Выяснить почему перегорают светильники |  | 2026-07-29 10:00 A → 2026-07-29 11:00 A |  |  |  |  |  |
| 1571 | замена неисправных светильников |  | 2026-03-14 17:00 A → 2026-03-16 18:00 A (+2d) |  |  |  |  |  |
| 1572 | **замена неисправных светильников** |  |  | 106.75d → 87.75d |  |  |  |  |
| 1574 | доставка |  | 2026-03-21 09:15 A → 2026-03-23 09:15 A (+2d) |  |  |  |  |  |
| 1576 | **5 цех** |  |  | 958.12d? → 891.12d? |  |  |  |  |
| 1585 | **свет в туалет передать крепление светильника** |  |  | 3.12d → 1.12d |  | 148.47d → 147.47d |  |  |
| 1587 | замена светильника / или закрепить | 2026-08-15 09:00 → 2026-08-17 09:00 (+2d) | 2026-08-15 10:00 → 2026-08-17 10:00 (+2d) |  |  | 150.47d → 147.47d |  |  |
| 1589 | трещина вибросито №2 1см ремонт |  | 2026-08-27 15:00 A → 2026-08-27 16:00 A |  |  |  |  |  |
| 1591 | **проект новая дробилка** |  |  | 33.03d → 32.03d |  |  |  |  |
| 1592 | **кабель для доп мощности** |  |  | 33.03d → 32.03d |  |  |  |  |
| 1593 | составить ТЗ на монтаж кабеля |  | 2026-08-24 18:00 A → 2026-08-25 18:00 A (+1d) |  |  |  |  |  |
| 1596 | монтаж | 2026-08-24 09:00 → 2026-09-15 09:15 (+22d) | 2026-08-24 13:00 → 2026-10-06 09:15 (+43d) | 4h → 15d |  | 142.09d → 111.56d | 1615 → 1595FS+10d | constraint start no earlier than 2026-08-24 09:00 → start no earlier than 2026-08-10 08:00; resources Некрасов А; Тимофеев В → Подрядчик |

| ID | Task | Start | Finish | Duration | Complete | Total float | Predecessors | Other |
| --- | --- | --- | --- | --- | --- | --- | --- | --- |
| 1597 | **монтаж вода в 5ц** |  | 2026-09-04 09:05 → 2026-09-09 12:00 (+5d) | 22.01d? → 22.38d? | 45% → 43% | 133.58d → 130.22d |  |  |
| 1598 | выяснить возможность обмена тройников 1+1/4-1/2 на 3/4-1/2 | 2026-08-31 09:00 → 2026-09-01 09:00 (+1d) | 2026-08-31 09:15 → 2026-09-01 09:15 (+1d) |  |  | 137.56d → 136.56d |  | constraint start no earlier than 2026-08-31 09:00 → start no earlier than 2026-09-01 09:00 |
| 1601 | **монтаж трассы по 3ц** |  |  | 6.5d → 4.5d |  |  |  |  |
| 1603 | контроль доставки | 2026-09-15 11:00 → 2026-08-14 09:15 A (-32d) | 2026-09-15 12:00 → 2026-08-14 09:30 A (-32d) | 1h → 15min | 0% → 100% | 123.22d → none | 1624FS+7d → 1602FS+3d |  |
| 1604 | монтаж продложть |  |  |  |  |  | 1465 → 1603 |  |
| 1605 | монтаж продложть |  |  |  |  |  | 1465 → 1603 |  |
| 1606 | **монтаж труба в земле между 3 и 4ц** |  | 2026-09-04 09:05 → 2026-09-09 12:00 (+5d) | 22.01d? → 22.38d? | 26% → 29% | 133.58d → 130.22d |  |  |
| 1607 | монтаж ф32 в ф40 |  |  | 5h → 4h |  |  |  |  |
| 1611 | монтаж кабеля | 2026-09-01 09:05 → 2026-09-07 09:00 (+6d) | 2026-09-02 09:05 → 2026-09-07 12:00 (+5d) | 1d? → 3h |  | 133.58d → 130.22d |  | constraint start no earlier than 2026-08-18 09:00 → start no earlier than 2026-09-07 09:00; resources Некрасов А → Некрасов А; Макаревич А |
| 1612 | монтаж щиток кабеля с УЗО | 2026-09-03 09:05 → 2026-09-08 12:00 (+5d) | 2026-09-04 09:05 → 2026-09-09 12:00 (+5d) |  |  | 133.58d → 130.22d |  | constraint start no earlier than 2026-08-24 09:00 → start no earlier than 2026-09-04 09:00 |
| 1613 | **монтаж трассы по воздуху м/д 4 и 5А** |  |  | 12.5d → 9.5d |  |  |  |  |
| 1616 | монтаж | 2026-09-16 12:00 → 2026-08-24 09:00 (-23d) | 2026-09-18 12:00 → 2026-08-24 13:00 (-25d) | 2d → 4h |  | 123.22d → 142.09d | 1603FS+1d → 1615 | constraint start no earlier than 2026-08-10 08:00 → start no earlier than 2026-08-24 09:00; resources Некрасов А → Некрасов А; Тимофеев В |
| 1618 | монтаж трассы по 4ц |  | 2026-08-18 15:00 A → 2026-08-18 16:00 A |  |  |  | 1465 → 1603 |  |
| 1620 | монтаж трассы по 5ц |  | 2026-08-24 15:00 → 2026-08-24 16:00 |  |  | 141.97d → 141.84d |  |  |
| 1621 | **монтаж тепловые пушки подвесные 5 цех** |  | 2026-09-18 12:00 → 2026-09-21 12:00 (+3d) |  |  | 123.22d → 122.22d |  |  |
| 1624 | контроль остатки нерж труба, фтинги | 2026-09-04 09:00 → 2026-09-07 09:00 (+3d) | 2026-09-04 11:00 → 2026-09-07 11:00 (+3d) |  |  | 123.22d → 122.22d |  | constraint start no earlier than 2026-09-04 09:00 → start no earlier than 2026-09-07 09:00 |
| 1625 | контроль доставки | 2026-05-29 17:45 A → 2026-09-16 11:00 (+110d) | 2026-05-29 18:00 A → 2026-09-16 12:00 (+110d) | 15min → 1h | 100% → 0% | none → 122.22d | 1678SF+15d → 1624FS+7d | constraint start no earlier than 2026-05-12 08:00 → start no earlier than 2026-08-10 08:00; resources Шуранов Ю → Зорькин В |
| 1626 | монтаж | 2026-03-28 09:15 → 2026-09-17 12:00 (+173d) | 2026-03-30 09:15 → 2026-09-21 12:00 (+175d) | 1d? → 2d |  | 266.56d → 122.22d | 1745 → 1625FS+1d | constraint start no earlier than 2026-03-17 08:00 → start no earlier than 2026-08-10 08:00; resources оплот → Некрасов А |
| 1632 | монтаж свет в туалете 3 этаж (оператора дадут в помощь) |  | 2026-08-09 15:00 A → 2026-08-10 10:00 A (+1d) | 5h → 6h |  |  |  |  |
| 1633 | прикрутить смотровые окна на дробилке, не хватает саморезов- просыпается сырье |  | 2026-08-02 10:00 A → 2026-08-03 10:00 A (+1d) |  |  |  |  |  |
| 1637 | заменаить ножи на мал дробилке |  | 2026-07-06 14:00 A → 2026-07-06 16:00 A |  |  |  |  |  |
| 1638 | заварить хомут от деко 5 ц. в слесарке |  | 2026-07-11 11:00 A → 2026-07-13 11:00 A (+2d) |  |  |  |  |  |
| 1639 | Дефектовка кнопок растаривателя, ремонт, клинит кнопку |  | 2026-07-06 08:30 A → 2026-07-06 09:30 A |  |  |  |  |  |
| 1640 | сито просечка с лазера - доплнить 4шт до 6-8 уголоков ограничителей. |  | 2026-06-26 10:00 A → 2026-06-26 11:00 A |  |  |  |  |  |
| 1641 | просечки нерж. наварить уголки, чтобы не падало внутрь |  | 2026-06-25 10:00 A → 2026-06-25 11:00 A |  |  |  |  |  |
| 1643 | развернуть ножи на большой дробилке, если не успеваем передаем по смене |  |  | 4h → 3h |  |  |  |  |
| 1653 | **востановить коробку тельфера** |  |  | 19.01d → 16.01d |  | 190.58d → 183.58d |  |  |
| 1655 | заявка | 2026-04-21 09:00 A → 2026-06-05 09:00 A (+45d) | 2026-04-21 09:30 A → 2026-06-05 10:00 A (+45d) | 30min → 1h |  |  |  | constraint start no earlier than 2026-03-31 08:00 → start no earlier than 2026-06-05 09:00; resources Зорькин В → Шуранов Ю |
| 1659 | проверка всех банок АКБ штабелера / замена неисправных |  | 2026-05-30 11:00 A → 2026-06-01 11:00 A (+2d) |  |  |  |  |  |
| 1662 | заварить растариватель №2 |  | 2026-05-25 12:00 A → 2026-05-25 13:00 A |  |  |  |  |  |
| 1665 | сделать дублирующий пост (вкл. И выкл. Смесителя) на мезонине дробилки |  | 2026-05-18 12:00 A → 2026-05-18 13:00 A |  |  |  |  |  |
| 1667 | **сборка схемы блокировки дробилки при открытом люке** |  |  | 8.25d? → 7.25d? |  |  |  |  |
| 1668 | монтаж кабель |  | 2026-05-17 13:00 A → 2026-05-18 13:00 A (+1d) |  |  |  |  |  |
| 1672 | проверка центровки мотора после замены подшипнка + замена подшипник задний |  | 2026-05-12 12:00 A → 2026-05-12 13:00 A |  |  |  |  |  |
| 1673 | заварить сито |  | 2026-05-08 10:00 A → 2026-05-08 11:00 A |  |  |  |  |  |
| 1674 | закрепить штурвал, чтобы не болтался на растаривателе 1 |  | 2026-05-08 09:00 A → 2026-05-08 10:00 A |  |  |  |  |  |
| 1675 | посмотреть компрессор (если проблема в предохранителе- то взять у меня на столе)пароль8989 |  | 2026-05-08 09:00 A → 2026-05-08 10:00 A |  |  |  |  |  |
| 1676 | проверить на 2х котлах давление в системе отопления- где нужно долить воды. И слить воду система отопления 5а цех |  | 2026-05-06 10:00 A → 2026-05-06 11:00 A |  |  |  |  |  |
| 1677 | **ремонт сито (попробовать заклеить эпоксидкой) / ремонт у производсителя** |  |  | 15d → 13d |  |  |  |  |
| 1680 | зачистить приемный бункер после дробилке болгаркой |  | 2026-04-30 09:00 A → 2026-04-30 10:00 A |  |  |  |  |  |
| 1685 | ремонт утечки |  | 2026-05-07 15:00 A → 2026-05-07 16:00 A |  |  |  |  |  |
| 1686 | заправить воду / опресовать |  | 2026-05-07 19:00 A → 2026-05-08 10:00 A (+1d) |  |  |  |  |  |
| 1689 | взять на зажима для троса на складе и натянуть трос на воротах 5а |  | 2026-04-25 11:00 A → 2026-04-27 11:00 A (+2d) |  |  |  |  |  |
| 1697 | монтаж тамбур для завоза навесок |  | 2026-04-27 18:00 → 2026-04-29 18:00 (+2d) |  |  | 241.59d → 224.59d |  |  |
| 1703 | замена паука на расстаривателе- высокие бэги не могут поднять до конца |  | 2026-04-10 09:00 A → 2026-04-10 10:00 A |  |  |  |  |  |
| 1709 | востановить ручной штурвал заслонки на растаривателе дробилки |  | 2026-04-02 09:00 A → 2026-04-02 10:00 A |  |  |  |  |  |
| 1711 | монтаж отбойников |  | 2026-04-18 15:00 A → 2026-04-20 10:00 A (+2d) | 5h → 6h |  |  |  |  |
| 1713 | вывод кнопки управления частотником на ШУ (если нужно замена частотника) с мастером согласовать остановку |  | 2026-04-20 14:00 A → 2026-04-20 15:00 A |  |  |  |  |  |
| 1716 | доставка |  | 2026-04-27 09:15 A → 2026-04-28 09:15 A (+1d) |  |  |  |  |  |
| 1719 | **замена корпус** |  | 2026-04-28 11:30 A → 2026-04-29 09:30 A (+1d) | 6.31d → 6.06d |  |  |  |  |
| 1720 | заявка | 2026-10-12 09:00 → 2026-04-21 09:00 A (-174d) | 2026-10-12 10:00 → 2026-04-21 09:30 A (-174d) | 1h → 30min | 0% → 100% | 96.47d → none |  | constraint start no earlier than 2026-10-12 09:00 → start no earlier than 2026-03-31 08:00 |
| 1721 | доставка |  | 2026-04-28 09:30 A → 2026-04-29 09:30 A (+1d) |  |  |  | 1655 → 1720 |  |
| 1725 | ремонт вибросито |  | 2026-03-27 12:00 A → 2026-03-27 13:00 A |  |  |  |  |  |
| 1727 | сделать отбойник на входную дверь |  | 2026-03-28 10:00 A → 2026-03-30 10:00 A (+2d) |  |  |  |  |  |
| 1731 | пульт управления шибером растариватель правый демонтаж красный скотч / закрепить |  | 2026-03-22 10:00 A → 2026-03-23 10:00 A (+1d) |  |  |  |  |  |
| 1732 | установить корпус на переключатель реверса шнек растаривателя правый / продуть от пыли контакты |  | 2026-03-22 09:30 A → 2026-03-23 09:30 A (+1d) |  |  |  |  |  |
| 1734 | подлючить розетку для зарядки нового АКБ для штабелера Ц.5А |  | 2026-03-21 11:00 A → 2026-03-23 11:00 A (+2d) |  |  |  |  |  |
| 1735 | **ремонт шнек с дробилки** |  |  | 14.75d → 11.75d |  |  |  |  |
| 1743 | **установить вентилятор с клапаном и фильтром** |  | 2026-03-30 09:15 → 2026-04-02 09:15 (+3d) |  |  | 266.56d → 244.56d |  |  |
| 1745 | изготовление поставка |  | 2026-03-28 09:15 → 2026-04-01 09:15 (+4d) |  |  | 266.56d → 244.56d |  |  |
| 1746 | монтаж | 2026-03-20 09:00 A → 2026-04-01 09:15 (+12d) | 2026-03-20 10:00 A → 2026-04-02 09:15 (+13d) | 1h → 1d? | 100% → 0% | none → 244.56d | 1749FS+1d → 1745 | constraint start no earlier than 2026-03-20 09:00 → start no earlier than 2026-03-17 08:00; resources Некрасов А; Труфанов А → оплот |
| 1747 | закрыть отвертстие от демонтированной аспирации фильтротканью. Временно, до изг фильтра |  | 2026-03-13 09:00 A → 2026-03-13 10:00 A |  |  |  |  |  |
| 1748 | **на отверстие от демонтированной оспирации установить фильтр** |  |  | 10.01d → 7.01d |  |  |  |  |
| 1750 | монтаж | 2026-04-14 09:00 A → 2026-03-20 09:00 A (-25d) | 2026-04-14 11:00 A → 2026-03-20 10:00 A (-25d) | 2h → 1h |  |  | 1760 → 1749FS+1d | constraint start no earlier than 2026-03-12 08:00 → start no earlier than 2026-03-20 09:00; resources Тимофеев В → Некрасов А; Труфанов А |
| 1754 | заменаить гидро АКБ на насосной станции / замена мебраны и золотника |  | 2026-03-15 11:00 A → 2026-03-16 11:00 A (+1d) |  |  |  |  |  |
| 1758 | **замена бойлер туалет** |  |  | 19.25d → 16.25d |  |  |  |  |
| 1760 | доставка |  | 2026-04-09 18:00 A → 2026-04-10 18:00 A (+1d) |  |  |  |  |  |
| 1761 | монтаж | 2026-04-04 09:30 A → 2026-04-14 09:00 A (+10d) | 2026-04-04 13:30 A → 2026-04-14 11:00 A (+10d) | 4h → 2h |  |  | 1809 → 1760 | constraint start no earlier than 2026-03-20 08:00 → start no earlier than 2026-03-12 08:00 |
| 1764 | Замена двойной розетки (созвон с Шурановым) или спросить у мастера |  | 2026-03-05 09:00 A → 2026-03-05 10:00 A |  |  |  |  |  |
| 1768 | **ремонт растаривателя №3 - клинит заслонку** |  |  | 113.81d → 97.81d | 56% → 85% |  |  |  |

| ID | Task | Start | Finish | Duration | Complete | Total float | Predecessors | Other |
| --- | --- | --- | --- | --- | --- | --- | --- | --- |
| 1772 | контроль поставки | 2026-08-31 09:00 → 2026-08-31 09:15 | 2026-08-31 09:15 → 2026-08-31 09:30 |  |  | 134.91d → 136.5d |  |  |
| 1773 | приемка | 2026-09-01 09:15 → 2026-09-01 09:30 | 2026-09-01 09:30 → 2026-09-01 09:45 |  |  | 134.91d → 136.5d |  |  |
| 1774 | замена | 2026-09-02 09:30 A | 2026-09-02 14:30 A |  | 0% → 100% | 134.91d → none |  | resources Некрасов А → Тимофеев В |
| 1779 | **установить курилку на раму. Изготовить лавочку** |  |  | 27.25d? → 19.25d? |  |  |  |  |
| 1780 | сделать удлинители для синей платформы, на которые встанет курилка |  | 2026-02-28 17:00 A → 2026-03-02 18:00 A (+2d) |  |  |  |  |  |
| 1785 | изготовить лавку по периметру курилки. На железо будет потом доска или пенка. Металл с остатков 3ц или с синего склада |  | 2026-03-01 17:00 A → 2026-03-02 18:00 A (+1d) |  |  |  |  |  |
| 1787 | ТО штабелеров - обрезать нитки. Дефектовка подшипников, указать в отчете состояние |  | 2026-03-01 11:00 A → 2026-03-02 11:00 A (+1d) |  |  |  |  |  |
| 1790 | **установить стеллажи для архив образцов** |  | 2026-04-04 13:30 A → 2026-04-07 09:30 A (+3d) | 31.5d? → 25.06d |  |  |  |  |
| 1792 | **покрасить стеллажи** |  | 2026-03-18 14:10 A → 2026-03-24 14:10 A (+6d) |  |  |  |  |  |
| 1794 | Доставка |  | 2026-03-18 14:10 A → 2026-03-24 14:10 A (+6d) |  |  |  |  |  |
| 1799 | монтаж доп полок с уголка |  | 2026-03-08 13:00 A → 2026-03-09 13:00 A (+1d) |  |  |  |  |  |
| 1800 | напилить фанеру на стеллажи |  | 2026-03-15 18:00 A → 2026-03-16 18:00 A (+1d) |  |  |  |  |  |
| 1807 | **монтаж наличноков** |  | 2026-04-04 13:30 A → 2026-04-07 09:30 A (+3d) | 10.5d → 10.06d |  |  |  |  |
| 1809 | доставка |  | 2026-04-04 09:30 A → 2026-04-07 09:30 A (+3d) |  |  |  |  |  |
| 1810 | монтаж | 2026-06-24 09:00 A → 2026-04-04 09:30 A (-81d) | 2026-06-24 17:00 A → 2026-04-06 13:00 A (-79d) | 8h → 4h |  |  | 1814 → 1809 | constraint start no earlier than 2026-06-24 09:00 → start no earlier than 2026-03-20 08:00; resources Тимофеев В; Макаревич А → Тимофеев В |
| 1811 | **монтаж розеток для весов** |  | 2026-06-24 17:00 A → 2026-06-24 18:00 A | 101.88d → 83d |  |  |  |  |
| 1814 | доставка |  | 2026-03-12 10:00 A → 2026-03-16 10:00 A (+4d) |  |  |  |  |  |
| 1816 | монтаж | 2026-03-03 09:00 → 2026-06-24 09:00 A (+113d) | 2026-03-03 13:00 → 2026-06-24 18:00 A (+113d) | 4h → 8h | 0% → 100% | 292.09d → none | none → 1814 | constraint start no earlier than 2026-03-03 09:00 → start no earlier than 2026-06-24 09:00; resources Дедов В → Тимофеев В; Макаревич А |
| 1817 | **установить кнопочный пост вентилятора в окно в доступную зону** |  | 2026-03-08 09:30 → 2026-03-10 09:30 (+2d) |  |  | 287.53d → 261.53d |  |  |
| 1819 | доставка |  | 2026-03-08 09:30 → 2026-03-10 09:30 (+2d) |  |  | 287.53d → 261.53d |  |  |
| 1820 | монтаж | 2026-10-26 10:00 → 2026-03-03 09:00 (-237d) | 2026-10-27 10:00 → 2026-03-03 13:00 (-238d) | 1d? → 4h |  | 96.47d → 266.09d | 1824 → none | constraint start no earlier than 2026-02-27 08:00 → start no earlier than 2026-03-03 09:00; resources Некрасов А; Труфанов А → Дедов В |
| 1823 | заявка | 2023-06-12 09:00 → 2026-10-12 09:00 (+1218d) | 2023-06-12 18:00 → 2026-10-12 10:00 (+1218d) | 1d? → 1h |  | 1038d → 96.47d | 2003 → none | constraint start no earlier than 2023-04-25 09:00 → start no earlier than 2026-10-12 09:00; resources Домоводов К → Зорькин В |
| 1824 | доставка |  |  |  |  |  | 1720 → 1823 |  |
| 1825 | монтаж | 2023-11-09 09:00 → 2026-10-26 10:00 (+1082d) | 2023-11-09 17:00 → 2026-10-27 10:00 (+1083d) |  |  | 935.72d → 96.47d | 1839 → 1824 | constraint start no earlier than 2023-11-09 09:00 → start no earlier than 2026-02-27 08:00; resources Дедов В → Некрасов А; Труфанов А |
| 1826 | **изготовить бункер нерж** |  |  | 83d → 74d |  |  |  |  |
| 1829 | доставка |  | 2026-05-05 18:00 A → 2026-05-06 18:00 A (+1d) |  |  |  |  |  |
| 1830 | сборка | 2026-06-06 09:00 → 2026-06-08 09:00 (+2d) | 2026-06-07 18:00 → 2026-06-09 18:00 (+2d) |  |  | 205.59d → 195.59d |  |  |
| 1837 | **установить сирену при включении тельфера** |  | 2023-11-09 17:00 → 2023-11-09 18:00 | 118.88d? → 119d? |  | 935.72d → 868.59d |  |  |
| 1840 | монтаж | 2024-04-22 09:00 → 2023-11-09 09:00 (-165d) | 2024-04-24 18:00 → 2023-11-09 18:00 (-167d) | 3d → 1d? |  | 816.59d → 868.59d | 1928 → 1839 | constraint start no earlier than 2024-04-11 09:00 → start no earlier than 2023-11-09 09:00; resources Некрасов А → Дедов В |
| 1841 | держак мешка для сбора отработанного корма лопатой, что бы второй не держал мешок |  | 2026-05-04 17:00 → 2026-05-04 18:00 |  |  | 236.72d → 221.59d |  |  |
| 1847 | Попытаться заварить деки и хомуты той проволокой по нерже, что есть у нас |  | 2026-07-28 11:00 A → 2026-07-28 12:00 A |  |  |  |  |  |
| 1853 | **модернизация** |  | 2026-09-01 13:00 → 2027-03-03 13:00 (+183d) | 911.5d? → 975.5d? | 47% → 48% | 136.09d → 5.09d |  |  |
| 1855 | **Дражжировка 2 линия 1 цех** |  | 2026-07-29 10:00 A → 2026-07-29 11:00 A | 0.12d → 0.25d |  |  |  |  |
| 1856 | установка трубки с отверстиями, эксперимент |  | 2026-07-29 10:00 A → 2026-07-29 11:00 A |  |  |  |  |  |
| 1861 | **определить параметры сушки гранулы лаб испытанием** |  |  | 8d → 6d |  |  |  |  |
| 1866 | **станция фильтрации гидролизат с еврокуба в промежут емкость. Фильтр + насос** |  |  | 35.25d → 27.25d |  |  |  |  |
| 1869 | доставка |  | 2026-03-23 11:00 A → 2026-03-27 11:00 A (+4d) |  |  |  |  |  |
| 1872 | **тест форсунки на гидролизат фильтрованный гидролизат** |  |  | 111.25d → 95.25d | 75% → 72% |  |  |  |
| 1874 | тестирование разных форсунок |  |  | 3h → 2h |  |  |  |  |
| 1875 | контроль наличия фитингов для подключения насосной фильтровальной станции к еврокубу |  |  | 60min → 30min |  |  |  |  |
| 1879 | **станция фильтраци куринный жир с еврокуба в промежут емкость. Насос + фильтр** |  | 2026-04-24 14:00 A → 2026-04-24 16:00 A | 46.5d? → 36.75d? |  |  |  |  |
| 1882 | тест насосной станцией с фильтром |  |  | 1.12d? → 1d? |  |  |  |  |
| 1883 | сборка второй станции для жира на БГ11А |  | 2026-04-24 14:00 A → 2026-04-24 16:00 A |  |  |  |  |  |
| 1884 | **мешалка гидролизата** |  | 2026-09-01 13:00 → 2026-09-02 10:00 A (+1d) | 156.5d → 131.12d | 37% → 100% | 136.09d → none |  |  |
| 1892 | конроль доставки |  | 2026-08-22 10:30 A → 2026-08-24 09:15 A (+2d) |  |  |  |  |  |
| 1893 | монтаж лебедка | 2026-08-31 09:00 A | 2026-08-31 16:00 A |  | 0% → 100% | 136.09d → none |  |  |
| 1894 | монтаж кронштейн под лебедку | 2026-08-31 16:00 A | 2026-09-01 13:00 A |  | 0% → 100% | 136.09d → none |  |  |
| 1898 | **качественное нанесение жира тесты** |  | 2026-06-04 13:00 A → 2027-03-03 13:00 A (+272d) | 84.5d? → 262.5d |  |  |  |  |
| 1904 | **монтаж форсунки в линию** |  | 2026-06-04 13:00 A → 2026-06-04 13:00 | 75.5d? → 61.5d? |  |  |  |  |
| 1905 | **тест однофазная форсунка** |  |  | 38.25d? → 30.25d? |  |  |  |  |
| 1913 | **установить фильтры жир на 1 и 2 линию** |  |  | 86.25d → 71.25d |  | 192.34d → 185.34d |  |  |
| 1918 | **ТЕКО 0,4 или 1,5 поставить пленку с БЕСТРОМА 620мм** |  |  | 10.09d → 6.09d |  |  |  |  |
| 1923 | **ручка для экструдера крутиьт мотор на 1 и 2 линию** |  | 2025-02-18 17:00 → 2025-02-18 18:00 | 151.88d? → 138d? |  | 587.72d → 535.59d |  |  |
| 1924 | изготовление |  | 2025-02-18 17:00 → 2025-02-18 18:00 |  |  | 587.72d → 535.59d |  |  |
| 1929 | монтаж | 2024-05-21 11:00 A → 2024-04-22 09:00 (-29d) | 2024-05-21 19:00 A → 2024-04-24 18:00 (-27d) | 1d → 3d | 100% → 0% | none → 749.59d | 1974 → 1928 | constraint start no earlier than 2023-12-01 09:00 → start no earlier than 2024-04-11 09:00; resources Тимофеев В → Некрасов А |
| 1937 | **установить форсунки на подачу жир и гидролизат** |  |  | 107.38d → 106.38d |  |  |  |  |
| 1947 | монгтаж |  |  | 5h → 4h |  |  |  |  |
| 1949 | **модернизация дозации воды в прекондиционер** |  | 2023-12-25 14:00 A → 2023-12-25 15:00 A | 0.5d → 0.62d |  |  |  |  |
| 1952 | установить расходомер 2 линия |  | 2023-12-25 14:00 A → 2023-12-25 15:00 A |  |  |  |  |  |
| 1953 | **заменить шланг на высоктемпературный на жир** |  | 2024-05-15 14:00 A → 2024-05-15 15:00 A | 1.5d? → 1.62d? |  |  |  |  |
| 1956 | замена |  | 2024-05-15 14:00 A → 2024-05-15 15:00 A |  |  |  |  |  |
| 1957 | **тепловая защита электромоторов мехнизмов** |  |  | 109.75d → 108.75d |  | 791.84d → 725.84d |  |  |
| 1958 | **составить список эл моторов (нужен ток ) без теплового реле - от вибросита - до упаковки вся технология** |  |  | 76.25d → 75.25d |  | 802.34d → 736.34d |  |  |
| 1972 | **конвейер с охладителя регулировка ленты - модернизация** |  | 2024-05-21 19:00 A → 2024-05-22 11:00 A (+1d) | 6d → 6.25d |  |  |  |  |
| 1975 | монтаж | 2026-06-26 09:00 A → 2024-05-21 11:00 A (-766d) | 2026-06-26 17:00 A → 2024-05-22 11:00 A (-765d) | 1d? → 1d |  |  | 2131FS+2d → 1974 | constraint start no earlier than 2026-06-26 09:00 → start no earlier than 2023-12-01 09:00 |
| 1976 | **прекондиционер забивается отслоением слипшегося сырья** |  |  | 205d? → 204d |  |  |  |  |
| 1981 | **фильтры на баки жиров перед насосами** |  |  | 454.12d → 439.12d |  |  |  |  |
| 1991 | доставка |  | 2026-03-30 10:00 → 2026-04-02 10:00 (+3d) |  |  | 266.09d → 243.97d |  |  |
| 2004 | заявка | 2026-05-13 10:00 A → 2023-06-12 09:00 (-1066d) | 2026-05-13 10:15 A → 2023-06-12 18:00 (-1066d) | 15min → 1d? | 100% → 0% | none → 970.59d | 2129 → 2003 | constraint start no earlier than 2026-04-24 08:00 → start no earlier than 2023-04-25 09:00; resources Зорькин В → Домоводов К |
| 2005 | оплата поставка |  |  |  |  | 1038d → 970.59d | 1823 → 2004 |  |

| ID | Task | Start | Finish | Duration | Complete | Total float | Predecessors | Other |
| --- | --- | --- | --- | --- | --- | --- | --- | --- |
| 2006 | сборка и монтаж |  | 2023-06-27 17:00 → 2023-06-27 18:00 |  |  | 1032.72d → 965.59d |  |  |
| 2008 | **техника** |  |  | 691.28d? → 625.28d? |  |  |  |  |
| 2010 | **капремонт погрузчика коматсу короткий** |  |  | 41.28d → 38.28d |  |  |  |  |
| 2019 | не заводиться trf погрузчик, посмотреть подачу топлива |  |  | 2h → 1h |  |  |  |  |
| 2024 | установить вентиляторы на погрузчики |  | 2026-04-27 10:00 A → 2026-04-27 11:00 A |  |  |  |  |  |
| 2027 | проварить ковш трактора в слесарке |  | 2026-03-24 12:00 A → 2026-03-24 13:00 A |  |  |  |  |  |
| 2050 | **слесарное помещение** |  |  | 65d? → 57d? |  |  |  |  |
| 2059 | **ЗИП ремонт** |  |  | 694.11d? → 628.11d? | 49% → 54% |  |  |  |
| 2065 | **заточка ножей** |  |  | 8.03d → 6.03d |  |  |  |  |
| 2070 | подготовить электроды для парогенератора цех 1 |  | 2026-08-05 12:00 A → 2026-08-05 13:00 A |  |  |  |  |  |
| 2076 | собрать 2 стула для ИТР |  | 2026-06-07 11:00 A → 2026-06-08 11:00 A (+1d) |  |  |  |  |  |
| 2080 | **заявка на фильеры от 02.06 1ц и 2ц** |  |  | 9.19d → 7.19d |  |  |  |  |
| 2082 | **партия 1** |  |  | 8.19d → 6.19d |  |  |  |  |
| 2084 | забрать заваренные / разместить на изготовление дюз |  | 2026-06-07 10:00 A → 2026-06-08 09:30 A (+1d) |  |  |  |  |  |
| 2086 | **партия 2** |  |  | 5.12d → 3.12d |  |  |  |  |
| 2089 | **зип тенов на печь 70 и 85 + шестерни питатель 70** |  |  | 37.06d → 30.06d |  |  |  |  |
| 2094 | посчитать и записать какие и какое количество автоматов и контакторов есть в слесарке |  | 2026-05-23 10:00 A → 2026-05-25 10:00 A (+2d) |  |  |  |  |  |
| 2096 | проверить работает или нет двигатель с накопительного стола цех 1- Валентин покажет. |  | 2026-05-19 09:00 A → 2026-05-19 10:00 A |  |  |  |  |  |
| 2098 | подготовка к инвентаризации (посчитать какие и метраж кабеля в слесарке и желтом нашей половине) |  | 2026-05-24 11:00 A → 2026-05-25 11:00 A (+1d) |  |  |  |  |  |
| 2107 | на емкость нерж сделать сгон и поплавок |  | 2026-05-09 13:00 A → 2026-05-11 13:00 A (+2d) |  |  |  |  |  |
| 2113 | сборка редуктор с шлюз питателя (фото в чате 14.05) | 2026-09-01 09:00 → 2026-08-31 09:00 A (-1d) | 2026-09-01 12:00 → 2026-08-31 12:00 A (-1d) |  | 0% → 100% | 136.22d → none |  | constraint start no earlier than 2026-09-01 09:00 → start no earlier than 2026-09-02 09:00 |
| 2116 | **вскрыть листогиб** |  |  | 5.5d → 4.5d |  |  |  |  |
| 2117 | проверить работу листогиба (попробовать загнуть нерж) |  | 2026-05-09 10:00 A → 2026-05-11 10:00 A (+2d) |  |  |  |  |  |
| 2128 | **ЗИП на ПГ антиэлектрод** |  | 2026-06-26 17:00 A → 2026-06-26 18:00 A | 39.88d? → 33d? |  |  |  |  |
| 2131 | контроль доставки. Карабанов размещает у свои |  |  |  |  |  | 2004FS+5d → 2130FS+5d |  |
| 2132 | монтаж | 2027-03-09 09:45 → 2026-06-26 09:00 A (-256d) | 2027-03-09 14:45 → 2026-06-26 18:00 A (-256d) | 4h → 1d? | 0% → 100% | 0d → none | none → 2131FS+2d | constraint start no earlier than 2026-08-10 08:00 → start no earlier than 2026-06-26 09:00; resources Некрасов А → Тимофеев В |
| 2133 | **ремонт шуруповерт макита** |  |  | 48d → 40d |  |  |  |  |
| 2139 | **шестерня питателя LT85** |  |  | 8.01d → 7.01d |  | 250.58d → 233.58d |  |  |
| 2140 | **1. заказ с китая** |  |  | 8.01d → 7.01d |  | 250.58d → 233.58d |  |  |
| 2143 | **2. изготовление по образцу** |  |  | 6.03d → 5.03d |  |  |  |  |
| 2151 | сборка стеллаж хранения металла |  | 2026-03-30 12:00 A → 2026-03-30 13:00 A |  |  |  |  |  |
| 2157 | **стеллаж для организации хранения металла** |  | 2026-04-06 13:00 A → 2026-04-07 13:00 A (+1d) | 12.5d → 11.5d |  |  |  |  |
| 2159 | доставка |  | 2026-04-03 13:00 A → 2026-04-06 13:00 A (+3d) |  |  |  |  |  |
| 2160 | сборка |  | 2026-04-06 13:00 A → 2026-04-07 13:00 A (+1d) |  |  |  |  |  |
| 2161 | установить крыльчатку мотор-редуктор смесителя / перенос в контейнер | 2026-09-01 09:00 → 2026-08-31 09:00 A (-1d) | 2026-09-01 09:30 → 2026-08-31 09:30 A (-1d) |  | 0% → 100% | 136.53d → none |  | constraint start no earlier than 2026-09-01 09:00 → start no earlier than 2026-09-02 09:00 |
| 2162 | **изготовить ножевой узел для 2ц** |  | 2026-03-28 09:20 A → 2026-03-31 09:10 A (+3d) | 11.04d → 10.02d |  |  |  |  |
| 2164 | изготовление |  | 2026-03-27 09:10 A → 2026-03-31 09:10 A (+4d) |  |  |  |  |  |
| 2165 | контроль |  | 2026-03-28 09:15 A → 2026-03-30 09:05 A (+2d) |  |  |  |  |  |
| 2166 | орг доставка |  | 2026-03-28 09:20 A → 2026-03-30 09:05 A (+2d) |  |  |  |  |  |
| 2167 | сгоревшие двигатели унести в контенер в коробку |  | 2026-03-15 10:00 A → 2026-03-16 10:00 A (+1d) |  |  |  |  |  |
| 2178 | **ремонт бойлер с 5ц гардероб** |  |  | 11.04d → 7.04d |  | 271.55d → 251.55d |  |  |
| 2182 | диагностика двигателей и редукторов в слесарке. Подробности Шуранов по тлф | 2026-09-01 09:00 A | 2026-09-01 11:00 A |  | 0% → 100% | 136.09d → none |  | constraint start no earlier than 2026-09-01 09:00 → start no earlier than 2026-09-02 09:00 |
| 2183 | которые в коробке с них снять крыльчатки | 2026-09-01 11:00 → 2026-09-01 09:00 A | 2026-09-01 13:00 → 2026-09-01 11:00 A |  | 0% → 100% | 136.09d → none |  |  |
| 2184 | ножевой узел 2ц заменаить подшипники. У мастера |  | 2026-03-04 09:00 A → 2026-03-04 10:00 A |  |  |  |  |  |
| 2185 | **ремонт электродов ПГ в ЗИП** |  | 2026-03-11 15:00 A → 2026-03-11 16:00 A | 3.62d → 2.75d |  |  |  |  |
| 2186 | 2шт - шт |  | 2026-03-08 15:00 A → 2026-03-09 16:00 A (+1d) |  |  |  |  |  |
| 2187 | 1шт = 2ц |  | 2026-03-11 15:00 A → 2026-03-11 16:00 A |  |  |  |  |  |
| 2194 | **быстрая замена шнеков - кондуктор для хранения и перемещения подготвленного ствола** | 2026-09-01 09:00 → 2026-09-07 09:00 (+6d) | 2026-09-03 03:00 → 2026-09-10 11:00 (+7d) | 2d → 3.25d |  | 134.59d → 129.34d |  |  |
| 2195 | проект кондуктора и траверсы перемещения ствола штабелером | 2026-09-01 09:00 → 2026-09-07 09:00 (+6d) | 2026-09-01 11:00 → 2026-09-07 11:00 (+6d) |  |  | 134.75d → 129.34d |  | constraint start no earlier than 2026-09-01 09:00 → start no earlier than 2026-09-07 09:00 |
| 2196 | сборка | 2026-09-02 11:00 → 2026-09-08 11:00 (+6d) | 2026-09-03 03:00 → 2026-09-10 11:00 (+7d) |  |  | 134.59d → 129.34d |  |  |
| 2204 | **ремонт вал в барабана жир 2л** |  |  | 158.01d → 152.01d |  | 291.58d → 265.58d |  |  |
| 2212 | сборка редуктор LT70 замена пружинные шайбы |  | 2024-09-29 17:00 A → 2024-09-30 18:00 A (+1d) |  |  |  |  |  |
| 2213 | **прорверить наличие остатков** |  | 2024-09-25 08:05 A → 2024-09-25 09:05 A | 0d → 0.01d |  |  |  |  |
| 2214 | Манжет (армированная 2,2-75*100*10 ГОСТ 8752-79) |  | 2024-09-25 08:05 A → 2024-09-25 09:05 A |  |  |  |  |  |
| 2215 | Манжет (армированная 1,2-80*105*10) |  | 2024-09-25 08:05 A → 2024-09-25 09:05 A |  |  |  |  |  |
| 2216 | Манжет (армированная 2,2-80*105*10 ГОСТ 8752-79) |  | 2024-09-25 08:05 A → 2024-09-25 09:05 A |  |  |  |  |  |
| 2217 | Манжет (армированная 2,2-55*80*10 ГОСТ 8752-79) |  | 2024-09-25 08:05 A → 2024-09-25 09:05 A |  |  |  |  |  |
| 2218 | Масло (Для швейных машин) |  | 2024-09-25 08:05 A → 2024-09-25 09:05 A |  |  |  |  |  |
| 2219 | Наконечник (ТМЛ 16-10-6 медный луженый) |  | 2024-09-25 08:05 A → 2024-09-25 09:05 A |  |  |  |  |  |
| 2220 | Наконечник (ТМЛ 10-8-5 медный луженый) |  | 2024-09-25 08:05 A → 2024-09-25 09:05 A |  |  |  |  |  |
| 2221 | Подшипник (56006-2RS (180106)SKF (30*5*10)) |  | 2024-09-25 08:05 A → 2024-09-25 09:05 A |  |  |  |  |  |
| 2222 | Подшипник (51410/ART) |  | 2024-09-25 08:05 A → 2024-09-25 09:05 A |  |  |  |  |  |
| 2223 | Подшипник (UCF 208 (40)) |  | 2024-09-25 08:05 A → 2024-09-25 09:05 A |  |  |  |  |  |
| 2224 | Подшипник (6203.LLU/2ASU1/NTN) |  | 2024-09-25 08:05 A → 2024-09-25 09:05 A |  |  |  |  |  |
| 2225 | Подшипник (22212(53512) SKF (60*110*28)) |  | 2024-09-25 08:05 A → 2024-09-25 09:05 A |  |  |  |  |  |
| 2226 | Подшипник (UC 204 (480204) (20х47х17/31)) |  | 2024-09-25 08:05 A → 2024-09-25 09:05 A |  |  |  |  |  |
| 2227 | Подшипник (6906-2RS (30*47*9)) |  | 2024-09-25 08:05 A → 2024-09-25 09:05 A |  |  |  |  |  |
| 2228 | Подшипник (6003-2RS (180103) (17*35*10)) |  | 2024-09-25 08:05 A → 2024-09-25 09:05 A |  |  |  |  |  |
| 2229 | Подшипник (6203-2RS (180203) (17*40*12)) |  | 2024-09-25 08:05 A → 2024-09-25 09:05 A |  |  |  |  |  |
| 2230 | Подшипник (6002 2RS, SKF (180102, 15*32*9)) |  | 2024-09-25 08:05 A → 2024-09-25 09:05 A |  |  |  |  |  |

| ID | Task | Start | Finish | Duration | Complete | Total float | Other |
| --- | --- | --- | --- | --- | --- | --- | --- |
| 2231 | Провод ПЩ-4 |  | 2024-09-25 08:05 A → 2024-09-25 09:05 A |  |  |  |  |
| 2232 | Ремень клиновый А-1400 |  | 2024-09-25 08:05 A → 2024-09-25 09:05 A |  |  |  |  |
| 2233 | Ремень клиновый В (Б)-1320 |  | 2024-09-25 08:05 A → 2024-09-25 09:05 A |  |  |  |  |
| 2234 | Реле (тепловое РТИ-3353 23-32А) |  | 2024-09-25 08:05 A → 2024-09-25 09:05 A |  |  |  |  |
| 2235 | Шланг (для дозирующих насосов черного цвета 6,4х9,6 мм) |  | 2024-09-25 08:05 A → 2024-09-25 09:05 A |  |  |  |  |
| 2236 | Труба гофрированная (ПВХ 25мм с протяжкой легкая серая) |  | 2024-09-25 08:05 A → 2024-09-25 09:05 A |  |  |  |  |
| 2237 | Шпонка призматическая (DIN 6885 A 18х11х 90мм) |  | 2024-09-25 08:05 A → 2024-09-25 09:05 A |  |  |  |  |
| 2238 | **прорверить остатки подшипников** |  | 2024-09-10 08:05 A → 2024-09-10 09:05 A | 0d → 0.01d |  |  |  |
| 2239 | 180101АС17/6 ГПЗ |  | 2024-09-10 08:05 A → 2024-09-10 09:05 A |  |  |  |  |
| 2240 | 180202 (6202 2RS) (15*35*11) SKF |  | 2024-09-10 08:05 A → 2024-09-10 09:05 A |  |  |  |  |
| 2241 | 180206 (6206 2RS) (30*62*16) HIKI |  | 2024-09-10 08:05 A → 2024-09-10 09:05 A |  |  |  |  |
| 2242 | 22212.EAW33C3 / SNR |  | 2024-09-10 08:05 A → 2024-09-10 09:05 A |  |  |  |  |
| 2243 | 51407/NEUTR |  | 2024-09-10 08:05 A → 2024-09-10 09:05 A |  |  |  |  |
| 2244 | 6001 ZZ.CM |  | 2024-09-10 08:05 A → 2024-09-10 09:05 A |  |  |  |  |
| 2245 | 6201.VVC3/ITJ |  | 2024-09-10 08:05 A → 2024-09-10 09:05 A |  |  |  |  |
| 2246 | 6205LLU (NTN) |  | 2024-09-10 08:05 A → 2024-09-10 09:05 A |  |  |  |  |
| 2247 | 6206. VVC3/ITJ |  | 2024-09-10 08:05 A → 2024-09-10 09:05 A |  |  |  |  |
| 2248 | 686-2RS/ART |  | 2024-09-10 08:05 A → 2024-09-10 09:05 A |  |  |  |  |
| 2249 | 7512 (32212)(60*110*24) |  | 2024-09-10 08:05 A → 2024-09-10 09:05 A |  |  |  |  |
| 2250 | HK1210/NEUTR |  | 2024-09-10 08:05 A → 2024-09-10 09:05 A |  |  |  |  |
| 2251 | UC 205 Neutr |  | 2024-09-10 08:05 A → 2024-09-10 09:05 A |  |  |  |  |
| 2252 | UCFC 210 ASAHI |  | 2024-09-10 08:05 A → 2024-09-10 09:05 A |  |  |  |  |
| 2258 | **организовать хранение зап. частей для производства в одном месте, создать склад и нести полную материальную ответственность** |  | 2024-05-31 18:00 → 2024-06-03 18:00 (+3d) | 17d? → 18d? | 11% → 15% | 788.59d → 721.59d |  |
| 2259 | монтаж забор / ворота |  | 2024-05-10 09:00 A → 2024-05-13 18:00 A (+3d) |  |  |  |  |
| 2260 | монтаж ворота, забор | 2024-05-13 09:00 → 2024-05-14 09:00 (+1d) | 2024-05-13 18:00 → 2024-05-14 18:00 (+1d) | 1.12d? → 1d? |  | 788.59d → 721.59d |  |
| 2262 | переместить стеллажи на 2 этаж ГП + сборка | 2024-05-13 18:00 → 2024-05-15 09:00 (+2d) | 2024-05-14 18:00 → 2024-05-15 18:00 (+1d) | 2d? → 1d? |  | 795.59d → 728.59d |  |
| 2263 | составить список всех позиций за забором для учета | 2024-05-14 09:00 → 2024-05-15 09:00 (+1d) | 2024-05-15 18:00 → 2024-05-16 18:00 (+1d) |  |  | 788.59d → 721.59d |  |
| 2264 | состаить список ЗИП склад 3 цех | 2024-05-16 09:00 → 2024-05-17 09:00 (+1d) | 2024-05-17 18:00 → 2024-05-20 18:00 (+3d) |  |  | 788.59d → 721.59d |  |
| 2265 | состаить список ЗИП склад слесарное помещение | 2024-05-20 09:00 → 2024-05-21 09:00 (+1d) | 2024-05-21 18:00 → 2024-05-22 18:00 (+1d) |  |  | 788.59d → 721.59d |  |
| 2266 | составить список ЗИП Контейнер | 2024-05-22 09:00 → 2024-05-23 09:00 (+1d) | 2024-05-23 18:00 → 2024-05-24 18:00 (+1d) |  |  | 788.59d → 721.59d |  |
| 2267 | перемещение ЗИП с 3 цеха на 2 этаж ГП | 2024-05-23 18:00 → 2024-05-27 09:00 (+4d) | 2024-05-27 18:00 → 2024-05-28 18:00 (+1d) | 3.88d → 2d |  | 788.59d → 721.59d |  |
| 2268 | перемещение ЗИП с контейнера на 2 этаж ГП | 2024-05-27 18:00 → 2024-05-29 09:00 (+2d) | 2024-05-29 18:00 → 2024-05-30 18:00 (+1d) | 3.88d → 2d |  | 788.59d → 721.59d |  |
| 2269 | перемещение ЗИП с слесарного помещения на 2 этаж ГП | 2024-05-29 18:00 → 2024-05-31 09:00 (+2d) | 2024-05-31 18:00 → 2024-06-03 18:00 (+3d) | 3.88d → 2d |  | 788.59d → 721.59d |  |
| 2283 | **ТО** |  | 2026-09-01 10:00 → 2026-09-10 11:00 (+9d) | 974.12d? → 914.25d? | 32% → 35% | 136.47d → 129.34d |  |
| 2284 | **1 цех** |  |  | 142.25d? → 134.25d? |  |  |  |
| 2286 | **приточная вентиляция** |  |  | 128.12d → 105.12d |  |  |  |
| 2290 | **техническая вода** |  |  | 67.06d → 55.06d |  |  |  |
| 2295 | **линия 1** |  |  | 124.12d? → 105.12d? |  |  |  |
| 2296 | **питатель экструдера** |  |  | 114.04d? → 95.04d? |  |  |  |
| 2297 | замена подшипники |  | 2026-04-08 17:00 A → 2026-04-08 18:00 A |  |  |  |  |
| 2302 | **прекондицинер экструдера** |  |  | 66.03d → 55.03d |  |  |  |
| 2305 | **парогенератор** |  |  | 105.12d → 90.12d |  |  |  |
| 2313 | **редуктор экструдера и маслянная станция** |  | 2026-09-01 10:00 → 2026-09-07 10:00 (+6d) | 695.12d → 632.12d |  | 136.47d → 132.47d |  |
| 2318 | Чистка фильтра |  | 2026-07-29 08:30 A → 2026-07-29 09:30 A |  |  |  |  |
| 2319 | **шкаф управления экструдером** |  |  | 102.03d → 86.03d |  |  |  |
| 2323 | **блок тэнов сушки** |  |  | 82.03d → 70.03d |  |  |  |
| 2326 | **шкаф управления тэнами сушки** |  | 2026-09-01 10:00 → 2026-09-07 10:00 (+6d) | 67.12d → 63.12d |  | 136.47d → 132.47d |  |
| 2328 | замена неисправных жил | 2026-09-01 09:00 → 2026-09-07 09:00 (+6d) | 2026-09-01 10:00 → 2026-09-07 10:00 (+6d) |  |  | 136.47d → 132.47d | constraint start no earlier than 2026-09-01 09:00 → start no earlier than 2026-09-07 09:00 |
| 2330 | конвейер №1 с печи в дрожировщик прорверка подшипники, реуктор | 2025-02-15 09:00 → 2025-02-17 09:00 (+2d) | 2025-02-15 09:30 → 2025-02-17 09:30 (+2d) |  |  | 591.53d → 537.53d |  |
| 2331 | **барабан смесительный дрожировка - прорверка подшипнки , реуктор** |  | 2026-07-29 08:15 A → 2026-07-29 09:15 A | 128d → 105.03d |  |  |  |
| 2332 | замена вал № 4 час |  | 2026-03-04 10:00 A → 2026-03-04 11:00 A |  |  |  |  |
| 2333 | Дефектовка - проверить подачу, вибрации, посторонние шумы. |  | 2026-07-29 08:15 A → 2026-07-29 09:15 A |  |  |  |  |
| 2337 | конвейер №2 с дрожировки в охладитель - проверка подшипники , редуктор | 2025-02-15 09:00 → 2025-02-17 09:00 (+2d) | 2025-02-15 09:30 → 2025-02-17 09:30 (+2d) |  |  | 591.53d → 537.53d |  |
| 2338 | охладитель сеточный - смазка, натяжка цепи. Проверка редуктор | 2025-02-16 09:00 → 2025-02-17 09:00 (+1d) | 2025-02-16 10:00 → 2025-02-17 10:00 (+1d) |  |  | 590.47d → 537.47d |  |
| 2344 | чистка фильтр редутор шнеков | 2025-02-16 09:00 → 2025-02-17 09:00 (+1d) | 2025-02-16 10:00 → 2025-02-17 10:00 (+1d) |  |  | 590.47d → 537.47d |  |
| 2346 | пневотранспорт роторный питатель - проверка масла | 2025-02-16 09:00 → 2025-02-17 09:00 (+1d) | 2025-02-16 09:30 → 2025-02-17 09:30 (+1d) |  |  | 590.53d → 537.53d |  |
| 2348 | привод сетки ПЕЧИ сушки - прорверка масла | 2025-02-16 09:00 → 2025-02-17 09:00 (+1d) | 2025-02-16 09:30 → 2025-02-17 09:30 (+1d) |  |  | 590.53d → 537.53d |  |
| 2350 | насос подачи жира и смесительный узел, баки подогрева протяжка | 2025-02-15 09:00 → 2025-02-17 09:00 (+2d) | 2025-02-15 10:00 → 2025-02-17 10:00 (+2d) |  |  | 591.47d → 537.47d |  |
| 2355 | **питатель экструдера** |  |  | 114.04d → 95.04d |  |  |  |
| 2362 | **прекондицинер экструдера** |  |  | 66.03d → 55.03d |  |  |  |
| 2365 | **парогенератор** |  |  | 76.12d → 65.12d |  |  |  |
| 2370 | **шкаф управления экструдером** |  |  | 121.03d → 100.03d |  |  |  |
| 2375 | **редуктор экструдера и маслянная станция** |  | 2026-07-29 08:30 A → 2026-07-29 09:30 A | 59d → 50.06d |  |  |  |
| 2380 | Чистка фильтра |  | 2026-07-29 08:30 A → 2026-07-29 09:30 A |  |  |  |  |
| 2381 | **блок тэнов сушки - протяжка** |  | 2026-09-01 10:00 → 2026-09-09 10:00 (+8d) | 86.12d → 80.12d |  | 136.47d → 130.47d |  |
| 2383 | ревизия, замена отгоревших жил, проверка токов | 2026-09-01 09:00 → 2026-09-09 09:00 (+8d) | 2026-09-01 10:00 → 2026-09-09 10:00 (+8d) |  |  | 136.47d → 130.47d | constraint start no earlier than 2026-09-01 09:00 → start no earlier than 2026-09-09 09:00 |
| 2384 | **шкаф управления тэнами сушки** |  |  | 76.03d → 65.03d |  | 146.56d → 145.56d |  |
| 2395 | электромотор экструдера раборка замена подшипников / есть шум |  | 2026-08-27 15:00 → 2026-08-27 16:00 |  |  | 138.97d → 138.84d |  |
| 2402 | **Насос гидролизата** |  | 2026-07-29 08:30 A → 2026-07-29 09:30 A | 101d → 85.06d |  |  |  |
| 2404 | Дефектовка - проверить подачу, вибрации, посторонние шумы. |  | 2026-07-29 08:30 A → 2026-07-29 09:30 A |  |  |  |  |

| ID | Task | Start | Finish | Duration | Complete | Total float | Other |
| --- | --- | --- | --- | --- | --- | --- | --- |
| 2405 | **Квадропак** |  |  | 46.5d → 38.5d |  |  |  |
| 2414 | **Парогенератор** |  |  | 8.25d → 6.25d |  | 203.34d → 195.34d |  |
| 2421 | **жиротопка и насос перекачки жира** | 2024-04-10 08:00 A → 2024-04-10 09:00 A |  | 664.03d → 600.03d |  | 163.56d → 160.56d |  |
| 2422 | блок тэнов -протяжка | 2024-04-10 08:00 → 2024-04-10 09:00 | 2024-04-10 08:30 → 2024-04-10 09:30 |  |  | 827.53d → 760.53d |  |
| 2425 | **упаковщкики** |  |  | 452.25d → 398.25d |  |  |  |
| 2426 | упаковщик ТЕКО 0,4кг |  | 2025-02-16 11:00 A → 2025-02-17 11:00 A (+1d) |  |  |  |  |
| 2428 | упаковщик НОТИС | 2025-02-16 09:00 → 2025-02-17 09:00 (+1d) | 2025-02-16 11:00 → 2025-02-17 11:00 (+1d) |  |  | 590.34d → 537.34d |  |
| 2429 | упаковщик ТЕКО 1.5кг | 2025-02-16 09:00 → 2025-02-17 09:00 (+1d) | 2025-02-16 11:00 → 2025-02-17 11:00 (+1d) |  |  | 590.34d → 537.34d |  |
| 2430 | упаковщик КВАДРОПАК | 2025-02-16 09:00 → 2025-02-17 09:00 (+1d) | 2025-02-16 11:00 → 2025-02-17 11:00 (+1d) |  |  | 590.34d → 537.34d |  |
| 2431 | нория и вибробункер КВАДРОПАК | 2025-02-16 09:00 → 2025-02-17 09:00 (+1d) | 2025-02-16 11:00 → 2025-02-17 11:00 (+1d) |  |  | 590.34d → 537.34d |  |
| 2436 | накопительный стол 1,5 | 2025-02-15 09:00 → 2025-02-17 09:00 (+2d) | 2025-02-15 11:00 → 2025-02-17 11:00 (+2d) |  |  | 591.34d → 537.34d |  |
| 2437 | накопительный стол 0,4 | 2025-02-15 09:00 → 2025-02-17 09:00 (+2d) | 2025-02-15 11:00 → 2025-02-17 11:00 (+2d) |  |  | 591.34d → 537.34d |  |
| 2439 | **электрооборудование** |  | 2026-08-29 10:00 → 2026-08-31 10:00 (+2d) | 694d? → 627.12d? |  | 137.59d → 137.47d |  |
| 2446 | **Компрессор 1 цех** |  | 2026-08-29 10:00 → 2026-08-31 10:00 (+2d) | 69d? → 60.12d? |  | 137.59d → 137.47d |  |
| 2447 | продувка радиаторов осушителя и компрессора, слив конденсата |  | 2026-06-07 10:00 A → 2026-06-08 10:00 A (+1d) |  |  |  |  |
| 2448 | продувка радиаторов осушителя и компрессора, слив конденсата |  | 2026-08-29 10:00 A → 2026-08-31 10:00 A (+2d) |  |  |  |  |
| 2466 | **2 цех** |  | 2026-08-29 09:30 → 2026-09-10 11:00 (+12d) | 973d? → 914.25d? | 54% → 59% | 137.59d → 129.34d |  |
| 2468 | **линия 3** |  | 2026-08-27 10:00 → 2026-09-03 09:30 (+7d) | 971.12d? → 909.06d? | 94% → 98% | 139.47d → 134.53d |  |
| 2469 | **прекондицинер экструдера** |  | 2026-08-20 09:15 → 2026-09-03 09:15 (+14d) | 676.03d? → 620.03d? | 99% → 98% | 145.56d → 134.56d |  |
| 2470 | замена заднего подшипника ведомый вал |  | 2026-05-26 17:00 A → 2026-05-26 18:00 A |  |  |  |  |
| 2474 | шприцевание подшипников |  | 2026-05-21 09:00 A → 2026-05-21 10:00 A |  |  |  |  |
| 2482 | **парогенератор** |  | 2026-08-19 10:00 → 2026-09-03 09:20 A (+15d) | 675d → 619.92d | 92% → 100% | 146.47d → none |  |
| 2494 | Чистка | 2026-08-19 09:00 A | 2026-08-19 10:00 A |  | 0% → 100% | 146.47d → none |  |
| 2497 | **привод сетки ПЕЧИ сушки** |  |  | 676.04d → 610.04d | 89% → 90% | 145.55d → 144.55d |  |
| 2498 | прорверка масла редуктор / натяжка цепи/ ремень |  | 2024-04-18 08:30 A → 2024-04-18 09:30 A |  |  |  |  |
| 2504 | прорверка масла редуктор / натяжка цепи/ ремень/осмотр сетки | 2026-08-20 09:00 A | 2026-08-20 09:20 A |  | 0% → 100% | 145.55d → none |  |
| 2506 | **блок тэнов сушки** |  |  | 669.12d → 605.12d |  |  |  |
| 2507 | вскрыть все блоки |  | 2024-04-18 09:00 A → 2024-04-18 10:00 A |  |  |  |  |
| 2513 | **смеситель СМ-1500** |  | 2026-08-27 10:00 → 2026-09-03 09:15 (+7d) | 151.12d → 130.03d | 78% → 86% | 139.47d → 134.56d |  |
| 2515 | контроль масла | 2026-03-05 09:00 A | 2026-03-05 09:15 A |  | 0% → 100% | 290.56d → none |  |
| 2517 | контроль масла | 2026-07-30 09:00 A | 2026-07-30 09:15 A |  | 0% → 100% | 162.56d → none |  |
| 2521 | **нория 2 выгрузки смесителя** |  | 2026-08-13 09:10 → 2026-09-03 09:30 A (+21d) | 138.02d → 130.06d | 84% → 100% | 152.57d → none |  |
| 2523 | Осмотр подшипников/смазка по необходимости | 2026-07-30 09:00 A | 2026-07-30 09:30 A |  | 0% → 100% | 162.53d → none |  |
| 2529 | **бункер-накопитель с шнековой разкгрузкой синий** |  | 2026-08-13 10:00 A → 2026-09-03 09:05 A (+21d) | 76.12d → 80.01d |  |  |  |
| 2534 | **питатель экструдера** |  | 2026-08-27 11:00 → 2026-09-03 10:00 A (+7d) | 130.25d → 115.12d | 60% → 100% | 139.34d → none |  |
| 2535 | замена сальников питателя, сыпит муку | 2026-07-22 09:00 A | 2026-07-22 13:00 A |  | 0% → 100% | 168.09d → none |  |
| 2537 | ревизия подшипников, редутора, привода. Разборка/сборка (нужно разбирать) | 2026-08-19 09:00 A | 2026-08-19 10:00 A |  | 0% → 100% | 146.47d → none |  |
| 2538 | замена шетсерен и подшипников узла. Поставили новый комплект |  | 2026-04-03 12:00 A → 2026-04-03 13:00 A |  |  |  |  |
| 2539 | ревизия шестерни мал редуктора | 2026-04-16 09:00 A | 2026-04-16 10:00 A |  | 0% → 100% | 251.47d → none |  |
| 2543 | **привод прекондиционера** |  | 2026-03-05 09:30 A → 2026-09-03 09:30 A (+182d) | 0.06d → 130.06d |  |  |  |
| 2548 | **мотор-редуктор привод шнеков** | 2026-08-20 09:00 A | 2026-08-20 11:00 → 2026-09-03 09:10 (+14d) | 0.25d → 10.02d | 0% → 8% | 145.34d → 134.57d |  |
| 2551 | **редуктор шнеков экструдера - проверка масла** |  | 2026-08-20 09:15 → 2026-09-03 09:15 A (+14d) | 444.03d → 403.03d | 94% → 100% | 145.56d → none |  |
| 2556 | чистка фильтра редуктора |  | 2026-08-06 08:30 A → 2026-08-06 09:30 A |  |  |  |  |
| 2562 | чистка фильтра редуктора | 2026-08-20 09:00 A | 2026-08-20 09:15 A |  | 0% → 100% | 145.56d → none |  |
| 2564 | **шкаф управления экструдером** |  | 2026-08-20 09:10 → 2026-09-03 09:10 A (+14d) | 145.02d → 130.02d | 86% → 100% | 145.57d → none |  |
| 2572 | продувка частотного привода | 2026-08-20 09:00 A | 2026-08-20 09:10 A |  | 0% → 100% | 145.57d → none |  |
| 2574 | **пневотранспорт роторный питатель** |  | 2026-08-27 09:20 → 2026-09-03 09:20 (+7d) | 137.04d → 120.04d | 39% → 48% | 139.55d → 134.55d |  |
| 2579 | **печь - валы этажей, подшипники, цепи** |  | 2026-08-20 09:30 → 2026-09-03 09:30 A (+14d) | 131.06d → 120.06d | 86% → 100% | 145.53d → none |  |
| 2583 | натяжка цепей, контроль привода | 2026-08-20 09:00 → 2026-09-03 09:00 A (+14d) | 2026-08-20 09:30 → 2026-09-03 09:30 A (+14d) |  | 0% → 100% | 145.53d → none | constraint start no earlier than 2026-08-20 09:00 → start no earlier than 2026-09-03 09:00; resources Дедов В → Труфанов А |
| 2584 | **вентиляторы обдува сушки** | 2026-03-05 09:00 A → 2026-03-05 09:00 |  |  |  | 289.59d → 0d |  |
| 2587 | **шкаф управления тэнами сушки главный** |  | 2026-08-20 09:10 → 2026-09-03 09:10 (+14d) | 145.02d → 130.02d | 85% → 89% | 145.57d → 134.57d |  |
| 2593 | продуть, протяжка контактов |  | 2026-05-21 09:00 A → 2026-05-21 10:00 A |  |  |  |  |
| 2596 | продувка | 2026-08-20 09:00 → 2026-09-03 09:00 A (+14d) | 2026-08-20 09:10 → 2026-09-03 09:10 A (+14d) |  | 0% → 100% | 145.57d → none | constraint start no earlier than 2026-08-20 09:00 → start no earlier than 2026-09-03 09:00; resources Дедов В → Труфанов А |
| 2597 | **шкаф управления тэнами твердотельный** |  | 2026-08-20 09:10 → 2026-09-03 09:10 A (+14d) | 145.02d → 130.02d | 88% → 100% | 145.57d → none |  |
| 2603 | продувка, протяжка | 2026-08-20 09:00 → 2026-09-03 09:00 A (+14d) | 2026-08-20 09:10 → 2026-09-03 09:10 A (+14d) |  | 0% → 100% | 145.57d → none | constraint start no earlier than 2026-08-20 09:00 → start no earlier than 2026-09-03 09:00; resources Дедов В → Труфанов А |
| 2604 | **конвейер №1 с печи в дрожировщик** |  | 2026-08-13 09:15 A → 2026-09-03 09:30 A (+21d) | 138.03d → 130.06d |  |  |  |
| 2609 | ревизия люфтов, фиксации смазки подшипников | 2026-03-05 09:00 A → 2026-09-03 09:00 A (+182d) | 2026-03-05 09:30 A → 2026-09-03 09:30 A (+182d) |  |  |  | constraint start no earlier than 2026-03-05 09:00 → start no earlier than 2026-09-03 09:00 |
| 2610 | ослабить ленту для чистки барабана / натяжка после чистки | 2026-03-05 09:00 A → 2026-09-03 09:00 A (+182d) | 2026-03-05 09:30 A → 2026-09-03 09:10 A (+182d) | 30min → 10min |  |  | constraint start no earlier than 2026-03-05 09:00 → start no earlier than 2026-09-03 09:00 |
| 2611 | **барабан смесительный дрожировка** |  | 2026-08-13 09:15 → 2026-09-03 09:15 (+21d) | 749.03d → 700.03d | 81% → 82% | 152.56d → 134.56d |  |
| 2621 | **Узел подачи гидролизата** |  | 2026-08-13 09:20 A → 2026-09-03 09:10 A (+21d) | 22.04d → 37.02d |  |  |  |
| 2625 | **конвейер №2 с дрожировки в охладитель** |  | 2026-08-13 09:15 A → 2026-09-03 09:30 A (+21d) | 138.03d → 130.06d |  |  |  |
| 2626 | ослабить ленту для чистки барабана / натяжка после чистки | 2026-03-12 09:00 A → 2026-03-05 09:00 A (-7d) | 2026-03-12 09:10 A → 2026-03-05 09:30 A (-7d) | 10min → 30min |  |  | constraint start no earlier than 2026-03-12 09:00 → start no earlier than 2026-03-05 09:00 |
| 2628 | ослабить ленту для чистки барабана / натяжка после чистки | 2026-08-12 09:00 → 2026-03-12 09:00 A (-153d) | 2026-08-12 09:15 → 2026-03-12 09:10 A (-153d) | 15min → 10min | 0% → 100% | 153.56d → none | constraint start no earlier than 2026-08-12 09:00 → start no earlier than 2026-03-12 09:00 |
| 2631 | ослабить ленту для чистки барабана / натяжка после чистки | 2026-03-12 09:00 A → 2026-09-03 09:00 A (+175d) | 2026-03-12 09:10 A → 2026-09-03 09:30 A (+175d) | 10min → 30min |  |  | constraint start no earlier than 2026-03-12 09:00 → start no earlier than 2026-09-03 09:00; resources Бундин В → Тимофеев В |
| 2632 | **охладитель сеточный** |  | 2026-08-20 18:00 → 2026-09-10 10:00 (+21d) | 677d? → 625.12d? | 42% → 40% | 144.59d → 129.47d |  |
| 2647 | **конвейер 3 с охладителя в упаковку** | 2026-08-12 09:00 A | 2026-08-12 09:15 → 2026-09-03 09:15 A (+22d) | 0.03d → 16.03d | 0% → 100% | 153.56d → none |  |
| 2649 | ревизия люфтов, фиксации, смазки подшипников | 2026-08-12 09:00 A | 2026-08-12 09:15 A |  | 0% → 100% | 153.56d → none |  |
| 2651 | **упаковка** |  | 2026-06-18 11:00 → 2026-09-03 11:00 (+77d) | 704.25d → 700.25d | 50% → 67% | 197.34d → 134.34d |  |
| 2658 | **квадропак** | 2026-08-27 09:00 A | 2026-08-27 11:00 → 2026-09-10 11:00 (+14d) | 0.25d → 10.25d | 0% → 18% | 139.34d → 129.34d |  |
| 2667 | **БЕСТРОМ** |  | 2026-08-20 10:00 → 2026-09-10 09:30 (+21d) | 756.12d → 705.06d | 61% → 71% | 145.47d → 129.53d |  |

| ID | Task | Start | Finish | Duration | Complete | Total float | Predecessors | Other |
| --- | --- | --- | --- | --- | --- | --- | --- | --- |
| 2676 | бестром чистка тен, проверка тефлона, роликов (согласовать с мастером) | 2026-08-20 09:00 A | 2026-08-20 10:00 A |  | 0% → 100% | 145.47d → none |  |  |
| 2681 | **электрооборудование** | 2023-12-28 09:00 A | 2024-10-03 09:30 → 2026-09-03 09:10 (+700d) | 206.06d? → 700.02d? |  | 695.53d → 134.57d |  |  |
| 2702 | **Компрессор 2 цех** |  | 2026-08-29 09:30 A → 2026-09-10 09:30 (+12d) | 20d → 25.06d | 100% → 88% | none → 129.53d |  |  |
| 2706 | продувка фильтров |  | 2026-08-29 09:30 A → 2026-08-31 09:30 A (+2d) |  |  |  |  |  |
| 2707 | слив конденсат с осушителя |  | 2026-08-29 09:30 A → 2026-08-31 09:30 A (+2d) |  |  |  |  |  |
| 2708 | слив конденсат с осушителя |  | 2026-08-29 09:30 A → 2026-08-31 09:30 A (+2d) |  |  |  |  |  |
| 2711 | **насосная станция 2 цех** |  | 2026-08-27 09:30 → 2026-09-03 09:30 (+7d) | 151.06d → 130.06d |  | 139.53d → 134.53d |  |  |
| 2716 | **кондиционер 1** |  | 2026-08-20 09:20 → 2026-09-03 09:20 A (+14d) | 676.04d? → 620.04d? | 97% → 100% | 145.55d → none |  |  |
| 2719 | чистка фильтров |  | 2026-06-25 17:00 A → 2026-06-25 18:00 A |  |  |  |  |  |
| 2722 | чистка фильтров | 2026-08-20 09:00 → 2026-09-03 09:00 A (+14d) | 2026-08-20 09:20 → 2026-09-03 09:20 A (+14d) |  | 0% → 100% | 145.55d → none |  | constraint start no earlier than 2026-08-20 09:00 → start no earlier than 2026-09-03 09:00 |
| 2723 | **кондиционер 2** |  | 2026-08-20 09:20 → 2026-09-03 09:20 A (+14d) | 676.04d? → 620.04d? | 97% → 100% | 145.55d → none |  |  |
| 2724 | чистка фильтров |  | 2026-06-25 17:00 A → 2026-06-25 18:00 A |  |  |  |  |  |
| 2730 | чистка фильтров | 2026-08-20 09:00 → 2026-09-03 09:00 A (+14d) | 2026-08-20 09:20 → 2026-09-03 09:20 A (+14d) |  | 0% → 100% | 145.55d → none |  | constraint start no earlier than 2026-08-20 09:00 → start no earlier than 2026-09-03 09:00 |
| 2731 | **кондиционер 3** |  | 2026-08-20 09:20 → 2026-09-03 09:20 A (+14d) | 145.04d → 130.04d | 80% → 100% | 145.55d → none |  |  |
| 2736 | чистка фильтров | 2026-08-20 09:00 → 2026-09-03 09:00 A (+14d) | 2026-08-20 09:20 → 2026-09-03 09:20 A (+14d) |  | 0% → 100% | 145.55d → none |  | constraint start no earlier than 2026-08-20 09:00 → start no earlier than 2026-09-03 09:00 |
| 2752 | **5 цех** |  |  | 717.25d? → 656.25d? |  | 184.34d → 178.34d |  |  |
| 2755 | **шнек 1 растариватель-смеситель** |  |  | 78.25d → 65.25d |  |  |  |  |
| 2760 | **шнек 2 смеситель -дробилка** |  |  | 81.5d? → 68.5d? |  | 190.09d → 183.09d |  |  |
| 2763 | **дробилка ДМС3** | 2026-05-10 09:00 → 2026-05-11 09:00 (+1d) | 2026-05-10 13:00 → 2026-05-11 13:00 (+1d) |  |  | 232.09d → 217.09d |  |  |
| 2764 | замена подшипник буксы сторона мотора | 2026-05-10 09:00 → 2026-05-11 09:00 (+1d) | 2026-05-10 13:00 → 2026-05-11 13:00 (+1d) |  |  | 232.09d → 217.09d |  |  |
| 2791 | **синий склад** |  | 2026-09-04 18:00 → 2026-09-07 18:00 (+3d) | 102d → 88d | 33% → 34% | 132.59d → 131.59d |  |  |
| 2793 | монтаж включателя света с улицы, возле вход. Двери | 2026-09-04 09:00 → 2026-09-07 09:00 (+3d) | 2026-09-04 12:00 → 2026-09-07 12:00 (+3d) |  |  | 133.22d → 132.22d |  | constraint start no earlier than 2026-09-04 09:00 → start no earlier than 2026-09-07 09:00 |
| 2795 | замерить диаметр крыльчатки двигателя экструдера, инфу передать мне |  | 2026-06-13 10:00 A → 2026-06-15 10:00 A (+2d) |  |  |  |  |  |
| 2797 | монтаж секции стеллажа | 2026-09-04 09:00 → 2026-09-07 09:00 (+3d) | 2026-09-04 18:00 → 2026-09-07 18:00 (+3d) | 9h → 8h |  | 132.59d → 131.59d |  | constraint start no earlier than 2026-09-04 09:00 → start no earlier than 2026-09-07 09:00 |
| 2800 | **хим лаб** |  |  | 716.25d? → 652.25d? |  |  |  |  |
| 2805 | **ремонт бойлер вода - ПУН** |  |  | 12.25d → 10.25d |  |  |  |  |
| 2806 | замена из ЗИП |  | 2026-05-14 09:00 A → 2026-05-14 10:00 A |  |  |  |  |  |
| 2807 | диагностика неисправности. Бойлер в слесарне |  | 2026-05-14 09:00 A → 2026-05-14 10:00 A |  |  |  |  |  |
| 2811 | **ремонт дистилятор** |  | 2026-06-06 02:00 A → 2026-06-08 18:00 A (+2d) | 35d? → 31d? |  |  |  |  |
| 2814 | замена. Больше не выбиывает |  | 2026-06-06 02:00 A → 2026-06-08 18:00 A (+2d) |  |  |  |  |  |
| 2815 | **ремонт АКВ_шесть** |  |  | 35d? → 30d? |  |  |  |  |
| 2818 | замена |  | 2026-05-24 11:00 A → 2026-05-25 11:00 A (+1d) |  |  |  |  |  |
| 2823 | замена 2 вентилятора |  | 2024-01-16 12:00 A → 2024-01-16 13:00 A |  |  |  |  |  |
| 2824 | ремонт соленоид |  | 2024-01-16 10:00 A → 2024-01-16 11:00 A |  |  |  |  |  |
| 2825 | ремонт вытяжка №2 диагностика вентилятор |  | 2024-01-11 08:30 A → 2024-01-11 09:30 A |  |  |  |  |  |
| 2826 | замена насос " агрегат |  | 2024-01-11 09:00 A → 2024-01-11 10:00 A |  |  |  |  |  |
| 2828 | **цех наполнителей** |  |  | 210.12d → 194.12d |  |  |  |  |
| 2835 | **офис** |  | 2026-09-04 13:00 → 2026-09-08 11:00 (+4d) | 977.5d? → 912.25d? |  | 133.09d → 131.34d |  |  |
| 2838 | собрать аккуратно стеллаж для Буслаева (стеллаж на складе у Веры, подписан буквами ГД, мечковская) |  | 2026-06-13 12:00 A → 2026-06-15 12:00 A (+2d) |  |  |  |  |  |
| 2841 | **полка мебельная** |  |  | 30.12d → 25.12d |  |  |  |  |
| 2852 | протянуть кабель UTP от кабинета Курдюмовой до переговорки |  |  | 3h → 2h |  |  |  |  |
| 2853 | убрать шнурок у Курдюмовой в кабинете |  | 2026-04-17 09:00 A → 2026-04-17 10:00 A |  |  |  |  |  |
| 2854 | ремонт кровля над каб Курдюмовой |  | 2026-07-07 18:00 A → 2026-07-10 18:00 A (+3d) |  |  |  |  |  |
| 2855 | ремонт крепеж пано каб продаж |  | 2026-03-24 09:00 A → 2026-03-24 10:00 A |  |  |  |  |  |
| 2858 | выбивает автомат у Монича, нет селективности, замена автоматов. Ремонт освещения корридор | 2026-09-04 09:00 → 2026-09-07 09:00 (+3d) | 2026-09-04 13:00 → 2026-09-07 13:00 (+3d) |  |  | 133.09d → 132.09d |  | constraint start no earlier than 2026-09-04 09:00 → start no earlier than 2026-09-07 09:00 |
| 2860 | замена регистр отопления нач снабжения | 2026-09-04 09:00 → 2026-09-08 09:00 (+4d) | 2026-09-04 11:00 → 2026-09-08 11:00 (+4d) |  |  | 133.34d → 131.34d |  | constraint start no earlier than 2026-09-04 09:00 → start no earlier than 2026-09-08 09:00 |
| 2862 | **вентиляция в переговорке и к приема пищи** |  |  | 863d? → 812d? |  |  |  |  |
| 2869 | **склад упаковки** |  | 2026-09-03 13:00 → 2026-09-08 13:00 (+5d) | 129.5d? → 113.5d? |  | 134.09d → 131.09d |  |  |
| 2870 | переделать крепление рамы наруж блока - к МК задния, анкера убрать | 2026-09-03 09:00 → 2026-09-08 09:00 (+5d) | 2026-09-03 13:00 → 2026-09-08 13:00 (+5d) |  |  | 134.09d → 131.09d |  | constraint start no earlier than 2026-09-03 09:00 → start no earlier than 2026-09-08 09:00 |
| 2872 | втягиваем кабель 5х4 от реф, для подключения кондиционера, место установки щитка покажу- подключаем кондиционер |  |  | 1.25d? → 1d? |  |  |  |  |
| 2874 | **установить бойлер** |  |  | 13.25d → 11.25d |  |  |  |  |
| 2878 | отремонтировать ручку на входной двери |  | 2026-05-16 10:00 A → 2026-05-18 10:00 A (+2d) |  |  |  |  |  |
| 2879 | **анкерить стеллажи** |  |  | 33d → 26d |  |  |  |  |
| 2884 | **замена двери** |  | 2026-05-20 10:00 A → 2026-05-28 10:00 A (+8d) | 41.12d? → 40.12d? |  |  |  |  |
| 2886 | изготовление |  | 2026-05-19 10:00 A → 2026-05-28 10:00 A (+9d) |  |  |  |  |  |
| 2888 | **РЭФ контейнеры** |  |  | 216.59d? → 204.59d? |  |  |  |  |
| 2890 | монтаж площадка обслуживания внешнего блока. 4 стойки труба 100 + лист 5 |  | 2026-05-28 16:00 A → 2026-05-28 17:00 A |  |  |  |  |  |
| 2891 | **ремонт сплит система холодильная камера №1** |  |  | 24.12d → 21.12d |  |  |  |  |
| 2894 | оплата |  |  |  |  |  | 13FS+1d → 2893FS+1d |  |
| 2904 | монтаж | 2027-03-09 14:45 → 2027-03-09 09:45 | 2027-03-10 14:45 → 2027-03-09 14:45 (-1d) | 1d? → 4h |  |  | 2902 → none | resources Подрядчик → Некрасов А |
| 2905 | монтаж | 2026-08-19 09:00 A → 2027-03-09 14:45 (+202d) | 2026-08-19 18:00 A → 2027-03-10 14:45 (+203d) |  | 100% → 0% | none → 0d | 3035, 3036 → 2902 | constraint start no earlier than 2026-08-19 09:00 → start no earlier than 2026-08-10 08:00 |
| 2909 | **обучение** |  |  | 670.5d? → 604.5d? | 39% → 42% |  |  |  |
| 2915 | подготовить памятку по чистке ножа для бестром | 2026-09-04 09:00 A | 2026-09-04 13:00 A |  | 0% → 100% | 133.09d → none |  |  |
| 2941 | **наполнение базы данных по занятиям, запись видео уроки** |  |  | 7.12d → 5.12d |  | 711.47d → 647.47d |  |  |
| 2943 | доставка |  | 2024-09-14 10:00 → 2024-09-16 10:00 (+2d) |  |  | 713.47d → 647.47d |  |  |
| 2946 | **администрантивные** |  | 2026-09-01 16:00 → 2026-09-04 11:00 (+3d) | 140.75d → 121.25d |  | 135.84d → 133.34d |  |  |
| 2953 | **Ключи на шкафы** |  | 2026-09-01 11:00 → 2026-09-04 11:00 (+3d) | 115.25d → 101.25d |  | 136.34d → 133.34d |  |  |
| 2955 | доставить |  | 2026-04-28 09:30 A → 2026-04-30 09:30 A (+2d) |  |  |  |  |  |
| 2959 | **ТБ** |  |  | 987.25d? → 920.25d? |  |  |  |  |
| 2975 | **испытание стеллажей** |  |  | 914d? → 847d? |  |  |  |  |

| ID | Task | Start | Finish | Duration | Complete | Total float | Other |
| --- | --- | --- | --- | --- | --- | --- | --- |
| 2985 | **территория** |  | 2026-09-01 10:15 → 2026-09-08 13:00 (+7d) | 450.16d? → 403.5d? | 49% → 52% | 136.44d → 131.09d |  |
| 2986 | отсыпать спуск для парковки между цех 2 и 3 | 2026-08-26 09:00 A | 2026-08-26 18:00 A |  | 0% → 100% | 139.59d → none |  |
| 2992 | **Белявский выравнивание стены** |  | 2026-09-01 10:15 → 2026-09-02 10:15 (+1d) | 16.16d → 14.16d |  | 136.44d → 135.44d |  |
| 2993 | оформить план работ, эскиз предложенный ГИП Глуходед | 2026-08-31 09:00 → 2026-09-01 09:00 (+1d) | 2026-08-31 10:00 → 2026-09-01 10:00 (+1d) |  |  | 136.44d → 135.44d | constraint start no earlier than 2026-08-31 09:00 → start no earlier than 2026-09-01 09:00 |
| 2994 | поиск подрядчика на перекладку панели | 2026-08-31 09:00 → 2026-09-01 09:00 (+1d) | 2026-08-31 10:00 → 2026-09-01 10:00 (+1d) |  |  | 137.47d → 136.47d | constraint start no earlier than 2026-08-31 09:00 → start no earlier than 2026-09-01 09:00 |
| 2997 | согл работы с ГД | 2026-08-31 10:00 → 2026-09-01 10:00 (+1d) | 2026-08-31 10:00 → 2026-09-01 10:00 (+1d) |  |  | 136.44d → 135.44d |  |
| 2998 | заказ кран | 2026-09-01 10:00 → 2026-09-02 10:00 (+1d) | 2026-09-01 10:15 → 2026-09-02 10:15 (+1d) |  |  | 136.44d → 135.44d |  |
| 3000 | **КПП ревизия прожектор, не горит** |  | 2026-07-09 10:00 A |  | 25% → 100% | 179.47d → none |  |
| 3002 | монтаж прожетора | 2026-07-09 09:00 A | 2026-07-09 10:00 A |  | 0% → 100% | 179.47d → none |  |
| 3003 | установить люки колодцев на всей территории | 2026-07-06 09:00 → 2026-09-08 09:00 (+64d) | 2026-07-06 13:00 → 2026-09-08 13:00 (+64d) |  |  |  | constraint start no earlier than 2026-07-06 09:00 → start no earlier than 2026-09-08 09:00 |
| 3010 | в 1,2,3 цехе ближе к утру выключить все оборудование, кроме камер охраны КПП- подготовка к фогации |  | 2026-04-30 10:00 A → 2026-04-30 11:00 A |  |  |  |  |
| 3012 | ремонт стен сосед Белявский |  | 2026-04-21 18:00 → 2026-04-22 18:00 (+1d) |  |  | 246.59d → 229.59d |  |
| 3013 | **выезд ул.Писемского** |  |  | 18.03d → 15.03d |  |  |  |
| 3014 | **топосъемка** |  |  | 18.03d → 15.03d |  |  |  |
| 3018 | **геология** |  |  | 18.03d → 15.03d |  |  |  |
| 3021 | **проект дорога** |  |  | 18.03d → 15.03d |  |  |  |
| 3025 | **проект бетонная подушка** |  |  | 18.03d → 15.03d |  |  |  |
| 3032 | **асфальтирование дороги до 5ц** |  |  | 14.25d? → 11.25d? |  |  |  |
| 3044 | перенос камеры на 10см ниже КПП |  | 2026-03-21 12:00 A → 2026-03-23 12:00 A (+2d) |  |  |  |  |
| 3046 | **выровнить контейнеры, перекос двери** |  |  | 5.25d → 3.25d |  |  |  |
| 3052 | **ежедневные обходы и осмотры** |  |  | 513.5d → 473.5d |  | 289.09d → 263.09d |  |
| 3059 | **замена шнеков** |  |  | 946.5d? → 882.5d? |  | 151.09d → 148.09d |  |
| 3068 | линия 3 |  | 2024-05-09 11:00 A → 2024-05-13 11:00 A (+4d) | 1.5d? → 1.38d? |  |  |  |
| 3069 | диния 3 |  |  | 1.12d? → 1d? |  | 797.59d → 731.59d |  |

## Version 3 (saved 2026-09-08, file 07.09.26.mpp)

Last finish stays 2027-03-10. Complete tasks 1974 → 2012.

Added:

| ID | Task | Duration | Start | Finish | Predecessors | Constraint | Resources |
| --- | --- | --- | --- | --- | --- | --- | --- |
| 2 | Реанимировать весы, чтобы показывали. Смесители | 1h | 2026-09-08 09:00 | 2026-09-08 10:00 |  | start no earlier than 2026-09-08 09:00 | Дедов В |
| 3 | Закрыть каналыгу. На анкера | 1h | 2026-09-09 09:00 | 2026-09-09 10:00 |  | start no earlier than 2026-09-09 09:00 | Бобренок В |
| 4 | установить доп светильник на погрузочной рампе | 4h? | 2026-09-09 09:00 | 2026-09-09 13:00 |  | start no earlier than 2026-09-09 09:00 | Бобренок В |
| 5 | востановить светильник отсек выгрузки ГП + установить доп светильник | 4h | 2026-09-10 09:00 | 2026-09-10 13:00 |  | start no earlier than 2026-09-10 09:00 | Бундин В |
| 6 | **реконструкция хранения гидролизатов и маршрут подачи навесок** | 10.06d? | 2026-09-08 09:00 | 2026-09-22 09:30 |  |  |  |
| 7 | **перенос системы отопления** | 0.12d | 2026-09-09 09:00 | 2026-09-09 10:00 |  |  |  |
| 8 | посик сварщиков | 1h | 2026-09-09 09:00 | 2026-09-09 10:00 |  | start no earlier than 2026-09-09 09:00 | Домоводов К |
| 9 | **монтаж доп плащадки** | 9.06d | 2026-09-09 09:00 | 2026-09-22 09:30 |  |  |  |
| 10 | составить чертеж площадки | 1h | 2026-09-09 09:00 | 2026-09-09 10:00 |  | start no earlier than 2026-09-09 09:00 | Домоводов К |
| 11 | заявка | 15min | 2026-09-10 09:00 | 2026-09-10 09:15 |  | start no earlier than 2026-09-10 09:00 | Зорькин В |
| 14 | **монтаж перегородка корридор** | 9.06d | 2026-09-09 09:00 | 2026-09-22 09:30 |  |  |  |
| 15 | составить чертеж площадки | 1h | 2026-09-09 09:00 | 2026-09-09 10:00 |  | start no earlier than 2026-09-09 09:00 | Домоводов К |
| 16 | заявка | 15min | 2026-09-10 09:00 | 2026-09-10 09:15 |  | start no earlier than 2026-09-10 09:00 | Зорькин В |
| 17 | контроль доставки | 15min | 2026-09-17 09:15 | 2026-09-17 09:30 | 16FS+5d | start no earlier than 2026-09-08 08:00 | Зорькин В |
| 18 | монтаж | 2d | 2026-09-18 09:30 | 2026-09-22 09:30 | 17FS+1d | start no earlier than 2026-09-10 09:00 | Тимофеев В |
| 19 | **врезка двери в проем на упаковку** | 0.04d | 2026-09-09 09:00 | 2026-09-09 09:20 |  |  |  |
| 20 | планирование с Олегом, как сделана стена | 20min | 2026-09-09 09:00 | 2026-09-09 09:20 |  | start no earlier than 2026-09-09 09:00 | Домоводов К |
| 21 | замена двери в гидролизатную - | 1d? | 2026-09-08 09:00 | 2026-09-08 18:00 |  | start no earlier than 2026-09-08 08:00 |  |
| 22 | перенос батареи отопления в гидролизатной | 1d? | 2026-09-08 09:00 | 2026-09-08 18:00 |  | start no earlier than 2026-09-08 08:00 |  |
| 23 | демонтаж бетонного отлива/отмостка | 2d | 2026-09-08 09:00 | 2026-09-09 18:00 |  | start no earlier than 2026-09-08 08:00 | Олег |
| 24 | ревизия парогенератор КАРЧЕР | 1h | 2026-09-08 09:00 | 2026-09-08 10:00 |  | start no earlier than 2026-09-08 09:00 | Дедов В |
| 25 | **подключить циклоны 1 и 2 линия** | 0.5d | 2026-09-09 09:00 | 2026-09-09 13:00 |  |  |  |
| 26 | контроль поставка кабель | 10min | 2026-09-09 09:00 | 2026-09-09 09:10 |  | start no earlier than 2026-09-09 09:00 | Зорькин В |
| 27 | монтаж кабеля | 4h | 2026-09-09 09:00 | 2026-09-09 13:00 |  | start no earlier than 2026-09-09 09:00 | Бундин В |
| 28 | замена бактерицидных ламп | 2h | 2026-09-08 09:00 | 2026-09-08 11:00 |  | start no earlier than 2026-09-08 09:00 | Дедов В |
| 29 | исправить "не возможность открыть" краны фильтр жир 2л | 30min | 2026-09-09 09:00 | 2026-09-09 09:30 |  | start no earlier than 2026-09-09 09:00 | Тимофеев В |
| 30 | ремонт силиконовых уплотнений печи на сетке 1 и 2 л | 3h? | 2026-09-09 09:00 | 2026-09-09 12:00 |  | start no earlier than 2026-09-09 09:00 | Бобренок В |
| 31 | **сместить квадропак в сторону охладителя 2л** | 0.38d | 2026-09-09 09:00 | 2026-09-09 12:00 |  |  |  |
| 32 | отключение / перенгос мехнизмов | 3h | 2026-09-09 09:00 | 2026-09-09 12:00 |  | start no earlier than 2026-09-09 09:00 | Некрасов А; Труфанов А |
| 33 | подключение | 3h | 2026-09-09 09:00 | 2026-09-09 12:00 |  | start no earlier than 2026-09-09 09:00 | Некрасов А; Труфанов А |
| 40 | разбрка тест | 1h | 2026-09-04 09:00 A | 2026-09-04 10:00 A |  | start no earlier than 2026-09-04 09:00 | Бобренок В |
| 41 | тест 2 с редуктором | 1h | 2026-09-08 09:00 A | 2026-09-08 10:00 A |  | start no earlier than 2026-09-08 08:00 | Тимофеев В |
| 42 | решение о ремонт оформить | 10min | 2026-09-09 09:00 | 2026-09-09 09:10 |  | start no earlier than 2026-09-09 09:00 | Зорькин В |
| 197 | закрыть зад крышку | 20min | 2026-09-09 09:00 | 2026-09-09 09:20 |  | start no earlier than 2026-09-09 09:00 | Труфанов А |
| 198 | монтаж кнопка дозатор ОН/ОФФ | 1h | 2026-09-10 09:00 | 2026-09-10 10:00 |  | start no earlier than 2026-09-10 09:00 | Труфанов А |
| 214 | монтаж - оказалить не те | 2h | 2026-09-05 09:00 A | 2026-09-05 11:00 A |  | start no earlier than 2026-09-05 09:00 | Дедов В |
| 215 | контроль датч тока | 0d | 2026-09-09 09:00 | 2026-09-09 09:00 |  | start no earlier than 2026-09-09 09:00 | Зорькин В |
| 216 | монтаж датчиковтока на 2л | 2h | 2026-09-09 09:00 | 2026-09-09 11:00 |  | start no earlier than 2026-09-09 09:00 | Бундин В |
| 279 | разработать спецкронштейн крепления 4х трубок | 1h | 2026-09-09 09:00 | 2026-09-09 10:00 |  | start no earlier than 2026-09-09 09:00 | Домоводов К |
| 280 | монтаж спец кронштенна | 1h | 2026-09-10 09:00 | 2026-09-10 10:00 |  | start no earlier than 2026-09-10 09:00 | Тимофеев В |
| 606 | контроль доставки врезки для отбора проб | 15min | 2026-09-09 09:00 | 2026-09-09 09:15 | 605FS+7d | start no earlier than 2026-09-09 09:00 | Зорькин В |
| 607 | монтаж врезки для отбора проб | 2h | 2026-09-10 09:15 | 2026-09-10 11:15 | 606FS+1d | start no earlier than 2026-09-07 09:00 | Тимофеев В |
| 744 | **реверс теплоносителя в приточном калорифере** | 18.04d? | 2026-08-24 09:00 A | 2026-09-16 09:20 |  |  |  |
| 745 | заявка | 15min | 2026-08-24 09:00 A | 2026-08-24 09:15 A |  | start no earlier than 2026-08-24 09:00 | Зорькин В |
| 746 | контроль доставки | 15min | 2026-09-16 09:05 | 2026-09-16 09:20 | 961FS+5d | start no earlier than 2026-09-09 09:00 | Зорькин В |
| 747 | монтаж | 1d? | 2026-09-14 11:00 | 2026-09-15 11:00 | 962FS+1d | start no earlier than 2026-09-08 08:00 | Тимофеев В |
| 748 | востановить потерю токов в печи / ревизия | 2h | 2026-09-10 09:00 | 2026-09-10 11:00 |  | start no earlier than 2026-09-10 09:00 | Труфанов А |
| 751 | обить дверь в охладитель профлистом оцнк | 2h | 2026-09-10 09:00 | 2026-09-10 11:00 |  | start no earlier than 2026-09-10 09:00 | Некрасов А |
| 756 | монтаж | 1h | 2026-09-10 09:00 | 2026-09-10 10:00 |  | start no earlier than 2026-09-10 09:00 | Тимофеев В |
| 788 | возможно ли убрать сифоны ф50, достаточно ли заслонки без гидрозатвора? Как сделать гидрозатвор ф100 | 15min | 2026-09-09 09:00 | 2026-09-09 09:15 |  | start no earlier than 2026-09-09 09:00 | Труфанов А |
| 789 | решение | 0d | 2026-09-10 09:15 | 2026-09-10 09:15 | 788FS+1d | start no earlier than 2026-09-08 08:00 | Зорькин В |
| 1358 | изучение схему | 8h | 2026-09-07 09:00 A | 2026-09-07 18:00 A |  | start no earlier than 2026-09-07 09:00 | Дедов В |
| 1359 | подкл 2я нория по датчику уровня | 30min | 2026-09-08 09:00 | 2026-09-08 09:30 |  | start no earlier than 2026-09-08 08:00 | Дедов В |
| 1396 | тест на пакетах | 2h | 2026-09-10 09:00 | 2026-09-10 11:00 |  | start no earlier than 2026-09-10 09:00 | Зорькин В; Труфанов А |
| 1629 | **установить зажим троса на тельфер** | 13.28d? | 2026-09-03 09:00 A | 2026-09-21 11:15 |  |  |  |
| 1630 | заявка | 15min | 2026-09-03 09:00 A | 2026-09-03 09:15 A |  | start no earlier than 2026-09-03 09:00 | Зорькин В |
| 1631 | контроль доставки | 15min | 2026-09-18 11:00 | 2026-09-18 11:15 | 962FS+5d | start no earlier than 2026-09-11 09:00 | Зорькин В |
| 1632 | монтаж | 1d? | 2026-09-18 11:15 | 2026-09-21 11:15 | 963FS+1d, 1631 | start no earlier than 2026-09-08 08:00 | Тимофеев В |
| 1633 | **ремонт насос водоснабжения** | 6.12d | 2026-09-03 09:00 A | 2026-09-10 10:00 |  |  |  |
| 1635 | конртроль поставки | 15min | 2026-09-09 09:00 | 2026-09-09 09:15 | 1634 | start no earlier than 2026-09-09 09:00 | Зорькин В |
| 1636 | замена | 1h | 2026-09-10 09:00 | 2026-09-10 10:00 | 1635 | start no earlier than 2026-09-10 09:00 | Тимофеев В |
| 2119 | **ремонт редутор печи №?** | 14.31d | 2026-09-05 09:00 A | 2026-09-24 11:30 |  |  |  |
| 2120 | дефектовка редуктора печи 2 цех, лежит в слесарке | 2h | 2026-09-05 09:00 A | 2026-09-05 11:00 A |  | start no earlier than 2026-09-05 09:00 | Макаревич А |
| 2121 | возможно ли установить тавотницу на подшипник червяка? | 15min | 2026-09-09 09:00 | 2026-09-09 09:15 |  | start no earlier than 2026-09-09 09:00 | Тимофеев В |
| 2122 | заказ шестерни червя в ЗИП - отправить курьера | 15min | 2026-09-09 09:00 | 2026-09-09 09:15 | 2120 | start no earlier than 2026-09-09 09:00 | Зорькин В |
| 2123 | контроль изг шетесиерен | 15min | 2026-09-23 09:15 | 2026-09-23 09:30 | 2122FS+10d | start no earlier than 2026-09-08 08:00 | Зорькин В |
| 2124 | сборка редутор венец | 2h | 2026-09-24 09:30 | 2026-09-24 11:30 | 2123FS+1d | start no earlier than 2026-09-08 08:00 | Макаревич А |
| 2350 | **Разобрать улитки с охладителя 2 линия, 4 улитки на печах и улитки циклонов - замена подшипников, каких нет сообщить** | 3.5d | 2026-09-07 09:00 A | 2026-09-10 13:00 |  |  |  |
| 2351 | вентилятор охладителя | 4h | 2026-09-07 09:00 A | 2026-09-07 13:00 A |  |  | Бундин В |
| 2352 | линия 1 вентилятор печи 1 | 4h | 2026-09-08 09:00 A | 2026-09-08 13:00 A |  | start no earlier than 2026-09-08 09:00 | Бундин В |
| 2353 | линия 1 вентилятор печи 2 | 4h | 2026-09-09 09:00 | 2026-09-09 13:00 |  |  | Бундин В |
| 2354 | линия 2 вентилятор циклона 1 | 4h | 2026-09-09 14:00 | 2026-09-09 18:00 | 2353 |  | Бундин В |
| 2355 | линия 2 вентилятор циклона 1 | 4h | 2026-09-10 09:00 | 2026-09-10 13:00 | 2354 |  | Бундин В |
| 3054 | дует подконник офис - передать Олегу задачу | 15min | 2026-09-08 09:00 | 2026-09-08 09:15 |  | start no earlier than 2026-09-08 08:00 | Зорькин В |

Removed: 2 Разобрать улитки с охладителя 2 линия, 4 улитки на печах и улитки циклонов - замена подшипников, каких нет сообщить; 710 ТО редуктора печи 2 цех, лежит в слесарке; 2797 монтаж секции стеллажа

Changed:

| ID | Task | Start | Finish | Duration | Complete | Total float | Predecessors | Other |
| --- | --- | --- | --- | --- | --- | --- | --- | --- |
| 1 | **1 цех** |  |  |  | 99% → 98% |  |  |  |
| 12 | контроль доставки | 2026-09-01 09:15 → 2026-09-17 09:15 (+16d) | 2026-09-01 09:30 → 2026-09-17 09:30 (+16d) |  |  | 135.28d → 121.53d | 605FS+7d → 11FS+5d | constraint start no earlier than 2026-08-10 08:00 → start no earlier than 2026-09-08 08:00 |
| 13 | монтаж | 2026-09-07 09:00 → 2026-09-18 09:30 (+11d) | 2026-09-07 11:00 → 2026-09-22 09:30 (+15d) | 2h → 2d |  | 132.34d → 121.53d |  | constraint start no earlier than 2026-09-07 09:00 → start no earlier than 2026-09-10 09:00 |
| 34 | Ревизия утечек воздуха на квадропаке (важно проверить пневмораспределителях) и вакуумную систему | 2026-09-06 09:00 → 2026-09-08 09:00 (+2d) | 2026-09-06 11:00 → 2026-09-08 11:00 (+2d) |  |  |  |  | constraint start no earlier than 2026-09-06 09:00 → start no earlier than 2026-09-08 09:00 |
| 35 | Комплексное ТО квадропака, проверка всех соединений, протяжка болтов на всех узлах | 2026-09-06 09:00 → 2026-09-08 09:00 (+2d) | 2026-09-06 13:00 → 2026-09-08 11:00 (+2d) | 4h → 2h |  |  |  | constraint start no earlier than 2026-09-06 09:00 → start no earlier than 2026-09-08 09:00 |
| 36 | Сделать основную кнопку на НОТИСЕ, чтоб срабатывало от нее, а не от блока управления | 2026-09-07 09:00 → 2026-09-09 09:00 (+2d) | 2026-09-07 10:00 → 2026-09-09 10:00 (+2d) |  |  | 132.47d → 130.47d |  | constraint start no earlier than 2026-09-05 09:00 → start no earlier than 2026-09-09 09:00; resources Дедов В → Зорькин В |
| 37 | Убрать все кабеля на полу в зоне фасовки, теко-нотис (кабельный менеджмент) | 2026-09-07 09:00 → 2026-09-09 09:00 (+2d) | 2026-09-07 11:00 → 2026-09-09 11:00 (+2d) |  |  | 132.34d → 130.34d |  | constraint start no earlier than 2026-09-05 09:00 → start no earlier than 2026-09-09 09:00; resources Дедов В → Бундин В |
| 38 | Клемная коробка на жирах сделать, сейчас вся висит на хомутах 2 линия | 2026-09-07 09:00 A | 2026-09-07 10:00 A |  | 0% → 100% | 132.47d → none |  |  |
| 39 | **Дефектовка двигателя от питателя прекондиционера/ прозвонить (возможно подготовить для сдачи на перемотку)** | 2026-09-04 09:00 A | 2026-09-04 11:00 → 2026-09-09 09:10 (+5d) | 2h → 4.02d | 0% → 92% | 133.34d → 130.57d |  | constraint start no earlier than 2026-09-04 09:00 → none; resources Бобренок В → none |
| 43 | Ошибка на баке жиротопки 2 линия Err.4 /разобраться и устранить причину | 2026-09-04 09:00 A | 2026-09-04 10:00 A |  | 0% → 100% | 133.47d → none |  |  |
| 44 | Установить новые газлифты, которые получил Бобренок на жиротопку 2 этаж | 2026-09-07 09:00 A | 2026-09-07 11:00 A |  | 0% → 100% | 132.34d → none |  |  |
| 45 | **Не работают роль ставни на жирах, не стопоряться сделать/устранить неисправность** | 2026-09-08 09:00 → 2026-09-09 09:00 (+1d) | 2026-09-08 18:00 → 2026-09-10 09:20 (+2d) | 1d → 1.04d |  | 130.59d → 129.55d |  | resources Тимофеев В → none |
| 46 | Вызвать подрядчика/контроль | 2026-09-08 09:00 → 2026-09-09 09:00 (+1d) | 2026-09-08 09:10 → 2026-09-09 09:10 (+1d) |  |  | 131.57d → 129.55d |  | constraint start no earlier than 2026-09-08 09:00 → start no earlier than 2026-09-09 09:00 |
| 47 | получить счет на ремонт | 2026-09-08 09:00 → 2026-09-09 09:10 (+1d) | 2026-09-08 18:00 → 2026-09-10 09:10 (+2d) |  |  | 130.59d → 129.55d | none → 46 |  |
| 48 | согласовать с подрядчиком дату ремонта | 2026-09-08 09:00 → 2026-09-10 09:10 (+2d) | 2026-09-08 09:10 → 2026-09-10 09:20 (+2d) |  |  | 131.57d → 129.55d | none → 47 |  |
| 53 | Прозвонить кабель паллетных весов ошибка Error 10 | 2026-09-07 09:00 A | 2026-09-07 10:00 A |  | 0% → 100% | 132.47d → none |  |  |
| 69 | **продумать как сделать герметичную крышку на смесителе сухого гидрализата** |  | 2026-09-07 11:00 → 2026-09-09 11:00 (+2d) | 7.25d → 10.25d |  | 132.34d → 130.34d |  |  |
| 72 | установка на струбцинах с уплотнителями | 2026-09-07 09:00 → 2026-09-09 09:00 (+2d) | 2026-09-07 11:00 → 2026-09-09 11:00 (+2d) |  |  | 132.34d → 130.34d |  | constraint start no earlier than 2026-09-07 09:00 → start no earlier than 2026-09-09 09:00; resources Тимофеев В → Бобренок В |
| 73 | **метал от тенов печи, устранить причину** |  | 2026-09-07 13:00 → 2026-09-09 13:00 (+2d) | 10.5d → 13.5d? |  | 132.09d → 130.09d |  |  |
| 78 | замена заброкованных осмотром тенов | 2026-09-07 09:00 → 2026-09-09 09:00 (+2d) | 2026-09-07 13:00 → 2026-09-09 13:00 (+2d) | 4h → 4h? |  | 132.09d → 130.09d |  | constraint start no earlier than 2026-09-07 09:00 → start no earlier than 2026-09-09 09:00; resources Некрасов А; Тимофеев В → Тимофеев В |
| 98 | **ТЕКО ремонт кнопки, которую снял Бобренок В , вернуть то что снял с 3ц** |  | 2026-09-07 10:15 → 2026-09-09 10:00 (+2d) | 17.16d → 20.12d | 56% → 45% | 132.44d → 130.47d |  |  |
| 102 | монтаж платы на место | 2026-09-07 09:15 → 2026-09-09 09:00 (+2d) | 2026-09-07 10:15 → 2026-09-09 10:00 (+2d) |  |  | 132.44d → 130.47d |  | constraint start no earlier than 2026-08-13 09:00 → start no earlier than 2026-09-09 09:00; resources Тимофеев В → Бобренок В |
| 103 | Вернуть голову с восстановленной клавиатурой на НОТИС в 3 цех | 2026-09-04 09:00 → 2026-09-09 09:00 (+5d) | 2026-09-04 09:30 → 2026-09-09 09:30 (+5d) |  |  | 133.53d → 130.53d |  | constraint start no earlier than 2026-09-04 09:00 → start no earlier than 2026-09-09 09:00; resources Тимофеев В → Бобренок В |
| 111 | **палетообмостчик монтаж в 1ц** |  | 2026-09-28 12:05 → 2026-09-10 12:00 (-18d) | 33.39d → 22.38d | 27% → 29% | 117.21d → 129.22d |  | was named палетообмостчик заказ |
| 117 | доставка конетроль | 2026-09-25 09:00 → 2026-09-01 09:00 A (-24d) | 2026-09-25 09:05 → 2026-09-01 09:05 A (-24d) |  | 0% → 100% | 117.21d → none | 116FS+30d → none | constraint start no earlier than 2026-09-25 09:00 → start no earlier than 2026-09-01 09:00 |
| 118 | монтаж | 2026-09-28 09:05 → 2026-09-10 09:00 (-18d) | 2026-09-28 12:05 → 2026-09-10 12:00 (-18d) |  |  | 117.21d → 129.22d | 117FS+1d → none | constraint start no earlier than 2026-08-10 08:00 → start no earlier than 2026-09-10 09:00; resources Тимофеев В → Некрасов А; Труфанов А |
| 119 | **замена сетка печи линия 1** |  | 2026-10-06 09:45 → 2026-10-05 09:45 (-1d) |  |  | 111.5d → 112.5d |  |  |
| 123 | контроль доставки | 2026-10-02 09:00 → 2026-10-01 09:00 (-1d) | 2026-10-02 09:15 → 2026-10-01 09:15 (-1d) |  |  | 111.5d → 112.5d |  |  |
| 124 | приемка | 2026-10-02 09:15 → 2026-10-01 09:15 (-1d) | 2026-10-02 09:45 → 2026-10-01 09:45 (-1d) |  |  | 111.5d → 112.5d |  |  |
| 125 | замена | 2026-10-05 09:45 → 2026-10-02 09:45 (-3d) | 2026-10-06 09:45 → 2026-10-05 09:45 (-1d) |  |  | 111.5d → 112.5d |  |  |
| 133 | **перенос вентилятор охладителя линия2 в реверс, убрать шкаф** |  |  | 23.5d → 24.5d | 70% → 84% |  |  |  |
| 137 | конроль поставки | 2026-09-04 10:00 → 2026-09-09 09:00 (+5d) | 2026-09-04 10:15 → 2026-09-09 09:15 (+5d) |  |  | 131.44d → 130.56d |  | constraint start no earlier than 2026-08-12 09:00 → start no earlier than 2026-09-09 09:00 |
| 138 | сборка рама | 2026-09-07 10:15 → 2026-09-07 09:00 A | 2026-09-07 15:15 → 2026-09-07 13:00 A |  | 0% → 100% | 131.44d → none | 137FS+1d → none |  |
| 148 | **теко 0,4 -восстановить или заменить блок для тепловухи** |  | 2026-08-04 18:00 → 2026-08-05 10:00 (+1d) |  |  |  |  |  |
| 159 | **снять камеру зона экструдера и повесить на жирах со стороны экструдера, монтаж кабель** |  | 2026-09-09 11:00 → 2026-09-09 10:00 | 0.25d → 0.12d |  | 130.34d → 130.47d |  |  |
| 160 | на мойке попробовать снять камеру |  | 2026-09-09 11:00 → 2026-09-09 10:00 | 2h → 1h |  | 130.34d → 130.47d |  |  |
| 181 | **сборка дозатор на квадропак** |  | 2026-09-07 11:00 → 2026-09-10 11:00 (+3d) | 42.25d → 46.25d | 82% → 84% | 132.34d → 129.34d |  |  |
| 196 | сверлить для крепления перил | 2026-09-04 09:00 A | 2026-09-04 11:00 A |  | 0% → 100% | 133.09d → none |  |  |
| 199 | закрыть металлом пустые места между площадками квадропак и дозатор | 2026-09-07 09:00 → 2026-09-10 09:00 (+3d) | 2026-09-07 11:00 → 2026-09-10 11:00 (+3d) |  |  | 132.34d → 129.34d |  | constraint start no earlier than 2026-09-07 09:00 → start no earlier than 2026-09-10 09:00 |
| 213 | **заменить амперметры неиспрвные на ШУ 1 и 2 линия (они на складе приехали сегодня новые посмотреть фото в выдаче)** |  |  | 1h → 1h? | 0% → 50% |  |  | constraint start no earlier than 2026-09-04 09:00 → none; resources Бобренок В → none |
| 226 | **сборка раковина нерж для мойки конвейер** | 2026-09-02 09:00 → 2026-10-12 09:00 (+40d) | 2026-09-11 11:00 → 2026-10-21 11:00 (+40d) |  |  | 128.34d → 100.34d |  |  |
| 227 | подготовить данные, оформить как проект / инициировать совещание | 2026-09-02 09:00 → 2026-10-12 09:00 (+40d) | 2026-09-02 11:00 → 2026-10-12 11:00 (+40d) |  |  | 128.34d → 100.34d |  | constraint start no earlier than 2026-09-02 09:00 → start no earlier than 2026-10-12 09:00 |
| 228 | совещание с руководителями / фиксация решения | 2026-09-03 11:00 → 2026-10-13 11:00 (+40d) | 2026-09-04 11:00 → 2026-10-14 11:00 (+40d) |  |  | 128.34d → 100.34d |  |  |
| 229 | подготовить чертеж раковины, проверить материал | 2026-09-07 11:00 → 2026-10-15 11:00 (+38d) | 2026-09-08 11:00 → 2026-10-16 11:00 (+38d) |  |  | 128.34d → 100.34d |  | constraint start no earlier than 2026-09-07 09:00 → start no earlier than 2026-09-08 09:00 |
| 230 | сборка | 2026-09-09 11:00 → 2026-10-19 11:00 (+40d) | 2026-09-11 11:00 → 2026-10-21 11:00 (+40d) |  |  | 128.34d → 100.34d |  |  |
| 258 | модернизация опроры пневмоцилиндра встряживателя №1 квадропак | 2026-09-07 09:00 → 2026-10-19 09:00 (+42d) | 2026-09-07 13:00 → 2026-10-19 13:00 (+42d) |  |  | 132.09d → 102.09d |  | constraint start no earlier than 2026-09-07 09:00 → start no earlier than 2026-10-19 09:00 |
| 277 | **установить резервную трубку/штангу с форсункой на подачу жира** | 2026-08-31 09:00 → 2026-09-08 09:00 A (+8d) | 2026-09-10 18:00 → 2026-09-18 18:00 (+8d) |  | 0% → 10% | 128.59d → 122.59d |  |  |
| 278 | проект-схема разработать | 2026-08-31 09:00 → 2026-09-08 09:00 A (+8d) | 2026-08-31 10:00 → 2026-09-08 10:00 A (+8d) |  | 0% → 100% | 128.59d → none |  | constraint start no earlier than 2026-08-31 09:00 → start no earlier than 2026-09-08 09:00 |
| 281 | заявка фитинги / тройники / краны / трубка | 2026-09-01 10:00 → 2026-09-09 10:00 (+8d) | 2026-09-01 11:00 → 2026-09-09 11:00 (+8d) |  |  | 128.59d → 122.59d |  |  |
| 282 | доставка контроль | 2026-09-08 11:00 → 2026-09-16 11:00 (+8d) | 2026-09-08 11:00 → 2026-09-16 11:00 (+8d) |  |  | 128.59d → 122.59d |  |  |
| 283 | сборка в мастерской | 2026-09-09 11:00 → 2026-09-17 11:00 (+8d) | 2026-09-09 16:00 → 2026-09-17 16:00 (+8d) |  |  | 128.59d → 122.59d |  |  |
| 284 | монтаж на линию | 2026-09-10 16:00 → 2026-09-18 16:00 (+8d) | 2026-09-10 18:00 → 2026-09-18 18:00 (+8d) |  |  | 128.59d → 122.59d |  |  |
| 285 | **установить автоматику запуска шнека + смеситель по датчику уровня сырья в бункере экструдера** | 2026-06-04 09:00 → 2026-09-09 09:00 (+97d) | 2026-08-31 10:00 → 2026-09-23 12:10 (+23d) | 62.12d? → 10.4d? |  | 137.47d → 120.2d |  |  |
| 286 | разработка схема / компановка | 2026-08-31 09:00 → 2026-09-09 09:00 (+9d) | 2026-08-31 10:00 → 2026-09-09 10:00 (+9d) |  |  | 137.47d → 120.2d |  | constraint start no earlier than 2026-08-31 09:00 → start no earlier than 2026-09-09 09:00 |
| 287 | заявка датчики / пускатели / эл щит | 2026-06-04 09:00 → 2026-09-09 10:00 (+97d) | 2026-06-04 11:00 → 2026-09-09 12:00 (+97d) |  |  | 189.32d → 120.2d | none → 286 |  |
| 288 | доставка контроль | 2026-06-15 11:00 → 2026-09-18 12:00 (+95d) | 2026-06-15 11:05 → 2026-09-18 12:05 (+95d) |  |  | 189.32d → 120.2d |  |  |
| 289 | контроль поставки | 2026-06-16 11:05 → 2026-09-21 12:05 (+97d) | 2026-06-16 11:10 → 2026-09-21 12:10 (+97d) |  |  | 189.32d → 120.2d |  |  |
| 290 | сборка ШУ | 2026-06-24 09:00 → 2026-09-21 12:10 (+89d) | 2026-06-24 18:00 → 2026-09-22 12:10 (+90d) |  |  | 183.59d → 120.2d |  |  |
| 291 | монтаж в линию | 2026-06-25 09:00 → 2026-09-22 12:10 (+89d) | 2026-06-25 18:00 → 2026-09-23 12:10 (+90d) |  |  | 183.59d → 120.2d |  |  |
| 410 | **заменить фильтры на жиротопка** |  | 2026-09-15 11:15 → 2026-09-14 11:15 (-1d) |  |  | 126.31d → 127.31d |  |  |
| 412 | контроль | 2026-09-15 10:00 → 2026-09-14 10:00 (-1d) | 2026-09-15 10:15 → 2026-09-14 10:15 (-1d) |  |  | 126.31d → 127.31d |  |  |
| 413 | замена | 2026-09-15 10:15 → 2026-09-14 10:15 (-1d) | 2026-09-15 11:15 → 2026-09-14 11:15 (-1d) |  |  | 126.31d → 127.31d |  |  |
| 460 | замена ленеты | 2026-09-07 09:00 → 2026-10-12 09:00 (+35d) | 2026-09-07 13:00 → 2026-10-12 13:00 (+35d) |  |  | 132.09d → 107.09d |  | constraint start no earlier than 2026-09-07 09:00 → start no earlier than 2026-10-12 09:00 |
| 516 | монтаж 1 линия расходомер / кабель / блок питания | 2026-09-07 09:00 A → 2026-09-10 09:00 A (+3d) | 2026-09-07 12:00 → 2026-09-10 12:00 (+3d) |  |  |  |  | constraint start no earlier than 2026-09-07 09:00 → start no earlier than 2026-09-10 09:00 |
| 519 | **разделить воду в экструдер и парогенераторы** |  | 2026-09-24 12:30 → 2026-09-23 12:30 (-1d) |  |  | 119.16d → 120.16d |  |  |
| 532 | **монтаж на линия 1** |  | 2026-09-24 12:30 → 2026-09-23 12:30 (-1d) |  |  | 119.16d → 120.16d |  |  |
| 534 | контроль поставки | 2026-09-21 10:00 → 2026-09-18 10:00 (-3d) | 2026-09-21 10:30 → 2026-09-18 10:30 (-3d) |  |  | 119.16d → 120.16d |  |  |
| 535 | сборка корпус | 2026-09-22 10:30 → 2026-09-21 10:30 (-1d) | 2026-09-22 15:30 → 2026-09-21 15:30 (-1d) |  |  | 119.16d → 120.16d |  |  |
| 536 | монтаж линия 1 | 2026-09-23 15:30 → 2026-09-22 15:30 (-1d) | 2026-09-24 12:30 → 2026-09-23 12:30 (-1d) |  |  | 119.16d → 120.16d |  |  |
| 587 | монтаж линия 1 и 2 печи (чтобы открывалась и не мешала открыванию лотку сверху) | 2026-09-05 09:00 → 2026-09-10 09:00 (+5d) | 2026-09-05 13:00 → 2026-09-10 13:00 (+5d) |  |  |  |  | constraint start no earlier than 2026-09-05 09:00 → start no earlier than 2026-09-10 09:00; resources Макаревич А → Бундин В |

| ID | Task | Start | Finish | Duration | Complete | Total float | Predecessors | Other |
| --- | --- | --- | --- | --- | --- | --- | --- | --- |
| 604 | **модернизация вентиляции** |  | 2026-09-07 11:00 → 2026-09-10 11:15 (+3d) | 126.25d → 130.28d |  | 132.34d → 129.31d |  |  |
| 719 | **Дражжировка конвейер №1 после печки** |  | 2026-09-09 10:00 → 2026-09-10 11:00 (+1d) | 100.12d → 102.25d |  | 130.47d → 129.34d |  |  |
| 720 | Поставить резьбовые клепки на боковой кожух, где кончается лента | 2026-09-09 09:00 → 2026-09-10 09:00 (+1d) | 2026-09-09 10:00 → 2026-09-10 10:00 (+1d) |  |  | 130.47d → 129.47d |  | constraint start no earlier than 2026-09-09 09:00 → start no earlier than 2026-09-10 09:00 |
| 721 | Ремонт насоса от 2 линии 1 цех, статор взять на складе | 2026-09-04 09:00 → 2026-09-10 09:00 (+6d) | 2026-09-04 11:00 → 2026-09-10 11:00 (+6d) |  |  | 133.34d → 129.34d |  | constraint start no earlier than 2026-09-04 09:00 → start no earlier than 2026-09-10 09:00 |
| 730 | **отмена** |  |  | 70.75d → 70.75d? |  |  |  |  |
| 750 | Обрезать пенку пвх на двери в охладителе ,сделать ее ровной | 2026-09-07 09:00 A | 2026-09-07 10:00 A |  | 0% → 100% | 132.47d → none |  |  |
| 753 | **Дражжировка** |  |  | 5.12d → 6.12d | 14% → 54% |  |  |  |
| 754 | **Подготовить электрическую часть для подключения второго насоса без частотника (продолжаем эту задачу)** | 2026-09-10 09:00 A |  |  | 0% → 50% |  |  |  |
| 755 | установить на линию доп насос (резервный) | 2026-09-10 09:00 A | 2026-09-10 10:00 A |  | 0% → 100% | 129.47d → none |  |  |
| 760 | проверка котлов на приточку (замена клапана и тена на большую мощность) | 2026-09-07 09:00 A | 2026-09-07 11:00 A |  | 0% → 100% |  |  |  |
| 769 | **дренаж кондиционеров жир и упаковка установить отдельный насос от жиров** |  |  | 23.06d → 24.06d |  |  |  |  |
| 782 | перенос инсекютер ниже на фасовке, для возможности доступа операторами | 2026-09-04 09:00 → 2026-09-10 09:00 (+6d) | 2026-09-04 10:00 → 2026-09-10 10:00 (+6d) |  |  | 133.47d → 129.47d |  | constraint start no earlier than 2026-09-04 09:00 → start no earlier than 2026-09-10 09:00 |
| 786 | **установить сифон ф110 в линию слива жиров** |  | 2026-09-07 11:00 → 2026-09-10 11:30 (+3d) | 18.25d → 22.31d | 31% → 29% | 132.34d → 129.28d |  |  |
| 790 | контроль доставка | 2026-08-31 09:00 → 2026-09-10 09:15 (+10d) | 2026-08-31 09:15 → 2026-09-10 09:30 (+10d) |  |  | 137.31d → 129.28d | 787FS+7d → 787FS+7d, 789 |  |
| 791 | монтаж | 2026-09-07 09:00 → 2026-09-10 09:30 (+3d) | 2026-09-07 11:00 → 2026-09-10 11:30 (+3d) |  |  | 132.34d → 129.28d |  |  |
| 792 | **установить инсекютер дополнительный на экструдер** |  | 2026-09-07 12:00 → 2026-09-10 12:15 (+3d) | 11.38d → 15.41d |  | 132.22d → 129.19d |  |  |
| 794 | контроль доставки | 2026-09-01 09:15 → 2026-09-09 09:00 (+8d) | 2026-09-01 09:30 → 2026-09-09 09:15 (+8d) |  |  | 136.16d → 130.19d |  | constraint start no earlier than 2026-08-11 09:00 → start no earlier than 2026-09-09 09:00 |
| 795 | монтаж розетка / кабель | 2026-09-07 09:00 → 2026-09-10 09:15 (+3d) | 2026-09-07 12:00 → 2026-09-10 12:15 (+3d) |  |  | 132.22d → 129.19d | 794 → 794FS+1d |  |
| 797 | **ограждение мусорного контейнера у 2ц** |  | 2026-09-18 11:45 → 2026-09-17 11:45 (-1d) |  |  | 123.25d → 124.25d |  |  |
| 801 | контроль поставка | 2026-09-15 11:30 → 2026-09-14 11:30 (-1d) | 2026-09-15 11:45 → 2026-09-14 11:45 (-1d) |  |  | 123.25d → 124.25d |  |  |
| 802 | монтаж каркас + обшивка | 2026-09-16 11:45 → 2026-09-15 11:45 (-1d) | 2026-09-18 11:45 → 2026-09-17 11:45 (-1d) |  |  | 123.25d → 124.25d |  |  |
| 808 | **усиление подогрев приточной вентиляции** |  | 2026-09-11 14:15 → 2026-10-01 14:15 (+20d) | 19.53d? → 34.53d? | 49% → 25% | 128.06d → 114.06d |  |  |
| 810 | заявка доп котлы + автоматика | 2026-08-27 09:00 A → 2026-09-16 09:00 (+20d) | 2026-08-27 13:00 A → 2026-09-16 13:00 (+20d) |  | 100% → 0% | none → 114.06d |  | constraint start no earlier than 2026-08-27 09:00 → start no earlier than 2026-09-16 09:00 |
| 811 | контроль поствки | 2026-09-10 14:00 → 2026-09-30 14:00 (+20d) | 2026-09-10 14:15 → 2026-09-30 14:15 (+20d) |  |  | 128.06d → 114.06d |  |  |
| 812 | монтаж | 2026-09-10 14:15 → 2026-09-30 14:15 (+20d) | 2026-09-11 14:15 → 2026-10-01 14:15 (+20d) |  |  | 128.06d → 114.06d |  |  |
| 817 | **обеспечить не менее +15 зимой в зоне хранения навесок** |  | 2026-10-01 09:45 → 2026-10-19 11:45 (+18d) | 42.09d? → 55.34d? |  | 114.5d → 102.25d |  |  |
| 818 | **утепление стены** | 2026-08-31 09:00 → 2026-09-01 09:00 A (+1d) | 2026-09-09 10:15 → 2026-09-18 10:15 (+9d) | 7.16d? → 14.16d? |  | 116.25d → 123.44d |  |  |
| 819 | расчет количство утеплителя + профлист/саморезы. Заявка | 2026-08-31 09:00 → 2026-09-09 09:00 (+9d) | 2026-08-31 10:00 → 2026-09-09 10:00 (+9d) |  |  | 130.44d → 123.44d |  | constraint start no earlier than 2026-08-31 09:00 → start no earlier than 2026-09-09 09:00; resources Шуранов Ю → Зорькин В |
| 820 | получить цену / решение о тепловой завесе | 2026-09-01 09:00 A | 2026-09-01 09:00 A |  | 0% → 100% | 115.25d → none |  |  |
| 821 | контроль даты доставки | 2026-09-07 10:00 → 2026-09-16 10:00 (+9d) | 2026-09-07 10:15 → 2026-09-16 10:15 (+9d) |  |  | 130.44d → 123.44d |  |  |
| 822 | монтаж | 2026-09-08 10:15 → 2026-09-17 10:15 (+9d) | 2026-09-09 10:15 → 2026-09-18 10:15 (+9d) |  |  | 130.44d → 123.44d |  |  |
| 827 | **тепловые завесы в 2ц зона подачи навесок** |  | 2026-10-01 09:45 → 2026-10-19 11:45 (+18d) | 33.09d? → 46.34d? |  | 114.5d → 102.25d |  |  |
| 828 | **монтаж теплокалориферов** | 2026-09-02 09:00 → 2026-09-21 09:00 (+19d) | 2026-10-01 09:45 → 2026-10-19 11:45 (+18d) | 21.09d? → 20.34d? |  | 114.5d → 102.25d |  |  |
| 829 | заявка | 2026-09-02 09:00 → 2026-09-21 09:00 (+19d) | 2026-09-02 11:00 → 2026-09-21 11:00 (+19d) |  |  | 115.25d → 102.25d |  | constraint start no earlier than 2026-08-21 09:00 → start no earlier than 2026-09-21 09:00 |
| 830 | контроль оплаты\ | 2026-09-07 09:00 → 2026-09-23 11:00 (+16d) | 2026-09-07 09:15 → 2026-09-23 11:15 (+16d) |  |  | 114.5d → 102.25d |  |  |
| 831 | контроль доставки | 2026-09-28 09:15 → 2026-10-14 11:15 (+16d) | 2026-09-28 09:30 → 2026-10-14 11:30 (+16d) |  |  | 114.5d → 102.25d |  |  |
| 832 | приемка | 2026-09-29 09:30 → 2026-10-15 11:30 (+16d) | 2026-09-29 09:45 → 2026-10-15 11:45 (+16d) |  |  | 114.5d → 102.25d |  |  |
| 833 | монтаж калориферов | 2026-09-30 09:45 → 2026-10-16 11:45 (+16d) | 2026-10-01 09:45 → 2026-10-19 11:45 (+18d) |  |  | 114.5d → 102.25d |  |  |
| 834 | **монтаж кабель** |  | 2026-09-09 12:00 → 2026-09-24 12:00 (+15d) | 17.38d? → 29.38d? |  | 130.22d → 119.22d |  |  |
| 836 | заявка кабель /щиток | 2026-08-31 09:00 → 2026-09-15 09:00 (+15d) | 2026-08-31 11:00 → 2026-09-15 11:00 (+15d) |  |  | 130.22d → 119.22d |  | constraint start no earlier than 2026-08-31 09:00 → start no earlier than 2026-09-15 09:00 |
| 837 | контроль доставка | 2026-09-07 11:00 → 2026-09-22 11:00 (+15d) | 2026-09-07 12:00 → 2026-09-22 12:00 (+15d) |  |  | 130.22d → 119.22d |  |  |
| 838 | монтаж | 2026-09-08 12:00 → 2026-09-23 12:00 (+15d) | 2026-09-09 12:00 → 2026-09-24 12:00 (+15d) |  |  | 130.22d → 119.22d |  |  |
| 843 | **на дверь в мойку установить мощный доводчик** |  | 2026-09-07 11:00 → 2026-09-10 11:15 (+3d) | 11.25d → 15.28d |  | 132.34d → 129.31d |  |  |
| 847 | контроль поставки | 2026-08-31 09:00 → 2026-09-09 09:00 (+9d) | 2026-08-31 09:15 → 2026-09-09 09:15 (+9d) |  |  | 136.31d → 129.31d |  | constraint start no earlier than 2026-08-31 09:00 → start no earlier than 2026-09-09 09:00 |
| 848 | монтаж | 2026-09-07 09:00 → 2026-09-10 09:15 (+3d) | 2026-09-07 11:00 → 2026-09-10 11:15 (+3d) |  |  | 132.34d → 129.31d |  |  |
| 849 | установить ручку с защелкой -язычком | 2026-09-01 09:00 → 2026-09-09 09:00 (+8d) | 2026-09-01 10:00 → 2026-09-09 10:00 (+8d) |  |  | 136.47d → 130.47d |  | constraint start no earlier than 2026-09-01 09:00 → start no earlier than 2026-09-09 09:00; resources Макаревич А → Бундин В |
| 850 | **пролистыватель с апликтором заказ** |  | 2026-09-25 09:15 → 2026-09-24 09:15 (-1d) |  |  | 118.56d → 119.56d |  |  |
| 856 | доставка конетроль | 2026-09-23 09:00 → 2026-09-22 09:00 (-1d) | 2026-09-23 09:15 → 2026-09-22 09:15 (-1d) |  |  | 118.56d → 119.56d |  |  |
| 857 | монтаж | 2026-09-24 09:15 → 2026-09-23 09:15 (-1d) | 2026-09-25 09:15 → 2026-09-24 09:15 (-1d) |  |  | 118.56d → 119.56d |  |  |
| 858 | **вентиляция мойка приточно-вытяжная 1ц 2 линия** |  | 2026-08-26 10:30 A |  | 29% → 100% | 140.41d → none |  |  |
| 859 | монтаж вытяжной трубы в колектор. После переноса вентиляторов отключен | 2026-08-17 09:00 A | 2026-08-17 13:00 A |  | 0% → 100% | 147.09d → none |  |  |
| 862 | контроль поставки | 2026-08-25 10:00 A | 2026-08-25 10:30 A |  | 0% → 100% | 140.41d → none |  |  |
| 863 | монтаж | 2026-08-25 10:30 A | 2026-08-26 10:30 A |  | 0% → 100% | 140.41d → none |  |  |
| 864 | **выполнить обрамление двери в охладитель, что бы скрыть поверхность** |  | 2026-09-03 11:00 → 2026-09-09 09:15 (+6d) | 14.25d → 19.03d |  | 134.34d → 130.56d |  |  |
| 866 | контроль доставки | 2026-08-31 09:00 → 2026-09-09 09:00 (+9d) | 2026-08-31 09:15 → 2026-09-09 09:15 (+9d) |  |  | 137.56d → 130.56d |  | constraint start no earlier than 2026-08-31 09:00 → start no earlier than 2026-09-09 09:00 |
| 868 | **ремонт осушителя компрессора 2ц** |  | 2026-09-07 10:00 → 2026-09-10 10:00 (+3d) | 20.12d → 24.12d |  | 132.47d → 129.47d |  |  |
| 869 | проверка давления фреона | 2026-09-07 09:00 → 2026-09-10 09:00 (+3d) | 2026-09-07 10:00 → 2026-09-10 10:00 (+3d) |  |  | 132.47d → 129.47d |  | constraint start no earlier than 2026-09-07 09:00 → start no earlier than 2026-09-10 09:00 |
| 879 | установить защитные крышки на клемник вентиляторов охладителя. От 3д печать | 2026-09-08 09:00 → 2026-09-16 09:00 (+8d) | 2026-09-08 13:00 → 2026-09-16 13:00 (+8d) |  |  |  |  | was named взять у нас в кабинете крышки (обработать) защиты на вентиляторы охладителя; constraint start no earlier than 2026-09-08 09:00 → start no earlier than 2026-09-16 09:00 |
| 955 | **ремонт эл котел №3 охладитель** |  |  | 70.25d? → 71.25d? |  |  |  |  |
| 1111 | **установить водоподготовку на парогенератор** |  | 2026-09-07 18:00 → 2026-09-10 18:00 (+3d) | 109d? → 113d? |  | 131.59d → 128.59d |  |  |
| 1116 | монтаж (установка) | 2026-09-07 09:00 → 2026-09-10 09:00 (+3d) | 2026-09-07 18:00 → 2026-09-10 18:00 (+3d) |  |  | 131.59d → 128.59d |  | constraint start no earlier than 2026-09-07 09:00 → start no earlier than 2026-09-10 09:00 |
| 1292 | **установить на охладитель ролики + скольжение трубы** |  |  | 9d? → 10d? |  |  |  |  |
| 1319 | **схема блокировки роль ворот при открытым шлюзе + авт закрытие + датчик препятствия** | 2026-08-31 09:00 → 2026-09-09 09:00 (+9d) | 2026-09-07 13:00 → 2026-09-10 18:00 (+3d) | 5.5d → 2d |  | 132.09d → 128.59d |  |  |
| 1320 | разработка схемы | 2026-08-31 09:00 → 2026-09-09 09:00 (+9d) | 2026-08-31 13:00 → 2026-09-09 13:00 (+9d) |  |  | 135.59d → 128.59d |  | constraint start no earlier than 2026-08-31 09:00 → start no earlier than 2026-09-09 09:00 |
| 1321 | монтаж | 2026-09-07 09:00 → 2026-09-10 14:00 (+3d) | 2026-09-07 13:00 → 2026-09-10 18:00 (+3d) |  |  | 132.09d → 128.59d |  |  |
| 1327 | **установить пульты на регулировку шибиров вентиляции** |  | 2026-09-15 11:00 → 2026-09-14 11:00 (-1d) |  |  | 126.34d → 127.34d |  |  |
| 1329 | доставка |  | 2026-09-14 11:00 → 2026-09-11 11:00 (-3d) |  |  | 126.34d → 127.34d |  |  |
| 1330 | монтаж | 2026-09-14 11:00 → 2026-09-11 11:00 (-3d) | 2026-09-15 11:00 → 2026-09-14 11:00 (-1d) |  |  | 126.34d → 127.34d |  |  |
| 1338 | **разделить воду на ПГ и экструдер** | 2026-09-04 09:00 → 2026-09-10 09:00 (+6d) | 2026-09-04 11:00 → 2026-09-10 11:00 (+6d) |  |  |  |  |  |
| 1339 | изготовить промежуточную емкость для прекондера, подача воды, сделать по аналогу 3 цеха | 2026-09-04 09:00 → 2026-09-10 09:00 (+6d) | 2026-09-04 11:00 → 2026-09-10 11:00 (+6d) |  |  |  |  | constraint start no earlier than 2026-09-04 09:00 → start no earlier than 2026-09-10 09:00; resources Макаревич А → Тимофеев В |

| ID | Task | Start | Finish | Duration | Complete | Total float | Predecessors | Other |
| --- | --- | --- | --- | --- | --- | --- | --- | --- |
| 1340 | **отмена** |  |  | 77.31d? → 78.31d? |  |  |  |  |
| 1341 | **найти места утечки тепла под потолком- перемерзает труба подачи воды в 3 цех** |  |  | 77.31d? → 78.31d? |  |  |  |  |
| 1356 | **3 цех** |  | 2026-10-07 18:00 → 2026-10-06 18:00 (-1d) |  | 75% → 77% | 109.59d → 110.59d |  |  |
| 1357 | **По схемам Труфанова разобраться с автоматикой шкафа и подключить 3 датчика уровня и подписать, где и что находится +кнопки и переключатели на шкафу тоже подписать** | 2026-09-07 09:00 A | 2026-09-07 12:00 → 2026-09-08 09:30 (+1d) | 3h → 1.06d | 0% → 94% | 132.22d → 131.53d |  | constraint start no earlier than 2026-09-05 09:00 → none; resources Дедов В → none |
| 1360 | **установить ограничитель на дверь что бы попадала под движение рольворот** | 2026-09-04 09:00 → 2026-09-15 09:00 (+11d) | 2026-09-14 10:30 → 2026-09-23 10:30 (+9d) |  |  | 127.41d → 120.41d |  |  |
| 1361 | заявка | 2026-09-04 09:00 → 2026-09-15 09:00 (+11d) | 2026-09-04 09:15 → 2026-09-15 09:15 (+11d) |  |  | 127.41d → 120.41d |  | constraint start no earlier than 2026-09-04 09:00 → start no earlier than 2026-09-15 09:00 |
| 1362 | контроль доставки | 2026-09-11 09:15 → 2026-09-22 09:15 (+11d) | 2026-09-11 09:30 → 2026-09-22 09:30 (+11d) |  |  | 127.41d → 120.41d |  |  |
| 1363 | монтаж | 2026-09-14 09:30 → 2026-09-23 09:30 (+9d) | 2026-09-14 10:30 → 2026-09-23 10:30 (+9d) |  |  | 127.41d → 120.41d |  |  |
| 1370 | **ломает гранулу после печи** |  | 2026-09-04 13:00 → 2026-09-09 10:00 (+5d) | 13.5d? → 17.12d? | 31% → 47% | 133.09d → 130.47d |  |  |
| 1375 | изготовить новый отвод 90 с фланцем, учесть степеньку | 2026-09-04 09:00 → 2026-09-02 09:00 A (-2d) | 2026-09-04 13:00 → 2026-09-02 10:00 A (-2d) | 4h → 1h | 0% → 100% | 133.09d → none |  | was named изготовить новый отвод 90 с фланцем, учесть степеньку. Позвонить Юре; constraint start no earlier than 2026-09-04 09:00 → start no earlier than 2026-09-09 09:00 |
| 1377 | переварить фланец на угловом соединении (объясню по телефону). То же самое | 2026-09-04 09:00 A | 2026-09-04 09:00 A |  | 0% → 100% | 133.59d → none |  |  |
| 1380 | установить угловой фланец на пневмотрассу | 2026-09-04 09:00 → 2026-09-09 09:00 (+5d) | 2026-09-04 13:00 → 2026-09-09 10:00 (+5d) | 4h → 1h |  | 133.09d → 130.47d |  | constraint start no earlier than 2026-09-04 09:00 → start no earlier than 2026-09-09 09:00; resources Макаревич А → Тимофеев В |
| 1381 | **доп мощности для приточной вентиляции** |  | 2026-10-07 18:00 → 2026-10-06 18:00 (-1d) |  |  | 109.59d → 110.59d |  |  |
| 1386 | монтаж | 2026-09-17 09:00 → 2026-09-16 09:00 (-1d) | 2026-10-07 18:00 → 2026-10-06 18:00 (-1d) |  |  | 109.59d → 110.59d |  |  |
| 1388 | **сборка квадропака 3 цех** |  | 2026-09-04 11:00 → 2026-09-10 11:00 (+6d) | 15.25d → 20.25d | 52% → 56% | 133.34d → 129.34d |  |  |
| 1395 | подключение вводный кабель (питание) информация у Труфанова | 2026-09-04 09:00 A | 2026-09-04 11:00 A |  | 0% → 100% | 133.34d → none |  |  |
| 1403 | **карусель добавить перемычку снизу, чтобы не выпал мешок** |  | 2026-09-07 11:00 → 2026-09-14 11:00 (+7d) | 14.25d → 20.25d |  | 132.34d → 127.34d |  |  |
| 1406 | покрасить перемычки система безопасности) | 2026-09-07 09:00 → 2026-09-14 09:00 (+7d) | 2026-09-07 11:00 → 2026-09-14 11:00 (+7d) |  |  | 132.34d → 127.34d |  | constraint start no earlier than 2026-09-07 09:00 → start no earlier than 2026-09-14 09:00 |
| 1491 | **сборка квадропак с системой дозации** |  |  |  | 31% → 45% | 133.09d → 134.09d |  |  |
| 1495 | подключить квадропак / пусконаладка | 2026-09-04 09:00 A | 2026-09-04 13:00 A |  | 0% → 100% | 133.09d → none |  |  |
| 1549 | установить отбойники на стеллажи |  | 2026-04-20 10:00 A → 2026-04-18 16:00 A (-2d) |  |  |  |  |  |
| 1628 | **5 цех** |  |  | 891.12d? → 892.12d? |  |  |  |  |
| 1634 | Сказать параметры, шильдик насосной станции передать зорькину | 2026-09-04 09:00 → 2026-09-03 09:00 A (-1d) | 2026-09-04 09:15 → 2026-09-03 09:15 A (-1d) |  | 0% → 100% | 133.56d → none |  | constraint start no earlier than 2026-09-04 09:00 → start no earlier than 2026-09-03 09:00 |
| 1637 | воставноить заземление на обоих ситах | 2026-09-04 09:00 A | 2026-09-04 11:00 A |  | 0% → 100% | 133.34d → none |  |  |
| 1638 | востановить контакт пульт тельфера у стены (переменный контакт при движении кабеля у пульта) | 2026-09-03 09:00 A | 2026-09-03 10:00 A |  | 0% → 100% | 134.47d → none |  |  |
| 1640 | **подготовить сетку на мал дробилку 3 и 4мм** | 2026-08-24 09:00 → 2026-09-09 09:00 (+16d) | 2026-08-25 10:30 → 2026-09-10 10:30 (+16d) |  |  | 141.41d → 129.41d |  |  |
| 1641 | проверка отстатков сетки на складах | 2026-08-24 09:00 → 2026-09-09 09:00 (+16d) | 2026-08-24 09:30 → 2026-09-09 09:30 (+16d) |  |  | 141.41d → 129.41d |  | constraint start no earlier than 2026-08-24 09:00 → start no earlier than 2026-09-09 09:00; resources Шуранов Ю → Тимофеев В |
| 1642 | вырезатиь сетку в размер | 2026-08-25 09:30 → 2026-09-10 09:30 (+16d) | 2026-08-25 10:30 → 2026-09-10 10:30 (+16d) |  |  | 141.41d → 129.41d |  |  |
| 1644 | **свет в туалет передать крепление светильника** |  | 2026-08-17 10:00 A |  | 56% → 100% | 147.47d → none |  |  |
| 1646 | замена светильника / или закрепить | 2026-08-17 09:00 A | 2026-08-17 10:00 A |  | 0% → 100% | 147.47d → none |  |  |
| 1650 | **проект новая дробилка** |  | 2026-10-06 09:15 → 2026-10-15 09:15 (+9d) | 32.03d → 40.03d |  | 111.56d → 104.56d |  |  |
| 1651 | **кабель для доп мощности** |  | 2026-10-06 09:15 → 2026-10-15 09:15 (+9d) | 32.03d → 40.03d |  | 111.56d → 104.56d |  |  |
| 1653 | получить КП / счет договор | 2026-08-31 09:00 → 2026-09-09 09:00 (+9d) | 2026-08-31 09:00 → 2026-09-09 09:00 (+9d) |  |  | 111.56d → 104.56d |  | constraint start no earlier than 2026-08-31 09:00 → start no earlier than 2026-09-09 09:00 |
| 1654 | предоплата | 2026-09-01 09:00 → 2026-09-10 09:00 (+9d) | 2026-09-01 09:15 → 2026-09-10 09:15 (+9d) |  |  | 111.56d → 104.56d |  |  |
| 1655 | монтаж | 2026-09-15 09:15 → 2026-09-24 09:15 (+9d) | 2026-10-06 09:15 → 2026-10-15 09:15 (+9d) |  |  | 111.56d → 104.56d |  |  |
| 1656 | **монтаж вода в 5ц** |  | 2026-09-09 12:00 → 2026-09-17 10:00 (+8d) | 22.38d? → 29.12d? |  | 130.22d → 124.47d |  |  |
| 1657 | выяснить возможность обмена тройников 1+1/4-1/2 на 3/4-1/2 | 2026-09-01 09:00 → 2026-09-09 09:00 (+8d) | 2026-09-01 09:15 → 2026-09-09 09:15 (+8d) |  |  | 136.56d → 130.56d |  | constraint start no earlier than 2026-09-01 09:00 → start no earlier than 2026-09-09 09:00 |
| 1658 | Прокнуть греющий кабель | 2026-09-07 09:00 → 2026-09-14 09:00 (+7d) | 2026-09-07 12:00 → 2026-09-14 12:00 (+7d) |  |  |  | 1659 → none |  |
| 1659 | Подключение греющего кабеля | 2026-09-07 09:00 → 2026-09-14 12:00 (+7d) | 2026-09-07 12:00 → 2026-09-14 16:00 (+7d) |  |  | 131.84d → 124.47d | none → 1658 |  |
| 1665 | **монтаж труба в земле между 3 и 4ц** |  | 2026-09-09 12:00 → 2026-09-17 10:00 (+8d) | 22.38d? → 29.12d? |  | 130.22d → 124.47d |  |  |
| 1670 | монтаж кабеля | 2026-09-07 09:00 → 2026-09-14 16:00 (+7d) | 2026-09-07 12:00 → 2026-09-15 10:00 (+8d) |  |  | 130.22d → 124.47d | 1669FS+1d → 1669FS+1d, 1659 |  |
| 1671 | монтаж щиток кабеля с УЗО | 2026-09-08 12:00 → 2026-09-16 10:00 (+8d) | 2026-09-09 12:00 → 2026-09-17 10:00 (+8d) |  |  | 130.22d → 124.47d |  |  |
| 1680 | **монтаж тепловые пушки подвесные 5 цех** |  |  | 21.38d → 22.38d | 24% → 32% |  |  |  |
| 1683 | контроль остатки нерж труба, фтинги | 2026-09-07 09:00 A | 2026-09-07 11:00 A |  | 0% → 100% | 122.22d → none |  |  |
| 1691 | монтаж свет в туалете 3 этаж (оператора дадут в помощь) |  | 2026-08-10 10:00 A → 2026-08-09 16:00 A (-1d) |  |  |  |  |  |
| 1770 | монтаж отбойников |  | 2026-04-20 10:00 A → 2026-04-18 16:00 A (-2d) |  |  |  |  |  |
| 1849 | **установить стеллажи для архив образцов** |  |  | 25.06d → 25.06d? |  |  |  |  |
| 1885 | **изготовить бункер нерж** |  |  | 74d → 75d |  |  |  |  |
| 1901 | **Замена насосной станции** |  |  | 9.25d → 10.25d |  |  |  |  |
| 1912 | **модернизация** |  |  | 975.5d? → 976.5d? |  |  |  |  |
| 1957 | **качественное нанесение жира тесты** |  |  | 262.5d → 263.5d? |  |  |  |  |
| 1963 | **монтаж форсунки в линию** |  | 2026-06-04 13:00 → 2027-03-03 13:00 A (+272d) |  |  |  |  |  |
| 2035 | **прекондиционер забивается отслоением слипшегося сырья** |  |  | 204d → 204d? |  |  |  |  |
| 2067 | **техника** |  | 2026-10-06 11:15 → 2026-10-13 09:15 (+7d) | 625.28d? → 631.03d? |  | 111.31d → 106.56d |  |  |
| 2069 | **капремонт погрузчика коматсу короткий** |  | 2026-10-06 11:15 → 2026-10-13 09:15 (+7d) | 38.28d → 44.03d |  | 111.31d → 106.56d |  |  |
| 2073 | решение о дате | 2026-09-07 09:00 A | 2026-09-07 09:00 A |  | 0% → 100% | 132.59d → none |  |  |
| 2074 | орг отправить погрузчик в ремонт / составить акт | 2026-09-08 09:00 A → 2026-09-01 09:00 A (-7d) | 2026-09-08 11:00 A → 2026-09-01 11:00 A (-7d) |  |  |  |  |  |
| 2075 | контроль сроков ремонта | 2026-10-06 11:00 → 2026-10-13 09:00 (+7d) | 2026-10-06 11:15 → 2026-10-13 09:15 (+7d) |  |  | 111.31d → 106.56d |  | constraint start no earlier than 2026-08-12 09:00 → start no earlier than 2026-10-13 09:00 |
| 2118 | **ЗИП ремонт** |  | 2026-10-06 09:55 → 2026-10-05 09:55 (-1d) |  | 54% → 53% | 111.48d → 112.48d |  |  |
| 2236 | **ремонт датчик расхода пара с линия 3** |  | 2026-10-06 09:55 → 2026-10-05 09:55 (-1d) |  |  | 111.48d → 112.48d |  |  |
| 2239 | контроль | 2026-09-29 09:35 → 2026-09-28 09:35 (-1d) | 2026-09-29 09:35 → 2026-09-28 09:35 (-1d) |  |  | 111.48d → 112.48d |  |  |
| 2240 | орг забрать сремонта | 2026-10-06 09:35 → 2026-10-05 09:35 (-1d) | 2026-10-06 09:55 → 2026-10-05 09:55 (-1d) |  |  | 111.48d → 112.48d |  |  |
| 2259 | **быстрая замена шнеков - кондуктор для хранения и перемещения подготвленного ствола** | 2026-09-07 09:00 → 2026-09-21 09:00 (+14d) | 2026-09-10 11:00 → 2026-09-24 11:00 (+14d) |  |  | 129.34d → 119.34d |  |  |
| 2260 | проект кондуктора и траверсы перемещения ствола штабелером | 2026-09-07 09:00 → 2026-09-21 09:00 (+14d) | 2026-09-07 11:00 → 2026-09-21 11:00 (+14d) |  |  | 129.34d → 119.34d |  | constraint start no earlier than 2026-09-07 09:00 → start no earlier than 2026-09-21 09:00 |
| 2261 | сборка | 2026-09-08 11:00 → 2026-09-22 11:00 (+14d) | 2026-09-10 11:00 → 2026-09-24 11:00 (+14d) |  |  | 129.34d → 119.34d |  |  |
| 2344 | **ЗИП заказ (заявки)** |  | 2026-09-07 09:10 → 2026-09-09 09:10 (+2d) | 1.02d → 4.02d | 43% → 71% | 132.57d → 130.57d |  |  |
| 2346 | Наконечники штырьевые для сборки схем (получить инфу у Тимофеева) | 2026-09-07 09:00 → 2026-09-09 09:00 (+2d) | 2026-09-07 09:10 → 2026-09-09 09:10 (+2d) |  |  | 132.57d → 130.57d |  | constraint start no earlier than 2026-09-07 09:00 → start no earlier than 2026-09-09 09:00 |
| 2347 | Газ в слесарку, закончился | 2026-09-07 09:00 A | 2026-09-07 09:10 A |  | 0% → 100% | 132.57d → none |  |  |
| 2348 | **ТО** |  | 2026-09-10 11:00 → 2026-09-10 13:00 | 914.25d? → 915.5d? |  | 129.34d → 129.09d |  |  |
| 2349 | **1 цех** |  |  |  | 42% → 41% |  |  |  |

| ID | Task | Start | Finish | Duration | Complete | Total float | Other |
| --- | --- | --- | --- | --- | --- | --- | --- |
| 2384 | **редуктор экструдера и маслянная станция** |  | 2026-09-07 10:00 → 2026-09-10 13:00 (+3d) | 632.12d → 636.5d | 41% → 37% | 132.47d → 129.09d |  |
| 2397 | **шкаф управления тэнами сушки** |  | 2026-09-07 10:00 → 2026-09-10 13:00 (+3d) | 63.12d → 67.5d | 29% → 11% | 132.47d → 129.09d |  |
| 2399 | замена неисправных жил | 2026-09-07 09:00 → 2026-09-10 09:00 (+3d) | 2026-09-07 10:00 → 2026-09-10 13:00 (+3d) | 1h → 4h |  | 132.47d → 129.09d | constraint start no earlier than 2026-09-07 09:00 → start no earlier than 2026-09-10 09:00; resources Бобренок В → Тимофеев В |
| 2425 | **линия 2** |  |  |  | 41% → 38% |  |  |
| 2452 | **блок тэнов сушки - протяжка** |  | 2026-09-09 10:00 → 2026-09-09 13:00 | 80.12d → 81.5d? | 75% → 43% | 130.47d → 130.09d |  |
| 2454 | ревизия, замена отгоревших жил, проверка токов |  | 2026-09-09 10:00 → 2026-09-09 13:00 | 1h → 4h? |  | 130.47d → 130.09d |  |
| 2537 | **2 цех** |  |  | 914.25d? → 915.25d? |  |  |  |
| 2703 | **охладитель сеточный** |  |  | 625.12d? → 626.12d? |  |  |  |
| 2729 | **квадропак** |  |  | 10.25d → 11.25d |  |  |  |
| 2738 | **БЕСТРОМ** |  |  | 705.06d → 706.06d |  |  |  |
| 2773 | **Компрессор 2 цех** |  |  | 25.06d → 26.06d |  |  |  |
| 2862 | **синий склад** |  | 2026-09-07 18:00 → 2026-09-21 18:00 (+14d) | 88d → 99d | 34% → 48% | 131.59d → 121.59d |  |
| 2864 | монтаж включателя света с улицы, возле вход. Двери | 2026-09-07 09:00 → 2026-09-21 09:00 (+14d) | 2026-09-07 12:00 → 2026-09-21 12:00 (+14d) |  |  | 132.22d → 122.22d | constraint start no earlier than 2026-09-07 09:00 → start no earlier than 2026-09-21 09:00 |
| 2865 | расширить проем вверху для проезда погрузчиков, врезаются | 2026-09-04 09:00 → 2026-09-21 09:00 (+17d) | 2026-09-04 18:00 → 2026-09-21 18:00 (+17d) |  |  |  | constraint start no earlier than 2026-09-04 09:00 → start no earlier than 2026-09-21 09:00 |
| 2905 | **офис** |  | 2026-09-08 11:00 → 2026-09-15 11:00 (+7d) | 912.25d? → 918.25d? |  | 131.34d → 126.34d |  |
| 2928 | выбивает автомат у Монича, нет селективности, замена автоматов. Ремонт освещения корридор | 2026-09-07 09:00 → 2026-09-14 09:00 (+7d) | 2026-09-07 13:00 → 2026-09-14 13:00 (+7d) |  |  | 132.09d → 127.09d | constraint start no earlier than 2026-09-07 09:00 → start no earlier than 2026-09-14 09:00 |
| 2930 | замена регистр отопления нач снабжения | 2026-09-08 09:00 → 2026-09-15 09:00 (+7d) | 2026-09-08 11:00 → 2026-09-15 11:00 (+7d) |  |  | 131.34d → 126.34d | constraint start no earlier than 2026-09-08 09:00 → start no earlier than 2026-09-15 09:00 |
| 2939 | **склад упаковки** |  | 2026-09-08 13:00 → 2026-09-22 13:00 (+14d) | 113.5d? → 124.5d? |  | 131.09d → 121.09d |  |
| 2940 | переделать крепление рамы наруж блока - к МК задния, анкера убрать | 2026-09-08 09:00 → 2026-09-22 09:00 (+14d) | 2026-09-08 13:00 → 2026-09-22 13:00 (+14d) |  |  | 131.09d → 121.09d | constraint start no earlier than 2026-09-08 09:00 → start no earlier than 2026-09-22 09:00 |
| 2958 | **РЭФ контейнеры** |  |  | 204.59d? → 205.59d? | 14% → 15% |  |  |
| 2961 | **ремонт сплит система холодильная камера №1** |  | 2026-09-10 10:00 → 2026-09-17 10:00 (+7d) | 21.12d → 27.12d | 20% → 40% | 129.47d → 124.47d |  |
| 2963 | получить счет на ремонт | 2026-09-01 09:00 → 2026-09-08 09:00 A (+7d) | 2026-09-01 09:15 → 2026-09-08 09:15 A (+7d) |  | 0% → 100% | 129.47d → none | constraint start no earlier than 2026-09-01 09:00 → start no earlier than 2026-09-08 09:00 |
| 2964 | оплата | 2026-09-02 09:15 → 2026-09-09 09:15 (+7d) | 2026-09-02 09:30 → 2026-09-09 09:30 (+7d) |  |  | 129.47d → 124.47d | constraint start no earlier than 2026-09-01 09:00 → start no earlier than 2026-09-09 09:00 |
| 2965 | контроль даты ремонта | 2026-09-09 09:30 → 2026-09-16 09:30 (+7d) | 2026-09-09 09:45 → 2026-09-16 09:45 (+7d) |  |  | 129.47d → 124.47d |  |
| 2966 | приемка работ | 2026-09-10 09:45 → 2026-09-17 09:45 (+7d) | 2026-09-10 10:00 → 2026-09-17 10:00 (+7d) |  |  | 129.47d → 124.47d |  |
| 2979 | **обучение** |  | 2026-09-07 13:00 → 2026-09-10 13:00 (+3d) | 604.5d? → 608.5d? |  | 132.09d → 129.09d |  |
| 2980 | **инструкция управлления дозаций жира** | 2026-09-04 09:00 → 2026-09-09 09:00 (+5d) | 2026-09-07 13:00 → 2026-09-10 13:00 (+3d) |  |  | 132.09d → 129.09d |  |
| 2981 | подготовка гидравлической и функциональной схем системы | 2026-09-04 09:00 → 2026-09-09 09:00 (+5d) | 2026-09-04 13:00 → 2026-09-09 13:00 (+5d) |  |  | 132.09d → 129.09d | constraint start no earlier than 2026-09-04 09:00 → start no earlier than 2026-09-09 09:00 |
| 2982 | описание принципов регулирования | 2026-09-04 14:00 → 2026-09-09 14:00 (+5d) | 2026-09-04 18:00 → 2026-09-09 18:00 (+5d) |  |  | 132.09d → 129.09d |  |
| 2983 | пошаговый алогритм действий по операциям замена фильтров, остановка пуск, настройка режимов | 2026-09-07 09:00 → 2026-09-10 09:00 (+3d) | 2026-09-07 13:00 → 2026-09-10 13:00 (+3d) |  |  | 132.09d → 129.09d |  |
| 3016 | **администрантивные** |  | 2026-09-04 11:00 → 2026-09-16 11:00 (+12d) | 121.25d → 130.25d |  | 133.34d → 125.34d |  |
| 3023 | **Ключи на шкафы** |  | 2026-09-04 11:00 → 2026-09-16 11:00 (+12d) | 101.25d → 110.25d |  | 133.34d → 125.34d |  |
| 3027 | Повешать на веревочку ключи на все шкафы ВРУ и электрощитки (ключи на складе, веревочки взять на производстве, нитки) | 2026-09-04 09:00 → 2026-09-16 09:00 (+12d) | 2026-09-04 11:00 → 2026-09-16 11:00 (+12d) |  |  | 133.34d → 125.34d | constraint start no earlier than 2026-09-04 09:00 → start no earlier than 2026-09-16 09:00 |
| 3029 | **ТБ** |  |  | 920.25d? → 921.25d? |  |  |  |
| 3036 | составить схемы кабельных линий по производству |  | 2026-09-07 18:00 → 2026-09-05 18:00 (-2d) |  |  | 131.59d → 132.59d |  |
| 3053 | **офис** |  | 2025-06-11 10:00 A → 2026-09-08 09:15 (+454d) | 0.12d → 325.03d | 100% → 80% | none → 131.56d |  |
| 3056 | **территория** |  | 2026-09-08 13:00 → 2026-09-21 13:00 (+13d) | 403.5d? → 413.5d? | 52% → 57% | 131.09d → 122.09d |  |
| 3074 | установить люки колодцев на всей территории | 2026-09-08 09:00 → 2026-09-21 09:00 (+13d) | 2026-09-08 13:00 → 2026-09-21 13:00 (+13d) |  |  |  | constraint start no earlier than 2026-09-08 09:00 → start no earlier than 2026-09-21 09:00 |
| 3100 | Сборка рамы и навеса для мусорки 2 ц возле 1 КПП | 2026-09-04 09:00 A | 2026-09-04 13:00 A |  | 0% → 100% | 133.09d → none |  |
| 3101 | Покраска рамы новой мусорки, стоит у ворот навесок 2 цех | 2026-09-04 09:00 A | 2026-09-04 10:00 A |  | 0% → 100% | 133.47d → none |  |
| 3102 | Монтаж дверей на мусорку собираем раму (петли привезем после обеда) | 2026-09-04 09:00 A | 2026-09-04 12:00 A |  | 0% → 100% | 133.22d → none |  |

## Version 4 (saved 2026-09-09, file 07.09.26.mpp)

Last finish stays 2027-03-10. Complete tasks 2012 → 2028.

Added:

| ID | Task | Duration | Start | Finish | Constraint | Resources |
| --- | --- | --- | --- | --- | --- | --- |
| 744 | ревищия сливной шланг моечная машинка | 1h | 2026-09-09 09:00 | 2026-09-09 10:00 | start no earlier than 2026-09-09 08:00 | Бобренок В |
| 745 | Проверка системы под давлением, при необходимости заменить шланги на пневматические | 1h | 2026-09-09 09:00 | 2026-09-09 10:00 | start no earlier than 2026-09-09 08:00 | Тимофеев В |
| 746 | Установить трубку на жирах, которую сделал викторович | 30min | 2026-09-09 09:00 | 2026-09-09 09:30 | start no earlier than 2026-09-09 08:00 | Тимофеев В |
| 852 | Установить доводчик на дверь в мойку зона экструдера | 1h | 2026-09-11 09:00 | 2026-09-11 10:00 | start no earlier than 2026-09-11 09:00 | Бобренок В |
| 1092 | тест | 1h | 2026-09-09 09:00 | 2026-09-09 10:00 | start no earlier than 2026-09-09 08:00 | Бобренок В |
| 2573 | Чистка | 1h | 2026-09-09 09:00 | 2026-09-09 10:00 | start no earlier than 2026-09-09 08:00 | Тимофеев В |
| 2583 | прорверка масла редуктор / натяжка цепи/ ремень/осмотр сетки | 20min | 2026-09-09 09:00 | 2026-09-09 09:20 | start no earlier than 2026-09-09 08:00 | Бобренок В |
| 2599 | контроль масла | 10min | 2026-09-09 09:00 | 2026-09-09 09:10 | start no earlier than 2026-09-09 08:00 | Бобренок В |
| 2627 | Замена подшипников кореных и передних | 4h | 2026-09-09 09:00 | 2026-09-09 13:00 | start no earlier than 2026-09-09 08:00 | Труфанов А; Некрасов А |
| 2631 | Проверка масла | 10min | 2026-09-09 09:00 | 2026-09-09 09:10 | start no earlier than 2026-09-09 08:00 | Бобренок В |
| 2645 | Чистка фильтра | 15min | 2026-09-09 09:00 | 2026-09-09 09:15 | start no earlier than 2026-09-09 08:00 | Бобренок В |
| 2646 | Проверка масла | 5min | 2026-09-09 09:00 | 2026-09-09 09:05 | start no earlier than 2026-09-09 08:00 | Бобренок В |
| 2667 | Контроль редуктора, осмотр, проверка масла | 30min | 2026-09-09 09:00 | 2026-09-09 09:30 | start no earlier than 2026-09-09 08:00 | Труфанов А |
| 2731 | Смазка подшипников привод охладителя | 30min | 2026-09-09 09:00 | 2026-09-09 09:30 | start no earlier than 2026-09-09 08:00 | Тимофеев В |
| 2808 | чистка фильтров | 20min | 2026-09-09 09:00 | 2026-09-09 09:20 | start no earlier than 2026-09-09 09:00 | Некрасов А; Тимофеев В |
| 2817 | чистка фильтров | 30min | 2026-09-09 09:00 | 2026-09-09 09:30 | start no earlier than 2026-09-09 08:00 | Некрасов А; Тимофеев В |
| 2823 | чистка фильтров | 20min | 2026-09-03 09:00 A | 2026-09-03 09:20 A | start no earlier than 2026-09-03 09:00 | Некрасов А; Тимофеев В |

Changed:

| ID | Task | Start | Finish | Duration | Complete | Total float | Predecessors | Other |
| --- | --- | --- | --- | --- | --- | --- | --- | --- |
| 2 | Реанимировать весы, чтобы показывали. Смесители | 2026-09-08 09:00 → 2026-09-10 09:00 (+2d) | 2026-09-08 10:00 → 2026-09-10 10:00 (+2d) |  |  | 131.47d → 129.47d |  | constraint start no earlier than 2026-09-08 09:00 → start no earlier than 2026-09-10 09:00; resources Дедов В → Бундин В |
| 3 | Закрыть каналыгу. На анкера | 2026-09-09 09:00 → 2026-09-10 09:00 (+1d) | 2026-09-09 10:00 → 2026-09-10 10:00 (+1d) |  |  | 130.47d → 129.47d |  | constraint start no earlier than 2026-09-09 09:00 → start no earlier than 2026-09-10 09:00 |
| 4 | установить доп светильник на погрузочной рампе | 2026-09-09 09:00 → 2026-09-10 09:00 (+1d) | 2026-09-09 13:00 → 2026-09-10 13:00 (+1d) | 4h? → 4h |  | 130.09d → 129.09d |  | constraint start no earlier than 2026-09-09 09:00 → start no earlier than 2026-09-10 09:00 |
| 24 | ревизия парогенератор КАРЧЕР | 2026-09-08 09:00 → 2026-09-09 09:00 (+1d) | 2026-09-08 10:00 → 2026-09-09 10:00 (+1d) |  |  | 131.47d → 130.47d |  | constraint start no earlier than 2026-09-08 09:00 → start no earlier than 2026-09-09 09:00; resources Дедов В → Бундин В |
| 25 | **подключить циклоны 1 и 2 линия** |  | 2026-09-09 13:00 → 2026-09-10 13:00 (+1d) | 0.5d → 1.5d |  | 130.09d → 129.09d |  |  |
| 27 | монтаж кабеля | 2026-09-09 09:00 → 2026-09-10 09:00 (+1d) | 2026-09-09 13:00 → 2026-09-10 13:00 (+1d) |  |  | 130.09d → 129.09d |  | constraint start no earlier than 2026-09-09 09:00 → start no earlier than 2026-09-10 09:00 |
| 28 | замена бактерицидных ламп в коридоре и посмотреть, где не горят | 2026-09-08 09:00 → 2026-09-09 09:00 (+1d) | 2026-09-08 11:00 → 2026-09-09 10:00 (+1d) | 2h → 1h |  | 131.34d → 130.47d |  | was named замена бактерицидных ламп; constraint start no earlier than 2026-09-08 09:00 → start no earlier than 2026-09-09 09:00; resources Дедов В → Бундин В |
| 29 | исправить "не возможность открыть" краны фильтр жир 2л | 2026-09-09 09:00 → 2026-09-10 09:00 (+1d) | 2026-09-09 09:30 → 2026-09-10 09:30 (+1d) |  |  | 130.53d → 129.53d |  | constraint start no earlier than 2026-09-09 09:00 → start no earlier than 2026-09-10 09:00 |
| 30 | ремонт силиконовых уплотнений печи на сетке 1 и 2 л | 2026-09-09 09:00 → 2026-09-10 09:00 (+1d) | 2026-09-09 12:00 → 2026-09-10 12:00 (+1d) |  |  | 130.22d → 129.22d |  | constraint start no earlier than 2026-09-09 09:00 → start no earlier than 2026-09-10 09:00 |
| 31 | **сместить квадропак в сторону охладителя 2л** | 2026-09-09 09:00 → 2026-09-10 09:00 (+1d) | 2026-09-09 12:00 → 2026-09-10 12:00 (+1d) |  |  | 130.22d → 129.22d |  |  |
| 32 | отключение / перенгос мехнизмов | 2026-09-09 09:00 → 2026-09-10 09:00 (+1d) | 2026-09-09 12:00 → 2026-09-10 12:00 (+1d) |  |  | 130.22d → 129.22d |  | constraint start no earlier than 2026-09-09 09:00 → start no earlier than 2026-09-10 09:00 |
| 33 | подключение | 2026-09-09 09:00 → 2026-09-10 09:00 (+1d) | 2026-09-09 12:00 → 2026-09-10 12:00 (+1d) |  |  | 130.22d → 129.22d |  | constraint start no earlier than 2026-09-09 09:00 → start no earlier than 2026-09-10 09:00 |
| 34 | Ревизия утечек воздуха на квадропаке (важно проверить пневмораспределителях) и вакуумную систему | 2026-09-08 09:00 → 2026-09-10 09:00 (+2d) | 2026-09-08 11:00 → 2026-09-10 11:00 (+2d) |  |  |  |  | constraint start no earlier than 2026-09-08 09:00 → start no earlier than 2026-09-10 09:00; resources Дедов В → Бундин В |
| 35 | Комплексное ТО квадропака, проверка всех соединений, протяжка болтов на всех узлах | 2026-09-08 09:00 → 2026-09-10 09:00 (+2d) | 2026-09-08 11:00 → 2026-09-10 11:00 (+2d) |  |  |  |  | constraint start no earlier than 2026-09-08 09:00 → start no earlier than 2026-09-10 09:00; resources Дедов В → Бундин В |
| 37 | Убрать все кабеля на полу в зоне фасовки, теко-нотис (кабельный менеджмент) | 2026-09-09 09:00 → 2026-09-10 09:00 (+1d) | 2026-09-09 11:00 → 2026-09-10 11:00 (+1d) |  |  | 130.34d → 129.34d |  | constraint start no earlier than 2026-09-09 09:00 → start no earlier than 2026-09-10 09:00 |
| 45 | **Не работают роль ставни на жирах, не стопоряться сделать/устранить неисправность** | 2026-09-09 09:00 A |  |  | 0% → 2% |  |  |  |
| 46 | Вызвать подрядчика/контроль | 2026-09-09 09:00 A | 2026-09-09 09:10 A |  | 0% → 100% | 129.55d → none |  |  |
| 49 | закреить отбойник корридор навесок (заанкерить) | 2026-09-03 09:00 A | 2026-09-03 10:00 A |  | 0% → 100% | 135.47d → none |  |  |
| 69 | **продумать как сделать герметичную крышку на смесителе сухого гидрализата** |  | 2026-09-09 11:00 → 2026-09-10 11:00 (+1d) | 10.25d → 11.25d |  | 130.34d → 129.34d |  |  |
| 72 | установка на струбцинах с уплотнителями | 2026-09-09 09:00 → 2026-09-10 09:00 (+1d) | 2026-09-09 11:00 → 2026-09-10 11:00 (+1d) |  |  | 130.34d → 129.34d |  | constraint start no earlier than 2026-09-09 09:00 → start no earlier than 2026-09-10 09:00 |
| 73 | **метал от тенов печи, устранить причину** |  | 2026-09-09 13:00 → 2026-09-10 12:00 (+1d) | 13.5d? → 14.38d? | 38% → 45% | 130.09d → 129.22d |  |  |
| 78 | замена заброкованных осмотром тенов | 2026-09-09 09:00 → 2026-09-10 09:00 (+1d) | 2026-09-09 13:00 → 2026-09-10 12:00 (+1d) | 4h? → 3h? |  | 130.09d → 129.22d |  | constraint start no earlier than 2026-09-09 09:00 → start no earlier than 2026-09-10 09:00 |
| 98 | **ТЕКО ремонт кнопки, которую снял Бобренок В , вернуть то что снял с 3ц** |  | 2026-09-09 10:00 → 2026-09-08 10:00 A (-1d) | 20.12d → 19.12d | 45% → 100% | 130.47d → none |  |  |
| 102 | монтаж платы на место | 2026-09-09 09:00 → 2026-09-08 09:00 A (-1d) | 2026-09-09 10:00 → 2026-09-08 10:00 A (-1d) |  | 0% → 100% | 130.47d → none |  | resources Бобренок В → Тимофеев В |
| 103 | Вернуть голову с восстановленной клавиатурой на НОТИС в 3 цех | 2026-09-09 09:00 → 2026-09-08 09:00 A (-1d) | 2026-09-09 09:30 → 2026-09-08 09:30 A (-1d) |  | 0% → 100% | 130.53d → none |  | resources Бобренок В → Тимофеев В |
| 111 | **палетообмостчик монтаж в 1ц** |  | 2026-09-10 12:00 → 2026-09-14 12:00 (+4d) | 22.38d → 24.38d |  | 129.22d → 127.22d |  |  |
| 118 | монтаж | 2026-09-10 09:00 → 2026-09-14 09:00 (+4d) | 2026-09-10 12:00 → 2026-09-14 12:00 (+4d) |  |  | 129.22d → 127.22d |  | constraint start no earlier than 2026-09-10 09:00 → start no earlier than 2026-09-14 09:00 |
| 148 | **теко 0,4 -восстановить или заменить блок для тепловухи** |  |  | 1d? → 1.12d? |  |  |  |  |
| 181 | **сборка дозатор на квадропак** |  | 2026-09-10 11:00 → 2026-09-14 11:00 (+4d) | 46.25d → 48.25d |  | 129.34d → 127.34d |  |  |
| 192 | тестирование весов / разгон | 2026-09-01 09:00 → 2026-09-14 09:00 (+13d) | 2026-09-01 11:00 → 2026-09-14 11:00 (+13d) |  |  | 137.34d → 127.34d |  | constraint start no earlier than 2026-09-01 09:00 → start no earlier than 2026-09-14 09:00 |
| 197 | закрыть зад крышку | 2026-09-09 09:00 → 2026-09-10 09:00 (+1d) | 2026-09-09 09:20 → 2026-09-10 09:20 (+1d) |  |  | 130.55d → 129.55d |  | constraint start no earlier than 2026-09-09 09:00 → start no earlier than 2026-09-10 09:00 |
| 199 | закрыть металлом пустые места между площадками квадропак и дозатор | 2026-09-10 09:00 → 2026-09-11 09:00 (+1d) | 2026-09-10 11:00 → 2026-09-11 11:00 (+1d) |  |  | 129.34d → 128.34d |  | constraint start no earlier than 2026-09-10 09:00 → start no earlier than 2026-09-11 09:00 |
| 216 | монтаж датчиковтока на 2л | 2026-09-09 09:00 → 2026-09-10 09:00 (+1d) | 2026-09-09 11:00 → 2026-09-10 11:00 (+1d) |  |  | 130.34d → 129.34d |  | constraint start no earlier than 2026-09-09 09:00 → start no earlier than 2026-09-10 09:00 |
| 277 | **установить резервную трубку/штангу с форсункой на подачу жира** |  | 2026-09-18 18:00 → 2026-09-23 10:00 (+5d) | 9d → 11.12d |  | 122.59d → 120.47d |  |  |
| 279 | разработать спецкронштейн крепления 4х трубок | 2026-09-09 09:00 → 2026-09-10 09:00 (+1d) | 2026-09-09 10:00 → 2026-09-10 10:00 (+1d) |  |  | 130.47d → 120.47d |  | constraint start no earlier than 2026-09-09 09:00 → start no earlier than 2026-09-10 09:00 |
| 280 | монтаж спец кронштенна | 2026-09-10 09:00 → 2026-09-11 10:00 (+1d) | 2026-09-10 10:00 → 2026-09-11 11:00 (+1d) |  |  | 129.47d → 120.47d | none → 279FS+1d |  |
| 281 | заявка фитинги / тройники / краны / трубка | 2026-09-09 10:00 → 2026-09-11 11:00 (+2d) | 2026-09-09 11:00 → 2026-09-11 12:00 (+2d) |  |  | 122.59d → 120.47d | 278FS+1d → 278FS+1d, 280 |  |
| 282 | доставка контроль | 2026-09-16 11:00 → 2026-09-18 12:00 (+2d) | 2026-09-16 11:00 → 2026-09-18 12:00 (+2d) |  |  | 122.59d → 120.47d |  |  |
| 283 | сборка в мастерской | 2026-09-17 11:00 → 2026-09-21 12:00 (+4d) | 2026-09-17 16:00 → 2026-09-21 17:00 (+4d) |  |  | 122.59d → 120.47d |  |  |
| 284 | монтаж на линию | 2026-09-18 16:00 → 2026-09-22 17:00 (+4d) | 2026-09-18 18:00 → 2026-09-23 10:00 (+5d) |  |  | 122.59d → 120.47d |  |  |
| 516 | монтаж 1 линия расходомер / кабель / блок питания | 2026-09-10 09:00 A → 2026-09-11 09:00 A (+1d) | 2026-09-10 12:00 → 2026-09-11 12:00 (+1d) |  |  |  |  | constraint start no earlier than 2026-09-10 09:00 → start no earlier than 2026-09-11 09:00 |
| 719 | **Дражжировка конвейер №1 после печки** |  | 2026-09-10 11:00 → 2026-09-11 10:00 (+1d) | 102.25d → 103.12d | 77% → 92% | 129.34d → 128.47d |  |  |
| 720 | Поставить резьбовые клепки на боковой кожух, где кончается лента | 2026-09-10 09:00 → 2026-09-11 09:00 (+1d) | 2026-09-10 10:00 → 2026-09-11 10:00 (+1d) |  |  | 129.47d → 128.47d |  | constraint start no earlier than 2026-09-10 09:00 → start no earlier than 2026-09-11 09:00 |
| 721 | Ремонт насоса от 2 линии 1 цех, статор взять на складе | 2026-09-10 09:00 A | 2026-09-10 11:00 A |  | 0% → 100% | 129.34d → none |  | resources Тимофеев В → Некрасов А |
| 751 | востановить потерю токов в печи / ревизия . Замена тенов | 2026-09-10 09:00 → 2026-09-09 09:00 (-1d) | 2026-09-10 11:00 → 2026-09-09 13:00 (-1d) | 2h → 4h |  | 129.34d → 130.09d |  | was named востановить потерю токов в печи / ревизия; constraint start no earlier than 2026-09-10 09:00 → start no earlier than 2026-09-09 09:00; resources Труфанов А → Бобренок В |
| 752 | Смазка подшипников привода охладителя | 2026-09-10 09:00 → 2026-09-09 09:00 (-1d) | 2026-09-10 10:00 → 2026-09-09 10:00 (-1d) |  |  |  |  |  |
| 756 | **Подготовить электрическую часть для подключения второго насоса без частотника (продолжаем эту задачу)** | 2026-09-10 09:00 A → 2026-09-09 09:00 A (-1d) |  | 0.12d → 1.12d |  |  |  |  |
| 758 | монтаж | 2026-09-10 09:00 → 2026-09-09 09:00 (-1d) | 2026-09-10 10:00 → 2026-09-09 10:00 (-1d) |  |  | 129.47d → 130.47d |  | constraint start no earlier than 2026-09-10 09:00 → start no earlier than 2026-09-09 09:00 |
| 788 | **установить сифон ф110 в линию слива жиров** |  | 2026-09-10 11:30 → 2026-09-11 11:30 (+1d) | 22.31d → 23.31d |  | 129.28d → 128.28d |  |  |
| 790 | возможно ли убрать сифоны ф50, достаточно ли заслонки без гидрозатвора? Как сделать гидрозатвор ф100 | 2026-09-09 09:00 → 2026-09-10 09:00 (+1d) | 2026-09-09 09:15 → 2026-09-10 09:15 (+1d) |  |  | 129.28d → 128.28d |  | constraint start no earlier than 2026-09-09 09:00 → start no earlier than 2026-09-10 09:00 |
| 791 | решение | 2026-09-10 09:15 → 2026-09-11 09:15 (+1d) | 2026-09-10 09:15 → 2026-09-11 09:15 (+1d) |  |  | 129.28d → 128.28d |  |  |
| 792 | контроль доставка | 2026-09-10 09:15 → 2026-09-11 09:15 (+1d) | 2026-09-10 09:30 → 2026-09-11 09:30 (+1d) |  |  | 129.28d → 128.28d |  |  |
| 793 | монтаж | 2026-09-10 09:30 → 2026-09-11 09:30 (+1d) | 2026-09-10 11:30 → 2026-09-11 11:30 (+1d) |  |  | 129.28d → 128.28d |  |  |
| 794 | **установить инсекютер дополнительный на экструдер** |  | 2026-09-10 12:15 → 2026-09-17 12:00 (+7d) | 15.41d → 20.38d |  | 129.19d → 124.22d |  |  |
| 797 | монтаж розетка / кабель | 2026-09-10 09:15 → 2026-09-17 09:00 (+7d) | 2026-09-10 12:15 → 2026-09-17 12:00 (+7d) |  |  | 129.19d → 124.22d |  | constraint start no earlier than 2026-09-07 09:00 → start no earlier than 2026-09-17 09:00 |
| 845 | **на дверь в мойку установить мощный доводчик** |  | 2026-09-10 11:15 → 2026-09-11 10:00 (+1d) | 15.28d → 16.12d | 36% → 30% | 129.31d → 128.47d |  |  |
| 851 | установить ручку с защелкой -язычком | 2026-09-09 09:00 → 2026-09-10 09:00 (+1d) | 2026-09-09 10:00 → 2026-09-10 10:00 (+1d) |  |  | 130.47d → 129.47d |  | constraint start no earlier than 2026-09-09 09:00 → start no earlier than 2026-09-10 09:00 |
| 867 | **выполнить обрамление двери в охладитель, что бы скрыть поверхность** |  | 2026-09-09 09:15 → 2026-09-17 11:00 (+8d) | 19.03d → 25.25d | 90% → 50% | 130.56d → 124.34d |  |  |
| 870 | обить дверь в охладитель профлистом оцнк | 2026-09-10 09:00 → 2026-09-17 09:00 (+7d) | 2026-09-10 11:00 → 2026-09-17 11:00 (+7d) |  |  | 129.34d → 124.34d |  | constraint start no earlier than 2026-09-10 09:00 → start no earlier than 2026-09-17 09:00 |
| 872 | **ремонт осушителя компрессора 2ц** |  | 2026-09-10 10:00 → 2026-09-11 10:00 (+1d) | 24.12d → 25.12d |  | 129.47d → 128.47d |  |  |
| 873 | проверка давления фреона | 2026-09-10 09:00 → 2026-09-11 09:00 (+1d) | 2026-09-10 10:00 → 2026-09-11 10:00 (+1d) |  |  | 129.47d → 128.47d |  | constraint start no earlier than 2026-09-10 09:00 → start no earlier than 2026-09-11 09:00 |
| 1090 | **сделать горловину на быстросъемах прекондиционер** |  |  |  | 50% → 47% |  |  |  |
| 1116 | **установить водоподготовку на парогенератор** |  | 2026-09-10 18:00 → 2026-09-17 18:00 (+7d) | 113d? → 118d? |  | 128.59d → 123.59d |  |  |
| 1121 | монтаж (установка) | 2026-09-10 09:00 → 2026-09-17 09:00 (+7d) | 2026-09-10 18:00 → 2026-09-17 18:00 (+7d) |  |  | 128.59d → 123.59d |  | constraint start no earlier than 2026-09-10 09:00 → start no earlier than 2026-09-17 09:00 |
| 1324 | **схема блокировки роль ворот при открытым шлюзе + авт закрытие + датчик препятствия** |  | 2026-09-10 18:00 → 2026-09-17 13:00 (+7d) | 2d → 6.5d |  | 128.59d → 124.09d |  |  |
| 1326 | монтаж | 2026-09-10 14:00 → 2026-09-17 09:00 (+7d) | 2026-09-10 18:00 → 2026-09-17 13:00 (+7d) |  |  | 128.59d → 124.09d |  | constraint start no earlier than 2026-09-07 09:00 → start no earlier than 2026-09-17 09:00 |
| 1343 | **разделить воду на ПГ и экструдер** | 2026-09-10 09:00 → 2026-09-17 09:00 (+7d) | 2026-09-10 11:00 → 2026-09-17 11:00 (+7d) |  |  |  |  |  |
| 1344 | изготовить промежуточную емкость для прекондера, подача воды, сделать по аналогу 3 цеха | 2026-09-10 09:00 → 2026-09-17 09:00 (+7d) | 2026-09-10 11:00 → 2026-09-17 11:00 (+7d) |  |  |  |  | constraint start no earlier than 2026-09-10 09:00 → start no earlier than 2026-09-17 09:00 |
| 1362 | **По схемам Труфанова разобраться с автоматикой шкафа и подключить 3 датчика уровня и подписать, где и что находится +кнопки и переключатели на шкафу тоже подписать** |  | 2026-09-08 09:30 A |  | 94% → 100% | 131.53d → none |  |  |
| 1364 | подкл 2я нория по датчику уровня | 2026-09-08 09:00 A | 2026-09-08 09:30 A |  | 0% → 100% | 131.53d → none |  |  |

| ID | Task | Start | Finish | Duration | Complete | Total float | Predecessors | Other |
| --- | --- | --- | --- | --- | --- | --- | --- | --- |
| 1393 | **сборка квадропака 3 цех** |  | 2026-09-10 11:00 → 2026-09-11 11:00 (+1d) | 20.25d → 21.25d |  | 129.34d → 128.34d |  |  |
| 1401 | тест на пакетах | 2026-09-10 09:00 → 2026-09-11 09:00 (+1d) | 2026-09-10 11:00 → 2026-09-11 11:00 (+1d) |  |  | 129.34d → 128.34d |  | constraint start no earlier than 2026-09-10 09:00 → start no earlier than 2026-09-11 09:00 |
| 1638 | **ремонт насос водоснабжения** |  | 2026-09-10 10:00 → 2026-09-11 10:15 (+1d) | 6.12d → 7.16d |  | 129.47d → 128.44d |  |  |
| 1640 | конртроль поставки | 2026-09-09 09:00 → 2026-09-10 09:00 (+1d) | 2026-09-09 09:15 → 2026-09-10 09:15 (+1d) |  |  | 130.44d → 128.44d |  | constraint start no earlier than 2026-09-09 09:00 → start no earlier than 2026-09-10 09:00 |
| 1641 | замена | 2026-09-10 09:00 → 2026-09-11 09:15 (+1d) | 2026-09-10 10:00 → 2026-09-11 10:15 (+1d) |  |  | 129.47d → 128.44d | 1640 → 1640FS+1d |  |
| 1645 | **подготовить сетку на мал дробилку 3 и 4мм** | 2026-09-09 09:00 → 2026-09-10 09:00 (+1d) | 2026-09-10 10:30 → 2026-09-11 10:30 (+1d) |  |  | 129.41d → 128.41d |  |  |
| 1646 | проверка отстатков сетки на складах | 2026-09-09 09:00 → 2026-09-10 09:00 (+1d) | 2026-09-09 09:30 → 2026-09-10 09:30 (+1d) |  |  | 129.41d → 128.41d |  | constraint start no earlier than 2026-09-09 09:00 → start no earlier than 2026-09-10 09:00 |
| 1647 | вырезатиь сетку в размер | 2026-09-10 09:30 → 2026-09-11 09:30 (+1d) | 2026-09-10 10:30 → 2026-09-11 10:30 (+1d) |  |  | 129.41d → 128.41d |  |  |
| 1968 | **монтаж форсунки в линию** |  |  | 61.5d? → 256.5d? |  |  |  |  |
| 2126 | возможно ли установить тавотницу на подшипник червяка? | 2026-09-09 09:00 → 2026-09-10 09:00 (+1d) | 2026-09-09 09:15 → 2026-09-10 09:15 (+1d) |  |  | 130.56d → 129.56d |  | constraint start no earlier than 2026-09-09 09:00 → start no earlier than 2026-09-10 09:00 |
| 2353 | **ТО** |  | 2026-09-10 13:00 → 2026-09-17 11:00 (+7d) | 915.5d? → 920.25d? | 35% → 36% | 129.09d → 124.34d |  |  |
| 2457 | **блок тэнов сушки - протяжка** |  | 2026-09-09 13:00 → 2026-09-10 13:00 (+1d) | 81.5d? → 82.5d? |  | 130.09d → 129.09d |  |  |
| 2459 | ревизия, замена отгоревших жил, проверка токов | 2026-09-09 09:00 → 2026-09-10 09:00 (+1d) | 2026-09-09 13:00 → 2026-09-10 13:00 (+1d) |  |  | 130.09d → 129.09d |  | constraint start no earlier than 2026-09-09 09:00 → start no earlier than 2026-09-10 09:00 |
| 2542 | **2 цех** |  | 2026-09-10 11:00 → 2026-09-17 11:00 (+7d) | 915.25d? → 920.25d? | 59% → 61% | 129.34d → 124.34d |  |  |
| 2544 | **линия 3** |  | 2026-09-03 09:30 → 2026-09-09 10:00 (+6d) | 909.06d? → 914.12d? |  | 135.53d → 130.47d |  |  |
| 2545 | **прекондицинер экструдера** |  |  |  | 98% → 99% |  |  |  |
| 2557 | Замена водяного фильтра на прекондиционере/парогенератор | 2026-09-03 09:00 A | 2026-09-03 09:15 A |  | 0% → 100% | 135.56d → none |  | was named Замена водяного фильтра на прекондиционере/парогенератор (нет фильтров не меняли в следующее ТО на 10.09.26) |
| 2558 | **парогенератор** |  | 2026-09-03 09:20 A → 2026-09-09 10:00 (+6d) | 619.92d → 625d | 100% → 94% | none → 130.47d |  |  |
| 2574 | **привод сетки ПЕЧИ сушки** |  | 2026-08-20 09:20 → 2026-09-09 09:20 (+20d) | 610.04d → 625.04d | 90% → 91% | 145.55d → 130.55d |  |  |
| 2582 | прорверка масла редуктор / натяжка цепи/ ремень/осмотр сетки | 2026-08-20 09:00 A | 2026-08-20 09:20 A |  | 0% → 100% | 145.55d → none |  |  |
| 2591 | **смеситель СМ-1500** |  | 2026-09-03 09:15 → 2026-09-09 09:10 (+6d) | 130.03d → 135.02d | 86% → 98% | 135.56d → 130.57d |  |  |
| 2597 | ревизия подшипникой красного смесителя, просыпается мука со стороны редуктора | 2026-08-27 09:00 A | 2026-08-27 10:00 A |  | 0% → 100% | 140.47d → none |  |  |
| 2606 | Вскрыть, осмотреть ленту (держится на одном ковше, закрепили на доп болты) |  |  |  |  |  |  | was named Вскрыть, осмотреть ленту (держится на одном |
| 2622 | **привод прекондиционера** |  | 2026-09-03 09:30 A → 2026-09-09 13:00 (+6d) | 130.06d → 135.5d | 100% → 23% | none → 130.09d |  |  |
| 2628 | **мотор-редуктор привод шнеков** |  | 2026-09-03 09:10 → 2026-09-09 09:10 (+6d) | 10.02d → 15.02d | 8% → 7% | 135.57d → 130.57d |  |  |
| 2632 | **редуктор шнеков экструдера - проверка масла** |  | 2026-09-03 09:15 A → 2026-09-09 09:15 (+6d) | 403.03d → 408.03d | 100% → 93% | none → 130.56d |  |  |
| 2662 | **печь - валы этажей, подшипники, цепи** |  | 2026-09-03 09:30 A → 2026-09-09 09:30 (+6d) | 120.06d → 125.06d | 100% → 88% | none → 130.53d |  |  |
| 2716 | **охладитель сеточный** |  | 2026-09-10 10:00 → 2026-09-09 10:00 (-1d) | 626.12d? → 625.12d? | 40% → 53% | 129.47d → 130.47d |  |  |
| 2726 | осмотр ремней, натяжка цепей, ремонт силиконовых отбортовок | 2026-07-14 09:00 A | 2026-07-14 10:00 A |  | 0% → 100% | 172.47d → none |  |  |
| 2728 | осмотр ремней, натяжка цепей, ремонт силиконовых отбортовок | 2026-08-20 09:00 A | 2026-08-20 10:00 A |  | 0% → 100% | 145.47d → none |  |  |
| 2729 | осмотр ремней, натяжка цепей, ремонт силиконовых отбортовок | 2026-08-20 09:00 A | 2026-08-20 10:00 A |  | 0% → 100% | 145.47d → none |  |  |
| 2730 | Ревизия сетки, контроль роспуска, подогнуть, где что можно, что бы не зацепилось | 2026-09-10 09:00 → 2026-09-09 09:00 (-1d) | 2026-09-10 10:00 → 2026-09-09 10:00 (-1d) |  |  | 129.47d → 130.47d |  | constraint start no earlier than 2026-09-10 09:00 → start no earlier than 2026-09-09 09:00; resources Макаревич А → Некрасов А |
| 2736 | **упаковка** |  | 2026-09-03 11:00 A |  | 67% → 100% | 135.34d → none |  |  |
| 2737 | НОТИС 1 | 2023-12-28 09:00 A | 2023-12-28 11:00 A |  | 0% → 100% | 835.34d → none |  |  |
| 2738 | НОТИС 2 | 2023-12-28 09:00 A | 2023-12-28 11:00 A |  | 0% → 100% | 835.34d → none |  |  |
| 2743 | **квадропак** |  | 2026-09-10 11:00 → 2026-09-17 11:00 (+7d) | 11.25d → 16.25d |  | 129.34d → 124.34d |  |  |
| 2751 | снимать ковши для доступка к подшинику, нуждающего в смазке( сообщил Некрасов) | 2026-09-10 09:00 → 2026-09-17 09:00 (+7d) | 2026-09-10 11:00 → 2026-09-17 11:00 (+7d) |  |  | 129.34d → 124.34d |  | constraint start no earlier than 2026-09-10 09:00 → start no earlier than 2026-09-17 09:00 |
| 2787 | **Компрессор 2 цех** |  | 2026-09-10 09:30 → 2026-09-09 09:30 (-1d) | 26.06d → 25.06d |  | 129.53d → 130.53d |  |  |
| 2795 | продувка фильтров (дать размеры фильтра) | 2026-09-10 09:00 → 2026-09-09 09:00 (-1d) | 2026-09-10 09:30 → 2026-09-09 09:30 (-1d) |  |  | 129.53d → 130.53d |  | constraint start no earlier than 2026-09-10 09:00 → start no earlier than 2026-09-09 09:00; resources Макаревич А → Труфанов А |
| 2796 | **насосная станция 2 цех** |  | 2026-09-03 09:30 A |  | 50% → 100% | 135.53d → none |  |  |
| 2798 | замена фильтров | 2026-09-03 09:00 A | 2026-09-03 09:30 A |  | 0% → 100% | 135.53d → none |  | was named замена фильтров (перенос замены на 10.09.26 закончились) |
| 2799 | **приточнго-вытяжная венгтиляция и смесительный узел** | 2026-04-16 09:00 A | 2026-04-16 10:00 A |  | 0% → 100% | 235.47d → none |  |  |
| 2800 | замена фильтра | 2026-04-16 09:00 A | 2026-04-16 10:00 A |  | 0% → 100% | 235.47d → none |  |  |
| 2801 | **кондиционер 1** |  | 2026-09-03 09:20 A → 2026-09-09 09:20 (+6d) | 620.04d? → 625.04d? | 100% → 97% | none → 130.55d |  |  |
| 2809 | **кондиционер 2** |  | 2026-09-03 09:20 A → 2026-09-09 09:30 (+6d) | 620.04d? → 625.06d? | 100% → 96% | none → 130.53d |  |  |
| 2818 | **кондиционер 3** |  | 2026-09-03 09:20 A → 2026-09-09 09:20 (+6d) | 130.04d → 135.04d | 100% → 83% | none → 130.55d |  |  |
| 2824 | чистка фильтров | 2026-09-03 09:00 A → 2026-09-09 09:00 (+6d) | 2026-09-03 09:20 A → 2026-09-09 09:20 (+6d) |  | 100% → 0% | none → 130.55d |  | constraint start no earlier than 2026-09-03 09:00 → start no earlier than 2026-09-09 09:00 |

## Version 5 (saved 2026-09-10, file 07.09.26.mpp)

Last finish stays 2027-03-10. Complete tasks 2028 → 2063.

Added:

| ID | Task | Duration | Start | Finish | Predecessors | Constraint | Resources |
| --- | --- | --- | --- | --- | --- | --- | --- |
| 25 | орг отправить курьера на пнд | 15min | 2026-09-14 09:00 | 2026-09-14 09:15 |  | start no earlier than 2026-09-14 09:00 | Зорькин В |
| 26 | контроль доставки | 15min | 2026-09-24 09:00 | 2026-09-24 09:15 | 25 | start no earlier than 2026-09-24 09:00 | Зорькин В |
| 31 | **бактерицидные лампы** | 2.12d | 2026-09-09 09:00 A | 2026-09-11 10:00 |  |  |  |
| 33 | ремонт лампы снятой бундиным с мойки экструдера | 1h | 2026-09-11 09:00 | 2026-09-11 10:00 |  | start no earlier than 2026-09-11 09:00 | Бобренок В |
| 34 | ремонт лампы в тамбуре вывоз ГП | 1h | 2026-09-11 09:00 | 2026-09-11 10:00 |  | start no earlier than 2026-09-11 09:00 | Бобренок В |
| 146 | Подключение улитки, монтаж щитка к стене | 1h | 2026-09-16 09:00 | 2026-09-16 10:00 |  | start no earlier than 2026-09-16 09:00 | Макаревич А |
| 751 | замена квадрат ручка дверь экструдер | 1h | 2026-09-11 09:00 | 2026-09-11 10:00 |  | start no earlier than 2026-09-11 09:00 | Макаревич А |
| 753 | заявка | 15min | 2026-09-14 09:00 | 2026-09-14 09:15 |  | start no earlier than 2026-09-14 09:00 | Зорькин В |
| 754 | контроль доставки | 15min | 2026-09-14 09:15 | 2026-09-14 09:30 | 753 | start no earlier than 2026-09-10 08:00 | Зорькин В |
| 755 | монтаж | 2h | 2026-09-14 09:30 | 2026-09-14 11:30 | 754 | start no earlier than 2026-09-10 08:00 | Тимофеев В |
| 770 | Переместить розетки со стола, смонтировать площадку к раме и закрепить на эту раму | 2h | 2026-09-17 09:00 | 2026-09-17 11:00 |  | start no earlier than 2026-09-17 09:00 | Тимофеев В |

Changed:

| ID | Task | Start | Finish | Duration | Complete | Total float | Predecessors | Other |
| --- | --- | --- | --- | --- | --- | --- | --- | --- |
| 2 | Реанимировать весы, чтобы показывали. Смесители | 2026-09-10 09:00 → 2026-09-13 09:00 (+3d) | 2026-09-10 10:00 → 2026-09-13 10:00 (+3d) |  |  | 129.47d → 128.47d |  | constraint start no earlier than 2026-09-10 09:00 → start no earlier than 2026-09-13 09:00; resources Бундин В → Дедов В |
| 3 | Закрыть каналыгу. На анкера | 2026-09-10 09:00 → 2026-09-11 09:00 (+1d) | 2026-09-10 10:00 → 2026-09-11 10:00 (+1d) |  |  | 129.47d → 130.47d |  | constraint start no earlier than 2026-09-10 09:00 → start no earlier than 2026-09-11 09:00 |
| 4 | установить доп светильник на погрузочной рампе | 2026-09-10 09:00 → 2026-09-11 09:00 (+1d) | 2026-09-10 13:00 → 2026-09-11 13:00 (+1d) |  |  | 129.09d → 130.09d |  | constraint start no earlier than 2026-09-10 09:00 → start no earlier than 2026-09-11 09:00 |
| 5 | востановить светильник отсек выгрузки ГП + установить доп светильник | 2026-09-10 09:00 → 2026-09-09 09:00 A (-1d) | 2026-09-10 13:00 → 2026-09-09 13:00 A (-1d) |  | 0% → 100% | 129.09d → none |  | constraint start no earlier than 2026-09-10 09:00 → start no earlier than 2026-09-09 09:00 |
| 6 | **реконструкция хранения гидролизатов и маршрут подачи навесок** |  | 2026-09-22 09:30 → 2026-09-21 10:30 (-1d) | 10.06d? → 11.19d? |  | 121.53d → 122.41d |  |  |
| 9 | **монтаж доп плащадки** | 2026-09-09 09:00 → 2026-09-10 09:00 (+1d) | 2026-09-22 09:30 → 2026-09-21 10:30 (-1d) | 9.06d → 9.19d |  | 121.53d → 122.41d |  |  |
| 10 | составить чертеж площадки | 2026-09-09 09:00 → 2026-09-10 09:00 (+1d) | 2026-09-09 10:00 → 2026-09-10 10:00 (+1d) |  |  | 130.47d → 122.41d |  | constraint start no earlier than 2026-09-09 09:00 → start no earlier than 2026-09-10 09:00 |
| 11 | заявка | 2026-09-10 09:00 → 2026-09-11 10:00 (+1d) | 2026-09-10 09:15 → 2026-09-11 10:15 (+1d) |  |  | 121.53d → 122.41d | none → 10FS+1d |  |
| 12 | контроль доставки | 2026-09-17 09:15 → 2026-09-16 10:15 (-1d) | 2026-09-17 09:30 → 2026-09-16 10:30 (-1d) |  |  | 121.53d → 122.41d |  |  |
| 13 | монтаж | 2026-09-18 09:30 → 2026-09-17 10:30 (-1d) | 2026-09-22 09:30 → 2026-09-21 10:30 (-1d) |  |  | 121.53d → 122.41d |  |  |
| 14 | **монтаж перегородка корридор** | 2026-09-09 09:00 → 2026-09-10 09:00 (+1d) | 2026-09-22 09:30 → 2026-09-18 09:30 (-4d) | 9.06d → 8.06d |  | 121.53d → 123.53d |  |  |
| 15 | составить чертеж площадки | 2026-09-09 09:00 → 2026-09-10 09:00 (+1d) | 2026-09-09 10:00 → 2026-09-10 10:00 (+1d) |  |  | 130.47d → 131.47d |  | constraint start no earlier than 2026-09-09 09:00 → start no earlier than 2026-09-10 09:00 |
| 17 | контроль доставки | 2026-09-17 09:15 → 2026-09-15 09:15 (-2d) | 2026-09-17 09:30 → 2026-09-15 09:30 (-2d) |  |  | 121.53d → 123.53d |  |  |
| 18 | монтаж | 2026-09-18 09:30 → 2026-09-16 09:30 (-2d) | 2026-09-22 09:30 → 2026-09-18 09:30 (-4d) |  |  | 121.53d → 123.53d |  |  |
| 24 | **ревизия парогенератор КАРЧЕР** | 2026-09-09 09:00 → 2026-09-14 09:00 (+5d) | 2026-09-09 10:00 → 2026-09-25 18:00 (+16d) | 1h → 10d? |  | 130.47d → 117.59d |  | constraint start no earlier than 2026-09-09 09:00 → none; resources Бундин В → none |
| 27 | монтаж | 2026-09-10 09:15 → 2026-09-25 09:00 (+15d) | 2026-09-10 11:15 → 2026-09-25 18:00 (+15d) | 2h → 1d? |  | 129.31d → 117.59d | 861FS+1d → 26 | constraint start no earlier than 2026-09-07 09:00 → start no earlier than 2026-09-25 09:00; resources Бобренок В → Тимофеев В |
| 28 | **подключить циклоны 1 и 2 линия** | 2026-09-09 09:00 A | 2026-09-10 13:00 → 2026-09-10 10:00 | 1.5d → 1.12d | 0% → 14% | 129.09d → 131.47d |  |  |
| 29 | контроль поставка кабель | 2026-09-09 09:00 A | 2026-09-09 09:10 A |  | 0% → 100% | 130.57d → none |  |  |
| 30 | монтаж кабеля (временно удлинить от сущестующих концов) |  | 2026-09-10 13:00 → 2026-09-10 10:00 | 4h → 1h |  | 129.09d → 131.47d |  | was named монтаж кабеля |
| 32 | замена бактерицидных ламп в коридоре и посмотреть, где не горят | 2026-09-09 09:00 A | 2026-09-09 10:00 A |  | 0% → 100% | 130.47d → none |  |  |
| 35 | исправить "не возможность открыть" краны фильтр жир 2л | 2026-09-10 09:00 A | 2026-09-10 09:30 A |  | 0% → 100% | 129.53d → none |  |  |
| 36 | ремонт силиконовых уплотнений печи на сетке 1 и 2 л |  |  |  |  | 129.22d → 131.22d |  | resources Бобренок В → Бундин В |
| 37 | **сместить квадропак в сторону охладителя 2л** | 2026-09-10 09:00 A | 2026-09-10 12:00 → 2026-09-11 12:00 (+1d) | 0.38d → 1.38d | 0% → 50% | 129.22d → 130.22d |  |  |
| 38 | отключение / перенгос мехнизмов | 2026-09-10 09:00 A | 2026-09-10 12:00 A |  | 0% → 100% | 129.22d → none |  |  |
| 39 | подключение | 2026-09-10 09:00 → 2026-09-11 09:00 (+1d) | 2026-09-10 12:00 → 2026-09-11 12:00 (+1d) |  |  | 129.22d → 130.22d |  | constraint start no earlier than 2026-09-10 09:00 → start no earlier than 2026-09-11 09:00 |
| 40 | Ревизия утечек воздуха на квадропаке (важно проверить пневмораспределителях) и вакуумную систему | 2026-09-10 09:00 → 2026-09-16 09:00 (+6d) | 2026-09-10 11:00 → 2026-09-16 11:00 (+6d) |  |  |  |  | constraint start no earlier than 2026-09-10 09:00 → start no earlier than 2026-09-16 09:00; resources Бундин В → Труфанов А |
| 41 | Комплексное ТО квадропака, проверка всех соединений, протяжка болтов на всех узлах | 2026-09-10 09:00 → 2026-09-16 09:00 (+6d) | 2026-09-10 11:00 → 2026-09-16 11:00 (+6d) |  |  |  |  | constraint start no earlier than 2026-09-10 09:00 → start no earlier than 2026-09-16 09:00; resources Бундин В → Труфанов А |
| 42 | Сделать основную кнопку на НОТИСЕ, чтоб срабатывало от нее, а не от блока управления | 2026-09-09 09:00 → 2026-09-13 09:00 (+4d) | 2026-09-09 10:00 → 2026-09-13 10:00 (+4d) |  |  | 130.47d → none |  | constraint start no earlier than 2026-09-09 09:00 → start no earlier than 2026-09-13 09:00; resources Зорькин В → Дедов В |
| 51 | **Не работают роль ставни на жирах, не стопоряться сделать/устранить неисправность** |  | 2026-09-10 09:20 → 2026-09-16 09:10 (+6d) | 1.04d → 7.02d | 2% → 98% | 129.55d → 125.57d |  |  |
| 53 | получить счет на ремонт | 2026-09-09 09:10 A | 2026-09-10 09:10 A |  | 0% → 100% | 129.55d → none |  |  |
| 54 | согласовать с подрядчиком дату ремонта | 2026-09-10 09:10 → 2026-09-16 09:00 (+6d) | 2026-09-10 09:20 → 2026-09-16 09:10 (+6d) |  |  | 129.55d → 125.57d |  | constraint start no earlier than 2026-09-08 09:00 → start no earlier than 2026-09-16 09:00 |
| 75 | **продумать как сделать герметичную крышку на смесителе сухого гидрализата** |  | 2026-09-10 11:00 → 2026-09-11 11:00 (+1d) | 11.25d → 12.25d |  | 129.34d → 130.34d |  |  |
| 78 | установка на струбцинах с уплотнителями | 2026-09-10 09:00 → 2026-09-11 09:00 (+1d) | 2026-09-10 11:00 → 2026-09-11 11:00 (+1d) |  |  | 129.34d → 130.34d |  | constraint start no earlier than 2026-09-10 09:00 → start no earlier than 2026-09-11 09:00 |
| 79 | **метал от тенов печи, устранить причину** |  | 2026-09-10 12:00 → 2026-09-11 12:00 (+1d) | 14.38d? → 15.38d? |  | 129.22d → 130.22d |  |  |
| 84 | замена заброкованных осмотром тенов | 2026-09-10 09:00 → 2026-09-11 09:00 (+1d) | 2026-09-10 12:00 → 2026-09-11 12:00 (+1d) |  |  | 129.22d → 130.22d |  | constraint start no earlier than 2026-09-10 09:00 → start no earlier than 2026-09-11 09:00 |
| 117 | **палетообмостчик монтаж в 1ц** |  |  | 24.38d → 26.38d |  |  |  |  |
| 125 | **замена сетка печи линия 1** |  | 2026-10-05 09:45 → 2026-10-01 09:45 (-4d) |  |  | 112.5d → 114.5d |  |  |
| 129 | контроль доставки | 2026-10-01 09:00 → 2026-09-29 09:00 (-2d) | 2026-10-01 09:15 → 2026-09-29 09:15 (-2d) |  |  | 112.5d → 114.5d |  |  |
| 130 | приемка | 2026-10-01 09:15 → 2026-09-29 09:15 (-2d) | 2026-10-01 09:45 → 2026-09-29 09:45 (-2d) |  |  | 112.5d → 114.5d |  |  |
| 131 | замена | 2026-10-02 09:45 → 2026-09-30 09:45 (-2d) | 2026-10-05 09:45 → 2026-10-01 09:45 (-4d) |  |  | 112.5d → 114.5d |  |  |
| 139 | **перенос вентилятор охладителя линия2 в реверс, убрать шкаф** |  | 2026-09-18 13:00 → 2026-09-16 10:00 (-2d) | 24.5d → 24.12d | 84% → 82% | 123.09d → 125.47d |  |  |
| 143 | конроль поставки | 2026-09-09 09:00 A | 2026-09-09 09:15 A |  | 0% → 100% | 130.56d → none |  |  |
| 145 | модернизация венттилятора/монтаж вентилляции | 2026-09-18 09:00 → 2026-09-11 09:00 (-7d) | 2026-09-18 13:00 → 2026-09-11 13:00 (-7d) |  |  | 123.09d → 130.09d |  | was named модернизация венттилятора; constraint start no earlier than 2026-09-18 09:00 → start no earlier than 2026-09-11 09:00; resources Тимофеев В; Бундин В → Некрасов А; Труфанов А |
| 147 | **ревизия красного смесителя 2 линия (просыпается мука)** |  | 2026-09-01 11:00 → 2026-09-10 09:15 (+9d) | 11.25d → 19.03d |  | 137.34d → 131.56d |  |  |
| 150 | контроль поставки уплотнение торцевое вала | 2026-08-26 09:30 → 2026-09-10 09:00 (+15d) | 2026-08-26 09:45 → 2026-09-10 09:15 (+15d) |  |  | 141.5d → 131.56d |  | was named контроль поставки; constraint start no earlier than 2026-08-12 09:00 → start no earlier than 2026-09-10 09:00 |
| 166 | **снять камеру зона экструдера и повесить на жирах со стороны экструдера, монтаж кабель** | 2026-09-09 09:00 A | 2026-09-09 10:00 A |  | 0% → 100% | 130.47d → none |  |  |
| 167 | на мойке попробовать снять камеру | 2026-09-09 09:00 A | 2026-09-09 10:00 A |  | 0% → 100% | 130.47d → none |  |  |
| 188 | **сборка дозатор на квадропак** |  |  | 48.25d → 50.25d |  |  |  |  |
| 204 | закрыть зад крышку | 2026-09-10 09:00 → 2026-09-14 09:00 (+4d) | 2026-09-10 09:20 → 2026-09-14 09:20 (+4d) |  |  | 129.55d → 127.43d |  | constraint start no earlier than 2026-09-10 09:00 → start no earlier than 2026-09-14 09:00 |
| 205 | монтаж кнопка дозатор ОН/ОФФ | 2026-09-10 09:00 → 2026-09-14 09:20 (+4d) | 2026-09-10 10:00 → 2026-09-14 10:20 (+4d) |  |  | 129.47d → 127.43d | none → 204 |  |
| 206 | закрыть металлом пустые места между площадками квадропак и дозатор | 2026-09-11 09:00 → 2026-09-14 09:00 (+3d) | 2026-09-11 11:00 → 2026-09-14 11:00 (+3d) |  |  | 128.34d → 127.34d |  | constraint start no earlier than 2026-09-11 09:00 → start no earlier than 2026-09-14 09:00 |
| 211 | **установить датчик давления на экструдер** |  | 2026-09-02 13:00 → 2026-09-10 14:15 (+8d) | 42.5d → 49.53d |  | 136.09d → 131.06d |  |  |
| 212 | контроль поставка фитинги | 2026-08-28 09:00 → 2026-09-10 09:00 (+13d) | 2026-08-28 09:15 → 2026-09-10 09:15 (+13d) |  |  | 139.06d → 131.06d |  | constraint start no earlier than 2026-08-28 09:00 → start no earlier than 2026-09-10 09:00 |
| 217 | подключение датчиков давления к регистратору | 2026-09-02 09:00 → 2026-09-10 09:15 (+8d) | 2026-09-02 13:00 → 2026-09-10 14:15 (+8d) |  |  | 136.09d → 131.06d |  |  |
| 284 | **установить резервную трубку/штангу с форсункой на подачу жира** |  | 2026-09-23 10:00 → 2026-09-25 18:00 (+2d) | 11.12d → 16d |  | 120.47d → 117.59d |  |  |
| 287 | монтаж спец кронштенна | 2026-09-11 10:00 → 2026-09-16 09:00 (+5d) | 2026-09-11 11:00 → 2026-09-16 10:00 (+5d) |  |  | 120.47d → 117.59d |  | constraint start no earlier than 2026-09-10 09:00 → start no earlier than 2026-09-16 09:00 |
| 288 | заявка фитинги / тройники / краны / трубка | 2026-09-11 11:00 → 2026-09-16 10:00 (+5d) | 2026-09-11 12:00 → 2026-09-16 11:00 (+5d) |  |  | 120.47d → 117.59d |  |  |
| 289 | доставка контроль | 2026-09-18 12:00 → 2026-09-23 11:00 (+5d) | 2026-09-18 12:00 → 2026-09-23 11:00 (+5d) |  |  | 120.47d → 117.59d |  |  |
| 290 | сборка в мастерской | 2026-09-21 12:00 → 2026-09-24 11:00 (+3d) | 2026-09-21 17:00 → 2026-09-24 16:00 (+3d) |  |  | 120.47d → 117.59d |  |  |
| 291 | монтаж на линию | 2026-09-22 17:00 → 2026-09-25 16:00 (+3d) | 2026-09-23 10:00 → 2026-09-25 18:00 (+2d) |  |  | 120.47d → 117.59d |  |  |
| 292 | **установить автоматику запуска шнека + смеситель по датчику уровня сырья в бункере экструдера** |  | 2026-09-23 12:10 → 2026-09-21 12:10 (-2d) |  |  | 120.2d → 122.2d |  |  |
| 295 | доставка контроль | 2026-09-18 12:00 → 2026-09-16 12:00 (-2d) | 2026-09-18 12:05 → 2026-09-16 12:05 (-2d) |  |  | 120.2d → 122.2d |  |  |
| 296 | контроль поставки | 2026-09-21 12:05 → 2026-09-17 12:05 (-4d) | 2026-09-21 12:10 → 2026-09-17 12:10 (-4d) |  |  | 120.2d → 122.2d |  |  |
| 297 | сборка ШУ | 2026-09-21 12:10 → 2026-09-17 12:10 (-4d) | 2026-09-22 12:10 → 2026-09-18 12:10 (-4d) |  |  | 120.2d → 122.2d |  |  |
| 298 | монтаж в линию | 2026-09-22 12:10 → 2026-09-18 12:10 (-4d) | 2026-09-23 12:10 → 2026-09-21 12:10 (-2d) |  |  | 120.2d → 122.2d |  |  |
| 417 | **заменить фильтры на жиротопка** | 2026-09-01 09:00 → 2026-09-14 09:00 (+13d) | 2026-09-14 11:15 → 2026-09-28 11:15 (+14d) |  |  | 127.31d → 117.31d |  |  |
| 418 | выяснить тип фильтров, заказ катриджи | 2026-09-01 09:00 → 2026-09-14 09:00 (+13d) | 2026-09-01 10:00 → 2026-09-14 10:00 (+13d) |  |  | 127.31d → 117.31d |  | constraint start no earlier than 2026-09-01 09:00 → start no earlier than 2026-09-14 09:00 |
| 419 | контроль | 2026-09-14 10:00 → 2026-09-28 10:00 (+14d) | 2026-09-14 10:15 → 2026-09-28 10:15 (+14d) |  |  | 127.31d → 117.31d |  |  |
| 420 | замена | 2026-09-14 10:15 → 2026-09-28 10:15 (+14d) | 2026-09-14 11:15 → 2026-09-28 11:15 (+14d) |  |  | 127.31d → 117.31d |  |  |
| 422 | **обслуживание инсекьюеров, утлизация отработанных ламп** |  | 2026-08-31 11:00 → 2026-09-14 11:00 (+14d) | 94.25d → 107.25d |  | 138.34d → 127.34d |  |  |

| ID | Task | Start | Finish | Duration | Complete | Total float | Other |
| --- | --- | --- | --- | --- | --- | --- | --- |
| 429 | запрос договор на утилизацию ламп | 2026-08-31 09:00 → 2026-09-14 09:00 (+14d) | 2026-08-31 10:00 → 2026-09-14 10:00 (+14d) |  |  | 138.34d → 127.34d | constraint start no earlier than 2026-08-31 09:00 → start no earlier than 2026-09-14 09:00; resources Зорькин В → Домоводов К |
| 430 | подготовить лампы к утилизации | 2026-08-31 10:00 → 2026-09-14 10:00 (+14d) | 2026-08-31 11:00 → 2026-09-14 11:00 (+14d) |  |  | 138.34d → 127.34d | resources Зорькин В → Труфанов А |
| 523 | монтаж 1 линия расходомер / кабель / блок питания | 2026-09-11 09:00 A → 2026-09-17 09:00 A (+6d) | 2026-09-11 12:00 → 2026-09-17 12:00 (+6d) |  |  |  | constraint start no earlier than 2026-09-11 09:00 → start no earlier than 2026-09-17 09:00 |
| 526 | **разделить воду в экструдер и парогенераторы** |  | 2026-09-23 12:30 → 2026-09-02 12:30 (-21d) | 135.44d → 119.44d |  | 120.16d → 138.16d |  |
| 539 | **монтаж на линия 1** | 2026-08-31 09:00 → 2026-08-07 09:00 (-24d) | 2026-09-23 12:30 → 2026-09-02 12:30 (-21d) |  |  | 120.16d → 138.16d |  |
| 540 | заявка на счетчик, насос, 3х ход клапан, фитинги, канистра | 2026-08-31 09:00 → 2026-08-07 09:00 (-24d) | 2026-08-31 10:00 → 2026-08-07 10:00 (-24d) |  |  | 120.16d → 138.16d | constraint start no earlier than 2026-08-31 09:00 → start no earlier than 2026-08-07 09:00 |
| 541 | контроль поставки | 2026-09-18 10:00 → 2026-08-28 10:00 (-21d) | 2026-09-18 10:30 → 2026-08-28 10:30 (-21d) |  |  | 120.16d → 138.16d |  |
| 542 | сборка корпус | 2026-09-21 10:30 → 2026-08-31 10:30 (-21d) | 2026-09-21 15:30 → 2026-08-31 15:30 (-21d) |  |  | 120.16d → 138.16d |  |
| 543 | монтаж линия 1 | 2026-09-22 15:30 → 2026-09-01 15:30 (-21d) | 2026-09-23 12:30 → 2026-09-02 12:30 (-21d) |  |  | 120.16d → 138.16d |  |
| 594 | монтаж линия 1 и 2 печи (чтобы открывалась и не мешала открыванию лотку сверху) | 2026-09-10 09:00 → 2026-09-11 09:00 (+1d) | 2026-09-10 13:00 → 2026-09-11 13:00 (+1d) |  |  |  | constraint start no earlier than 2026-09-10 09:00 → start no earlier than 2026-09-11 09:00; resources Бундин В → Макаревич А |
| 611 | **модернизация вентиляции** |  | 2026-09-10 11:15 → 2026-09-14 11:00 (+4d) | 130.28d → 134.25d | 26% → 29% | 129.31d → 127.34d |  |
| 613 | контроль доставки врезки для отбора проб | 2026-09-09 09:00 A | 2026-09-09 09:15 A |  | 0% → 100% | 129.31d → none |  |
| 614 | монтаж врезки для отбора проб | 2026-09-10 09:15 → 2026-09-14 09:00 (+4d) | 2026-09-10 11:15 → 2026-09-14 11:00 (+4d) |  |  | 129.31d → 127.34d | constraint start no earlier than 2026-09-07 09:00 → start no earlier than 2026-09-14 09:00; resources Тимофеев В → Некрасов А |
| 723 | **Насос гидролизата** |  | 2026-08-31 09:05 → 2026-09-10 09:05 (+10d) | 19.01d → 28.01d |  | 138.58d → 131.58d |  |
| 725 | Доставка контроль сам насос шетсрен | 2026-08-31 09:00 → 2026-09-10 09:00 (+10d) | 2026-08-31 09:05 → 2026-09-10 09:05 (+10d) |  |  | 138.58d → 131.58d | constraint start no earlier than 2026-08-31 09:00 → start no earlier than 2026-09-10 09:00 |
| 727 | Поставить резьбовые клепки на боковой кожух, где кончается лента |  |  |  |  | 128.47d → 130.47d | resources Тимофеев В → Макаревич А |
| 750 | **2 цех** |  |  |  | 87% → 88% |  |  |
| 752 | **ревизия сливной шланг моечная машинка** | 2026-09-09 09:00 → 2026-09-14 09:00 (+5d) | 2026-09-09 10:00 → 2026-09-14 11:30 (+5d) | 1h → 0.31d |  | 130.47d → 127.28d | was named ревищия сливной шланг моечная машинка; constraint start no earlier than 2026-09-09 08:00 → none; resources Бобренок В → none |
| 756 | Проверка системы под давлением, при необходимости заменить шланги на пневматические | 2026-09-09 09:00 → 2026-09-17 09:00 (+8d) | 2026-09-09 10:00 → 2026-09-17 10:00 (+8d) |  |  | 130.47d → 124.47d | constraint start no earlier than 2026-09-09 08:00 → start no earlier than 2026-09-17 09:00 |
| 757 | Установить трубку на жирах, которую сделал викторович | 2026-09-09 09:00 A | 2026-09-09 09:30 A |  | 0% → 100% | 130.53d → none |  |
| 758 | **реверс теплоносителя в приточном калорифере** |  | 2026-09-16 09:20 → 2026-09-15 11:00 (-1d) | 18.04d? → 19.25d? |  | 125.55d → 126.34d |  |
| 760 | контроль доставки | 2026-09-16 09:05 → 2026-09-14 09:05 (-2d) | 2026-09-16 09:20 → 2026-09-14 09:20 (-2d) |  |  | 125.55d → 127.55d |  |
| 762 | востановить потерю токов в печи / ревизия . Замена тенов | 2026-09-09 09:00 A | 2026-09-09 13:00 A |  | 0% → 100% | 130.09d → none |  |
| 763 | Смазка подшипников привода охладителя | 2026-09-09 09:00 A | 2026-09-09 10:00 A |  | 0% → 100% |  |  |
| 766 | **Дражжировка** |  | 2026-09-10 10:00 → 2026-09-17 11:00 (+7d) | 6.12d → 13.25d | 54% → 52% | 129.47d → 124.34d |  |
| 767 | **Подготовить электрическую часть для подключения второго насоса без частотника (продолжаем эту задачу)** |  | 2026-09-10 10:00 → 2026-09-17 11:00 (+7d) | 1.12d → 8.25d |  | 129.47d → 124.34d |  |
| 769 | монтаж | 2026-09-09 09:00 A | 2026-09-09 10:00 A |  | 0% → 100% | 130.47d → none |  |
| 783 | **дренаж кондиционеров жир и упаковка установить отдельный насос от жиров** |  |  | 24.06d → 26.06d |  |  |  |
| 796 | перенос инсекютер ниже на фасовке, для возможности доступа операторами | 2026-09-10 09:00 → 2026-09-17 09:00 (+7d) | 2026-09-10 10:00 → 2026-09-17 10:00 (+7d) |  |  | 129.47d → 124.47d | constraint start no earlier than 2026-09-10 09:00 → start no earlier than 2026-09-17 09:00 |
| 800 | **установить сифон ф110 в линию слива жиров** |  | 2026-09-11 11:30 → 2026-09-15 11:30 (+4d) | 23.31d → 27.31d |  | 128.28d → 126.28d |  |
| 802 | возможно ли убрать сифоны ф50, достаточно ли заслонки без гидрозатвора? Как сделать гидрозатвор ф100 | 2026-09-10 09:00 → 2026-09-14 09:00 (+4d) | 2026-09-10 09:15 → 2026-09-14 09:15 (+4d) |  |  | 128.28d → 126.28d | constraint start no earlier than 2026-09-10 09:00 → start no earlier than 2026-09-14 09:00 |
| 803 | решение | 2026-09-11 09:15 → 2026-09-15 09:15 (+4d) | 2026-09-11 09:15 → 2026-09-15 09:15 (+4d) |  |  | 128.28d → 126.28d |  |
| 804 | контроль доставка | 2026-09-11 09:15 → 2026-09-15 09:15 (+4d) | 2026-09-11 09:30 → 2026-09-15 09:30 (+4d) |  |  | 128.28d → 126.28d |  |
| 805 | монтаж | 2026-09-11 09:30 → 2026-09-15 09:30 (+4d) | 2026-09-11 11:30 → 2026-09-15 11:30 (+4d) |  |  | 128.28d → 126.28d |  |
| 806 | **установить инсекютер дополнительный на экструдер** |  |  | 20.38d → 22.38d | 7% → 14% |  |  |
| 808 | контроль доставки | 2026-09-09 09:00 A | 2026-09-09 09:15 A |  | 0% → 100% | 129.19d → none |  |
| 811 | **ограждение мусорного контейнера у 2ц** | 2026-08-31 09:00 A | 2026-09-17 11:45 A | 14.34d → 16.34d | 0% → 100% | 124.25d → none |  |
| 812 | схема размещения | 2026-08-31 09:00 A | 2026-08-31 10:00 A |  | 0% → 100% | 124.25d → none |  |
| 813 | контроль остатков материала - каркас + обшивка стен | 2026-08-31 10:00 A | 2026-08-31 10:30 A |  | 0% → 100% | 124.25d → none |  |
| 814 | заявка материал / лист | 2026-09-01 10:30 A | 2026-09-01 11:30 A |  | 0% → 100% | 124.25d → none |  |
| 815 | контроль поставка | 2026-09-14 11:30 A | 2026-09-14 11:45 A |  | 0% → 100% | 124.25d → none |  |
| 816 | монтаж каркас + обшивка | 2026-09-15 11:45 A | 2026-09-17 11:45 A |  | 0% → 100% | 124.25d → none |  |
| 822 | **усиление подогрев приточной вентиляции** |  |  | 34.53d? → 36.53d? |  |  |  |
| 831 | **обеспечить не менее +15 зимой в зоне хранения навесок** |  |  | 55.34d? → 57.34d? |  |  |  |
| 832 | **утепление стены** |  | 2026-09-18 10:15 → 2026-09-16 10:15 (-2d) |  |  | 123.44d → 125.44d |  |
| 835 | контроль даты доставки | 2026-09-16 10:00 → 2026-09-14 10:00 (-2d) | 2026-09-16 10:15 → 2026-09-14 10:15 (-2d) |  |  | 123.44d → 125.44d |  |
| 836 | монтаж | 2026-09-17 10:15 → 2026-09-15 10:15 (-2d) | 2026-09-18 10:15 → 2026-09-16 10:15 (-2d) |  |  | 123.44d → 125.44d |  |
| 841 | **тепловые завесы в 2ц зона подачи навесок** |  |  | 46.34d? → 48.34d? |  |  |  |
| 848 | **монтаж кабель** |  |  | 29.38d? → 31.38d? |  |  |  |
| 857 | **на дверь в мойку установить мощный доводчик** |  | 2026-09-11 10:00 → 2026-09-12 10:00 (+1d) | 16.12d → 17.12d | 30% → 51% | 128.47d → 129.47d |  |
| 861 | контроль поставки | 2026-09-09 09:00 A | 2026-09-09 09:15 A |  | 0% → 100% | 129.31d → none |  |
| 862 | установить ручку с защелкой -язычком | 2026-09-10 09:00 → 2026-09-12 09:00 (+2d) | 2026-09-10 10:00 → 2026-09-12 10:00 (+2d) |  |  |  | constraint start no earlier than 2026-09-10 09:00 → start no earlier than 2026-09-12 09:00; resources Бундин В → Макаревич А |
| 864 | **пролистыватель с апликтором заказ** |  | 2026-09-24 09:15 → 2026-09-22 09:15 (-2d) |  |  | 119.56d → 121.56d |  |
| 870 | доставка конетроль | 2026-09-22 09:00 → 2026-09-18 09:00 (-4d) | 2026-09-22 09:15 → 2026-09-18 09:15 (-4d) |  |  | 119.56d → 121.56d |  |
| 871 | монтаж | 2026-09-23 09:15 → 2026-09-21 09:15 (-2d) | 2026-09-24 09:15 → 2026-09-22 09:15 (-2d) |  |  | 119.56d → 121.56d |  |
| 878 | **выполнить обрамление двери в охладитель, что бы скрыть поверхность** |  |  | 25.25d → 27.25d | 50% → 56% |  |  |
| 880 | контроль доставки | 2026-09-09 09:00 A | 2026-09-09 09:15 A |  | 0% → 100% | 130.56d → none |  |
| 883 | **ремонт осушителя компрессора 2ц** |  | 2026-09-11 10:00 → 2026-09-14 10:00 (+3d) | 25.12d → 28.12d | 88% → 90% | 128.47d → 127.47d |  |
| 884 | проверка давления фреона | 2026-09-11 09:00 → 2026-09-14 09:00 (+3d) | 2026-09-11 10:00 → 2026-09-14 10:00 (+3d) |  |  | 128.47d → 127.47d | constraint start no earlier than 2026-09-11 09:00 → start no earlier than 2026-09-14 09:00 |
| 893 | Заявка в сервис не работает осушитель | 2026-08-31 09:00 A | 2026-08-31 09:10 A |  | 0% → 100% | 138.57d → none |  |
| 970 | **ремонт эл котел №3 охладитель** |  | 2026-09-11 11:00 → 2026-09-13 11:00 (+2d) | 71.25d? → 73.25d? |  | 128.34d → 123.31d |  |
| 975 | Не работает блок тенов, заказать | 2026-09-01 09:00 A | 2026-09-01 09:10 A |  | 0% → 100% | 137.57d → none |  |
| 977 | замена | 2026-09-11 09:00 → 2026-09-13 09:00 (+2d) | 2026-09-11 11:00 → 2026-09-13 11:00 (+2d) |  |  |  | constraint start no earlier than 2026-09-11 09:00 → start no earlier than 2026-09-13 09:00 |
| 1079 | провести тест | 2026-08-31 09:00 → 2026-09-10 09:00 (+10d) | 2026-08-31 10:00 → 2026-09-10 10:00 (+10d) |  |  | 138.47d → 131.47d | constraint start no earlier than 2026-08-31 09:00 → start no earlier than 2026-09-10 09:00 |
| 1101 | **сделать горловину на быстросъемах прекондиционер** |  |  |  | 47% → 40% |  |  |
| 1103 | установить люк для чистки с обр стороны как в 3ц (шапочка) | 2026-09-09 09:00 → 2026-09-12 09:00 (+3d) | 2026-09-09 10:00 → 2026-09-12 13:00 (+3d) | 1h → 4h |  | 130.47d → 129.09d | was named тест; constraint start no earlier than 2026-09-09 08:00 → start no earlier than 2026-09-12 09:00; resources Бобренок В → Макаревич А |
| 1127 | **установить водоподготовку на парогенератор** |  |  | 118d? → 120d? |  |  |  |
| 1308 | **установить на охладитель ролики + скольжение трубы** |  | 2026-09-11 18:00 → 2026-09-17 18:00 (+6d) | 10d? → 16d? |  | 127.59d → 123.59d |  |
| 1310 | установить держатели труб | 2026-09-11 09:00 → 2026-09-17 09:00 (+6d) | 2026-09-11 18:00 → 2026-09-17 18:00 (+6d) |  |  | 127.59d → 123.59d | constraint start no earlier than 2026-09-11 09:00 → start no earlier than 2026-09-17 09:00 |
| 1335 | **схема блокировки роль ворот при открытым шлюзе + авт закрытие + датчик препятствия** |  |  | 6.5d → 8.5d |  |  |  |

| ID | Task | Start | Finish | Duration | Complete | Total float | Other |
| --- | --- | --- | --- | --- | --- | --- | --- |
| 1343 | **установить пульты на регулировку шибиров вентиляции** |  | 2026-09-14 11:00 → 2026-09-25 18:00 (+11d) | 11.25d? → 23d? |  | 127.34d → 117.59d |  |
| 1346 | монтаж | 2026-09-11 11:00 → 2026-09-25 09:00 (+14d) | 2026-09-14 11:00 → 2026-09-25 18:00 (+11d) |  |  | 127.34d → 117.59d | constraint start no earlier than 2024-05-08 08:00 → start no earlier than 2026-09-25 09:00 |
| 1356 | **отмена** |  |  | 78.31d? → 80.31d? |  |  |  |
| 1357 | **найти места утечки тепла под потолком- перемерзает труба подачи воды в 3 цех** |  |  | 78.31d? → 80.31d? |  |  |  |
| 1372 | **3 цех** |  | 2026-10-06 18:00 → 2026-10-02 18:00 (-4d) |  |  | 110.59d → 112.59d |  |
| 1386 | **ломает гранулу после печи** |  |  |  | 47% → 53% | 130.47d → 132.47d |  |
| 1396 | установить угловой фланец на пневмотрассу | 2026-09-09 09:00 A | 2026-09-09 10:00 A |  | 0% → 100% | 130.47d → none |  |
| 1397 | **доп мощности для приточной вентиляции** |  | 2026-10-06 18:00 → 2026-10-02 18:00 (-4d) |  |  | 110.59d → 112.59d |  |
| 1402 | монтаж | 2026-09-16 09:00 → 2026-09-14 09:00 (-2d) | 2026-10-06 18:00 → 2026-10-02 18:00 (-4d) |  |  | 110.59d → 112.59d |  |
| 1404 | **сборка квадропака 3 цех** |  | 2026-09-11 11:00 → 2026-09-15 11:00 (+4d) | 21.25d → 25.25d |  | 128.34d → 126.34d |  |
| 1412 | тест на пакетах | 2026-09-11 09:00 → 2026-09-15 09:00 (+4d) | 2026-09-11 11:00 → 2026-09-15 11:00 (+4d) |  |  | 128.34d → 126.34d | constraint start no earlier than 2026-09-11 09:00 → start no earlier than 2026-09-15 09:00 |
| 1419 | **карусель добавить перемычку снизу, чтобы не выпал мешок** |  |  | 20.25d → 22.25d |  |  |  |
| 1644 | **5 цех** |  |  | 892.12d? → 894.12d? |  |  |  |
| 1645 | **установить зажим троса на тельфер** |  |  | 13.28d? → 15.28d? |  |  |  |
| 1649 | **ремонт насос водоснабжения** |  | 2026-09-11 10:15 → 2026-09-14 10:00 (+3d) | 7.16d → 10.12d |  | 128.44d → 127.47d |  |
| 1652 | замена | 2026-09-11 09:15 → 2026-09-14 09:00 (+3d) | 2026-09-11 10:15 → 2026-09-14 10:00 (+3d) |  |  | 128.44d → 127.47d | constraint start no earlier than 2026-09-10 09:00 → start no earlier than 2026-09-14 09:00 |
| 1656 | **подготовить сетку на мал дробилку 3 и 4мм** | 2026-09-10 09:00 → 2026-09-12 09:00 (+2d) | 2026-09-11 10:30 → 2026-09-13 10:30 (+2d) |  |  |  |  |
| 1657 | проверка отстатков сетки на складах | 2026-09-10 09:00 → 2026-09-12 09:00 (+2d) | 2026-09-10 09:30 → 2026-09-12 09:30 (+2d) |  |  |  | constraint start no earlier than 2026-09-10 09:00 → start no earlier than 2026-09-12 09:00; resources Тимофеев В → Макаревич А |
| 1658 | вырезатиь сетку в размер | 2026-09-11 09:30 → 2026-09-13 09:30 (+2d) | 2026-09-11 10:30 → 2026-09-13 10:30 (+2d) |  |  |  |  |
| 1666 | **проект новая дробилка** |  | 2026-10-15 09:15 → 2026-10-13 09:15 (-2d) |  |  | 104.56d → 106.56d |  |
| 1667 | **кабель для доп мощности** |  | 2026-10-15 09:15 → 2026-10-13 09:15 (-2d) |  |  | 104.56d → 106.56d |  |
| 1671 | монтаж | 2026-09-24 09:15 → 2026-09-22 09:15 (-2d) | 2026-10-15 09:15 → 2026-10-13 09:15 (-2d) |  |  | 104.56d → 106.56d |  |
| 1672 | **монтаж вода в 5ц** |  |  | 29.12d? → 31.12d? |  |  |  |
| 1681 | **монтаж труба в земле между 3 и 4ц** |  |  | 29.12d? → 31.12d? |  |  |  |
| 1696 | **монтаж тепловые пушки подвесные 5 цех** |  | 2026-09-21 12:00 → 2026-09-17 12:00 (-4d) |  |  | 122.22d → 124.22d |  |
| 1700 | контроль доставки | 2026-09-16 11:00 → 2026-09-14 11:00 (-2d) | 2026-09-16 12:00 → 2026-09-14 12:00 (-2d) |  |  | 122.22d → 124.22d |  |
| 1701 | монтаж | 2026-09-17 12:00 → 2026-09-15 12:00 (-2d) | 2026-09-21 12:00 → 2026-09-17 12:00 (-4d) |  |  | 122.22d → 124.22d |  |
| 1843 | **ремонт растаривателя №3 - клинит заслонку** |  |  |  | 85% → 87% | 135.78d → 137.78d |  |
| 1848 | приемка | 2026-09-01 09:30 A | 2026-09-01 09:45 A |  | 0% → 100% | 137.5d → none |  |
| 1901 | **изготовить бункер нерж** |  |  | 75d → 77d |  |  |  |
| 1917 | **Замена насосной станции** |  |  | 10.25d → 12.25d |  |  |  |
| 1928 | **модернизация** |  |  | 976.5d? → 978.5d? |  |  |  |
| 1973 | **качественное нанесение жира тесты** |  |  | 263.5d? → 265.5d? |  |  |  |
| 2082 | Настройка даты на пробнике, нужно приподнять на 3-5 мм (ждем решение технологов, информация поменялась, читать письмо от 01.09.2026) | 2026-09-11 09:00 → 2026-09-14 09:00 (+3d) | 2026-09-11 12:00 → 2026-09-14 12:00 (+3d) |  |  | 128.22d → 127.22d | constraint start no earlier than 2026-09-11 09:00 → start no earlier than 2026-09-14 09:00 |
| 2083 | **техника** |  |  | 631.03d? → 633.03d? |  |  |  |
| 2085 | **капремонт погрузчика коматсу короткий** |  |  | 44.03d → 46.03d |  |  |  |
| 2134 | **ЗИП ремонт** |  | 2026-10-05 09:55 → 2026-10-01 09:55 (-4d) |  | 53% → 54% | 112.48d → 114.48d |  |
| 2135 | **ремонт редутор печи №?** |  | 2026-09-24 11:30 → 2026-09-22 11:30 (-2d) |  | 42% → 47% | 119.28d → 121.28d |  |
| 2137 | возможно ли установить тавотницу на подшипник червяка? | 2026-09-10 09:00 A | 2026-09-10 09:15 A |  | 0% → 100% | 129.56d → none |  |
| 2139 | контроль изг шетесиерен | 2026-09-23 09:15 → 2026-09-21 09:15 (-2d) | 2026-09-23 09:30 → 2026-09-21 09:30 (-2d) |  |  | 119.28d → 121.28d |  |
| 2140 | сборка редутор венец | 2026-09-24 09:30 → 2026-09-22 09:30 (-2d) | 2026-09-24 11:30 → 2026-09-22 11:30 (-2d) |  |  | 119.28d → 121.28d |  |
| 2252 | **ремонт датчик расхода пара с линия 3** |  | 2026-10-05 09:55 → 2026-10-01 09:55 (-4d) |  |  | 112.48d → 114.48d |  |
| 2255 | контроль | 2026-09-28 09:35 → 2026-09-24 09:35 (-4d) | 2026-09-28 09:35 → 2026-09-24 09:35 (-4d) |  |  | 112.48d → 114.48d |  |
| 2256 | орг забрать сремонта | 2026-10-05 09:35 → 2026-10-01 09:35 (-4d) | 2026-10-05 09:55 → 2026-10-01 09:55 (-4d) |  |  | 112.48d → 114.48d |  |
| 2364 | **ТО** |  | 2026-09-17 11:00 → 2026-09-17 13:00 | 920.25d? → 922.5d? | 36% → 38% | 124.34d → 124.09d |  |
| 2365 | **1 цех** |  |  |  | 41% → 44% |  |  |
| 2366 | **Разобрать улитки с охладителя 2 линия, 4 улитки на печах и улитки циклонов - замена подшипников, каких нет сообщить** |  | 2026-09-10 13:00 → 2026-09-17 13:00 (+7d) | 3.5d → 10.5d | 40% → 80% |  |  |
| 2369 | линия 1 вентилятор печи 2 | 2026-09-09 09:00 A | 2026-09-09 13:00 A |  | 0% → 100% |  |  |
| 2370 | линия 2 вентилятор циклона 1 | 2026-09-09 14:00 A | 2026-09-09 18:00 A |  | 0% → 100% |  |  |
| 2371 | линия 2 вентилятор циклона 1 | 2026-09-10 09:00 → 2026-09-17 09:00 (+7d) | 2026-09-10 13:00 → 2026-09-17 13:00 (+7d) |  |  |  |  |
| 2400 | **редуктор экструдера и маслянная станция** |  | 2026-09-10 13:00 → 2026-09-11 13:00 (+1d) | 636.5d → 637.5d |  | 129.09d → 130.09d |  |
| 2413 | **шкаф управления тэнами сушки** |  | 2026-09-10 13:00 → 2026-09-11 13:00 (+1d) | 67.5d → 68.5d |  | 129.09d → 130.09d |  |
| 2415 | замена неисправных жил | 2026-09-10 09:00 → 2026-09-11 09:00 (+1d) | 2026-09-10 13:00 → 2026-09-11 13:00 (+1d) |  |  | 129.09d → 130.09d | constraint start no earlier than 2026-09-10 09:00 → start no earlier than 2026-09-11 09:00 |
| 2468 | **блок тэнов сушки - протяжка** |  | 2026-09-10 13:00 → 2026-09-11 13:00 (+1d) | 82.5d? → 83.5d? |  | 129.09d → 130.09d |  |
| 2470 | ревизия, замена отгоревших жил, проверка токов | 2026-09-10 09:00 → 2026-09-11 09:00 (+1d) | 2026-09-10 13:00 → 2026-09-11 13:00 (+1d) |  |  | 129.09d → 130.09d | constraint start no earlier than 2026-09-10 09:00 → start no earlier than 2026-09-11 09:00 |
| 2553 | **2 цех** |  |  | 920.25d? → 922.25d? | 61% → 63% |  |  |
| 2555 | **линия 3** |  |  |  | 98% → 99% | 130.47d → 132.47d |  |
| 2569 | **парогенератор** |  | 2026-09-09 10:00 A |  | 94% → 100% | 130.47d → none |  |
| 2584 | Чистка | 2026-09-09 09:00 A | 2026-09-09 10:00 A |  | 0% → 100% | 130.47d → none |  |
| 2585 | **привод сетки ПЕЧИ сушки** |  | 2026-09-09 09:20 A |  | 91% → 100% | 130.55d → none |  |
| 2594 | прорверка масла редуктор / натяжка цепи/ ремень/осмотр сетки | 2026-09-09 09:00 A | 2026-09-09 09:20 A |  | 0% → 100% | 130.55d → none |  |
| 2602 | **смеситель СМ-1500** |  | 2026-09-09 09:10 A |  | 98% → 100% | 130.57d → none |  |
| 2610 | контроль масла | 2026-09-09 09:00 A | 2026-09-09 09:10 A |  | 0% → 100% | 130.57d → none |  |
| 2633 | **привод прекондиционера** |  | 2026-09-09 13:00 A |  | 23% → 100% | 130.09d → none |  |
| 2638 | Замена подшипников кореных и передних | 2026-09-09 09:00 A | 2026-09-09 13:00 A |  | 0% → 100% | 130.09d → none |  |
| 2639 | **мотор-редуктор привод шнеков** |  |  |  | 7% → 14% | 130.57d → 132.57d |  |
| 2642 | Проверка масла | 2026-09-09 09:00 A | 2026-09-09 09:10 A |  | 0% → 100% | 130.57d → none |  |
| 2643 | **редуктор шнеков экструдера - проверка масла** |  | 2026-09-09 09:15 A |  | 93% → 100% | 130.56d → none |  |
| 2656 | Чистка фильтра | 2026-09-09 09:00 A | 2026-09-09 09:15 A |  | 0% → 100% | 130.56d → none |  |
| 2657 | Проверка масла | 2026-09-09 09:00 A | 2026-09-09 09:05 A |  | 0% → 100% | 130.58d → none |  |

| ID | Task | Start | Finish | Duration | Total float | Other |
| --- | --- | --- | --- | --- | --- | --- |
| 2673 | **печь - валы этажей, подшипники, цепи** |  | 2026-09-09 09:30 → 2026-09-17 09:30 (+8d) | 125.06d → 133.06d | 130.53d → 124.53d |  |
| 2678 | Контроль редуктора, осмотр, проверка масла | 2026-09-09 09:00 → 2026-09-17 09:00 (+8d) | 2026-09-09 09:30 → 2026-09-17 09:30 (+8d) |  | 130.53d → 124.53d | constraint start no earlier than 2026-09-09 08:00 → start no earlier than 2026-09-17 09:00 |
| 2727 | **охладитель сеточный** |  | 2026-09-09 10:00 → 2026-09-17 10:00 (+8d) | 625.12d? → 633.12d? | 130.47d → 124.47d |  |
| 2741 | Ревизия сетки, контроль роспуска, подогнуть, где что можно, что бы не зацепилось | 2026-09-09 09:00 → 2026-09-17 09:00 (+8d) | 2026-09-09 10:00 → 2026-09-17 10:00 (+8d) |  | 130.47d → 124.47d | constraint start no earlier than 2026-09-09 09:00 → start no earlier than 2026-09-17 09:00 |
| 2742 | Смазка подшипников привод охладителя | 2026-09-09 09:00 → 2026-09-17 09:00 (+8d) | 2026-09-09 09:30 → 2026-09-17 09:30 (+8d) |  | 130.53d → 124.53d | constraint start no earlier than 2026-09-09 08:00 → start no earlier than 2026-09-17 09:00 |
| 2754 | **квадропак** |  |  | 16.25d → 18.25d |  |  |
| 2798 | **Компрессор 2 цех** |  | 2026-09-09 09:30 → 2026-09-17 09:30 (+8d) | 25.06d → 33.06d | 130.53d → 124.53d |  |
| 2806 | продувка фильтров (дать размеры фильтра) | 2026-09-09 09:00 → 2026-09-17 09:00 (+8d) | 2026-09-09 09:30 → 2026-09-17 09:30 (+8d) |  | 130.53d → 124.53d | constraint start no earlier than 2026-09-09 09:00 → start no earlier than 2026-09-17 09:00 |
| 2812 | **кондиционер 1** |  | 2026-09-09 09:20 → 2026-09-17 09:20 (+8d) | 625.04d? → 633.04d? | 130.55d → 124.55d |  |
| 2819 | чистка фильтров | 2026-09-09 09:00 → 2026-09-17 09:00 (+8d) | 2026-09-09 09:20 → 2026-09-17 09:20 (+8d) |  | 130.55d → 124.55d | constraint start no earlier than 2026-09-09 09:00 → start no earlier than 2026-09-17 09:00 |
| 2820 | **кондиционер 2** |  | 2026-09-09 09:30 → 2026-09-17 09:30 (+8d) | 625.06d? → 633.06d? | 130.53d → 124.53d |  |
| 2828 | чистка фильтров | 2026-09-09 09:00 → 2026-09-17 09:00 (+8d) | 2026-09-09 09:30 → 2026-09-17 09:30 (+8d) |  | 130.53d → 124.53d | constraint start no earlier than 2026-09-09 08:00 → start no earlier than 2026-09-17 09:00 |
| 2829 | **кондиционер 3** |  | 2026-09-09 09:20 → 2026-09-17 09:20 (+8d) | 135.04d → 143.04d | 130.55d → 124.55d |  |
| 2835 | чистка фильтров | 2026-09-09 09:00 → 2026-09-17 09:00 (+8d) | 2026-09-09 09:20 → 2026-09-17 09:20 (+8d) |  | 130.55d → 124.55d | constraint start no earlier than 2026-09-09 09:00 → start no earlier than 2026-09-17 09:00 |
| 2890 | **синий склад** |  |  | 99d → 101d |  |  |
| 2933 | **офис** |  |  | 918.25d? → 920.25d? |  |  |
| 2967 | **склад упаковки** |  |  | 124.5d? → 126.5d? |  |  |
| 2986 | **РЭФ контейнеры** |  |  | 205.59d? → 207.59d? |  |  |
| 2989 | **ремонт сплит система холодильная камера №1** |  | 2026-09-17 10:00 → 2026-09-15 10:00 (-2d) |  | 124.47d → 126.47d |  |
| 2993 | контроль даты ремонта | 2026-09-16 09:30 → 2026-09-14 09:30 (-2d) | 2026-09-16 09:45 → 2026-09-14 09:45 (-2d) |  | 124.47d → 126.47d |  |
| 2994 | приемка работ | 2026-09-17 09:45 → 2026-09-15 09:45 (-2d) | 2026-09-17 10:00 → 2026-09-15 10:00 (-2d) |  | 124.47d → 126.47d |  |
| 3044 | **администрантивные** |  |  | 130.25d → 132.25d |  |  |
| 3051 | **Ключи на шкафы** |  |  | 110.25d → 112.25d |  |  |
| 3057 | **ТБ** |  |  | 921.25d? → 923.25d? |  |  |
| 3084 | **территория** |  |  | 413.5d? → 415.5d? |  |  |

## Version 6 (saved 2026-09-11, file 07.09.26.mpp)

Last finish stays 2027-03-10. Complete tasks 2063 → 2078.

Added:

| ID | Task | Duration | Start | Finish | Constraint | Resources |
| --- | --- | --- | --- | --- | --- | --- |
| 2 | уборка остатков монтажа с рампы | 1h | 2026-09-14 09:00 | 2026-09-14 10:00 | start no earlier than 2026-09-14 09:00 | Некрасов А; Тимофеев В; Труфанов А |
| 3 | крепить табличку видеонаблюдение в офисе | 15min | 2026-09-14 09:00 | 2026-09-14 09:15 | start no earlier than 2026-09-14 09:00 | Тимофеев В |
| 4 | закрыть чердак у Лукаса | 15min | 2026-09-14 09:00 | 2026-09-14 09:15 | start no earlier than 2026-09-14 09:00 | Труфанов А; Некрасов А |
| 43 | доработка перил | 4h | 2026-09-16 09:00 | 2026-09-16 13:00 | start no earlier than 2026-09-16 09:00 | Труфанов А; Некрасов А |
| 751 | ремонт лампа бактерициодная (это не инсекюьтер) на ГП (не горит табло). Ревизия. | 2h | 2026-09-13 09:00 | 2026-09-13 11:00 | start no earlier than 2026-09-13 09:00 | Дедов В |
| 752 | ремонт ворот ГП слетели тросы | 2h | 2026-09-11 09:00 | 2026-09-11 11:00 | start no earlier than 2026-09-11 08:00 | Бобренок В |
| 753 | ремонт светильник корридор у отк | 1h | 2026-09-11 09:00 | 2026-09-11 10:00 | start no earlier than 2026-09-11 08:00 | Бобренок В |
| 756 | ревизия / удлинить | 1h | 2026-09-14 09:00 | 2026-09-14 10:00 | start no earlier than 2026-09-14 09:00 | Тимофеев В |
| 1377 | монтаж оконечные кожухи на конвейер после охладителя, что бы гранула не разлеталась при перевороте ленты | 4h | 2026-09-12 09:00 | 2026-09-12 13:00 | start no earlier than 2026-09-12 09:00 | Тимофеев В |
| 1378 | Перенести регулировку подачи жира, ближе к барабанам. Перенос частотник на раму барабанов | 4h | 2026-09-15 09:00 | 2026-09-15 13:00 | start no earlier than 2026-09-15 09:00 | Тимофеев В |
| 1379 | Увеличить «язычек» между барабанами на жирах (просыпается много гранулы | 4h | 2026-09-14 09:00 | 2026-09-14 13:00 | start no earlier than 2026-09-14 09:00 | Тимофеев В |
| 1380 | Регулировка ножей на экструдере — сделать «штурвал»; | 2h | 2026-09-15 09:00 | 2026-09-15 11:00 | start no earlier than 2026-09-15 09:00 | Тимофеев В |
| 1381 | **Гранулы выходили из печи со следами смазки** | 0.5d | 2026-09-15 09:00 | 2026-09-15 13:00 |  |  |
| 1382 | (сделать направляющие в печи); | 4h | 2026-09-15 09:00 | 2026-09-15 13:00 | start no earlier than 2026-09-15 09:00 | Тимофеев В |
| 1383 | **С двигателя экструдера выдавило много масла;** | 0.5d | 2026-09-16 09:00 | 2026-09-16 13:00 |  |  |
| 1384 | установить поплавок на верхний уровень для блокировки насоса | 4h | 2026-09-16 09:00 | 2026-09-16 13:00 | start no earlier than 2026-09-16 09:00 | Тимофеев В |
| 1385 | Заменить кран подачи воды (второй слева) на втором предкондиционере — | 1h | 2026-09-14 09:00 | 2026-09-14 10:00 | start no earlier than 2026-09-14 09:00 | Тимофеев В |
| 1658 | ремонт дека от вибросито | 3h | 2026-09-12 09:00 | 2026-09-12 12:00 | start no earlier than 2026-09-12 09:00 | Макаревич А |
| 1664 | перекрутить американку для удобного обслуживания | 2h | 2026-09-13 09:00 | 2026-09-13 11:00 | start no earlier than 2026-09-13 09:00 | Макаревич А |
| 1688 | подклюючить воду на прямую | 2h | 2026-09-15 09:00 | 2026-09-15 11:00 | start no earlier than 2026-09-15 09:00 | Тимофеев В |
| 2386 | очистка моторов шлюз питателей циклонов от пыли | 30min | 2026-09-11 09:00 | 2026-09-11 09:30 | start no earlier than 2026-09-11 08:00 | Бобренок В |
| 2387 | очистка центрального вала от налипей грязи через смотровое окно | 1h | 2026-09-11 09:00 | 2026-09-11 10:00 | start no earlier than 2026-09-11 08:00 | Бобренок В |
| 2388 | монтаж шильдиков на которые починил | 1h | 2026-09-15 09:00 | 2026-09-15 10:00 | start no earlier than 2026-09-15 09:00 | Бундин В |

Removed: 2278 редуктор печи №7 установить подшипник 30207

Changed:

| ID | Task | Start | Finish | Duration | Complete | Total float | Predecessors | Other |
| --- | --- | --- | --- | --- | --- | --- | --- | --- |
| 6 | Закрыть каналыгу. На анкера | 2026-09-11 09:00 → 2026-09-12 09:00 (+1d) | 2026-09-11 10:00 → 2026-09-12 11:00 (+1d) | 1h → 2h |  | 130.47d → 130.34d |  | constraint start no earlier than 2026-09-11 09:00 → start no earlier than 2026-09-12 09:00 |
| 7 | установить доп светильник на погрузочной рампе | 2026-09-11 09:00 → 2026-09-12 09:00 (+1d) | 2026-09-11 13:00 → 2026-09-12 13:00 (+1d) |  |  |  |  | constraint start no earlier than 2026-09-11 09:00 → start no earlier than 2026-09-12 09:00 |
| 9 | **реконструкция хранения гидролизатов и маршрут подачи навесок** | 2026-09-08 09:00 A | 2026-09-21 10:30 → 2026-09-19 10:30 (-2d) |  | 0% → 1% | 122.41d → 123.41d |  |  |
| 10 | **перенос системы отопления** | 2026-09-09 09:00 → 2026-09-11 09:00 A (+2d) | 2026-09-09 10:00 → 2026-09-11 10:00 A (+2d) |  | 0% → 100% | 132.47d → none |  |  |
| 11 | посик сварщиков | 2026-09-09 09:00 → 2026-09-11 09:00 A (+2d) | 2026-09-09 10:00 → 2026-09-11 10:00 A (+2d) |  | 0% → 100% | 132.47d → none |  | constraint start no earlier than 2026-09-09 09:00 → start no earlier than 2026-09-11 09:00 |
| 12 | **монтаж доп плащадки** |  | 2026-09-21 10:30 → 2026-09-19 10:30 (-2d) |  |  | 122.41d → 123.41d |  |  |
| 16 | монтаж |  | 2026-09-21 10:30 → 2026-09-19 10:30 (-2d) |  |  | 122.41d → 123.41d |  |  |
| 27 | **ревизия парогенератор КАРЧЕР** |  |  | 10d? → 11d? |  |  |  |  |
| 31 | **подключить циклоны 1 и 2 линия** |  | 2026-09-10 10:00 A |  | 14% → 100% | 131.47d → none |  |  |
| 33 | монтаж кабеля (временно удлинить от сущестующих концов) | 2026-09-10 09:00 A | 2026-09-10 10:00 A |  | 0% → 100% | 131.47d → none |  |  |
| 34 | **бактерицидные лампы** |  | 2026-09-11 10:00 → 2026-09-12 10:00 (+1d) | 2.12d → 3.12d |  |  |  |  |
| 36 | ремонт лампы снятой бундиным с мойки экструдера | 2026-09-11 09:00 → 2026-09-12 09:00 (+1d) | 2026-09-11 10:00 → 2026-09-12 10:00 (+1d) |  |  |  |  | constraint start no earlier than 2026-09-11 09:00 → start no earlier than 2026-09-12 09:00 |
| 37 | ремонт лампы в тамбуре вывоз ГП | 2026-09-11 09:00 → 2026-09-12 09:00 (+1d) | 2026-09-11 10:00 → 2026-09-12 10:00 (+1d) |  |  |  |  | constraint start no earlier than 2026-09-11 09:00 → start no earlier than 2026-09-12 09:00 |
| 39 | ремонт силиконовых уплотнений печи на сетке 1 и 2 л | 2026-09-10 09:00 A | 2026-09-10 12:00 A |  | 0% → 100% | 131.22d → none |  |  |
| 40 | **сместить квадропак в сторону охладителя 2л** |  | 2026-09-11 12:00 → 2026-09-16 13:00 (+5d) | 1.38d → 6.5d | 50% → 60% | 130.22d → 126.09d |  |  |
| 42 | подключение | 2026-09-11 09:00 A | 2026-09-11 12:00 A |  | 0% → 100% | 130.22d → none |  |  |
| 44 | Ревизия утечек воздуха на квадропаке (важно проверить пневмораспределителях) и вакуумную систему | 2026-09-16 09:00 → 2026-09-13 09:00 (-3d) | 2026-09-16 11:00 → 2026-09-13 11:00 (-3d) |  |  |  |  | constraint start no earlier than 2026-09-16 09:00 → start no earlier than 2026-09-13 09:00; resources Труфанов А → Дедов В |
| 47 | Убрать все кабеля на полу в зоне фасовки, теко-нотис (кабельный менеджмент) | 2026-09-10 09:00 A | 2026-09-10 11:00 A |  | 0% → 100% | 131.34d → none |  |  |
| 75 | **продумать как сделать герметичную крышку на смесителе сухого гидрализата** |  | 2026-09-11 11:00 → 2026-09-16 11:00 (+5d) | 12.25d → 17.25d |  | 130.34d → 126.34d |  |  |
| 78 | установка на струбцинах с уплотнителями | 2026-09-11 09:00 → 2026-09-16 09:00 (+5d) | 2026-09-11 11:00 → 2026-09-16 11:00 (+5d) |  |  | 130.34d → 126.34d |  | constraint start no earlier than 2026-09-11 09:00 → start no earlier than 2026-09-16 09:00; resources Бобренок В → Тимофеев В |
| 79 | **метал от тенов печи, устранить причину** |  | 2026-09-11 12:00 A |  | 45% → 100% | 130.22d → none |  |  |
| 84 | замена заброкованных осмотром тенов | 2026-09-11 09:00 A | 2026-09-11 12:00 A |  | 0% → 100% | 130.22d → none |  |  |
| 117 | **палетообмостчик монтаж в 1ц** |  | 2026-09-14 12:00 → 2026-09-17 12:00 (+3d) | 26.38d → 29.38d |  | 127.22d → 125.22d |  |  |
| 124 | монтаж | 2026-09-14 09:00 → 2026-09-17 09:00 (+3d) | 2026-09-14 12:00 → 2026-09-17 12:00 (+3d) |  |  | 127.22d → 125.22d |  | constraint start no earlier than 2026-09-14 09:00 → start no earlier than 2026-09-17 09:00 |
| 125 | **замена сетка печи линия 1** |  | 2026-10-01 09:45 → 2026-09-30 09:45 (-1d) |  |  | 114.5d → 115.5d |  |  |
| 129 | контроль доставки | 2026-09-29 09:00 → 2026-09-28 09:00 (-1d) | 2026-09-29 09:15 → 2026-09-28 09:15 (-1d) |  |  | 114.5d → 115.5d |  |  |
| 130 | приемка | 2026-09-29 09:15 → 2026-09-28 09:15 (-1d) | 2026-09-29 09:45 → 2026-09-28 09:45 (-1d) |  |  | 114.5d → 115.5d |  |  |
| 131 | замена | 2026-09-30 09:45 → 2026-09-29 09:45 (-1d) | 2026-10-01 09:45 → 2026-09-30 09:45 (-1d) |  |  | 114.5d → 115.5d |  |  |
| 139 | **перенос вентилятор охладителя линия2 в реверс, убрать шкаф** |  | 2026-09-16 10:00 A |  | 82% → 100% | 125.47d → none |  |  |
| 145 | модернизация венттилятора/монтаж вентилляции | 2026-09-11 09:00 A | 2026-09-11 13:00 A |  | 0% → 100% | 130.09d → none |  |  |
| 146 | Подключение улитки, монтаж щитка к стене | 2026-09-16 09:00 A | 2026-09-16 10:00 A |  | 0% → 100% | 125.47d → none |  |  |
| 188 | **сборка дозатор на квадропак** |  | 2026-09-14 11:00 → 2026-09-16 11:00 (+2d) | 50.25d → 52.25d |  | 127.34d → 126.34d |  |  |
| 204 | закрыть зад крышку | 2026-09-14 09:00 → 2026-09-13 09:00 (-1d) | 2026-09-14 09:20 → 2026-09-13 09:20 (-1d) |  |  | 127.43d → 129.43d |  | constraint start no earlier than 2026-09-14 09:00 → start no earlier than 2026-09-13 09:00; resources Труфанов А → Дедов В |
| 205 | монтаж кнопка дозатор ОН/ОФФ | 2026-09-14 09:20 → 2026-09-13 09:20 (-1d) | 2026-09-14 10:20 → 2026-09-13 10:20 (-1d) |  |  | 127.43d → 129.43d |  |  |
| 206 | закрыть металлом пустые места между площадками квадропак и дозатор | 2026-09-14 09:00 → 2026-09-16 09:00 (+2d) | 2026-09-14 11:00 → 2026-09-16 11:00 (+2d) |  |  | 127.34d → 126.34d |  | constraint start no earlier than 2026-09-14 09:00 → start no earlier than 2026-09-16 09:00 |
| 220 | **заменить амперметры неиспрвные на ШУ 1 и 2 линия (они на складе приехали сегодня новые посмотреть фото в выдаче)** |  |  |  | 50% → 99% |  |  |  |
| 223 | монтаж датчиковтока на 2л | 2026-09-10 09:00 → 2026-09-11 09:00 A (+1d) | 2026-09-10 11:00 → 2026-09-11 13:00 A (+1d) | 2h → 4h | 0% → 100% | 131.34d → none |  | constraint start no earlier than 2026-09-10 09:00 → start no earlier than 2026-09-11 09:00; resources Бундин В → Макаревич А |
| 284 | **установить резервную трубку/штангу с форсункой на подачу жира** |  | 2026-09-25 18:00 → 2026-09-24 18:00 (-1d) |  |  | 117.59d → 118.59d |  |  |
| 289 | доставка контроль | 2026-09-23 11:00 → 2026-09-22 11:00 (-1d) | 2026-09-23 11:00 → 2026-09-22 11:00 (-1d) |  |  | 117.59d → 118.59d |  |  |
| 290 | сборка в мастерской | 2026-09-24 11:00 → 2026-09-23 11:00 (-1d) | 2026-09-24 16:00 → 2026-09-23 16:00 (-1d) |  |  | 117.59d → 118.59d |  |  |
| 291 | монтаж на линию | 2026-09-25 16:00 → 2026-09-24 16:00 (-1d) | 2026-09-25 18:00 → 2026-09-24 18:00 (-1d) |  |  | 117.59d → 118.59d |  |  |
| 292 | **установить автоматику запуска шнека + смеситель по датчику уровня сырья в бункере экструдера** |  | 2026-09-21 12:10 → 2026-09-19 12:10 (-2d) |  |  | 122.2d → 123.2d |  |  |
| 298 | монтаж в линию |  | 2026-09-21 12:10 → 2026-09-19 12:10 (-2d) |  |  | 122.2d → 123.2d |  |  |
| 417 | **заменить фильтры на жиротопка** |  | 2026-09-28 11:15 → 2026-09-25 11:15 (-3d) |  |  | 117.31d → 118.31d |  |  |
| 419 | контроль | 2026-09-28 10:00 → 2026-09-25 10:00 (-3d) | 2026-09-28 10:15 → 2026-09-25 10:15 (-3d) |  |  | 117.31d → 118.31d |  |  |
| 420 | замена | 2026-09-28 10:15 → 2026-09-25 10:15 (-3d) | 2026-09-28 11:15 → 2026-09-25 11:15 (-3d) |  |  | 117.31d → 118.31d |  |  |
| 422 | **обслуживание инсекьюеров, утлизация отработанных ламп** |  | 2026-09-14 11:00 → 2026-09-21 10:00 (+7d) | 107.25d → 113.12d |  | 127.34d → 122.47d |  |  |
| 430 | подготовить лампы к утилизации | 2026-09-14 10:00 → 2026-09-21 09:00 (+7d) | 2026-09-14 11:00 → 2026-09-21 10:00 (+7d) |  |  | 127.34d → 122.47d |  | constraint start no earlier than 2026-05-27 09:00 → start no earlier than 2026-09-21 09:00; resources Труфанов А → Тимофеев В |
| 573 | замена | 2026-09-14 09:00 → 2026-09-21 09:00 (+7d) | 2026-09-14 18:00 → 2026-09-21 18:00 (+7d) |  |  | 126.59d → 121.59d |  | constraint start no earlier than 2026-09-14 09:00 → start no earlier than 2026-09-21 09:00 |
| 590 | **установить крышку печи торцевую с стороны экструдера на шарниры** |  |  |  | 95% → 100% |  |  |  |
| 594 | монтаж линия 1 и 2 печи (чтобы открывалась и не мешала открыванию лотку сверху) | 2026-09-11 09:00 A | 2026-09-11 13:00 A |  | 0% → 100% |  |  |  |
| 614 | монтаж врезки для отбора проб |  |  |  |  | 127.34d → 128.34d |  | resources Некрасов А → Некрасов А; Труфанов А |
| 726 | **Дражжировка конвейер №1 после печки** |  | 2026-09-11 10:00 → 2026-09-16 10:00 (+5d) | 103.12d → 108.12d |  | 130.47d → 126.47d |  |  |
| 727 | Поставить резьбовые клепки на боковой кожух, где кончается лента | 2026-09-11 09:00 → 2026-09-16 09:00 (+5d) | 2026-09-11 10:00 → 2026-09-16 10:00 (+5d) |  |  | 130.47d → 126.47d |  | constraint start no earlier than 2026-09-11 09:00 → start no earlier than 2026-09-16 09:00 |
| 754 | замена квадрат ручка дверь экструдер |  |  |  |  | 130.47d → 131.47d |  | resources Макаревич А → Бобренок В |
| 755 | **ревизия сливной шланг моечная машинка** |  | 2026-09-14 11:30 → 2026-09-21 11:30 (+7d) | 0.31d → 6.31d |  | 127.28d → 122.28d |  |  |
| 758 | контроль доставки | 2026-09-14 09:15 → 2026-09-19 09:15 (+5d) | 2026-09-14 09:30 → 2026-09-19 09:30 (+5d) |  |  | 127.28d → 122.28d | 757 → 757FS+5d |  |
| 759 | монтаж | 2026-09-14 09:30 → 2026-09-21 09:30 (+7d) | 2026-09-14 11:30 → 2026-09-21 11:30 (+7d) |  |  | 127.28d → 122.28d | 758 → 758FS+1d |  |
| 762 | **реверс теплоносителя в приточном калорифере** |  | 2026-09-15 11:00 → 2026-09-22 11:00 (+7d) | 19.25d? → 25.25d? |  | 126.34d → 121.34d |  |  |
| 765 | монтаж | 2026-09-14 11:00 → 2026-09-21 11:00 (+7d) | 2026-09-15 11:00 → 2026-09-22 11:00 (+7d) |  |  | 126.34d → 121.34d |  |  |
| 787 | **дренаж кондиционеров жир и упаковка установить отдельный насос от жиров** |  |  | 26.06d → 27.06d |  |  |  |  |
| 804 | **установить сифон ф110 в линию слива жиров** |  | 2026-09-15 11:30 → 2026-09-16 11:30 (+1d) | 27.31d → 28.31d |  |  |  |  |
| 806 | возможно ли убрать сифоны ф50, достаточно ли заслонки без гидрозатвора? Как сделать гидрозатвор ф100 | 2026-09-14 09:00 → 2026-09-15 09:00 (+1d) | 2026-09-14 09:15 → 2026-09-15 09:15 (+1d) |  |  |  |  | constraint start no earlier than 2026-09-14 09:00 → start no earlier than 2026-09-15 09:00 |
| 807 | решение | 2026-09-15 09:15 → 2026-09-16 09:15 (+1d) | 2026-09-15 09:15 → 2026-09-16 09:15 (+1d) |  |  |  |  |  |
| 808 | контроль доставка | 2026-09-15 09:15 → 2026-09-16 09:15 (+1d) | 2026-09-15 09:30 → 2026-09-16 09:30 (+1d) |  |  |  |  |  |
| 809 | монтаж | 2026-09-15 09:30 → 2026-09-16 09:30 (+1d) | 2026-09-15 11:30 → 2026-09-16 11:30 (+1d) |  |  |  |  |  |
| 826 | **усиление подогрев приточной вентиляции** |  | 2026-10-01 14:15 → 2026-09-30 14:15 (-1d) |  |  | 114.06d → 115.06d |  |  |
| 829 | контроль поствки | 2026-09-30 14:00 → 2026-09-29 14:00 (-1d) | 2026-09-30 14:15 → 2026-09-29 14:15 (-1d) |  |  | 114.06d → 115.06d |  |  |
| 830 | монтаж | 2026-09-30 14:15 → 2026-09-29 14:15 (-1d) | 2026-10-01 14:15 → 2026-09-30 14:15 (-1d) |  |  | 114.06d → 115.06d |  |  |
| 835 | **обеспечить не менее +15 зимой в зоне хранения навесок** |  |  | 57.34d? → 58.34d? |  |  |  |  |

| ID | Task | Start | Finish | Duration | Complete | Total float | Predecessors | Other |
| --- | --- | --- | --- | --- | --- | --- | --- | --- |
| 845 | **тепловые завесы в 2ц зона подачи навесок** |  |  | 48.34d? → 49.34d? |  |  |  |  |
| 852 | **монтаж кабель** |  | 2026-09-24 12:00 → 2026-09-23 12:00 (-1d) |  |  | 119.22d → 120.22d |  |  |
| 855 | контроль доставка | 2026-09-22 11:00 → 2026-09-21 11:00 (-1d) | 2026-09-22 12:00 → 2026-09-21 12:00 (-1d) |  |  | 119.22d → 120.22d |  |  |
| 856 | монтаж | 2026-09-23 12:00 → 2026-09-22 12:00 (-1d) | 2026-09-24 12:00 → 2026-09-23 12:00 (-1d) |  |  | 119.22d → 120.22d |  |  |
| 861 | **на дверь в мойку установить мощный доводчик** |  | 2026-09-12 10:00 → 2026-09-21 10:00 (+9d) | 17.12d → 25.12d |  | 129.47d → 122.47d |  |  |
| 866 | установить ручку с защелкой -язычком | 2026-09-12 09:00 → 2026-09-21 09:00 (+9d) | 2026-09-12 10:00 → 2026-09-21 10:00 (+9d) |  |  | 129.47d → 122.47d |  | constraint start no earlier than 2026-09-12 09:00 → start no earlier than 2026-09-21 09:00 |
| 867 | Установить доводчик на дверь в мойку зона экструдера | 2026-09-11 09:00 → 2026-09-18 09:00 (+7d) | 2026-09-11 10:00 → 2026-09-18 10:00 (+7d) |  |  | 130.47d → 124.47d |  | constraint start no earlier than 2026-09-11 09:00 → start no earlier than 2026-09-18 09:00 |
| 868 | **пролистыватель с апликтором заказ** |  | 2026-09-22 09:15 → 2026-09-21 09:15 (-1d) |  |  | 121.56d → 122.56d |  |  |
| 875 | монтаж | 2026-09-21 09:15 → 2026-09-19 09:15 (-2d) | 2026-09-22 09:15 → 2026-09-21 09:15 (-1d) |  |  | 121.56d → 122.56d |  |  |
| 974 | **ремонт эл котел №3 охладитель** |  | 2026-09-13 11:00 → 2026-09-19 11:00 (+6d) | 73.25d? → 79.25d? |  | 123.31d → 118.31d |  |  |
| 981 | замена блок тенов | 2026-09-13 09:00 → 2026-09-19 09:00 (+6d) | 2026-09-13 11:00 → 2026-09-19 11:00 (+6d) |  |  | 122.31d → 117.31d |  | was named замена; constraint start no earlier than 2026-09-13 09:00 → start no earlier than 2026-09-19 09:00 |
| 1107 | изготовить установить люк для чистки с обр стороны как в 3ц (шапочка) |  |  |  |  | 129.09d → 130.09d |  | was named установить люк для чистки с обр стороны как в 3ц (шапочка) |
| 1347 | **установить пульты на регулировку шибиров вентиляции** |  |  | 23d? → 24d? |  |  |  |  |
| 1360 | **отмена** |  |  | 80.31d? → 81.31d? |  |  |  |  |
| 1361 | **найти места утечки тепла под потолком- перемерзает труба подачи воды в 3 цех** |  |  | 80.31d? → 81.31d? |  |  |  |  |
| 1376 | **3 цех** |  | 2026-10-02 18:00 → 2026-10-01 18:00 (-1d) |  | 77% → 76% | 112.59d → 113.59d |  |  |
| 1389 | **установить ограничитель на дверь что бы попадала под движение рольворот** |  | 2026-09-23 10:30 → 2026-09-22 10:30 (-1d) |  |  | 120.41d → 121.41d |  |  |
| 1391 | контроль доставки | 2026-09-22 09:15 → 2026-09-21 09:15 (-1d) | 2026-09-22 09:30 → 2026-09-21 09:30 (-1d) |  |  | 120.41d → 121.41d |  |  |
| 1392 | монтаж | 2026-09-23 09:30 → 2026-09-22 09:30 (-1d) | 2026-09-23 10:30 → 2026-09-22 10:30 (-1d) |  |  | 120.41d → 121.41d |  |  |
| 1399 | **ломает гранулу после печи** |  | 2026-09-09 10:00 A |  | 53% → 100% | 132.47d → none |  |  |
| 1403 | контроль отвта | 2026-09-03 09:00 A | 2026-09-03 09:15 A |  | 0% → 100% | 137.56d → none |  |  |
| 1407 | печать переходника на 3д принтере | 2026-08-31 09:00 A | 2026-08-31 18:00 A |  | 0% → 100% | 139.59d → none |  |  |
| 1410 | **доп мощности для приточной вентиляции** |  | 2026-10-02 18:00 → 2026-10-01 18:00 (-1d) |  |  | 112.59d → 113.59d |  |  |
| 1415 | монтаж |  | 2026-10-02 18:00 → 2026-10-01 18:00 (-1d) |  |  | 112.59d → 113.59d |  |  |
| 1432 | **карусель добавить перемычку снизу, чтобы не выпал мешок** |  | 2026-09-14 11:00 → 2026-09-16 11:00 (+2d) | 22.25d → 24.25d |  | 127.34d → 126.34d |  |  |
| 1435 | покрасить перемычки система безопасности) | 2026-09-14 09:00 → 2026-09-16 09:00 (+2d) | 2026-09-14 11:00 → 2026-09-16 11:00 (+2d) |  |  | 127.34d → 126.34d |  | constraint start no earlier than 2026-09-14 09:00 → start no earlier than 2026-09-16 09:00 |
| 1657 | **5 цех** |  |  | 894.12d? → 895.12d? |  |  |  |  |
| 1659 | **установить зажим троса на тельфер** |  | 2026-09-21 11:15 → 2026-09-28 11:15 (+7d) | 15.28d? → 21.28d? |  | 122.31d → 117.31d |  |  |
| 1661 | контроль доставки | 2026-09-18 11:00 → 2026-09-25 11:00 (+7d) | 2026-09-18 11:15 → 2026-09-25 11:15 (+7d) |  |  | 122.31d → 117.31d |  |  |
| 1662 | монтаж | 2026-09-18 11:15 → 2026-09-25 11:15 (+7d) | 2026-09-21 11:15 → 2026-09-28 11:15 (+7d) |  |  | 122.31d → 117.31d |  |  |
| 1663 | **ремонт насос водоснабжения** |  | 2026-09-14 10:00 → 2026-09-13 11:00 (-1d) | 10.12d → 9.25d | 17% → 36% | 127.47d → 129.34d |  |  |
| 1667 | замена | 2026-09-14 09:00 → 2026-09-11 09:15 A (-3d) | 2026-09-14 10:00 → 2026-09-11 10:15 A (-3d) |  | 0% → 100% | 127.47d → none |  | constraint start no earlier than 2026-09-14 09:00 → start no earlier than 2026-09-11 09:00; resources Тимофеев В → Некрасов А; Макаревич А |
| 1681 | **проект новая дробилка** |  | 2026-10-13 09:15 → 2026-10-12 09:15 (-1d) |  |  | 106.56d → 107.56d |  |  |
| 1682 | **кабель для доп мощности** |  | 2026-10-13 09:15 → 2026-10-12 09:15 (-1d) |  |  | 106.56d → 107.56d |  |  |
| 1686 | монтаж | 2026-09-22 09:15 → 2026-09-21 09:15 (-1d) | 2026-10-13 09:15 → 2026-10-12 09:15 (-1d) |  |  | 106.56d → 107.56d |  |  |
| 1687 | **монтаж вода в 5ц** |  | 2026-09-17 10:00 → 2026-09-15 12:00 (-2d) | 31.12d? → 29.38d | 43% → 46% | 124.47d → 127.22d |  |  |
| 1690 | Прокнуть греющий кабель |  |  |  |  |  |  | resources Некрасов А; Макаревич А → Некрасов А; Труфанов А |
| 1691 | Подключение греющего кабеля | 2026-09-14 12:00 → 2026-09-14 09:00 | 2026-09-14 16:00 → 2026-09-14 12:00 |  |  | 124.47d → 127.84d | 1690 → none | constraint start no earlier than 2026-09-07 09:00 → start no earlier than 2026-09-14 09:00; resources Некрасов А → Дедов В |
| 1697 | **монтаж труба в земле между 3 и 4ц** |  | 2026-09-17 10:00 → 2026-09-15 12:00 (-2d) | 31.12d? → 29.38d | 29% → 41% | 124.47d → 127.22d |  |  |
| 1700 | заявка защита УЗО |  |  |  |  | 142.08d → 143.08d |  | resources Шуранов Ю → Зорькин В |
| 1702 | монтаж кабеля | 2026-09-14 16:00 → 2026-09-15 09:00 (+1d) | 2026-09-15 10:00 → 2026-09-15 12:00 |  |  | 124.47d → 127.22d |  | constraint start no earlier than 2026-09-07 09:00 → start no earlier than 2026-09-15 09:00 |
| 1703 | монтаж щиток кабеля с УЗО | 2026-09-16 10:00 → 2026-09-14 09:00 (-2d) | 2026-09-17 10:00 → 2026-09-14 12:00 (-3d) | 1d? → 3h |  | 124.47d → 128.22d | 1702FS+1d → none | constraint start no earlier than 2026-09-04 09:00 → start no earlier than 2026-09-14 09:00; resources Некрасов А → Дедов В |
| 1708 | монтаж щиток греющего кабеля по воздуху | 2026-08-24 09:00 → 2026-09-14 09:00 (+21d) | 2026-08-24 13:00 → 2026-09-14 13:00 (+21d) |  |  | 145.09d → 128.09d |  | constraint start no earlier than 2026-08-24 09:00 → start no earlier than 2026-09-14 09:00 |
| 1933 | **Замена насосной станции** |  | 2026-09-14 11:00 → 2026-09-11 11:00 (-3d) | 12.25d → 9.25d | 46% → 92% | 127.34d → 131.34d |  |  |
| 1937 | установка новой насосной станции | 2026-09-14 09:00 → 2026-09-11 09:00 A (-3d) | 2026-09-14 11:00 → 2026-09-11 11:00 A (-3d) |  | 0% → 100% | 127.34d → none |  | constraint start no earlier than 2026-09-14 09:00 → start no earlier than 2026-09-11 09:00; resources Некрасов А → Некрасов А; Макаревич А |
| 1944 | **модернизация** |  |  | 978.5d? → 979.5d? |  |  |  |  |
| 1989 | **качественное нанесение жира тесты** |  |  | 265.5d? → 266.5d? |  |  |  |  |
| 2098 | Настройка даты на пробнике, нужно приподнять на 3-5 мм (ждем решение технологов, информация поменялась, читать письмо от 01.09.2026) | 2026-09-14 09:00 → 2026-09-03 09:00 A (-11d) | 2026-09-14 12:00 → 2026-09-03 12:00 A (-11d) |  | 0% → 100% | 127.22d → none |  | constraint start no earlier than 2026-09-14 09:00 → start no earlier than 2026-09-03 09:00 |
| 2099 | **техника** |  |  | 633.03d? → 634.03d? |  |  |  |  |
| 2101 | **капремонт погрузчика коматсу короткий** |  |  | 46.03d → 47.03d |  |  |  |  |
| 2150 | **ЗИП ремонт** |  | 2026-10-01 09:55 → 2026-09-30 09:55 (-1d) |  |  | 114.48d → 115.48d |  |  |
| 2151 | **Дефектовка двигателя от питателя прекондиционера/ прозвонить (возможно подготовить для сдачи на перемотку)** |  | 2026-09-09 09:10 → 2026-09-13 11:00 (+4d) | 4.02d → 8.25d | 92% → 50% | 132.57d → 129.34d |  |  |
| 2154 | разборка ревизия | 2026-09-09 09:00 → 2026-09-13 09:00 (+4d) | 2026-09-09 09:10 → 2026-09-13 11:00 (+4d) | 10min → 2h |  | 132.57d → 129.34d |  | was named решение о ремонт оформить; constraint start no earlier than 2026-09-09 09:00 → start no earlier than 2026-09-13 09:00; resources Зорькин В → Макаревич А |
| 2155 | **ремонт редутор печи №?** |  | 2026-09-22 11:30 → 2026-09-21 11:30 (-1d) |  |  | 121.28d → 122.28d |  |  |
| 2159 | контроль изг шетесиерен | 2026-09-21 09:15 → 2026-09-19 09:15 (-2d) | 2026-09-21 09:30 → 2026-09-19 09:30 (-2d) |  |  | 121.28d → 122.28d |  |  |
| 2160 | сборка редутор венец | 2026-09-22 09:30 → 2026-09-21 09:30 (-1d) | 2026-09-22 11:30 → 2026-09-21 11:30 (-1d) |  |  | 121.28d → 122.28d |  |  |
| 2161 | ремонт оборотные сетки-поддоны от печи от 2ц | 2026-09-03 09:00 → 2026-09-13 09:00 (+10d) | 2026-09-03 11:00 → 2026-09-13 11:00 (+10d) |  |  | 137.34d → 129.34d |  | constraint start no earlier than 2026-09-03 08:00 → start no earlier than 2026-09-13 09:00; resources Бобренок В → Макаревич А |
| 2272 | **ремонт датчик расхода пара с линия 3** |  | 2026-10-01 09:55 → 2026-09-30 09:55 (-1d) |  |  | 114.48d → 115.48d |  |  |
| 2275 | контроль | 2026-09-24 09:35 → 2026-09-23 09:35 (-1d) | 2026-09-24 09:35 → 2026-09-23 09:35 (-1d) |  |  | 114.48d → 115.48d |  |  |
| 2276 | орг забрать сремонта | 2026-10-01 09:35 → 2026-09-30 09:35 (-1d) | 2026-10-01 09:55 → 2026-09-30 09:55 (-1d) |  |  | 114.48d → 115.48d |  |  |
| 2385 | **Разобрать улитки с охладителя 2 линия, 4 улитки на печах и улитки циклонов - замена подшипников, каких нет сообщить** |  |  |  | 80% → 71% | 0d → 125.09d |  |  |
| 2912 | **синий склад** |  |  | 101d → 102d |  |  |  |  |
| 2955 | **офис** |  | 2026-09-15 11:00 → 2026-09-22 13:00 (+7d) | 920.25d? → 926.5d? |  | 126.34d → 121.09d |  |  |
| 2978 | выбивает автомат у Монича, нет селективности, замена автоматов. Ремонт освещения корридор | 2026-09-14 09:00 → 2026-09-22 09:00 (+8d) | 2026-09-14 13:00 → 2026-09-22 13:00 (+8d) |  |  | 127.09d → 121.09d |  | constraint start no earlier than 2026-09-14 09:00 → start no earlier than 2026-09-22 09:00 |
| 2989 | **склад упаковки** |  |  | 126.5d? → 127.5d? |  |  |  |  |
| 3008 | **РЭФ контейнеры** |  |  | 207.59d? → 208.59d? |  |  |  |  |
| 3079 | **ТБ** |  |  | 923.25d? → 924.25d? |  |  |  |  |
| 3106 | **территория** |  |  | 415.5d? → 416.5d? |  |  |  |  |

## Version 7 (saved 2026-09-14, file 07.09.26.mpp)

Last finish stays 2027-03-10.

Changed:

| ID | Task | Start | Finish | Duration | Total float | Other |
| --- | --- | --- | --- | --- | --- | --- |
| 887 | **ремонт осушителя компрессора 2ц** |  | 2026-09-14 10:00 → 2026-09-17 10:00 (+3d) | 28.12d → 31.12d | 128.47d → 125.47d |  |
| 888 | проверка давления фреона | 2026-09-14 09:00 → 2026-09-17 09:00 (+3d) | 2026-09-14 10:00 → 2026-09-17 10:00 (+3d) |  | 128.47d → 125.47d | constraint start no earlier than 2026-09-14 09:00 → start no earlier than 2026-09-17 09:00 |
| 1995 | **монтаж форсунки в линию** |  |  | 256.5d? → 259.5d? |  |  |

## Version 8 (saved 2026-09-16, file 07.09.26.mpp)

Note of the change: 16.09.2026 (2)

Last finish stays 2027-03-10. Complete tasks 2078 → 2107.

Added:

| ID | Task | Duration | Start | Finish | Predecessors | Constraint | Resources |
| --- | --- | --- | --- | --- | --- | --- | --- |
| 2 | Полная дефектовка пролистывателя, снятие лент/замена | 3h | 2026-09-18 09:00 | 2026-09-18 12:00 |  | start no earlier than 2026-09-18 09:00 | Тимофеев В |
| 8 | **Дополнительное освещение на Рампе** | 13.15d | 2026-09-11 09:00 A | 2026-09-25 10:10 |  |  |  |
| 9 | Прокинуть кабель | 2h | 2026-09-11 09:00 A | 2026-09-11 11:00 A |  | start no earlier than 2026-09-11 09:00 | Бобренок В |
| 11 | заявка выключатель | 5min | 2026-09-16 09:00 | 2026-09-16 09:05 | 10 | start no earlier than 2026-09-16 08:00 | Зорькин В |
| 12 | контроль | 5min | 2026-09-24 09:05 | 2026-09-24 09:10 | 11FS+7d | start no earlier than 2026-09-16 08:00 | Зорькин В |
| 13 | пожключение выключателя | 1h | 2026-09-25 09:10 | 2026-09-25 10:10 | 12FS+1d | start no earlier than 2026-09-16 08:00 | Бобренок В |
| 757 | Изготовить стопор для пленки на бестром (Обратиться к пацанам на фасовке или к мастеру, должны подсказать) | 2h | 2026-09-16 09:00 | 2026-09-16 11:00 |  | start no earlier than 2026-09-16 08:00 | Бундин В |
| 1114 | Удлинить носик, чтоб можно было вешать мешок, куда будет ссыпаться мука | 3h | 2026-09-14 09:00 A | 2026-09-14 12:00 A |  | start no earlier than 2026-09-14 08:00 | Макаревич А |
| 1385 | **Разобрать регулировку ножевого узла, достать вал на котором установлен штурвал** | 7.12d | 2026-09-18 09:00 | 2026-09-28 10:00 |  |  |  |
| 1386 | Снять вал, передать Зорькину | 1h | 2026-09-18 09:00 | 2026-09-18 10:00 |  | start no earlier than 2026-09-18 09:00 | Тимофеев В |
| 1387 | Заявка по образцу | 20min | 2026-09-18 09:00 | 2026-09-18 09:20 |  | start no earlier than 2026-09-18 09:00 | Зорькин В |
| 1388 | контроль | 10min | 2026-09-25 17:50 | 2026-09-25 18:00 | 1387SF+7d |  | Зорькин В |
| 1389 | установка | 1h | 2026-09-28 09:00 | 2026-09-28 10:00 | 1388 |  | Тимофеев В |
| 1390 | Между шлюзовым питателем и конвейером на жирах сделать ограничение, чтоб не разлеталась гранула и не мешало двигать конвейер | 3h | 2026-09-15 09:00 A | 2026-09-15 12:00 A |  | start no earlier than 2026-09-15 09:00 | Тимофеев В |
| 1391 | **Найти и установить жироуловитель с синего склада на жирах мойка** | 7.29d | 2026-09-16 09:00 A | 2026-09-24 11:20 |  |  |  |
| 1392 | Составить список необходимых материлов для подключения (передать зорькину) | 1h | 2026-09-16 09:00 A | 2026-09-16 10:00 A |  | start no earlier than 2026-09-16 08:00 | Тимофеев В; Зорькин В |
| 1393 | Заявка | 15min | 2026-09-16 10:00 A | 2026-09-16 10:15 A | 1392 | start no earlier than 2026-09-16 08:00 | Зорькин В |
| 1394 | Контроль | 5min | 2026-09-24 10:15 | 2026-09-24 10:20 | 1393FS+7d | start no earlier than 2026-09-16 08:00 | Зорькин В |
| 1395 | Монтаж | 1h | 2026-09-24 10:20 | 2026-09-24 11:20 | 1394 | start no earlier than 2026-09-16 08:00 | Тимофеев В |
| 1399 | Проблема с закрыванием дверцы привода ножей (шарнир с мотором ножей при закрывании теряет соосность, сделать упор) | 1h | 2026-09-15 09:00 A | 2026-09-15 10:00 A |  | start no earlier than 2026-09-15 09:00 | Тимофеев В |
| 1400 | Разобраться почему закусывает резьбу прижима ножей к фильере (испытывать после установки штурвала) | 1h | 2026-09-15 09:00 A | 2026-09-15 10:00 A |  | start no earlier than 2026-09-15 09:00 | Тимофеев В |
| 1679 | Установка смесителей (краны) с гибкой подводкой, получить на складе | 1h | 2026-09-19 09:00 | 2026-09-19 10:00 |  | start no earlier than 2026-09-19 09:00 | Бобренок В |
| 2512 | Осмотр редуктор-двигатель, нехороший шум, проверить втулки МУВП/заменить | 2h | 2026-09-23 09:00 | 2026-09-23 11:00 |  | start no earlier than 2026-09-23 09:00 | Труфанов А |
| 2614 | Осмотр подшипников / смазка | 15min | 2026-09-17 09:00 | 2026-09-17 09:15 |  | start no earlier than 2026-09-17 09:00 | Некрасов А |
| 2631 | Чистка | 1h | 2026-09-16 09:00 | 2026-09-16 10:00 |  | start no earlier than 2026-09-16 09:00 | Тимофеев В |
| 2642 | Снятие шестерен привода (отнести домоводову) | 2h | 2026-09-17 09:00 | 2026-09-17 11:00 |  | start no earlier than 2026-09-17 09:00 | Труфанов А |
| 2650 | ревизия | 1h | 2026-09-23 09:00 | 2026-09-23 10:00 |  | start no earlier than 2026-09-23 09:00 | Некрасов А |
| 2660 | Осмотр подшипников/контроль масла | 10min | 2026-09-17 09:00 | 2026-09-17 09:10 |  | start no earlier than 2026-09-17 09:00 | Тимофеев В |
| 2669 | Ревизия ленты, контроль соединения | 30min | 2026-09-17 09:00 | 2026-09-17 09:30 |  | start no earlier than 2026-09-17 09:00 | Тимофеев В |
| 2675 | Осмотр | 5min | 2026-09-17 09:00 | 2026-09-17 09:05 |  | start no earlier than 2026-09-17 09:00 | Тимофеев В |
| 2685 | Ревизия шестерен и подшипников | 1h | 2026-09-17 09:00 | 2026-09-17 10:00 |  | start no earlier than 2026-09-17 09:00 | Тимофеев В |
| 2692 | Осмотр подшипников, муфты, шестерен | 20min | 2026-09-17 09:00 | 2026-09-17 09:20 |  | start no earlier than 2026-09-17 09:00 | Некрасов А |
| 2697 | Проверка масла | 10min | 2026-09-17 09:00 | 2026-09-17 09:10 |  | start no earlier than 2026-09-17 09:00 | Некрасов А |
| 2713 | Проверка масла/чистка фильтра | 15min | 2026-09-17 09:00 | 2026-09-17 09:15 |  | start no earlier than 2026-09-17 09:00 | Некрасов А |
| 2724 | продувка частотного привода | 10min | 2026-09-17 09:00 | 2026-09-17 09:10 |  | start no earlier than 2026-09-17 09:00 | Некрасов А |
| 2730 | Ревизия узлов/масла | 20min | 2026-09-17 09:00 | 2026-09-17 09:20 |  | start no earlier than 2026-09-17 09:00 | Бобренок В |
| 2737 | Смазка всех цепей (если не смазаны) | 1h | 2026-09-17 09:00 | 2026-09-17 10:00 |  | start no earlier than 2026-09-17 09:00 | Бобренок В |
| 2741 | Осмотр, чистка | 2h | 2026-09-17 09:00 | 2026-09-17 11:00 |  | start no earlier than 2026-09-17 09:00 | Бобренок В |
| 2752 | Продувка | 10min | 2026-09-17 09:00 | 2026-09-17 09:10 |  | start no earlier than 2026-09-17 09:00 | Некрасов А |
| 2760 | Продувка | 10min | 2026-09-17 09:00 | 2026-09-17 09:10 |  | start no earlier than 2026-09-17 09:00 | Некрасов А |
| 2768 | ревизия люфтов, фиксации смазки подшипников | 30min | 2026-09-17 09:00 | 2026-09-17 09:30 |  | start no earlier than 2026-09-17 09:00 | Тимофеев В |
| 2779 | Осмотр соединений фитингов, трехходового крана бежит/не бежит | 10min | 2026-09-17 09:00 | 2026-09-17 09:10 |  | start no earlier than 2026-09-17 09:00 | Тимофеев В |
| 2784 | Осмотр/ревизия насоса гидролизата, проверка всех соединений | 10min | 2026-09-17 09:00 | 2026-09-17 09:10 |  | start no earlier than 2026-09-17 09:00 | Тимофеев В |
| 2785 | перенос розеток со стола на раму | 1h | 2026-09-17 09:00 | 2026-09-17 10:00 |  | start no earlier than 2026-09-17 09:00 | Тимофеев В |
| 2793 | ревизия люфтов, фиксации смазки подшипников | 30min | 2026-09-17 09:00 | 2026-09-17 09:30 |  | start no earlier than 2026-09-17 09:00 | Тимофеев В |
| 2810 | Смазка всех цепей | 2h | 2026-09-16 09:00 | 2026-09-16 11:00 |  | start no earlier than 2026-09-16 08:00 | Бобренок В |
| 2815 | ревизия люфтов, фиксации, смазки подшипников | 15min | 2026-09-17 09:00 | 2026-09-17 09:15 |  | start no earlier than 2026-09-17 09:00 | Некрасов А |
| 2823 | запайщик 1 и 2 проверка перемычек/тефлона замена при необходимости | 1h | 2026-09-17 09:00 | 2026-09-17 10:00 |  | start no earlier than 2026-09-17 09:00 | Некрасов А |
| 2847 | Чистка ТЭНов | 2h | 2026-09-16 09:00 | 2026-09-16 11:00 |  | start no earlier than 2026-09-16 08:00 | Бундин В |
| 2883 | Осмотр состояния фильтра приточки/замена | 30min | 2026-09-17 09:00 | 2026-09-17 09:30 |  | start no earlier than 2026-09-17 09:00 | Труфанов А |
| 3006 | Замена ТЭНа на бойлере, который в слесарке, получить на складе упаковки | 1h | 2026-09-16 09:00 | 2026-09-16 10:00 |  | start no earlier than 2026-09-16 08:00 | Бундин В |
| 3007 | Дефектовка бойлера, лежит в слесарке, проверка ТЭНов и анода, показывал кз по тэнам | 1h | 2026-09-14 09:00 A | 2026-09-14 10:00 A |  | start no earlier than 2026-09-14 08:00 | Макаревич А |

Changed:

| ID | Task | Start | Finish | Duration | Complete | Total float | Predecessors | Other |
| --- | --- | --- | --- | --- | --- | --- | --- | --- |
| 3 | уборка остатков монтажа с рампы | 2026-09-14 09:00 A | 2026-09-14 10:00 A |  | 0% → 100% | 128.47d → none |  |  |
| 4 | крепить табличку видеонаблюдение в офисе | 2026-09-14 09:00 A | 2026-09-14 09:15 A |  | 0% → 100% | 128.56d → none |  |  |
| 5 | закрыть чердак у Лукаса | 2026-09-14 09:00 A | 2026-09-14 09:15 A |  | 0% → 100% | 128.56d → none |  |  |
| 6 | Реанимировать весы, чтобы показывали. Смесители | 2026-09-13 09:00 → 2026-09-21 09:00 (+8d) | 2026-09-13 10:00 → 2026-09-21 10:00 (+8d) |  |  | 129.47d → 122.47d |  | constraint start no earlier than 2026-09-13 09:00 → start no earlier than 2026-09-21 09:00 |
| 7 | Закрыть каналыгу. На анкера | 2026-09-12 09:00 → 2026-09-15 09:00 (+3d) | 2026-09-12 11:00 → 2026-09-15 11:00 (+3d) |  |  | 130.34d → 127.34d |  | constraint start no earlier than 2026-09-12 09:00 → start no earlier than 2026-09-15 09:00; resources Бобренок В → Бундин В |
| 10 | установить доп светильник на погрузочной рампе | 2026-09-12 09:00 → 2026-09-15 09:00 A (+3d) | 2026-09-12 13:00 → 2026-09-15 13:00 A (+3d) |  | 0% → 100% | 130.09d → none | none → 9 | constraint start no earlier than 2026-09-12 09:00 → start no earlier than 2026-09-15 09:00 |
| 15 | **реконструкция хранения гидролизатов и маршрут подачи навесок** |  | 2026-09-19 10:30 → 2026-09-29 18:00 (+10d) | 11.19d? → 19d? |  | 123.41d → 115.59d |  |  |
| 18 | **монтаж доп плащадки** |  | 2026-09-19 10:30 → 2026-09-29 18:00 (+10d) | 9.19d → 17d |  | 123.41d → 115.59d |  |  |
| 22 | монтаж | 2026-09-17 10:30 → 2026-09-28 09:00 (+11d) | 2026-09-19 10:30 → 2026-09-29 18:00 (+10d) |  |  | 123.41d → 115.59d |  | constraint start no earlier than 2026-09-10 09:00 → start no earlier than 2026-09-28 09:00 |
| 33 | **ревизия парогенератор КАРЧЕР** | 2026-09-14 09:00 → 2026-09-15 09:00 (+1d) |  | 11d? → 10d? |  |  |  |  |
| 34 | орг отправить курьера на пнд | 2026-09-14 09:00 → 2026-09-15 09:00 (+1d) | 2026-09-14 09:15 → 2026-09-15 09:15 (+1d) |  |  | 127.53d → 126.53d |  | constraint start no earlier than 2026-09-14 09:00 → start no earlier than 2026-09-15 09:00 |
| 40 | **бактерицидные лампы** |  | 2026-09-12 10:00 → 2026-09-16 10:00 (+4d) | 3.12d → 7.12d |  | 130.47d → 126.47d |  |  |
| 42 | ремонт лампы снятой бундиным с мойки экструдера | 2026-09-12 09:00 → 2026-09-16 09:00 (+4d) | 2026-09-12 10:00 → 2026-09-16 10:00 (+4d) |  |  | 130.47d → 126.47d |  | constraint start no earlier than 2026-09-12 09:00 → start no earlier than 2026-09-16 09:00; resources Бобренок В → Бундин В |
| 43 | ремонт лампы в тамбуре вывоз ГП | 2026-09-12 09:00 → 2026-09-16 09:00 (+4d) | 2026-09-12 10:00 → 2026-09-16 10:00 (+4d) |  |  | 130.47d → 126.47d |  | constraint start no earlier than 2026-09-12 09:00 → start no earlier than 2026-09-16 09:00; resources Бобренок В → Бундин В |
| 50 | Ревизия утечек воздуха на квадропаке (важно проверить пневмораспределителях) и вакуумную систему (если работают, отменяем задание) | 2026-09-13 09:00 → 2026-09-16 09:00 (+3d) | 2026-09-13 11:00 → 2026-09-16 11:00 (+3d) |  |  |  |  | was named Ревизия утечек воздуха на квадропаке (важно проверить пневмораспределителях) и вакуумную систему; constraint start no earlier than 2026-09-13 09:00 → start no earlier than 2026-09-16 09:00; resources Дедов В → Бундин В |
| 52 | Сделать основную кнопку на НОТИСЕ, чтоб срабатывало от нее, а не от блока управления (схему взять у нас в кабинете) | 2026-09-13 09:00 → 2026-09-21 09:00 (+8d) | 2026-09-13 10:00 → 2026-09-21 10:00 (+8d) |  |  |  |  | was named Сделать основную кнопку на НОТИСЕ, чтоб срабатывало от нее, а не от блока управления; constraint start no earlier than 2026-09-13 09:00 → start no earlier than 2026-09-21 09:00 |
| 81 | **продумать как сделать герметичную крышку на смесителе сухого гидрализата** |  |  |  | 40% → 80% |  |  |  |
| 83 | изготовить крышку для 2 линии (как сделал Слава) | 2026-09-01 09:00 A | 2026-09-01 13:00 A |  | 0% → 100% | 140.09d → none |  |  |
| 123 | **палетообмостчик монтаж в 1ц** |  | 2026-09-17 12:00 → 2026-09-21 12:00 (+4d) | 29.38d → 32.38d |  | 125.22d → 122.22d |  |  |
| 130 | монтаж | 2026-09-17 09:00 → 2026-09-21 09:00 (+4d) | 2026-09-17 12:00 → 2026-09-21 12:00 (+4d) |  |  | 125.22d → 122.22d |  | constraint start no earlier than 2026-09-17 09:00 → start no earlier than 2026-09-21 09:00 |
| 153 | **ревизия красного смесителя 2 линия (просыпается мука)** |  | 2026-09-10 09:15 → 2026-09-15 09:15 (+5d) | 19.03d → 24.03d |  | 132.56d → 127.56d |  |  |
| 156 | контроль поставки уплотнение торцевое вала | 2026-09-10 09:00 → 2026-09-15 09:00 (+5d) | 2026-09-10 09:15 → 2026-09-15 09:15 (+5d) |  |  | 132.56d → 127.56d |  | constraint start no earlier than 2026-09-10 09:00 → start no earlier than 2026-09-15 09:00 |
| 194 | **сборка дозатор на квадропак** |  | 2026-09-16 11:00 → 2026-09-23 10:00 (+7d) | 52.25d → 58.12d | 84% → 85% | 126.34d → 120.47d |  |  |
| 210 | закрыть зад крышку | 2026-09-13 09:00 A | 2026-09-13 09:20 A |  | 0% → 100% | 129.43d → none |  |  |
| 211 | монтаж кнопка дозатор ОН/ОФФ | 2026-09-13 09:20 → 2026-09-23 09:00 (+10d) | 2026-09-13 10:20 → 2026-09-23 10:00 (+10d) |  |  | 129.43d → 120.47d |  | constraint start no earlier than 2026-09-10 09:00 → start no earlier than 2026-09-23 09:00 |
| 529 | монтаж 1 линия расходомер / кабель / блок питания | 2026-09-17 09:00 A → 2026-09-21 09:00 A (+4d) | 2026-09-17 12:00 → 2026-09-21 12:00 (+4d) |  |  |  |  | constraint start no earlier than 2026-09-17 09:00 → start no earlier than 2026-09-21 09:00 |
| 617 | **модернизация вентиляции** |  | 2026-09-14 11:00 → 2026-09-15 13:00 (+1d) | 134.25d → 135.5d | 29% → 62% | 128.34d → 127.09d |  |  |
| 620 | монтаж врезки для отбора проб | 2026-09-14 09:00 → 2026-09-15 09:00 A (+1d) | 2026-09-14 11:00 → 2026-09-15 13:00 A (+1d) | 2h → 4h | 0% → 100% | 128.34d → none |  | constraint start no earlier than 2026-09-14 09:00 → start no earlier than 2026-09-15 09:00 |
| 732 | **Дражжировка конвейер №1 после печки** |  | 2026-09-16 10:00 → 2026-09-23 10:00 (+7d) | 108.12d → 114.12d |  | 126.47d → 120.47d |  |  |
| 733 | Поставить резьбовые клепки на боковой кожух, где кончается лента | 2026-09-16 09:00 → 2026-09-23 09:00 (+7d) | 2026-09-16 10:00 → 2026-09-23 10:00 (+7d) |  |  | 126.47d → 120.47d |  | constraint start no earlier than 2026-09-16 09:00 → start no earlier than 2026-09-23 09:00 |
| 758 | ремонт лампа бактерициодная (это не инсекюьтер) на ГП (не горит табло). Ревизия. | 2026-09-13 09:00 A | 2026-09-13 11:00 A |  | 0% → 100% | 129.34d → none |  |  |
| 759 | ремонт ворот ГП слетели тросы | 2026-09-11 09:00 A | 2026-09-11 11:00 A |  | 0% → 100% | 131.34d → none |  |  |
| 760 | ремонт светильник корридор у отк | 2026-09-11 09:00 → 2026-09-14 09:00 A (+3d) | 2026-09-11 10:00 → 2026-09-14 10:00 A (+3d) |  | 0% → 100% | 131.47d → none |  | constraint start no earlier than 2026-09-11 08:00 → start no earlier than 2026-09-14 09:00; resources Бобренок В → Макаревич А |
| 761 | замена квадрат ручка дверь экструдер | 2026-09-11 09:00 → 2026-09-14 09:00 A (+3d) | 2026-09-11 10:00 → 2026-09-14 10:00 A (+3d) |  | 0% → 100% | 131.47d → none |  | constraint start no earlier than 2026-09-11 09:00 → start no earlier than 2026-09-14 09:00; resources Бобренок В → Макаревич А |
| 811 | **установить сифон ф110 в линию слива жиров** |  | 2026-09-16 11:30 → 2026-09-24 11:30 (+8d) | 28.31d → 35.31d |  | 126.28d → 119.28d |  |  |
| 813 | возможно ли убрать сифоны ф50, достаточно ли заслонки без гидрозатвора? Как сделать гидрозатвор ф100 | 2026-09-15 09:00 → 2026-09-23 09:00 (+8d) | 2026-09-15 09:15 → 2026-09-23 09:15 (+8d) |  |  | 126.28d → 119.28d |  | constraint start no earlier than 2026-09-15 09:00 → start no earlier than 2026-09-23 09:00 |
| 814 | решение | 2026-09-16 09:15 → 2026-09-24 09:15 (+8d) | 2026-09-16 09:15 → 2026-09-24 09:15 (+8d) |  |  | 126.28d → 119.28d |  |  |
| 815 | контроль доставка | 2026-09-16 09:15 → 2026-09-24 09:15 (+8d) | 2026-09-16 09:30 → 2026-09-24 09:30 (+8d) |  |  | 126.28d → 119.28d |  |  |
| 816 | монтаж | 2026-09-16 09:30 → 2026-09-24 09:30 (+8d) | 2026-09-16 11:30 → 2026-09-24 11:30 (+8d) |  |  | 126.28d → 119.28d |  |  |
| 817 | **установить инсекютер дополнительный на экструдер** |  | 2026-09-17 12:00 → 2026-09-17 11:00 | 22.38d → 22.25d | 14% → 20% | 125.22d → 125.34d |  |  |
| 820 | монтаж розетка / кабель |  | 2026-09-17 12:00 → 2026-09-17 11:00 | 3h → 2h |  | 125.22d → 125.34d |  | resources Тимофеев В → Труфанов А |
| 822 | **ограждение мусорного контейнера у 2ц** |  | 2026-09-17 11:45 A → 2026-09-15 18:00 A (-2d) | 16.34d → 15d |  |  |  |  |
| 827 | монтаж каркас + обшивка | 2026-09-15 11:45 A → 2026-09-14 09:00 A (-1d) | 2026-09-17 11:45 A → 2026-09-15 18:00 A (-2d) |  |  |  |  |  |
| 843 | **утепление стены** |  | 2026-09-16 10:15 → 2026-09-28 18:00 (+12d) | 14.16d? → 24d? |  | 126.44d → 116.59d |  |  |
| 847 | монтаж | 2026-09-15 10:15 → 2026-09-28 09:00 (+13d) | 2026-09-16 10:15 → 2026-09-28 18:00 (+12d) |  |  | 126.44d → 116.59d |  | constraint start no earlier than 2026-08-27 08:00 → start no earlier than 2026-09-28 09:00 |
| 1112 | **сделать горловину на быстросъемах прекондиционер** |  |  |  | 40% → 65% |  |  |  |
| 1115 | изготовить установить люк для чистки с обр стороны как в 3ц (шапочка) | 2026-09-12 09:00 A | 2026-09-12 13:00 A |  | 0% → 100% | 130.09d → none |  |  |
| 1139 | **установить водоподготовку на парогенератор** |  | 2026-09-17 18:00 → 2026-09-28 18:00 (+11d) | 120d? → 128d? |  | 124.59d → 116.59d |  |  |
| 1144 | монтаж (установка) | 2026-09-17 09:00 → 2026-09-28 09:00 (+11d) | 2026-09-17 18:00 → 2026-09-28 18:00 (+11d) |  |  | 124.59d → 116.59d |  | constraint start no earlier than 2026-09-17 09:00 → start no earlier than 2026-09-28 09:00 |
| 1320 | **установить на охладитель ролики + скольжение трубы** |  | 2026-09-17 18:00 → 2026-09-28 18:00 (+11d) | 16d? → 24d? |  | 124.59d → 116.59d |  |  |
| 1322 | установить держатели труб | 2026-09-17 09:00 → 2026-09-28 09:00 (+11d) | 2026-09-17 18:00 → 2026-09-28 18:00 (+11d) |  |  | 124.59d → 116.59d |  | constraint start no earlier than 2026-09-17 09:00 → start no earlier than 2026-09-28 09:00 |
| 1347 | **схема блокировки роль ворот при открытым шлюзе + авт закрытие + датчик препятствия** |  | 2026-09-17 13:00 → 2026-09-28 13:00 (+11d) | 8.5d → 16.5d |  | 125.09d → 117.09d |  |  |
| 1349 | монтаж | 2026-09-17 09:00 → 2026-09-28 09:00 (+11d) | 2026-09-17 13:00 → 2026-09-28 13:00 (+11d) |  |  | 125.09d → 117.09d |  | constraint start no earlier than 2026-09-17 09:00 → start no earlier than 2026-09-28 09:00 |
| 1366 | **разделить воду на ПГ и экструдер** | 2026-09-17 09:00 → 2026-09-23 09:00 (+6d) | 2026-09-17 11:00 → 2026-09-23 11:00 (+6d) |  |  |  |  |  |
| 1367 | изготовить промежуточную емкость для прекондера, подача воды, сделать по аналогу 3 цеха | 2026-09-17 09:00 → 2026-09-23 09:00 (+6d) | 2026-09-17 11:00 → 2026-09-23 11:00 (+6d) |  |  |  |  | constraint start no earlier than 2026-09-17 09:00 → start no earlier than 2026-09-23 09:00 |
| 1396 | монтаж оконечные кожухи на конвейер после охладителя, что бы гранула не разлеталась при перевороте ленты | 2026-09-12 09:00 → 2026-09-21 09:00 (+9d) | 2026-09-12 13:00 → 2026-09-21 13:00 (+9d) |  |  | 130.09d → 122.09d |  | constraint start no earlier than 2026-09-12 09:00 → start no earlier than 2026-09-21 09:00 |
| 1397 | Перенести регулировку подачи жира, ближе к барабанам. Перенос частотник на раму барабанов | 2026-09-15 09:00 → 2026-09-22 09:00 (+7d) | 2026-09-15 13:00 → 2026-09-22 13:00 (+7d) |  |  | 127.09d → 121.09d |  | constraint start no earlier than 2026-09-15 09:00 → start no earlier than 2026-09-22 09:00 |
| 1401 | Регулировка ножей на экструдере — сделать «штурвал»; | 2026-09-15 09:00 A | 2026-09-15 11:00 A |  | 0% → 100% | 127.34d → none |  |  |
| 1402 | **Гранулы выходили из печи со следами смазки** | 2026-09-15 09:00 → 2026-09-21 09:00 (+6d) | 2026-09-15 13:00 → 2026-09-21 13:00 (+6d) |  |  | 127.09d → 122.09d |  |  |
| 1403 | (сделать направляющие в печи); | 2026-09-15 09:00 → 2026-09-21 09:00 (+6d) | 2026-09-15 13:00 → 2026-09-21 13:00 (+6d) |  |  | 127.09d → 122.09d |  | constraint start no earlier than 2026-09-15 09:00 → start no earlier than 2026-09-21 09:00 |
| 1438 | **сборка квадропака 3 цех** |  | 2026-09-15 11:00 → 2026-09-23 11:00 (+8d) | 25.25d → 32.25d |  | 127.34d → 120.34d |  |  |
| 1446 | тест на пакетах | 2026-09-15 09:00 → 2026-09-23 09:00 (+8d) | 2026-09-15 11:00 → 2026-09-23 11:00 (+8d) |  |  | 127.34d → 120.34d |  | constraint start no earlier than 2026-09-15 09:00 → start no earlier than 2026-09-23 09:00 |
| 1678 | **5 цех** |  | 2026-10-27 10:00 → 2026-11-26 11:00 (+30d) | 895.12d? → 917.25d? | 60% → 61% | 96.47d → 74.34d |  |  |
| 1680 | ремонт дека от вибросито | 2026-09-12 09:00 A | 2026-09-12 12:00 A |  | 0% → 100% | 130.22d → none |  |  |
| 1685 | **ремонт насос водоснабжения** |  | 2026-09-13 11:00 → 2026-11-26 11:00 (+74d) | 9.25d → 64.25d | 36% → 43% | 129.34d → 74.34d |  |  |
| 1686 | перекрутить американку для удобного обслуживания | 2026-09-13 09:00 → 2026-11-26 09:00 (+74d) | 2026-09-13 11:00 → 2026-11-26 11:00 (+74d) |  |  | 129.34d → 74.34d |  | constraint start no earlier than 2026-09-13 09:00 → start no earlier than 2026-11-26 09:00 |
| 1688 | конртроль поставки | 2026-09-10 09:00 A | 2026-09-10 09:15 A |  | 0% → 100% | 132.56d → none |  |  |
| 1693 | **подготовить сетку на мал дробилку 3 и 4мм** | 2026-09-12 09:00 A |  |  | 0% → 33% |  |  |  |
| 1694 | проверка отстатков сетки на складах | 2026-09-12 09:00 A | 2026-09-12 09:30 A |  | 0% → 100% | 129.41d → none |  |  |
| 1709 | **монтаж вода в 5ц** |  | 2026-09-15 12:00 → 2026-09-16 13:00 (+1d) | 29.38d → 30.5d | 46% → 49% | 127.22d → 126.09d |  |  |

| ID | Task | Start | Finish | Duration | Complete | Total float | Predecessors | Other |
| --- | --- | --- | --- | --- | --- | --- | --- | --- |
| 1710 | подклюючить воду на прямую | 2026-09-15 09:00 → 2026-09-14 09:00 A (-1d) | 2026-09-15 11:00 → 2026-09-14 11:00 A (-1d) |  | 0% → 100% | 127.34d → none |  |  |
| 1712 | Прокнуть греющий кабель | 2026-09-14 09:00 → 2026-09-16 09:00 (+2d) | 2026-09-14 12:00 → 2026-09-16 12:00 (+2d) |  |  |  |  |  |
| 1719 | **монтаж труба в земле между 3 и 4ц** |  | 2026-09-15 12:00 → 2026-09-16 12:00 (+1d) | 29.38d → 30.38d |  | 127.22d → 126.22d |  |  |
| 1724 | монтаж кабеля | 2026-09-15 09:00 → 2026-09-16 09:00 (+1d) | 2026-09-15 12:00 → 2026-09-16 12:00 (+1d) |  |  | 127.22d → 126.22d |  | constraint start no earlier than 2026-09-15 09:00 → start no earlier than 2026-09-16 09:00 |
| 1730 | монтаж щиток греющего кабеля по воздуху | 2026-09-14 09:00 → 2026-09-16 09:00 (+2d) | 2026-09-14 13:00 → 2026-09-16 13:00 (+2d) |  |  | 128.09d → 126.09d |  | constraint start no earlier than 2026-09-14 09:00 → start no earlier than 2026-09-16 09:00; resources Макаревич А → Труфанов А |
| 1734 | **монтаж тепловые пушки подвесные 5 цех** |  | 2026-09-17 12:00 → 2026-09-17 18:00 | 22.38d → 23d |  | 125.22d → 124.59d |  |  |
| 1739 | монтаж | 2026-09-15 12:00 → 2026-09-16 09:00 (+1d) | 2026-09-17 12:00 → 2026-09-17 18:00 |  |  | 125.22d → 124.59d |  | constraint start no earlier than 2026-08-10 08:00 → start no earlier than 2026-09-16 09:00 |
| 2405 | **ТО** |  | 2026-09-17 13:00 → 2026-09-23 11:00 (+6d) | 922.5d? → 927.25d? | 38% → 37% | 125.09d → 120.34d |  |  |
| 2407 | **Разобрать улитки с охладителя 2 линия, 4 улитки на печах и улитки циклонов - замена подшипников, каких нет сообщить** |  | 2026-09-17 13:00 → 2026-09-21 13:00 (+4d) | 10.5d → 13.5d | 71% → 78% | 125.09d → 122.09d |  |  |
| 2408 | очистка моторов шлюз питателей циклонов от пыли | 2026-09-11 09:00 A | 2026-09-11 09:30 A |  | 0% → 100% | 131.53d → none |  |  |
| 2409 | очистка центрального вала от налипей грязи через смотровое окно | 2026-09-11 09:00 A | 2026-09-11 10:00 A |  | 0% → 100% | 131.47d → none |  |  |
| 2415 | линия 2 вентилятор циклона 1 | 2026-09-17 09:00 → 2026-09-21 09:00 (+4d) | 2026-09-17 13:00 → 2026-09-21 13:00 (+4d) |  |  |  |  |  |
| 2485 | **линия 2** |  |  |  | 38% → 36% |  |  |  |
| 2506 | **редуктор экструдера и маслянная станция** |  | 2026-07-29 09:30 A → 2026-09-23 11:00 (+56d) | 50.06d → 94.25d | 100% → 56% | none → 120.34d |  |  |
| 2598 | **2 цех** |  | 2026-09-17 11:00 → 2026-09-23 10:00 (+6d) | 922.25d? → 927.12d? | 63% → 60% | 125.34d → 120.47d |  |  |
| 2600 | **линия 3** |  | 2026-09-09 10:00 → 2026-09-23 10:00 (+14d) | 914.12d? → 927.12d? | 99% → 94% | 133.47d → 120.47d |  |  |
| 2601 | **прекондицинер экструдера** |  | 2026-09-03 09:15 → 2026-09-17 09:15 (+14d) | 620.03d? → 633.03d? |  | 138.56d → 125.56d |  |  |
| 2612 | Осмотр подшипников / смазка | 2026-08-20 09:00 A | 2026-08-20 09:15 A |  | 0% → 100% | 148.56d → none |  |  |
| 2615 | **парогенератор** |  | 2026-09-09 10:00 A → 2026-09-16 10:00 (+7d) | 625d → 632d | 100% → 94% | none → 126.47d |  |  |
| 2632 | **привод сетки ПЕЧИ сушки** |  | 2026-09-09 09:20 A → 2026-09-17 11:00 (+8d) | 625.04d → 633.25d | 100% → 66% | none → 125.34d |  |  |
| 2651 | **смеситель СМ-1500** |  | 2026-09-09 09:10 A → 2026-09-17 09:10 (+8d) | 135.02d → 143.02d | 100% → 98% | none → 125.57d |  |  |
| 2661 | **нория 2 выгрузки смесителя** |  | 2026-09-03 09:30 A → 2026-09-17 09:30 (+14d) | 130.06d → 143.06d | 100% → 92% | none → 125.53d |  |  |
| 2670 | **бункер-накопитель с шнековой разкгрузкой синий** |  | 2026-09-03 09:05 A → 2026-09-17 09:05 (+14d) | 80.01d → 93.01d | 100% → 99% | none → 125.58d |  |  |
| 2676 | **питатель экструдера** |  | 2026-09-03 10:00 A → 2026-09-17 10:00 (+14d) | 115.12d → 128.12d | 100% → 94% | none → 125.47d |  |  |
| 2686 | **привод прекондиционера** |  | 2026-09-09 13:00 A → 2026-09-17 09:20 (+8d) | 135.5d → 143.04d | 100% → 94% | none → 125.55d |  |  |
| 2693 | **мотор-редуктор привод шнеков** |  | 2026-09-09 09:10 → 2026-09-17 09:10 (+8d) | 15.02d → 23.02d | 14% → 13% | 133.57d → 125.57d |  |  |
| 2698 | **редуктор шнеков экструдера - проверка масла** |  | 2026-09-09 09:15 A → 2026-09-17 09:15 (+8d) | 408.03d → 416.03d | 100% → 95% | none → 125.56d |  |  |
| 2714 | **шкаф управления экструдером** |  | 2026-09-03 09:10 A → 2026-09-17 09:10 (+14d) | 130.02d → 143.02d | 100% → 89% | none → 125.57d |  |  |
| 2725 | **пневотранспорт роторный питатель** |  | 2026-09-03 09:20 → 2026-09-17 09:20 (+14d) | 120.04d → 133.04d | 48% → 44% | 138.55d → 125.55d |  |  |
| 2731 | **печь - валы этажей, подшипники, цепи** |  | 2026-09-17 09:30 → 2026-09-17 10:00 | 133.06d → 133.12d | 88% → 70% | 125.53d → 125.47d |  |  |
| 2738 | **вентиляторы обдува сушки** |  | 2026-03-05 18:00 → 2026-09-17 11:00 (+196d) | 1d? → 143.25d? |  |  |  |  |
| 2742 | **шкаф управления тэнами сушки главный** |  | 2026-09-03 09:10 → 2026-09-17 09:10 (+14d) | 130.02d → 143.02d | 89% → 86% | 138.57d → 125.57d |  |  |
| 2753 | **шкаф управления тэнами твердотельный** |  | 2026-09-03 09:10 A → 2026-09-17 09:10 (+14d) | 130.02d → 143.02d | 100% → 89% | none → 125.57d |  |  |
| 2761 | **конвейер №1 с печи в дрожировщик** |  | 2026-09-03 09:30 A → 2026-09-17 09:30 (+14d) | 130.06d → 143.06d | 100% → 81% | none → 125.53d |  |  |
| 2769 | **барабан смесительный дрожировка** |  | 2026-09-03 09:15 → 2026-09-17 09:10 (+14d) | 700.03d → 713.02d | 82% → 81% | 138.56d → 125.57d |  |  |
| 2780 | **Узел подачи гидролизата** |  | 2026-09-03 09:10 A → 2026-09-17 10:00 (+14d) | 37.02d → 50.12d | 100% → 68% | none → 125.47d |  |  |
| 2786 | **конвейер №2 с дрожировки в охладитель** |  | 2026-09-03 09:30 A → 2026-09-17 09:30 (+14d) | 130.06d → 143.06d | 100% → 81% | none → 125.53d |  |  |
| 2794 | **охладитель сеточный** |  |  |  | 53% → 49% |  |  |  |
| 2808 | Ревизия сетки, контроль роспуска, подогнуть, где что можно, что бы не зацепилось |  |  |  |  |  |  | resources Некрасов А → Бобренок В |
| 2809 | Смазка подшипников привод охладителя |  |  |  |  |  |  | resources Тимофеев В → Бобренок В |
| 2811 | **конвейер 3 с охладителя в упаковку** |  | 2026-09-03 09:15 A → 2026-09-17 09:15 (+14d) | 16.03d → 29.03d | 100% → 75% | none → 125.56d |  |  |
| 2816 | **упаковка** |  | 2026-09-03 11:00 A → 2026-09-17 10:00 (+14d) | 700.25d → 713.12d | 100% → 92% | none → 125.47d |  |  |
| 2824 | **квадропак** | 2026-08-27 09:00 A → 2026-08-12 09:00 A (-15d) |  | 18.25d → 29.25d |  |  |  |  |
| 2825 | смазка вращающиющихся механизмов | 2026-08-27 09:00 → 2026-09-17 09:00 (+21d) | 2026-08-27 09:30 → 2026-09-17 09:30 (+21d) |  |  | 143.34d → 125.41d |  | constraint start no earlier than 2026-08-27 09:00 → start no earlier than 2026-09-17 09:00; resources Тимофеев В → Бобренок В |
| 2826 | протяжка креплений поворотных лап захвата | 2026-08-27 09:30 → 2026-09-17 09:30 (+21d) | 2026-08-27 10:00 → 2026-09-17 10:00 (+21d) |  |  | 143.34d → 125.41d |  | resources Тимофеев В → Бобренок В |
| 2827 | чистка вала ленты выгрзного транспортера | 2026-08-27 10:00 → 2026-09-17 10:00 (+21d) | 2026-08-27 10:30 → 2026-09-17 10:30 (+21d) |  |  | 143.34d → 125.41d |  | resources Тимофеев В → Бобренок В |
| 2828 | осмотр приводной системы нории / смазка | 2026-08-27 10:30 → 2026-08-12 09:00 (-15d) | 2026-08-27 11:00 → 2026-08-12 09:30 (-15d) |  |  | 143.34d → 154.53d | 2827 → none |  |
| 2829 | осмотр приводной системы нории / смазка | 2026-08-27 10:30 → 2026-08-20 09:00 (-7d) | 2026-08-27 11:00 → 2026-08-20 09:30 (-7d) |  |  | 143.34d → 148.53d | 2827 → none | resources Дедов В → Бобренок В |
| 2833 | **БЕСТРОМ** |  | 2026-09-10 09:30 → 2026-09-17 09:30 (+7d) | 706.06d → 713.06d | 71% → 64% | 132.53d → 125.53d |  |  |
| 2846 | Замена поролоновой губки на горизонтальных тенах запайки пакетов | 2026-09-10 09:00 → 2026-09-17 09:00 (+7d) | 2026-09-10 09:30 → 2026-09-17 09:30 (+7d) |  |  | 132.53d → 125.53d |  | constraint start no earlier than 2026-09-10 09:00 → start no earlier than 2026-09-17 09:00; resources Макаревич А → Бобренок В |
| 2881 | **приточнго-вытяжная венгтиляция и смесительный узел** |  | 2026-04-16 10:00 A → 2026-09-17 09:30 (+154d) | 0.12d → 113.06d | 100% → 67% | none → 125.53d |  |  |
| 2891 | чистка фильтров |  |  |  |  |  |  | resources Некрасов А; Тимофеев В → Тимофеев В; Бобренок В |
| 2900 | чистка фильтров |  |  |  |  |  |  | resources Некрасов А; Тимофеев В → Тимофеев В; Бобренок В |
| 2907 | чистка фильтров |  |  |  |  |  |  | resources Некрасов А; Тимофеев В → Тимофеев В; Бобренок В |
| 3005 | **офис** |  |  |  | 97% → 96% |  |  |  |
| 3032 | замена регистр отопления нач снабжения | 2026-09-15 09:00 → 2026-09-21 09:00 (+6d) | 2026-09-15 11:00 → 2026-09-21 11:00 (+6d) |  |  | 127.34d → 122.34d |  | constraint start no earlier than 2026-09-15 09:00 → start no earlier than 2026-09-21 09:00 |
| 3118 | **администрантивные** |  | 2026-09-16 11:00 → 2026-09-15 11:00 (-1d) | 132.25d → 131.25d | 87% → 89% | 126.34d → 127.34d |  |  |
| 3125 | **Ключи на шкафы** |  | 2026-09-16 11:00 → 2026-09-15 11:00 A (-1d) | 112.25d → 111.25d | 98% → 100% | 126.34d → none |  |  |
| 3129 | Повешать на веревочку ключи на все шкафы ВРУ и электрощитки (ключи на складе, веревочки взять на производстве, нитки) | 2026-09-16 09:00 → 2026-09-15 09:00 A (-1d) | 2026-09-16 11:00 → 2026-09-15 11:00 A (-1d) |  | 0% → 100% | 126.34d → none |  | constraint start no earlier than 2026-09-16 09:00 → start no earlier than 2026-09-15 09:00 |

## Version 9 (saved 2026-09-17, file 07.09.26.mpp)

Last finish stays 2027-03-10. Complete tasks 2107 → 2147.

Added:

| ID | Task | Duration | Start | Finish | Constraint | Resources |
| --- | --- | --- | --- | --- | --- | --- |
| 757 | Сделать ручки и щеколду для мусорки на улице | 1h | 2026-09-17 09:00 | 2026-09-17 10:00 | start no earlier than 2026-09-17 08:00 | Бундин В |
| 758 | Продумать варианты предложить, согласовать с Домоводовым и смонтировать, чтоб можно было вешать мешок на экструдере, под рассекатель потока муки выходящий из прекондиционера, который сделал Макаревич | 3h | 2026-09-18 09:00 | 2026-09-18 12:00 | start no earlier than 2026-09-18 09:00 | Бобренок В |
| 759 | Промывка дистилятора в лаборатории | 3h | 2026-09-18 09:00 | 2026-09-18 12:00 | start no earlier than 2026-09-18 09:00 | Бобренок В |
| 1388 | **Дражжировка** | 5.25d | 2026-09-17 09:00 | 2026-09-23 11:00 |  |  |
| 1389 | Повесить мощную цепь, за которую можно опускать и поднимать защиту | 1h | 2026-09-17 09:00 | 2026-09-17 10:00 | start no earlier than 2026-09-17 08:00 | Бундин В |
| 1390 | Сделать ограничитель, когда опускаешь защиту на себя, на уровне перил | 1h | 2026-09-17 09:00 | 2026-09-17 10:00 | start no earlier than 2026-09-17 08:00 | Бундин В |
| 1391 | Сделать из отбойников рессор уаз отбойники на защите паллет, чтоб не било когда падает (позвони, обьясню) | 2h | 2026-09-17 09:00 | 2026-09-17 11:00 | start no earlier than 2026-09-17 08:00 | Бундин В |
| 1392 | Перенести частотник со стены ближе к барабанам (установку согласовать с Домоводовым) | 2h | 2026-09-23 09:00 | 2026-09-23 11:00 | start no earlier than 2026-09-23 09:00 | Некрасов А |
| 1394 | Изготовить и установить полосу не дающую грануле скатываться обратно по краю ленты, примеры посмотреть в 1 цеху | 1h | 2026-09-19 09:00 | 2026-09-19 10:00 | start no earlier than 2026-09-19 09:00 | Макаревич А |
| 1395 | Изготовить и установить уши на конце конвейера в барабан (чтоб гранула не попадала внутрь ленты) | 2h | 2026-09-18 09:00 | 2026-09-18 11:00 | start no earlier than 2026-09-18 09:00 | Тимофеев В |
| 1396 | Доделать и установить язык между барабанами | 1h | 2026-09-18 09:00 | 2026-09-18 10:00 | start no earlier than 2026-09-18 09:00 | Тимофеев В |
| 1626 | Модернизация лотка для удаления брака из барабанов | 4h | 2026-09-19 09:00 | 2026-09-19 13:00 | start no earlier than 2026-09-19 09:00 | Макаревич А |
| 1724 | Все доделать/подключить | 6h | 2026-09-18 09:00 | 2026-09-18 16:00 | start no earlier than 2026-09-18 09:00 | Труфанов А; Некрасов А |
| 3020 | **Ремонт бойлера** | 10.12d? | 2026-09-08 09:00 A | 2026-09-18 10:00 |  |  |
| 3021 | Заявка тэна | 1d? | 2026-09-08 09:00 A | 2026-09-08 18:00 A | start no earlier than 2026-09-08 09:00 |  |
| 3022 | контроль доставка | 1d? | 2026-09-14 09:00 A | 2026-09-14 18:00 A | start no earlier than 2026-09-14 09:00 |  |
| 3023 | Повесить отремонтированный бойлер обратно в офис - проверить работу | 1h | 2026-09-18 09:00 | 2026-09-18 10:00 | start no earlier than 2026-09-18 09:00 | Некрасов А |

Changed:

| ID | Task | Start | Finish | Duration | Complete | Total float | Other |
| --- | --- | --- | --- | --- | --- | --- | --- |
| 23 | **монтаж перегородка корридор** |  | 2026-09-18 09:30 → 2026-09-24 18:00 (+6d) | 8.06d → 14d |  | 124.53d → 118.59d |  |
| 27 | монтаж | 2026-09-16 09:30 → 2026-09-23 09:00 (+7d) | 2026-09-18 09:30 → 2026-09-24 18:00 (+6d) |  |  | 124.53d → 118.59d | constraint start no earlier than 2026-09-10 09:00 → start no earlier than 2026-09-23 09:00 |
| 33 | **ревизия парогенератор КАРЧЕР** | 2026-09-15 09:00 → 2026-09-18 09:00 (+3d) |  | 10d? → 7d? |  |  |  |
| 34 | орг отправить курьера на пнд | 2026-09-15 09:00 → 2026-09-18 09:00 (+3d) | 2026-09-15 09:15 → 2026-09-18 09:15 (+3d) |  |  | 126.53d → 123.53d | constraint start no earlier than 2026-09-15 09:00 → start no earlier than 2026-09-18 09:00 |
| 40 | **бактерицидные лампы** |  | 2026-09-16 10:00 A |  | 33% → 100% | 126.47d → none |  |
| 42 | ремонт лампы снятой бундиным с мойки экструдера | 2026-09-16 09:00 A | 2026-09-16 10:00 A |  | 0% → 100% | 126.47d → none |  |
| 43 | ремонт лампы в тамбуре вывоз ГП | 2026-09-16 09:00 A | 2026-09-16 10:00 A |  | 0% → 100% | 126.47d → none |  |
| 46 | **сместить квадропак в сторону охладителя 2л** |  | 2026-09-16 13:00 → 2026-09-23 13:00 (+7d) | 6.5d → 12.5d |  | 126.09d → 120.09d |  |
| 49 | доработка перил | 2026-09-16 09:00 → 2026-09-23 09:00 (+7d) | 2026-09-16 13:00 → 2026-09-23 13:00 (+7d) |  |  | 126.09d → 120.09d | constraint start no earlier than 2026-09-16 09:00 → start no earlier than 2026-09-23 09:00 |
| 50 | Ревизия утечек воздуха на квадропаке (важно проверить пневмораспределителях) и вакуумную систему (если работают, отменяем задание) | 2026-09-16 09:00 → 2026-09-17 09:00 (+1d) | 2026-09-16 11:00 → 2026-09-17 11:00 (+1d) |  |  |  | constraint start no earlier than 2026-09-16 09:00 → start no earlier than 2026-09-17 09:00 |
| 51 | Комплексное ТО квадропака, проверка всех соединений, протяжка болтов на всех узлах | 2026-09-16 09:00 → 2026-09-23 09:00 (+7d) | 2026-09-16 11:00 → 2026-09-23 11:00 (+7d) |  |  |  | constraint start no earlier than 2026-09-16 09:00 → start no earlier than 2026-09-23 09:00 |
| 81 | **продумать как сделать герметичную крышку на смесителе сухого гидрализата** |  | 2026-09-16 11:00 → 2026-09-23 11:00 (+7d) | 17.25d → 23.25d |  | 126.34d → 120.34d |  |
| 84 | установка на струбцинах с уплотнителями | 2026-09-16 09:00 → 2026-09-23 09:00 (+7d) | 2026-09-16 11:00 → 2026-09-23 11:00 (+7d) |  |  | 126.34d → 120.34d | constraint start no earlier than 2026-09-16 09:00 → start no earlier than 2026-09-23 09:00 |
| 194 | **сборка дозатор на квадропак** |  | 2026-09-23 10:00 → 2026-09-23 11:00 | 58.12d → 58.25d |  | 120.47d → 120.34d |  |
| 212 | закрыть металлом пустые места между площадками квадропак и дозатор | 2026-09-16 09:00 → 2026-09-23 09:00 (+7d) | 2026-09-16 11:00 → 2026-09-23 11:00 (+7d) |  |  | 126.34d → 120.34d | constraint start no earlier than 2026-09-16 09:00 → start no earlier than 2026-09-23 09:00 |
| 290 | **установить резервную трубку/штангу с форсункой на подачу жира** |  | 2026-09-24 18:00 → 2026-10-02 18:00 (+8d) | 16d → 22d |  | 118.59d → 112.59d |  |
| 293 | монтаж спец кронштенна | 2026-09-16 09:00 → 2026-09-23 09:00 (+7d) | 2026-09-16 10:00 → 2026-09-23 10:00 (+7d) |  |  | 118.59d → 112.59d | constraint start no earlier than 2026-09-16 09:00 → start no earlier than 2026-09-23 09:00 |
| 294 | заявка фитинги / тройники / краны / трубка | 2026-09-16 10:00 → 2026-09-23 10:00 (+7d) | 2026-09-16 11:00 → 2026-09-23 11:00 (+7d) |  |  | 118.59d → 112.59d |  |
| 295 | доставка контроль | 2026-09-22 11:00 → 2026-09-30 11:00 (+8d) | 2026-09-22 11:00 → 2026-09-30 11:00 (+8d) |  |  | 118.59d → 112.59d |  |
| 296 | сборка в мастерской | 2026-09-23 11:00 → 2026-10-01 11:00 (+8d) | 2026-09-23 16:00 → 2026-10-01 16:00 (+8d) |  |  | 118.59d → 112.59d |  |
| 297 | монтаж на линию | 2026-09-24 16:00 → 2026-10-02 16:00 (+8d) | 2026-09-24 18:00 → 2026-10-02 18:00 (+8d) |  |  | 118.59d → 112.59d |  |
| 760 | Изготовить стопор для пленки на бестром (Обратиться к пацанам на фасовке или к мастеру, должны подсказать) | 2026-09-16 09:00 A | 2026-09-16 11:00 A |  | 0% → 100% | 126.34d → none |  |
| 780 | **Дражжировка** |  |  |  | 52% → 99% | 125.34d → 0d |  |
| 781 | **Подготовить электрическую часть для подключения второго насоса без частотника (продолжаем эту задачу)** |  |  |  | 50% → 99% | 125.34d → 0d |  |
| 784 | Переместить розетки со стола, смонтировать площадку к раме и закрепить на эту раму | 2026-09-17 09:00 A | 2026-09-17 11:00 A |  | 0% → 100% | 125.34d → none |  |
| 810 | перенос инсекютер ниже на фасовке, для возможности доступа операторами | 2026-09-17 09:00 → 2026-09-24 09:00 (+7d) | 2026-09-17 10:00 → 2026-09-24 10:00 (+7d) |  |  | 125.47d → 119.47d | constraint start no earlier than 2026-09-17 09:00 → start no earlier than 2026-09-24 09:00 |
| 820 | **установить инсекютер дополнительный на экструдер** |  | 2026-09-17 11:00 A |  | 20% → 100% | 125.34d → none |  |
| 823 | монтаж розетка / кабель | 2026-09-17 09:00 A | 2026-09-17 11:00 A |  | 0% → 100% | 125.34d → none |  |
| 871 | **на дверь в мойку установить мощный доводчик** |  |  |  | 51% → 76% |  |  |
| 877 | Установить доводчик на дверь в мойку зона экструдера | 2026-09-18 09:00 → 2026-09-17 09:00 A (-1d) | 2026-09-18 10:00 → 2026-09-17 10:00 A (-1d) |  | 0% → 100% | 124.47d → none |  |
| 908 | установить защитные крышки на клемник вентиляторов охладителя. От 3д печать | 2026-09-16 09:00 A | 2026-09-16 13:00 A |  | 0% → 100% |  | resources Бобренок В → Труфанов А |
| 1387 | **3 цех** |  |  |  | 76% → 77% |  |  |
| 1416 | **С двигателя экструдера выдавило много масла;** | 2026-09-16 09:00 → 2026-09-18 09:00 (+2d) | 2026-09-16 13:00 → 2026-09-18 13:00 (+2d) |  |  | 126.09d → 124.09d |  |
| 1417 | установить поплавок на верхний уровень для блокировки насоса | 2026-09-16 09:00 → 2026-09-18 09:00 (+2d) | 2026-09-16 13:00 → 2026-09-18 13:00 (+2d) |  |  | 126.09d → 124.09d | constraint start no earlier than 2026-09-16 09:00 → start no earlier than 2026-09-18 09:00; resources Тимофеев В → Бобренок В |
| 1418 | Заменить кран подачи воды (второй слева) на втором предкондиционере — | 2026-09-14 09:00 A | 2026-09-14 10:00 A |  | 0% → 100% | 128.47d → none |  |
| 1450 | **сборка квадропака 3 цех** |  | 2026-09-23 11:00 → 2026-09-21 11:00 (-2d) | 32.25d → 30.25d | 56% → 76% | 120.34d → 122.34d |  |
| 1454 | подключение дозатор | 2026-08-14 09:00 A | 2026-08-14 10:00 A |  | 0% → 100% | 152.47d → none |  |
| 1456 | подключение нория к упаковке | 2026-08-14 14:00 A | 2026-08-14 16:00 A |  | 0% → 100% | 151.84d → none |  |
| 1458 | тест на пакетах | 2026-09-23 09:00 → 2026-09-21 09:00 (-2d) | 2026-09-23 11:00 → 2026-09-21 11:00 (-2d) |  |  | 120.34d → 122.34d | constraint start no earlier than 2026-09-23 09:00 → start no earlier than 2026-09-21 09:00 |
| 1460 | Установка квадропака (позиционирование нижней машины) информация у Труфанова | 2026-09-02 09:00 A | 2026-09-02 11:00 A |  | 0% → 100% | 139.34d → none |  |
| 1465 | **карусель добавить перемычку снизу, чтобы не выпал мешок** |  | 2026-09-16 11:00 → 2026-09-21 11:00 (+5d) | 24.25d → 28.25d |  | 126.34d → 122.34d |  |
| 1468 | покрасить перемычки система безопасности) | 2026-09-16 09:00 → 2026-09-21 09:00 (+5d) | 2026-09-16 11:00 → 2026-09-21 11:00 (+5d) |  |  | 126.34d → 122.34d | constraint start no earlier than 2026-09-16 09:00 → start no earlier than 2026-09-21 09:00 |
| 1553 | **сборка квадропак с системой дозации** |  |  |  | 45% → 86% |  |  |
| 1554 | сборка нория | 2026-07-17 09:00 A | 2026-07-17 18:00 A |  | 0% → 100% | 170.59d → none |  |
| 1555 | сборка площадка | 2026-07-20 09:00 A | 2026-07-20 13:00 A |  | 0% → 100% | 170.59d → none |  |
| 1625 | **доработка лотка барабан-охладитель - снизить скорость падения, установить сетку** |  |  |  | 88% → 90% |  |  |
| 1636 | сборка рычага | 2026-06-08 09:15 A | 2026-06-08 14:15 A |  | 0% → 100% | 201.06d → none |  |
| 1722 | **монтаж вода в 5ц** |  | 2026-09-16 13:00 → 2026-09-18 16:00 (+2d) | 30.5d → 32.75d | 49% → 56% | 126.09d → 123.84d |  |
| 1726 | Прокнуть греющий кабель | 2026-09-16 09:00 A | 2026-09-16 12:00 A |  | 0% → 100% |  |  |
| 1744 | монтаж щиток греющего кабеля по воздуху | 2026-09-16 09:00 A | 2026-09-16 13:00 A |  | 0% → 100% | 126.09d → none |  |
| 2419 | **ТО** |  | 2026-09-23 11:00 → 2026-09-24 11:00 (+1d) | 927.25d? → 928.25d? | 37% → 38% | 120.34d → 119.34d |  |
| 2612 | **2 цех** |  | 2026-09-23 10:00 → 2026-09-24 11:00 (+1d) | 927.12d? → 928.25d? | 60% → 64% | 120.47d → 119.34d |  |
| 2614 | **линия 3** |  |  |  | 94% → 98% |  |  |
| 2615 | **прекондицинер экструдера** |  | 2026-09-17 09:15 A |  | 99% → 100% | 125.56d → none |  |
| 2628 | Осмотр подшипников / смазка | 2026-09-17 09:00 A | 2026-09-17 09:15 A |  | 0% → 100% | 125.56d → none |  |
| 2629 | **парогенератор** |  | 2026-09-16 10:00 → 2026-09-17 10:00 A (+1d) | 632d → 633d | 94% → 100% | 126.47d → none |  |
| 2645 | Чистка | 2026-09-16 09:00 → 2026-09-17 09:00 A (+1d) | 2026-09-16 10:00 → 2026-09-17 10:00 A (+1d) |  | 0% → 100% | 126.47d → none | constraint start no earlier than 2026-09-16 09:00 → start no earlier than 2026-09-17 09:00 |
| 2646 | **привод сетки ПЕЧИ сушки** |  | 2026-09-17 11:00 A |  | 66% → 100% | 125.34d → none |  |
| 2656 | Снятие шестерен привода (отнести домоводову) | 2026-09-17 09:00 A | 2026-09-17 11:00 A |  | 0% → 100% | 125.34d → none |  |
| 2690 | **питатель экструдера** |  | 2026-09-17 10:00 A |  | 94% → 100% | 125.47d → none |  |
| 2699 | Ревизия шестерен и подшипников | 2026-09-17 09:00 A | 2026-09-17 10:00 A |  | 0% → 100% | 125.47d → none |  |
| 2700 | **привод прекондиционера** |  | 2026-09-17 09:20 A |  | 94% → 100% | 125.55d → none |  |
| 2706 | Осмотр подшипников, муфты, шестерен | 2026-09-17 09:00 A | 2026-09-17 09:20 A |  | 0% → 100% | 125.55d → none |  |
| 2707 | **мотор-редуктор привод шнеков** |  |  |  | 13% → 20% |  |  |
| 2711 | Проверка масла | 2026-09-17 09:00 A | 2026-09-17 09:10 A |  | 0% → 100% | 125.57d → none |  |
| 2712 | **редуктор шнеков экструдера - проверка масла** |  | 2026-09-17 09:15 A |  | 95% → 100% | 125.56d → none |  |
| 2727 | Проверка масла/чистка фильтра | 2026-09-17 09:00 A | 2026-09-17 09:15 A |  | 0% → 100% | 125.56d → none |  |
| 2728 | **шкаф управления экструдером** |  | 2026-09-17 09:10 A |  | 89% → 100% | 125.57d → none |  |
| 2738 | продувка частотного привода | 2026-09-17 09:00 A | 2026-09-17 09:10 A |  | 0% → 100% | 125.57d → none |  |
| 2745 | **печь - валы этажей, подшипники, цепи** |  |  |  | 70% → 80% |  |  |

| ID | Task | Start | Finish | Duration | Complete | Total float | Other |
| --- | --- | --- | --- | --- | --- | --- | --- |
| 2750 | Контроль редуктора, осмотр, проверка масла | 2026-09-17 09:00 A | 2026-09-17 09:30 A |  | 0% → 100% | 125.53d → none |  |
| 2752 | **вентиляторы обдува сушки** | 2026-03-05 09:00 A |  |  | 0% → 11% | 0d → 125.34d |  |
| 2755 | Осмотр, чистка | 2026-09-17 09:00 A | 2026-09-17 11:00 A |  | 0% → 100% | 125.34d → none |  |
| 2756 | **шкаф управления тэнами сушки главный** |  |  |  | 86% → 89% |  |  |
| 2766 | Продувка | 2026-09-17 09:00 A | 2026-09-17 09:10 A |  | 0% → 100% | 125.57d → none |  |
| 2767 | **шкаф управления тэнами твердотельный** |  | 2026-09-17 09:10 A |  | 89% → 100% | 125.57d → none |  |
| 2774 | Продувка | 2026-09-17 09:00 A | 2026-09-17 09:10 A |  | 0% → 100% | 125.57d → none |  |
| 2775 | **конвейер №1 с печи в дрожировщик** |  | 2026-09-17 09:30 A |  | 81% → 100% | 125.53d → none |  |
| 2782 | ревизия люфтов, фиксации смазки подшипников | 2026-09-17 09:00 A | 2026-09-17 09:30 A |  | 0% → 100% | 125.53d → none |  |
| 2783 | **барабан смесительный дрожировка** |  |  |  | 81% → 82% |  |  |
| 2793 | Осмотр соединений фитингов, трехходового крана бежит/не бежит | 2026-09-17 09:00 A | 2026-09-17 09:10 A |  | 0% → 100% | 125.57d → none |  |
| 2794 | **Узел подачи гидролизата** |  | 2026-09-17 10:00 A |  | 68% → 100% | 125.47d → none |  |
| 2798 | Осмотр/ревизия насоса гидролизата, проверка всех соединений | 2026-09-17 09:00 A | 2026-09-17 09:10 A |  | 0% → 100% | 125.57d → none |  |
| 2799 | перенос розеток со стола на раму | 2026-09-17 09:00 A | 2026-09-17 10:00 A |  | 0% → 100% | 125.47d → none |  |
| 2800 | **конвейер №2 с дрожировки в охладитель** |  | 2026-09-17 09:30 A |  | 81% → 100% | 125.53d → none |  |
| 2807 | ревизия люфтов, фиксации смазки подшипников | 2026-09-17 09:00 A | 2026-09-17 09:30 A |  | 0% → 100% | 125.53d → none |  |
| 2808 | **охладитель сеточный** |  | 2026-09-17 10:00 → 2026-09-24 11:00 (+7d) | 633.12d? → 639.25d? |  | 125.47d → 119.34d |  |
| 2824 | Смазка всех цепей | 2026-09-16 09:00 → 2026-09-24 09:00 (+8d) | 2026-09-16 11:00 → 2026-09-24 11:00 (+8d) |  |  | 126.34d → 119.34d | constraint start no earlier than 2026-09-16 08:00 → start no earlier than 2026-09-24 09:00 |
| 2825 | **конвейер 3 с охладителя в упаковку** |  |  |  | 75% → 99% | 125.56d → 0d |  |
| 2829 | ревизия люфтов, фиксации, смазки подшипников | 2026-09-17 09:00 A | 2026-09-17 09:15 A |  | 0% → 100% | 125.56d → none |  |
| 2847 | **БЕСТРОМ** |  |  |  | 64% → 77% |  |  |
| 2860 | Замена поролоновой губки на горизонтальных тенах запайки пакетов | 2026-09-17 09:00 A | 2026-09-17 09:30 A |  | 0% → 100% | 125.53d → none |  |
| 2861 | Чистка ТЭНов | 2026-09-16 09:00 A | 2026-09-16 11:00 A |  | 0% → 100% | 126.34d → none |  |
| 2883 | **Компрессор 2 цех** |  |  |  | 88% → 99% | 125.53d → 0d |  |
| 2891 | продувка фильтров (дать размеры фильтра) | 2026-09-17 09:00 A | 2026-09-17 09:30 A |  | 0% → 100% | 125.53d → none |  |
| 3019 | **офис** |  |  |  | 96% → 97% |  |  |
| 3024 | Замена ТЭНа на бойлере, который в слесарке, получить на складе упаковки | 2026-09-16 09:00 A | 2026-09-16 10:00 A |  | 0% → 100% | 126.47d → none |  |

## Version 10 (saved 2026-09-18, file 07.09.26.mpp)

Last finish stays 2027-03-10. Complete tasks 2147 → 2168.

Added:

| ID | Task | Duration | Start | Finish | Predecessors | Constraint | Resources |
| --- | --- | --- | --- | --- | --- | --- | --- |
| 2 | **замена ленты пролистывателя** | 10.47d | 2026-09-18 09:00 A | 2026-09-29 12:45 |  |  |  |
| 4 | заявка на ремень клиновый для ленты + клей | 30min | 2026-09-18 12:00 A | 2026-09-18 12:30 A | 3 | start no earlier than 2026-09-18 08:00 | Зорькин В |
| 5 | контроль доставки | 15min | 2026-09-25 12:30 | 2026-09-25 12:45 | 4FS+7d | start no earlier than 2026-09-18 08:00 | Зорькин В |
| 6 | склеить ремень | 4h | 2026-09-26 12:45 | 2026-09-26 17:45 | 5FS+1d | start no earlier than 2026-09-18 08:00 | Тимофеев В |
| 7 | замена лент | 4h | 2026-09-28 17:45 | 2026-09-29 12:45 | 6FS+1d | start no earlier than 2026-09-18 08:00 | Тимофеев В |
| 87 | печать уплотненителей крышек | 4h | 2026-09-21 09:00 | 2026-09-21 13:00 |  | start no earlier than 2026-09-21 09:00 | Домоводов К |
| 217 | сборка дозатор | 2h | 2026-09-21 09:00 | 2026-09-21 11:00 |  | start no earlier than 2026-09-21 09:00 | Труфанов А; Некрасов А |
| 218 | тест компонентов | 1h | 2026-09-21 09:00 | 2026-09-21 10:00 |  | start no earlier than 2026-09-21 09:00 | Зорькин В |
| 766 | **система сброса муки с прекондиционера в мешки** | 2d? | 2026-09-18 09:00 A | 2026-09-19 18:00 |  |  |  |
| 768 | изготовление тележки с креплением для 2х мешков. Покрасить | 1d? | 2026-09-19 09:00 | 2026-09-19 18:00 |  | start no earlier than 2026-09-19 09:00 | Бобренок В |
| 901 | заявка фреон 134а | 15min | 2026-09-21 09:00 | 2026-09-21 09:15 | 900 | start no earlier than 2026-09-21 09:00 | Зорькин В |
| 902 | доставка контроль | 15min | 2026-09-29 09:15 | 2026-09-29 09:30 | 901FS+7d | start no earlier than 2026-09-18 08:00 | Зорькин В |
| 903 | заправить хладогент | 2h | 2026-10-01 09:00 | 2026-10-01 11:00 | 902FS+1d | start no earlier than 2026-10-01 09:00 | Некрасов А |
| 1393 | **обеспечить быстрое переключение продукта из барабана годен/брак - охладитель/тазик** | 2d | 2026-09-19 09:00 | 2026-09-20 18:00 |  |  |  |
| 1394 | Модернизация лотка для удаления брака из барабанов, а именно: | 0h | 2026-09-19 09:00 | 2026-09-19 09:00 |  | start no earlier than 2026-09-19 09:00 | Макаревич А |
| 1395 | демонтировать отбойник, направляющий продукт в центр | 2h | 2026-09-19 09:00 | 2026-09-19 11:00 |  | start no earlier than 2026-09-19 09:00 | Макаревич А |
| 1396 | сделать торцевую стенку на шарнире с наклоном под барабан. Шарнир на высоте кронштейнов сетки. Шарнир дверной / как от печей | 4h | 2026-09-19 11:00 | 2026-09-19 16:00 | 1395 | start no earlier than 2026-09-18 08:00 | Макаревич А |
| 1397 | сделать фиксатор стенки в положении закрыто в виде щеколды. Безопасный быстрый | 2h | 2026-09-20 09:00 | 2026-09-20 11:00 | 1396 | start no earlier than 2026-09-20 09:00 | Макаревич А |
| 1398 | сделать "притвор", закрывающий щель после разрезания стенки. Все края защита от пореза либо зачистить либо лента | 4h | 2026-09-20 11:00 | 2026-09-20 16:00 | 1397 | start no earlier than 2026-09-18 08:00 | Макаревич А |
| 1399 | изготовить новый отбойник, направляющий продукт в центр, ниже опущенной стенки на сброс, не широкий, что бы удобно былоо менять сетку | 2h | 2026-09-20 16:00 | 2026-09-20 18:00 | 1398 | start no earlier than 2026-09-18 08:00 | Макаревич А |
| 1429 | заявка на датчики | 1h | 2026-09-18 14:00 | 2026-09-18 15:00 | 1428 | start no earlier than 2026-09-18 08:00 | Зорькин В |
| 1430 | контроль достачки | 15min | 2026-09-25 15:00 | 2026-09-25 15:15 | 1429FS+7d | start no earlier than 2026-09-18 08:00 | Зорькин В |
| 1431 | монтаж датчик в редуктор | 2h | 2026-09-26 15:15 | 2026-09-26 17:15 | 1430FS+1d | start no earlier than 2026-09-18 08:00 | Бобренок В |
| 1432 | подключение датчика в схему - блокировка по уровню | 4h | 2026-09-28 17:15 | 2026-09-29 12:15 | 1431FS+1d | start no earlier than 2026-09-18 08:00 | Дедов В |
| 1740 | установить в конце линии расширительный бак / защита от гидроудара | 2h | 2026-09-21 09:00 | 2026-09-21 11:00 |  | start no earlier than 2026-09-21 09:00 | Труфанов А; Некрасов А |
| 1741 | переключение линии "без бачка" | 2h | 2026-09-22 09:00 | 2026-09-22 11:00 | 1740 | start no earlier than 2026-09-22 09:00 | Труфанов А; Некрасов А |
| 1742 | тестирование системы | 2h | 2026-09-22 11:00 | 2026-09-22 13:00 | 1741 | start no earlier than 2026-09-18 08:00 | Труфанов А; Некрасов А |
| 1974 | проверка черетежей / подготовка к сборке | 1h | 2026-09-21 09:00 | 2026-09-21 10:00 |  | start no earlier than 2026-09-21 09:00 | Труфанов А; Зорькин В |
| 2196 | **уборка и сортировка. Приготовить, дневные проверят и продолжат** | 3.25d | 2026-09-18 09:00 | 2026-09-21 11:00 |  |  |  |
| 2197 | освободить стеллаж для оперативного хранения с ФИО | 1h | 2026-09-18 16:00 | 2026-09-18 17:00 | 2200 | start no earlier than 2026-09-18 08:00 | Бундин В |
| 2198 | куча №1 - не годное на выброс | 2h | 2026-09-18 09:00 | 2026-09-18 11:00 |  | start no earlier than 2026-09-18 09:00 | Бундин В |
| 2199 | куча №2 - годное, но хранить нужно на дальних складах | 2h | 2026-09-18 11:00 | 2026-09-18 13:00 | 2198 | start no earlier than 2026-09-18 08:00 | Бундин В |
| 2200 | куча №3 - не понятно где хранить. | 2h | 2026-09-18 14:00 | 2026-09-18 16:00 | 2199 | start no earlier than 2026-09-18 08:00 | Бундин В |
| 2201 | сортировка и перемещение мусор / металлолм/ дальние стеллажи | 2h | 2026-09-21 09:00 | 2026-09-21 11:00 |  | start no earlier than 2026-09-21 09:00 | Некрасов А; Тимофеев В; Труфанов А |
| 2220 | заказ шестерни червя в ЗИП - отправить курьера | 15min | 2026-09-21 09:00 | 2026-09-21 09:15 | 2216 | start no earlier than 2026-09-21 09:00 | Зорькин В |
| 2221 | контроль изг шетесиерен | 15min | 2026-10-02 09:15 | 2026-10-02 09:30 | 2220FS+10d | start no earlier than 2026-09-08 08:00 | Зорькин В |
| 2682 | ремонт шестерни привода - наварить | 1h | 2026-09-16 09:00 A | 2026-09-16 10:00 A |  | start no earlier than 2026-09-16 09:00 | Бундин В |
| 2683 | смазка цепей пищ смазкой | 1h | 2026-09-16 09:00 A | 2026-09-16 10:00 A |  | start no earlier than 2026-09-16 09:00 | Бобренок В |
| 2685 | смазка цепей пищ смазкой по графику 3 мес | 1h | 2026-12-04 10:00 | 2026-12-04 11:00 | 2683FS+3mo | start no earlier than 2026-09-16 09:00 | Бобренок В |
| 3049 | монтаж полочка Курдюмова | 2h | 2026-09-21 09:00 | 2026-09-21 11:00 |  | start no earlier than 2026-09-21 09:00 | Тимофеев В |
| 3054 | устранить утечку / монтаж | 2h | 2026-09-21 09:00 | 2026-09-21 11:00 |  | start no earlier than 2026-09-21 09:00 | Некрасов А; Труфанов А |

Removed: 780 Дражжировка; 871 на дверь в мойку установить мощный доводчик; 872 закрыть отверстие от ручки (заварить); 873 установить щетку для герметизации низа двери; 874 заявка доводчик; 875 контроль поставки; 876 установить ручку с защелкой -язычком; 877 Установить доводчик на дверь в мойку зона экструдера; 1626 Модернизация лотка для удаления брака из барабанов

Changed:

| ID | Task | Start | Finish | Duration | Complete | Total float | Predecessors | Other |
| --- | --- | --- | --- | --- | --- | --- | --- | --- |
| 3 | Полная дефектовка пролистывателя, снятие лент/замена | 2026-09-18 09:00 A | 2026-09-18 12:00 A |  | 0% → 100% | 124.22d → none |  |  |
| 11 | Реанимировать весы, чтобы показывали. Смесители | 2026-09-21 09:00 → 2026-09-22 09:00 (+1d) | 2026-09-21 10:00 → 2026-09-22 10:00 (+1d) |  |  |  |  | constraint start no earlier than 2026-09-21 09:00 → start no earlier than 2026-09-22 09:00 |
| 13 | **Дополнительное освещение на Рампе** |  | 2026-09-25 10:10 → 2026-09-24 10:10 (-1d) |  |  | 118.45d → 120.45d |  |  |
| 17 | контроль | 2026-09-24 09:05 → 2026-09-23 09:05 (-1d) | 2026-09-24 09:10 → 2026-09-23 09:10 (-1d) |  |  | 118.45d → 120.45d |  |  |
| 18 | пожключение выключателя | 2026-09-25 09:10 → 2026-09-24 09:10 (-1d) | 2026-09-25 10:10 → 2026-09-24 10:10 (-1d) |  |  | 118.45d → 120.45d |  |  |
| 20 | **реконструкция хранения гидролизатов и маршрут подачи навесок** |  |  | 19d? → 21d? |  |  |  |  |
| 23 | **монтаж доп плащадки** |  |  | 17d → 19d |  |  |  |  |
| 28 | **монтаж перегородка корридор** |  |  | 14d → 15d |  | 118.59d → 119.59d |  |  |
| 38 | **ревизия парогенератор КАРЧЕР** |  |  | 7d? → 8d? |  | 117.59d → 118.59d |  |  |
| 51 | **сместить квадропак в сторону охладителя 2л** |  |  | 12.5d → 13.5d |  | 120.09d → 121.09d |  |  |
| 55 | Ревизия утечек воздуха на квадропаке (важно проверить пневмораспределителях) и вакуумную систему (если работают, отменяем задание) | 2026-09-17 09:00 → 2026-09-23 09:00 (+6d) | 2026-09-17 11:00 → 2026-09-23 11:00 (+6d) |  |  |  |  | constraint start no earlier than 2026-09-17 09:00 → start no earlier than 2026-09-23 09:00 |
| 57 | Сделать основную кнопку на НОТИСЕ, чтоб срабатывало от нее, а не от блока управления (схему взять у нас в кабинете) | 2026-09-21 09:00 → 2026-09-22 09:00 (+1d) | 2026-09-21 10:00 → 2026-09-22 10:00 (+1d) |  |  |  |  | constraint start no earlier than 2026-09-21 09:00 → start no earlier than 2026-09-22 09:00 |
| 62 | **Не работают роль ставни на жирах, не стопоряться сделать/устранить неисправность** |  | 2026-09-16 09:10 → 2026-09-21 09:10 (+5d) | 7.02d → 12.02d |  | 126.57d → 123.57d |  |  |
| 65 | согласовать с подрядчиком дату ремонта | 2026-09-16 09:00 → 2026-09-21 09:00 (+5d) | 2026-09-16 09:10 → 2026-09-21 09:10 (+5d) |  |  | 126.57d → 123.57d |  | constraint start no earlier than 2026-09-16 09:00 → start no earlier than 2026-09-21 09:00 |
| 86 | **продумать как сделать герметичную крышку на смесителе сухого гидрализата** |  |  | 23.25d → 24.25d | 80% → 57% | 120.34d → 121.34d |  |  |
| 90 | установка на струбцинах с уплотнителями |  |  |  |  | 120.34d → 121.34d | none → 87 |  |
| 129 | **палетообмостчик монтаж в 1ц** |  | 2026-09-21 12:00 → 2026-09-28 12:00 (+7d) | 32.38d → 39.38d |  | 122.22d → 117.22d |  |  |
| 136 | монтаж | 2026-09-21 09:00 → 2026-09-28 09:00 (+7d) | 2026-09-21 12:00 → 2026-09-28 12:00 (+7d) |  |  | 122.22d → 117.22d |  | constraint start no earlier than 2026-09-21 09:00 → start no earlier than 2026-09-28 09:00 |
| 137 | **замена сетка печи линия 1** |  | 2026-09-30 09:45 → 2026-09-28 09:45 (-2d) |  |  | 115.5d → 117.5d |  |  |
| 141 | контроль доставки | 2026-09-28 09:00 → 2026-09-25 09:00 (-3d) | 2026-09-28 09:15 → 2026-09-25 09:15 (-3d) |  |  | 115.5d → 117.5d |  |  |
| 142 | приемка | 2026-09-28 09:15 → 2026-09-25 09:15 (-3d) | 2026-09-28 09:45 → 2026-09-25 09:45 (-3d) |  |  | 115.5d → 117.5d |  |  |
| 143 | замена | 2026-09-29 09:45 → 2026-09-26 09:45 (-3d) | 2026-09-30 09:45 → 2026-09-28 09:45 (-2d) |  |  | 115.5d → 117.5d |  |  |
| 144 | **зависает диспелей на расходомере 2л** |  | 2026-09-02 09:30 → 2026-09-23 09:30 (+21d) | 16.06d → 36.06d |  | 139.53d → 121.53d |  |  |
| 147 | объеденить минус шину контроллера с нулевым проводом оборудования ч/з резистор 10 Ом | 2026-09-02 09:00 → 2026-09-23 09:00 (+21d) | 2026-09-02 09:30 → 2026-09-23 09:30 (+21d) |  |  | 139.53d → 121.53d |  | constraint start no earlier than 2026-09-02 09:00 → start no earlier than 2026-09-23 09:00; resources Домоводов К → Труфанов А |
| 200 | **сборка дозатор на квадропак** |  |  | 58.25d → 59.25d | 85% → 84% | 120.34d → 121.34d |  |  |
| 211 | тестирование весов / разгон | 2026-09-14 09:00 A | 2026-09-14 11:00 A |  | 0% → 100% | 128.34d → none |  |  |
| 298 | **установить резервную трубку/штангу с форсункой на подачу жира** |  | 2026-10-02 18:00 → 2026-10-01 18:00 (-1d) | 22d → 23d |  | 112.59d → 113.59d |  |  |
| 303 | доставка контроль | 2026-09-30 11:00 → 2026-09-29 11:00 (-1d) | 2026-09-30 11:00 → 2026-09-29 11:00 (-1d) |  |  | 112.59d → 113.59d |  |  |
| 304 | сборка в мастерской | 2026-10-01 11:00 → 2026-09-30 11:00 (-1d) | 2026-10-01 16:00 → 2026-09-30 16:00 (-1d) |  |  | 112.59d → 113.59d |  |  |
| 305 | монтаж на линию | 2026-10-02 16:00 → 2026-10-01 16:00 (-1d) | 2026-10-02 18:00 → 2026-10-01 18:00 (-1d) |  |  | 112.59d → 113.59d |  |  |
| 306 | **установить автоматику запуска шнека + смеситель по датчику уровня сырья в бункере экструдера** | 2026-09-09 09:00 → 2026-09-22 09:00 (+13d) | 2026-09-19 12:10 → 2026-10-05 12:10 (+16d) |  |  | 123.2d → 112.2d |  |  |
| 307 | разработка схема / компановка | 2026-09-09 09:00 → 2026-09-22 09:00 (+13d) | 2026-09-09 10:00 → 2026-09-22 10:00 (+13d) |  |  | 123.2d → 112.2d |  | constraint start no earlier than 2026-09-09 09:00 → start no earlier than 2026-09-22 09:00 |
| 308 | заявка датчики / пускатели / эл щит | 2026-09-09 10:00 → 2026-09-22 10:00 (+13d) | 2026-09-09 12:00 → 2026-09-22 12:00 (+13d) |  |  | 123.2d → 112.2d |  |  |
| 309 | доставка контроль | 2026-09-16 12:00 → 2026-09-30 12:00 (+14d) | 2026-09-16 12:05 → 2026-09-30 12:05 (+14d) |  |  | 123.2d → 112.2d |  |  |
| 310 | контроль поставки | 2026-09-17 12:05 → 2026-10-01 12:05 (+14d) | 2026-09-17 12:10 → 2026-10-01 12:10 (+14d) |  |  | 123.2d → 112.2d |  |  |
| 311 | сборка ШУ | 2026-09-17 12:10 → 2026-10-01 12:10 (+14d) | 2026-09-18 12:10 → 2026-10-02 12:10 (+14d) |  |  | 123.2d → 112.2d |  |  |
| 312 | монтаж в линию | 2026-09-18 12:10 → 2026-10-02 12:10 (+14d) | 2026-09-19 12:10 → 2026-10-05 12:10 (+16d) |  |  | 123.2d → 112.2d |  |  |
| 431 | **заменить фильтры на жиротопка** |  | 2026-09-25 11:15 → 2026-09-24 11:15 (-1d) |  |  | 118.31d → 120.31d |  |  |
| 433 | контроль | 2026-09-25 10:00 → 2026-09-24 10:00 (-1d) | 2026-09-25 10:15 → 2026-09-24 10:15 (-1d) |  |  | 118.31d → 120.31d |  |  |
| 434 | замена | 2026-09-25 10:15 → 2026-09-24 10:15 (-1d) | 2026-09-25 11:15 → 2026-09-24 11:15 (-1d) |  |  | 118.31d → 120.31d |  |  |
| 436 | **обслуживание инсекьюеров, утлизация отработанных ламп** |  | 2026-09-21 10:00 → 2026-09-28 10:00 (+7d) | 113.12d → 120.12d |  | 122.47d → 117.47d |  |  |
| 444 | подготовить лампы к утилизации | 2026-09-21 09:00 → 2026-09-28 09:00 (+7d) | 2026-09-21 10:00 → 2026-09-28 10:00 (+7d) |  |  | 122.47d → 117.47d |  | constraint start no earlier than 2026-09-21 09:00 → start no earlier than 2026-09-28 09:00 |
| 537 | монтаж 1 линия расходомер / кабель / блок питания | 2026-09-21 09:00 A → 2026-09-23 09:00 A (+2d) | 2026-09-21 12:00 → 2026-09-23 12:00 (+2d) |  |  |  |  | constraint start no earlier than 2026-09-21 09:00 → start no earlier than 2026-09-23 09:00 |
| 587 | замена | 2026-09-21 09:00 → 2026-10-06 09:00 (+15d) | 2026-09-21 18:00 → 2026-10-06 18:00 (+15d) |  |  | 121.59d → 110.59d |  | constraint start no earlier than 2026-09-21 09:00 → start no earlier than 2026-10-06 09:00 |
| 740 | **Дражжировка конвейер №1 после печки** |  |  | 114.12d → 115.12d |  | 120.47d → 121.47d |  |  |
| 765 | Сделать ручки и щеколду для мусорки на улице | 2026-09-17 09:00 → 2026-09-20 09:00 (+3d) | 2026-09-17 10:00 → 2026-09-20 10:00 (+3d) |  |  | 125.47d → 124.47d |  | constraint start no earlier than 2026-09-17 08:00 → start no earlier than 2026-09-20 09:00; resources Бундин В → Бобренок В |
| 767 | Продумать варианты предложить, согласовать с Домоводовым и смонтировать, чтоб можно было вешать мешок на экструдере, под рассекатель потока муки выходящий из прекондиционера, который сделал Макаревич | 2026-09-18 09:00 A | 2026-09-18 12:00 A |  | 0% → 100% | 124.22d → none |  |  |
| 769 | Промывка дистилятора в лаборатории | 2026-09-18 09:00 A | 2026-09-18 12:00 A |  | 0% → 100% | 124.22d → none |  |  |
| 775 | **ревизия сливной шланг моечная машинка** | 2026-09-14 09:00 A | 2026-09-21 11:30 → 2026-09-24 11:30 (+3d) | 6.31d → 10.31d | 0% → 36% | 122.28d → 120.28d |  |  |
| 776 | ревизия / удлинить | 2026-09-14 09:00 A | 2026-09-14 10:00 A |  | 0% → 100% | 128.47d → none |  |  |
| 777 | заявка | 2026-09-14 09:00 → 2026-09-18 09:00 A (+4d) | 2026-09-14 09:15 → 2026-09-18 09:15 A (+4d) |  | 0% → 100% | 122.28d → none |  | constraint start no earlier than 2026-09-14 09:00 → start no earlier than 2026-09-18 09:00 |
| 778 | контроль доставки | 2026-09-19 09:15 → 2026-09-23 09:15 (+4d) | 2026-09-19 09:30 → 2026-09-23 09:30 (+4d) |  |  | 122.28d → 120.28d |  |  |
| 779 | монтаж | 2026-09-21 09:30 → 2026-09-24 09:30 (+3d) | 2026-09-21 11:30 → 2026-09-24 11:30 (+3d) |  |  | 122.28d → 120.28d |  |  |
| 780 | Проверка системы под давлением, при необходимости заменить шланги на пневматические?? | 2026-09-17 09:00 → 2026-09-22 09:00 (+5d) | 2026-09-17 10:00 → 2026-09-22 10:00 (+5d) |  |  | 125.47d → 122.47d |  | was named Проверка системы под давлением, при необходимости заменить шланги на пневматические; constraint start no earlier than 2026-09-17 09:00 → start no earlier than 2026-09-22 09:00 |
| 782 | **реверс теплоносителя в приточном калорифере** |  | 2026-09-22 11:00 → 2026-09-21 11:00 (-1d) |  |  | 121.34d → 123.34d |  |  |
| 785 | монтаж | 2026-09-21 11:00 → 2026-09-20 11:00 (-1d) | 2026-09-22 11:00 → 2026-09-21 11:00 (-1d) |  |  | 121.34d → 123.34d |  |  |
| 790 | **Подготовить электрическую часть для подключения второго насоса без частотника (продолжаем эту задачу)** | 2026-09-09 09:00 A → 2026-09-03 09:00 A (-6d) | 2026-09-17 11:00 A | 8.25d → 13.25d | 99% → 100% | 0d → none |  | resources Тимофеев В → none |
| 806 | **дренаж кондиционеров жир и упаковка установить отдельный насос от жиров** |  |  | 27.06d → 28.06d |  |  |  |  |
| 823 | **установить сифон ф110 в линию слива жиров** |  |  | 35.31d → 36.31d |  | 119.28d → 120.28d |  |  |
| 845 | **усиление подогрев приточной вентиляции** |  | 2026-09-30 14:15 → 2026-09-28 14:15 (-2d) |  |  | 115.06d → 117.06d |  |  |
| 848 | контроль поствки | 2026-09-29 14:00 → 2026-09-26 14:00 (-3d) | 2026-09-29 14:15 → 2026-09-26 14:15 (-3d) |  |  | 115.06d → 117.06d |  |  |
| 849 | монтаж | 2026-09-29 14:15 → 2026-09-26 14:15 (-3d) | 2026-09-30 14:15 → 2026-09-28 14:15 (-2d) |  |  | 115.06d → 117.06d |  |  |
| 854 | **обеспечить не менее +15 зимой в зоне хранения навесок** |  | 2026-10-19 11:45 → 2026-10-26 11:45 (+7d) | 58.34d? → 65.34d? | 19% → 22% | 102.25d → 97.25d |  |  |
| 855 | **утепление стены** |  |  | 24d? → 26d? | 0% → 11% |  |  |  |
| 856 | расчет количство утеплителя + профлист/саморезы. Заявка | 2026-09-09 09:00 A | 2026-09-09 10:00 A |  | 0% → 100% | 126.44d → none |  |  |
| 859 | монтаж утеплитель и листы |  |  |  |  |  |  | was named монтаж |
| 864 | **тепловые завесы в 2ц зона подачи навесок** |  | 2026-10-19 11:45 → 2026-10-26 11:45 (+7d) | 49.34d? → 56.34d? |  | 102.25d → 97.25d |  |  |
| 865 | **монтаж теплокалориферов** | 2026-09-21 09:00 → 2026-09-28 09:00 (+7d) | 2026-10-19 11:45 → 2026-10-26 11:45 (+7d) |  |  | 102.25d → 97.25d |  |  |
| 866 | заявка | 2026-09-21 09:00 → 2026-09-28 09:00 (+7d) | 2026-09-21 11:00 → 2026-09-28 11:00 (+7d) |  |  | 102.25d → 97.25d |  | constraint start no earlier than 2026-09-21 09:00 → start no earlier than 2026-09-28 09:00 |
| 867 | контроль оплаты\ | 2026-09-23 11:00 → 2026-09-30 11:00 (+7d) | 2026-09-23 11:15 → 2026-09-30 11:15 (+7d) |  |  | 102.25d → 97.25d |  |  |

| ID | Task | Start | Finish | Duration | Complete | Total float | Other |
| --- | --- | --- | --- | --- | --- | --- | --- |
| 868 | контроль доставки | 2026-10-14 11:15 → 2026-10-21 11:15 (+7d) | 2026-10-14 11:30 → 2026-10-21 11:30 (+7d) |  |  | 102.25d → 97.25d |  |
| 869 | приемка | 2026-10-15 11:30 → 2026-10-22 11:30 (+7d) | 2026-10-15 11:45 → 2026-10-22 11:45 (+7d) |  |  | 102.25d → 97.25d |  |
| 870 | монтаж калориферов | 2026-10-16 11:45 → 2026-10-23 11:45 (+7d) | 2026-10-19 11:45 → 2026-10-26 11:45 (+7d) |  |  | 102.25d → 97.25d |  |
| 871 | **монтаж кабель** |  | 2026-09-23 12:00 → 2026-10-07 12:00 (+14d) | 31.38d? → 43.38d? |  | 120.22d → 110.22d |  |
| 873 | заявка кабель /щиток | 2026-09-15 09:00 → 2026-09-28 09:00 (+13d) | 2026-09-15 11:00 → 2026-09-28 11:00 (+13d) |  |  | 120.22d → 110.22d | constraint start no earlier than 2026-09-15 09:00 → start no earlier than 2026-09-28 09:00 |
| 874 | контроль доставка | 2026-09-21 11:00 → 2026-10-05 11:00 (+14d) | 2026-09-21 12:00 → 2026-10-05 12:00 (+14d) |  |  | 120.22d → 110.22d |  |
| 875 | монтаж | 2026-09-22 12:00 → 2026-10-06 12:00 (+14d) | 2026-09-23 12:00 → 2026-10-07 12:00 (+14d) |  |  | 120.22d → 110.22d |  |
| 880 | **пролистыватель с апликтором заказ** |  | 2026-09-21 09:15 → 2026-09-20 09:15 (-1d) |  |  | 122.56d → 124.56d |  |
| 887 | монтаж |  | 2026-09-21 09:15 → 2026-09-20 09:15 (-1d) |  |  | 122.56d → 124.56d |  |
| 894 | **выполнить обрамление двери в охладитель, что бы скрыть поверхность** |  | 2026-09-17 11:00 A |  | 56% → 100% | 125.34d → none |  |
| 897 | обить дверь в охладитель профлистом оцнк | 2026-09-17 09:00 A | 2026-09-17 11:00 A |  | 0% → 100% | 125.34d → none |  |
| 899 | **ремонт осушителя компрессора 2ц** |  | 2026-09-17 10:00 → 2026-10-01 11:00 (+14d) | 31.12d → 44.25d | 90% → 80% | 125.47d → 114.34d |  |
| 900 | проверка давления фреона | 2026-09-17 09:00 A | 2026-09-17 10:00 A |  | 0% → 100% | 125.47d → none |  |
| 1147 | **установить водоподготовку на парогенератор** |  |  | 128d? → 130d? |  |  |  |
| 1328 | **установить на охладитель ролики + скольжение трубы** |  |  | 24d? → 26d? |  |  |  |
| 1355 | **схема блокировки роль ворот при открытым шлюзе + авт закрытие + датчик препятствия** |  |  | 16.5d → 18.5d |  |  |  |
| 1363 | **установить пульты на регулировку шибиров вентиляции** |  |  | 24d? → 25d? |  | 117.59d → 118.59d |  |
| 1376 | **отмена** |  |  | 81.31d? → 83.31d? |  |  |  |
| 1377 | **найти места утечки тепла под потолком- перемерзает труба подачи воды в 3 цех** |  |  | 81.31d? → 83.31d? |  |  |  |
| 1392 | **3 цех** |  | 2026-10-01 18:00 → 2026-09-29 18:00 (-2d) |  |  | 113.59d → 115.59d |  |
| 1400 | **Дражжировка** | 2026-09-17 09:00 A |  | 5.25d → 6.25d | 0% → 50% | 120.34d → 121.34d |  |
| 1401 | Повесить мощную цепь, за которую можно опускать и поднимать защиту | 2026-09-17 09:00 → 2026-09-18 09:00 (+1d) | 2026-09-17 10:00 → 2026-09-18 10:00 (+1d) |  |  | 125.47d → 126.47d | constraint start no earlier than 2026-09-17 08:00 → start no earlier than 2026-09-18 09:00 |
| 1402 | Сделать ограничитель, когда опускаешь защиту на себя, на уровне перил | 2026-09-17 09:00 A | 2026-09-17 10:00 A |  | 0% → 100% | 125.47d → none |  |
| 1403 | Сделать из отбойников рессор уаз отбойники на защите паллет, чтоб не било когда падает (позвони, обьясню) | 2026-09-17 09:00 A | 2026-09-17 11:00 A |  | 0% → 100% | 125.34d → none |  |
| 1405 | на коневейер циклон-барабан установить полосу сбоку ленты не дающую грануле скатываться обратно, примеры посмотреть в 1 цеху | 2026-09-19 09:00 → 2026-09-20 09:00 (+1d) | 2026-09-19 10:00 → 2026-09-20 10:00 (+1d) |  |  | 123.47d → 124.47d | was named Изготовить и установить полосу не дающую грануле скатываться обратно по краю ленты, примеры посмотреть в 1 цеху; constraint start no earlier than 2026-09-19 09:00 → start no earlier than 2026-09-20 09:00; resources Макаревич А → Тимофеев В |
| 1406 | Изготовить и установить уши на конце конвейера в барабан (чтоб гранула не попадала внутрь ленты) | 2026-09-18 09:00 → 2026-09-21 09:00 (+3d) | 2026-09-18 11:00 → 2026-09-21 11:00 (+3d) |  |  | 124.34d → 123.34d | constraint start no earlier than 2026-09-18 09:00 → start no earlier than 2026-09-21 09:00 |
| 1407 | Доделать и установить язык между барабанами | 2026-09-18 09:00 → 2026-09-21 09:00 (+3d) | 2026-09-18 10:00 → 2026-09-21 10:00 (+3d) |  |  | 124.47d → 123.47d | constraint start no earlier than 2026-09-18 09:00 → start no earlier than 2026-09-21 09:00 |
| 1408 | Увеличить «язычек» между барабанами на жирах (просыпается много гранулы | 2026-09-14 09:00 → 2026-09-17 09:00 A (+3d) | 2026-09-14 13:00 → 2026-09-17 13:00 A (+3d) |  | 0% → 100% | 128.09d → none | constraint start no earlier than 2026-09-14 09:00 → start no earlier than 2026-09-17 09:00 |
| 1409 | **Разобрать регулировку ножевого узла, достать вал на котором установлен штурвал** |  | 2026-09-28 10:00 → 2026-09-25 10:00 (-3d) |  |  | 117.47d → 119.47d |  |
| 1410 | Снять вал, передать Зорькину | 2026-09-18 09:00 → 2026-09-21 09:00 (+3d) | 2026-09-18 10:00 → 2026-09-21 10:00 (+3d) |  |  | 124.47d → 123.47d | constraint start no earlier than 2026-09-18 09:00 → start no earlier than 2026-09-21 09:00 |
| 1412 | контроль | 2026-09-25 17:50 → 2026-09-24 17:50 (-1d) | 2026-09-25 18:00 → 2026-09-24 18:00 (-1d) |  |  | 117.47d → 119.47d |  |
| 1413 | установка | 2026-09-28 09:00 → 2026-09-25 09:00 (-3d) | 2026-09-28 10:00 → 2026-09-25 10:00 (-3d) |  |  | 117.47d → 119.47d |  |
| 1415 | **Найти и установить жироуловитель с синего склада на жирах мойка** |  | 2026-09-24 11:20 → 2026-09-23 11:20 (-1d) |  |  | 119.3d → 121.3d |  |
| 1418 | Контроль | 2026-09-24 10:15 → 2026-09-23 10:15 (-1d) | 2026-09-24 10:20 → 2026-09-23 10:20 (-1d) |  |  | 119.3d → 121.3d |  |
| 1419 | Монтаж | 2026-09-24 10:20 → 2026-09-23 10:20 (-1d) | 2026-09-24 11:20 → 2026-09-23 11:20 (-1d) |  |  | 119.3d → 121.3d |  |
| 1420 | монтаж оконечные кожухи на конвейер после охладителя, что бы гранула не разлеталась при перевороте ленты | 2026-09-21 09:00 → 2026-09-22 09:00 (+1d) | 2026-09-21 13:00 → 2026-09-22 13:00 (+1d) |  |  |  | constraint start no earlier than 2026-09-21 09:00 → start no earlier than 2026-09-22 09:00 |
| 1425 | **Гранулы выходили из печи со следами смазки** | 2026-09-21 09:00 → 2026-09-22 09:00 (+1d) | 2026-09-21 13:00 → 2026-09-22 13:00 (+1d) |  |  |  |  |
| 1426 | (сделать направляющие в печи); | 2026-09-21 09:00 → 2026-09-22 09:00 (+1d) | 2026-09-21 13:00 → 2026-09-22 13:00 (+1d) |  |  |  | constraint start no earlier than 2026-09-21 09:00 → start no earlier than 2026-09-22 09:00 |
| 1427 | **С двигателя экструдера выдавило много масла;** | 2026-09-18 09:00 A | 2026-09-18 13:00 → 2026-09-29 12:15 (+11d) | 0.5d → 10.41d | 0% → 36% | 124.09d → 116.19d |  |
| 1428 | установить поплавок на верхний уровень для блокировки насоса- осмотр | 2026-09-18 09:00 A | 2026-09-18 13:00 A |  | 0% → 100% | 124.09d → none | was named установить поплавок на верхний уровень для блокировки насоса |
| 1437 | **установить ограничитель на дверь что бы попадала под движение рольворот** |  | 2026-09-22 10:30 → 2026-09-26 10:00 (+4d) | 6.19d → 11.12d |  | 121.41d → 118.47d |  |
| 1439 | контроль доставки | 2026-09-21 09:15 → 2026-09-20 09:15 (-1d) | 2026-09-21 09:30 → 2026-09-20 09:30 (-1d) |  |  | 121.41d → 123.41d |  |
| 1440 | монтаж | 2026-09-22 09:30 → 2026-09-26 09:00 (+4d) | 2026-09-22 10:30 → 2026-09-26 10:00 (+4d) |  |  | 121.41d → 118.47d | constraint start no earlier than 2026-09-03 08:00 → start no earlier than 2026-09-26 09:00; resources Некрасов А → Бундин В |
| 1458 | **доп мощности для приточной вентиляции** |  | 2026-10-01 18:00 → 2026-09-29 18:00 (-2d) |  |  | 113.59d → 115.59d |  |
| 1463 | монтаж |  | 2026-10-01 18:00 → 2026-09-29 18:00 (-2d) |  |  | 113.59d → 115.59d |  |
| 1465 | **сборка квадропака 3 цех** |  | 2026-09-21 11:00 → 2026-09-22 11:00 (+1d) | 30.25d → 32.25d |  |  |  |
| 1473 | тест на пакетах | 2026-09-21 09:00 → 2026-09-22 09:00 (+1d) | 2026-09-21 11:00 → 2026-09-22 11:00 (+1d) |  |  |  | constraint start no earlier than 2026-09-21 09:00 → start no earlier than 2026-09-22 09:00 |
| 1480 | **карусель добавить перемычку снизу, чтобы не выпал мешок** |  |  | 28.25d → 29.25d |  | 122.34d → 123.34d |  |
| 1640 | **доработка лотка барабан-охладитель - снизить скорость падения, установить сетку** |  |  |  | 90% → 100% |  |  |
| 1705 | **5 цех** |  |  | 917.25d? → 919.25d? |  |  |  |
| 1706 | на 2 этаж раковина Установка смесителей (краны) с гибкой подводкой, получить на складе |  |  |  |  | 123.47d → 125.47d | was named Установка смесителей (краны) с гибкой подводкой, получить на складе |
| 1708 | **установить зажим троса на тельфер** |  | 2026-09-28 11:15 → 2026-09-25 11:15 (-3d) |  |  | 117.31d → 119.31d |  |
| 1710 | контроль доставки | 2026-09-25 11:00 → 2026-09-24 11:00 (-1d) | 2026-09-25 11:15 → 2026-09-24 11:15 (-1d) |  |  | 117.31d → 119.31d |  |
| 1711 | монтаж | 2026-09-25 11:15 → 2026-09-24 11:15 (-1d) | 2026-09-28 11:15 → 2026-09-25 11:15 (-3d) |  |  | 117.31d → 119.31d |  |
| 1712 | **ремонт насос водоснабжения** |  |  | 64.25d → 66.25d |  |  |  |
| 1720 | **подготовить сетку на мал дробилку 3 и 4мм** |  | 2026-09-13 10:30 → 2026-09-22 10:00 (+9d) | 1.19d → 10.12d |  | 129.41d → 122.47d |  |
| 1722 | вырезатиь сетку в размер | 2026-09-13 09:30 → 2026-09-22 09:00 (+9d) | 2026-09-13 10:30 → 2026-09-22 10:00 (+9d) |  |  | 129.41d → 122.47d | constraint start no earlier than 2026-08-20 09:00 → start no earlier than 2026-09-22 09:00 |
| 1730 | **проект новая дробилка** |  | 2026-10-12 09:15 → 2026-10-08 09:15 (-4d) |  |  | 107.56d → 109.56d |  |
| 1731 | **кабель для доп мощности** |  | 2026-10-12 09:15 → 2026-10-08 09:15 (-4d) |  |  | 107.56d → 109.56d |  |
| 1735 | монтаж | 2026-09-21 09:15 → 2026-09-20 09:15 (-1d) | 2026-10-12 09:15 → 2026-10-08 09:15 (-4d) |  |  | 107.56d → 109.56d |  |
| 1736 | **монтаж вода в 5ц** |  | 2026-09-18 16:00 → 2026-09-22 13:00 (+4d) | 32.75d → 36.5d | 56% → 69% | 123.84d → 122.09d |  |
| 1737 | Подключение греющего кабеля | 2026-09-14 09:00 → 2026-09-16 09:00 A (+2d) | 2026-09-14 12:00 → 2026-09-16 12:00 A (+2d) |  | 0% → 100% | 127.84d → none | constraint start no earlier than 2026-09-14 09:00 → start no earlier than 2026-09-16 09:00; resources Дедов В → Некрасов А; Труфанов А |
| 1739 | Все доделать/подключить | 2026-09-18 09:00 A | 2026-09-18 16:00 A |  | 0% → 100% | 123.84d → none |  |
| 1743 | выяснить возможность обмена тройников 1+1/4-1/2 на 3/4-1/2 | 2026-09-09 09:00 → 2026-09-21 09:00 (+12d) | 2026-09-09 09:15 → 2026-09-21 09:15 (+12d) |  |  | 133.56d → 123.56d | constraint start no earlier than 2026-09-09 09:00 → start no earlier than 2026-09-21 09:00 |
| 1750 | **монтаж труба в земле между 3 и 4ц** |  | 2026-09-16 12:00 → 2026-09-16 16:00 | 30.38d → 30.75d | 41% → 66% | 126.22d → 127.84d |  |
| 1755 | монтаж кабеля | 2026-09-16 09:00 → 2026-09-16 12:00 A | 2026-09-16 12:00 → 2026-09-16 16:00 A |  | 0% → 100% | 126.22d → none |  |
| 1765 | **монтаж тепловые пушки подвесные 5 цех** |  | 2026-09-17 18:00 → 2026-09-29 18:00 (+12d) | 23d → 34d |  | 124.59d → 115.59d |  |
| 1769 | контроль доставки | 2026-09-14 11:00 → 2026-09-21 09:00 (+7d) | 2026-09-14 12:00 → 2026-09-21 10:00 (+7d) |  |  | 125.22d → 120.47d | constraint start no earlier than 2026-08-10 08:00 → start no earlier than 2026-09-21 09:00 |
| 1770 | монтаж | 2026-09-16 09:00 → 2026-09-28 09:00 (+12d) | 2026-09-17 18:00 → 2026-09-29 18:00 (+12d) |  |  | 124.59d → 115.59d | constraint start no earlier than 2026-09-16 09:00 → start no earlier than 2026-09-28 09:00 |
| 1797 | **востановить коробку тельфера** |  | 2026-06-26 09:05 → 2026-09-18 11:05 (+84d) | 16.01d → 79.26d |  | 187.58d → 126.33d |  |

| ID | Task | Start | Finish | Duration | Complete | Total float | Predecessors | Other |
| --- | --- | --- | --- | --- | --- | --- | --- | --- |
| 1800 | доставка контроль | 2026-06-26 09:00 → 2026-09-18 09:00 (+84d) | 2026-06-26 09:05 → 2026-09-18 09:05 (+84d) |  |  | 187.58d → 126.33d |  | constraint start no earlier than 2026-06-26 09:00 → start no earlier than 2026-09-18 09:00 |
| 1801 | замена | 2026-06-23 09:00 → 2026-09-18 09:05 (+87d) | 2026-06-23 11:00 → 2026-09-18 11:05 (+87d) |  |  | 190.34d → 126.33d | none → 1800 |  |
| 1970 | **изготовить бункер нерж** |  |  | 77d → 77d? | 84% → 83% |  |  |  |
| 1975 | сборка | 2026-06-08 09:00 → 2026-09-22 09:00 (+106d) | 2026-06-09 18:00 → 2026-09-23 18:00 (+106d) |  |  | 199.59d → 120.59d | 1973 → 1973, 1974 | constraint start no earlier than 2026-06-06 09:00 → start no earlier than 2026-09-22 09:00; resources Некрасов А → Некрасов А; Тимофеев В |
| 1998 | **модернизация** |  |  | 979.5d? → 981.5d? |  |  |  |  |
| 2043 | **качественное нанесение жира тесты** |  |  | 266.5d? → 268.5d? |  |  |  |  |
| 2153 | **техника** |  |  | 634.03d? → 636.03d? |  |  |  |  |
| 2155 | **капремонт погрузчика коматсу короткий** |  |  | 47.03d → 49.03d |  |  |  |  |
| 2195 | **слесарное помещение** |  | 2026-08-30 10:00 → 2026-09-21 11:00 (+22d) | 57d? → 77.25d? | 96% → 56% | 141.59d → 123.34d |  |  |
| 2210 | **ЗИП ремонт** |  | 2026-09-30 09:55 → 2026-10-15 11:00 (+15d) | 628.11d? → 641.25d? |  | 115.48d → 104.34d |  |  |
| 2215 | **ремонт редутор печи №?** |  | 2026-09-21 11:30 → 2026-10-05 11:30 (+14d) | 14.31d → 26.31d | 47% → 52% | 122.28d → 112.28d |  |  |
| 2218 | заказ шестерни червя в ЗИП - отправить курьера | 2026-09-09 09:00 A | 2026-09-09 09:15 A |  | 0% → 100% | 122.28d → none |  |  |
| 2219 | контроль изг шетесиерен | 2026-09-19 09:15 A | 2026-09-19 09:30 A |  | 0% → 100% | 122.28d → none |  |  |
| 2222 | сборка редутор венец | 2026-09-21 09:30 → 2026-10-05 09:30 (+14d) | 2026-09-21 11:30 → 2026-10-05 11:30 (+14d) |  |  | 122.28d → 112.28d | 2219FS+1d → 2219FS+1d, 2221FS+1d | constraint start no earlier than 2026-09-08 08:00 → start no earlier than 2026-09-20 09:00 |
| 2334 | **ремонт датчик расхода пара с линия 3** |  | 2026-09-30 09:55 → 2026-09-28 09:55 (-2d) |  |  | 115.48d → 117.48d |  |  |
| 2337 | контроль | 2026-09-23 09:35 → 2026-09-22 09:35 (-1d) | 2026-09-23 09:35 → 2026-09-22 09:35 (-1d) |  |  | 115.48d → 117.48d |  |  |
| 2338 | орг забрать сремонта | 2026-09-30 09:35 → 2026-09-28 09:35 (-2d) | 2026-09-30 09:55 → 2026-09-28 09:55 (-2d) |  |  | 115.48d → 117.48d |  |  |
| 2357 | **быстрая замена шнеков - кондуктор для хранения и перемещения подготвленного ствола** | 2026-09-21 09:00 → 2026-10-12 09:00 (+21d) | 2026-09-24 11:00 → 2026-10-15 11:00 (+21d) |  |  | 119.34d → 104.34d |  |  |
| 2358 | проект кондуктора и траверсы перемещения ствола штабелером | 2026-09-21 09:00 → 2026-10-12 09:00 (+21d) | 2026-09-21 11:00 → 2026-10-12 11:00 (+21d) |  |  | 119.34d → 104.34d |  | constraint start no earlier than 2026-09-21 09:00 → start no earlier than 2026-10-12 09:00 |
| 2359 | сборка | 2026-09-22 11:00 → 2026-10-13 11:00 (+21d) | 2026-09-24 11:00 → 2026-10-15 11:00 (+21d) |  |  | 119.34d → 104.34d |  |  |
| 2445 | **ТО** |  | 2026-09-24 11:00 → 2026-12-04 11:00 (+71d) | 928.25d? → 981.25d? | 38% → 39% | 119.34d → 68.34d |  |  |
| 2447 | **Разобрать улитки с охладителя 2 линия, 4 улитки на печах и улитки циклонов - замена подшипников, каких нет сообщить** |  | 2026-09-21 13:00 → 2026-09-23 13:00 (+2d) | 13.5d → 16.5d |  | 122.09d → 121.09d |  |  |
| 2455 | линия 2 вентилятор циклона 1 | 2026-09-21 09:00 → 2026-09-23 09:00 (+2d) | 2026-09-21 13:00 → 2026-09-23 13:00 (+2d) |  |  |  |  |  |
| 2546 | **редуктор экструдера и маслянная станция** |  |  | 94.25d → 95.25d |  | 120.34d → 121.34d |  |  |
| 2638 | **2 цех** |  | 2026-09-24 11:00 → 2026-12-04 11:00 (+71d) | 928.25d? → 981.25d? |  | 119.34d → 68.34d |  |  |
| 2640 | **линия 3** |  | 2026-09-23 10:00 → 2026-12-04 11:00 (+72d) | 927.12d? → 981.25d? | 98% → 97% | 120.47d → 68.34d |  |  |
| 2672 | **привод сетки ПЕЧИ сушки** |  | 2026-09-17 11:00 A → 2026-12-04 11:00 (+78d) | 633.25d → 692.25d | 100% → 89% | none → 68.34d |  |  |
| 2694 | **смеситель СМ-1500** |  | 2026-09-17 09:10 → 2026-09-24 09:10 (+7d) | 143.02d → 150.02d |  | 125.57d → 120.57d |  |  |
| 2703 | Осмотр подшипников/контроль масла | 2026-09-17 09:00 → 2026-09-24 09:00 (+7d) | 2026-09-17 09:10 → 2026-09-24 09:10 (+7d) |  |  | 125.57d → 120.57d |  | constraint start no earlier than 2026-09-17 09:00 → start no earlier than 2026-09-24 09:00 |
| 2704 | **нория 2 выгрузки смесителя** |  | 2026-09-17 09:30 A |  | 92% → 100% | 125.53d → none |  |  |
| 2712 | Ревизия ленты, контроль соединения | 2026-09-17 09:00 A | 2026-09-17 09:30 A |  | 0% → 100% | 125.53d → none |  |  |
| 2713 | **бункер-накопитель с шнековой разкгрузкой синий** |  | 2026-09-17 09:05 → 2026-09-24 09:05 (+7d) | 93.01d → 100.01d |  | 125.58d → 120.58d |  |  |
| 2718 | Осмотр | 2026-09-17 09:00 → 2026-09-24 09:00 (+7d) | 2026-09-17 09:05 → 2026-09-24 09:05 (+7d) |  |  | 125.58d → 120.58d |  | constraint start no earlier than 2026-09-17 09:00 → start no earlier than 2026-09-24 09:00 |
| 2768 | **пневотранспорт роторный питатель** |  | 2026-09-17 09:20 → 2026-09-24 09:20 (+7d) | 133.04d → 140.04d |  | 125.55d → 120.55d |  |  |
| 2773 | Ревизия узлов/масла | 2026-09-17 09:00 → 2026-09-24 09:00 (+7d) | 2026-09-17 09:20 → 2026-09-24 09:20 (+7d) |  |  | 125.55d → 120.55d |  | constraint start no earlier than 2026-09-17 09:00 → start no earlier than 2026-09-24 09:00 |
| 2774 | **печь - валы этажей, подшипники, цепи** |  | 2026-09-17 10:00 → 2026-09-24 10:00 (+7d) | 133.12d → 140.12d |  | 125.47d → 120.47d |  |  |
| 2780 | Смазка всех цепей (если не смазаны) | 2026-09-17 09:00 → 2026-09-24 09:00 (+7d) | 2026-09-17 10:00 → 2026-09-24 10:00 (+7d) |  |  | 125.47d → 120.47d |  | constraint start no earlier than 2026-09-17 09:00 → start no earlier than 2026-09-24 09:00 |
| 2837 | **охладитель сеточный** |  |  | 639.25d? → 640.25d? |  | 119.34d → 120.34d |  |  |
| 2851 | Ревизия сетки, контроль роспуска, подогнуть, где что можно, что бы не зацепилось | 2026-09-17 09:00 → 2026-09-24 09:00 (+7d) | 2026-09-17 10:00 → 2026-09-24 10:00 (+7d) |  |  | 125.47d → 120.47d |  | constraint start no earlier than 2026-09-17 09:00 → start no earlier than 2026-09-24 09:00 |
| 2852 | Смазка подшипников привод охладителя | 2026-09-17 09:00 → 2026-09-24 09:00 (+7d) | 2026-09-17 09:30 → 2026-09-24 09:30 (+7d) |  |  | 125.53d → 120.53d |  | constraint start no earlier than 2026-09-17 09:00 → start no earlier than 2026-09-24 09:00 |
| 2859 | **упаковка** |  | 2026-09-17 10:00 → 2026-09-24 10:00 (+7d) | 713.12d → 720.12d |  | 125.47d → 120.47d |  |  |
| 2866 | запайщик 1 и 2 проверка перемычек/тефлона замена при необходимости | 2026-09-17 09:00 → 2026-09-24 09:00 (+7d) | 2026-09-17 10:00 → 2026-09-24 10:00 (+7d) |  |  | 125.47d → 120.47d |  | constraint start no earlier than 2026-09-17 09:00 → start no earlier than 2026-09-24 09:00 |
| 2867 | **квадропак** |  | 2026-09-17 11:00 → 2026-09-24 11:00 (+7d) | 29.25d → 36.25d |  | 125.34d → 120.34d |  |  |
| 2868 | смазка вращающиющихся механизмов | 2026-09-17 09:00 → 2026-09-24 09:00 (+7d) | 2026-09-17 09:30 → 2026-09-24 09:30 (+7d) |  |  | 125.41d → 120.41d |  | constraint start no earlier than 2026-09-17 09:00 → start no earlier than 2026-09-24 09:00 |
| 2869 | протяжка креплений поворотных лап захвата | 2026-09-17 09:30 → 2026-09-24 09:30 (+7d) | 2026-09-17 10:00 → 2026-09-24 10:00 (+7d) |  |  | 125.41d → 120.41d |  |  |
| 2870 | чистка вала ленты выгрзного транспортера | 2026-09-17 10:00 → 2026-09-24 10:00 (+7d) | 2026-09-17 10:30 → 2026-09-24 10:30 (+7d) |  |  | 125.41d → 120.41d |  |  |
| 2875 | снимать ковши для доступка к подшинику, нуждающего в смазке( сообщил Некрасов) | 2026-09-17 09:00 → 2026-09-24 09:00 (+7d) | 2026-09-17 11:00 → 2026-09-24 11:00 (+7d) |  |  | 125.34d → 120.34d |  | constraint start no earlier than 2026-09-17 09:00 → start no earlier than 2026-09-24 09:00 |
| 2924 | **приточнго-вытяжная венгтиляция и смесительный узел** |  | 2026-09-17 09:30 → 2026-09-24 09:30 (+7d) | 113.06d → 120.06d |  | 125.53d → 120.53d |  |  |
| 2926 | Осмотр состояния фильтра приточки/замена | 2026-09-17 09:00 → 2026-09-24 09:00 (+7d) | 2026-09-17 09:30 → 2026-09-24 09:30 (+7d) |  |  | 125.53d → 120.53d |  | constraint start no earlier than 2026-09-17 09:00 → start no earlier than 2026-09-24 09:00 |
| 2927 | **кондиционер 1** |  |  |  | 97% → 99% | 125.55d → 0d |  |  |
| 2934 | чистка фильтров | 2026-09-17 09:00 A | 2026-09-17 09:20 A |  | 0% → 100% | 125.55d → none |  |  |
| 2935 | **кондиционер 2** |  |  |  | 96% → 99% | 125.53d → 0d |  |  |
| 2943 | чистка фильтров | 2026-09-17 09:00 A | 2026-09-17 09:30 A |  | 0% → 100% | 125.53d → none |  |  |
| 2944 | **кондиционер 3** |  | 2026-09-17 09:20 A |  | 83% → 100% | 125.55d → none |  |  |
| 2950 | чистка фильтров | 2026-09-17 09:00 A | 2026-09-17 09:20 A |  | 0% → 100% | 125.55d → none |  |  |
| 3005 | **синий склад** |  | 2026-09-21 18:00 → 2026-09-23 12:00 (+2d) | 102d → 104.38d |  | 121.59d → 121.22d |  |  |
| 3007 | монтаж включателя света с улицы, возле вход. Двери | 2026-09-21 09:00 → 2026-09-23 09:00 (+2d) | 2026-09-21 12:00 → 2026-09-23 12:00 (+2d) |  |  | 122.22d → 121.22d |  | constraint start no earlier than 2026-09-21 09:00 → start no earlier than 2026-09-23 09:00 |
| 3048 | **офис** |  | 2026-09-22 13:00 → 2026-09-28 11:00 (+6d) | 926.5d? → 932.25d? | 97% → 96% | 121.09d → 117.34d |  |  |
| 3050 | **Ремонт бойлера** |  | 2026-09-18 10:00 → 2026-09-21 11:00 (+3d) | 10.12d? → 13.25d? | 95% → 90% | 124.47d → 123.34d |  |  |
| 3053 | Повесить отремонтированный бойлер обратно в офис - проверить работу | 2026-09-18 09:00 A | 2026-09-18 10:00 A |  | 0% → 100% | 124.47d → none |  | resources Некрасов А → Тимофеев В |
| 3081 | замена регистр отопления нач снабжения | 2026-09-21 09:00 → 2026-09-28 09:00 (+7d) | 2026-09-21 11:00 → 2026-09-28 11:00 (+7d) |  |  | 122.34d → 117.34d |  | constraint start no earlier than 2026-09-21 09:00 → start no earlier than 2026-09-28 09:00 |
| 3090 | **склад упаковки** |  |  | 127.5d? → 128.5d? |  | 121.09d → 122.09d |  |  |
| 3109 | **РЭФ контейнеры** |  |  | 208.59d? → 210.59d? |  |  |  |  |
| 3180 | **ТБ** |  |  | 924.25d? → 926.25d? |  |  |  |  |
| 3207 | **территория** |  | 2026-09-21 13:00 → 2026-09-22 13:00 (+1d) | 416.5d? → 418.5d? |  |  |  |  |
| 3225 | установить люки колодцев на всей территории | 2026-09-21 09:00 → 2026-09-22 09:00 (+1d) | 2026-09-21 13:00 → 2026-09-22 13:00 (+1d) |  |  |  |  | constraint start no earlier than 2026-09-21 09:00 → start no earlier than 2026-09-22 09:00 |

## Version 11 (saved 2026-09-21, file 07.09.26.mpp)

Last finish stays 2027-03-10. Complete tasks 2168 → 2186.

Added:

| ID | Task | Duration | Start | Finish | Constraint | Resources |
| --- | --- | --- | --- | --- | --- | --- |
| 765 | Проверить весы на смесителе прыгают в диапазаоне 40кг | 1h | 2026-09-22 09:00 | 2026-09-22 10:00 | start no earlier than 2026-09-22 09:00 | Дедов В |
| 766 | **лаборатория** | 0.12d | 2026-09-22 09:00 | 2026-09-22 10:00 |  |  |
| 767 | Перегорел тэн на дигистре | 30min | 2026-09-22 09:00 | 2026-09-22 09:30 | start no earlier than 2026-09-22 09:00 | Тимофеев В |
| 768 | Поставить колбу в лаборотории на бульбуляторе, колба в лаборатории | 1h | 2026-09-22 09:00 | 2026-09-22 10:00 | start no earlier than 2026-09-22 09:00 | Тимофеев В |
| 1404 | Доработка короба после барабанов для ссыпки в емкость, установка ограничителей, язычка. Подробности у Труфанова | 6h | 2026-09-21 09:00 | 2026-09-21 16:00 | start no earlier than 2026-09-21 08:00 | Макаревич А |
| 1405 | установить на место, испытание | 30min | 2026-09-22 09:00 | 2026-09-22 09:30 | start no earlier than 2026-09-22 09:00 | Некрасов А; Труфанов А |
| 1747 | Установка точек воды для пожврного гидранта и набора воды для поломоечной машинки цех 3,4,5а и 5 | 6h | 2026-09-22 09:00 | 2026-09-22 16:00 | start no earlier than 2026-09-22 09:00 | Труфанов А; Некрасов А |
| 2563 | Полное ТО шкафа управления, замена всех отгоревших жил/клемм, протяжка контактов | 5h | 2026-09-23 09:00 | 2026-09-23 15:00 | start no earlier than 2026-09-23 09:00 | Труфанов А |
| 2594 | Закрепить, подровнять, слесарные работы которые требуются | 1h | 2026-09-23 09:00 | 2026-09-23 10:00 | start no earlier than 2026-09-23 09:00 | Труфанов А; Некрасов А |
| 2964 | **Лаборатория** | 0.25d | 2026-09-18 09:00 A | 2026-09-18 11:00 A |  |  |
| 2965 | Прочистка дистилятора/ТО, очистка накипи, инструкция смотреть в лаборатории | 2h | 2026-09-18 09:00 A | 2026-09-18 11:00 A | start no earlier than 2026-09-18 09:00 | Бобренок В |
| 3219 | Обход по воде протянутой до 5 цеха, проверка протечек во всех узлах по возможности устранить, если нет возможности, перекрыть в 3-ем цехе | 30min | 2026-09-21 09:00 | 2026-09-21 09:30 | start no earlier than 2026-09-21 08:00 | Макаревич А |

Changed:

| ID | Task | Start | Finish | Duration | Complete | Total float | Other |
| --- | --- | --- | --- | --- | --- | --- | --- |
| 13 | **Дополнительное освещение на Рампе** |  |  |  | 84% → 85% |  |  |
| 16 | заявка выключатель | 2026-09-16 09:00 A | 2026-09-16 09:05 A |  | 0% → 100% | 120.45d → none |  |
| 38 | **ревизия парогенератор КАРЧЕР** | 2026-09-18 09:00 → 2026-09-23 09:00 (+5d) |  | 8d? → 3d? |  |  |  |
| 39 | орг отправить курьера на пнд | 2026-09-18 09:00 → 2026-09-23 09:00 (+5d) | 2026-09-18 09:15 → 2026-09-23 09:15 (+5d) |  |  | 125.53d → 120.53d | constraint start no earlier than 2026-09-18 09:00 → start no earlier than 2026-09-23 09:00 |
| 55 | Ревизия утечек воздуха на квадропаке (важно проверить пневмораспределителях) и вакуумную систему (если работают, отменяем задание) |  |  |  |  |  | resources Бундин В → Тимофеев В |
| 56 | Комплексное ТО квадропака, проверка всех соединений, протяжка болтов на всех узлах |  |  |  |  |  | resources Труфанов А → Тимофеев В |
| 62 | **Не работают роль ставни на жирах, не стопоряться сделать/устранить неисправность** |  | 2026-09-21 09:10 → 2026-09-22 09:10 (+1d) | 12.02d → 13.02d |  | 123.57d → 122.57d |  |
| 65 | согласовать с подрядчиком дату ремонта | 2026-09-21 09:00 → 2026-09-22 09:00 (+1d) | 2026-09-21 09:10 → 2026-09-22 09:10 (+1d) |  |  | 123.57d → 122.57d | constraint start no earlier than 2026-09-21 09:00 → start no earlier than 2026-09-22 09:00 |
| 87 | печать уплотненителей крышек | 2026-09-21 09:00 → 2026-09-22 09:00 (+1d) | 2026-09-21 13:00 → 2026-09-22 13:00 (+1d) |  |  | 122.84d → 121.84d | constraint start no earlier than 2026-09-21 09:00 → start no earlier than 2026-09-22 09:00 |
| 159 | **ревизия красного смесителя 2 линия (просыпается мука)** |  | 2026-09-15 09:15 → 2026-09-23 09:15 (+8d) | 24.03d → 32.03d |  | 129.56d → 121.56d |  |
| 162 | контроль поставки уплотнение торцевое вала | 2026-09-15 09:00 → 2026-09-23 09:00 (+8d) | 2026-09-15 09:15 → 2026-09-23 09:15 (+8d) |  |  | 129.56d → 121.56d | constraint start no earlier than 2026-09-15 09:00 → start no earlier than 2026-09-23 09:00 |
| 217 | сборка дозатор | 2026-09-21 09:00 → 2026-09-23 09:00 (+2d) | 2026-09-21 11:00 → 2026-09-23 11:00 (+2d) |  |  | 123.34d → 121.34d | constraint start no earlier than 2026-09-21 09:00 → start no earlier than 2026-09-23 09:00 |
| 218 | тест компонентов | 2026-09-21 09:00 → 2026-09-23 09:00 (+2d) | 2026-09-21 10:00 → 2026-09-23 10:00 (+2d) |  |  | 123.47d → 121.47d | constraint start no earlier than 2026-09-21 09:00 → start no earlier than 2026-09-23 09:00 |
| 764 | **2 цех** |  |  |  | 88% → 89% |  |  |
| 769 | Сделать ручки и щеколду для мусорки на улице | 2026-09-20 09:00 → 2026-09-22 09:00 (+2d) | 2026-09-20 10:00 → 2026-09-22 10:00 (+2d) |  |  | 124.47d → 122.47d | constraint start no earlier than 2026-09-20 09:00 → start no earlier than 2026-09-22 09:00; resources Бобренок В → Макаревич А |
| 770 | **система сброса муки с прекондиционера в мешки** |  | 2026-09-19 18:00 A |  | 27% → 100% | 124.59d → none |  |
| 772 | изготовление тележки с креплением для 2х мешков. Покрасить | 2026-09-19 09:00 A | 2026-09-19 18:00 A |  | 0% → 100% | 124.59d → none |  |
| 784 | Проверка системы под давлением, при необходимости заменить шланги на пневматические?? | 2026-09-22 09:00 → 2026-09-21 09:00 A (-1d) | 2026-09-22 10:00 → 2026-09-21 10:00 A (-1d) |  | 0% → 100% | 122.47d → none |  |
| 786 | **реверс теплоносителя в приточном калорифере** |  | 2026-09-21 11:00 → 2026-09-25 11:00 (+4d) | 25.25d? → 29.25d | 3% → 10% | 123.34d → 119.34d |  |
| 789 | монтаж | 2026-09-20 11:00 → 2026-09-25 09:00 (+5d) | 2026-09-21 11:00 → 2026-09-25 11:00 (+4d) | 1d? → 2h |  | 123.34d → 119.34d | constraint start no earlier than 2026-09-08 08:00 → start no earlier than 2026-09-25 09:00; resources Тимофеев В → Бундин В |
| 884 | **пролистыватель с апликтором заказ** |  | 2026-09-20 09:15 → 2026-09-28 18:00 (+8d) | 34.03d? → 42d? |  | 124.56d → 116.59d |  |
| 891 | монтаж | 2026-09-19 09:15 → 2026-09-28 09:00 (+9d) | 2026-09-20 09:15 → 2026-09-28 18:00 (+8d) |  |  | 124.56d → 116.59d | constraint start no earlier than 2026-08-10 08:00 → start no earlier than 2026-09-28 09:00 |
| 1396 | **3 цех** |  |  |  | 77% → 78% |  |  |
| 1397 | **обеспечить быстрое переключение продукта из барабана годен/брак - охладитель/тазик** | 2026-09-19 09:00 A | 2026-09-20 18:00 → 2026-09-22 09:30 (+2d) | 2d → 3.06d | 0% → 68% | 123.59d → 122.53d |  |
| 1398 | Модернизация лотка для удаления брака из барабанов, а именно: | 2026-09-19 09:00 A | 2026-09-19 09:00 A |  | 0% → 100% | 125.59d → none |  |
| 1399 | демонтировать отбойник, направляющий продукт в центр | 2026-09-19 09:00 A | 2026-09-19 11:00 A |  | 0% → 100% | 123.84d → none |  |
| 1400 | сделать торцевую стенку на шарнире с наклоном под барабан. Шарнир на высоте кронштейнов сетки. Шарнир дверной / как от печей | 2026-09-19 11:00 A | 2026-09-19 16:00 A |  | 0% → 100% | 123.84d → none |  |
| 1401 | сделать фиксатор стенки в положении закрыто в виде щеколды. Безопасный быстрый | 2026-09-20 09:00 A | 2026-09-20 11:00 A |  | 0% → 100% | 123.59d → none |  |
| 1402 | сделать "притвор", закрывающий щель после разрезания стенки. Все края защита от пореза либо зачистить либо лента | 2026-09-20 11:00 A | 2026-09-20 16:00 A |  | 0% → 100% | 123.59d → none |  |
| 1403 | изготовить новый отбойник, направляющий продукт в центр, ниже опущенной стенки на сброс, не широкий, что бы удобно былоо менять сетку | 2026-09-20 16:00 A | 2026-09-20 18:00 A |  | 0% → 100% | 123.59d → none |  |
| 1406 | **Дражжировка** |  |  |  | 50% → 79% |  |  |
| 1407 | Повесить мощную цепь, за которую можно опускать и поднимать защиту | 2026-09-18 09:00 A | 2026-09-18 10:00 A |  | 0% → 100% | 126.47d → none |  |
| 1411 | на коневейер циклон-барабан установить полосу сбоку ленты не дающую грануле скатываться обратно, примеры посмотреть в 1 цеху | 2026-09-20 09:00 → 2026-09-22 09:00 (+2d) | 2026-09-20 10:00 → 2026-09-22 10:00 (+2d) |  |  | 124.47d → 122.47d | constraint start no earlier than 2026-09-20 09:00 → start no earlier than 2026-09-22 09:00 |
| 1412 | Изготовить и установить уши на конце конвейера в барабан (чтоб гранула не попадала внутрь ленты) | 2026-09-21 09:00 A | 2026-09-21 11:00 A |  | 0% → 100% | 123.34d → none |  |
| 1413 | Доделать и установить язык между барабанами | 2026-09-21 09:00 A | 2026-09-21 10:00 A |  | 0% → 100% | 123.47d → none |  |
| 1416 | Снять вал, передать Зорькину | 2026-09-21 09:00 → 2026-09-22 09:00 (+1d) | 2026-09-21 10:00 → 2026-09-22 10:00 (+1d) |  |  | 123.47d → 122.47d | constraint start no earlier than 2026-09-21 09:00 → start no earlier than 2026-09-22 09:00 |
| 1426 | монтаж оконечные кожухи на конвейер после охладителя, что бы гранула не разлеталась при перевороте ленты | 2026-09-22 09:00 → 2026-09-21 09:00 A (-1d) | 2026-09-22 13:00 → 2026-09-21 13:00 A (-1d) |  | 0% → 100% | 122.09d → none |  |
| 1427 | Перенести регулировку подачи жира, ближе к барабанам. Перенос частотник на раму барабанов | 2026-09-22 09:00 → 2026-09-25 09:00 (+3d) | 2026-09-22 13:00 → 2026-09-25 13:00 (+3d) |  |  | 122.09d → 119.09d | constraint start no earlier than 2026-09-22 09:00 → start no earlier than 2026-09-25 09:00 |
| 1431 | **Гранулы выходили из печи со следами смазки** | 2026-09-22 09:00 → 2026-09-25 09:00 (+3d) | 2026-09-22 13:00 → 2026-09-25 13:00 (+3d) |  |  | 122.09d → 119.09d |  |
| 1432 | (сделать направляющие в печи); | 2026-09-22 09:00 → 2026-09-25 09:00 (+3d) | 2026-09-22 13:00 → 2026-09-25 13:00 (+3d) |  |  | 122.09d → 119.09d | constraint start no earlier than 2026-09-22 09:00 → start no earlier than 2026-09-25 09:00 |
| 1471 | **сборка квадропака 3 цех** |  | 2026-09-22 11:00 → 2026-09-22 13:00 | 32.25d → 32.5d | 76% → 70% | 122.34d → 122.09d |  |
| 1479 | тест на пакетах |  | 2026-09-22 11:00 → 2026-09-22 13:00 | 2h → 4h |  | 122.34d → 122.09d | resources Зорькин В; Труфанов А → Дедов В |
| 1486 | **карусель добавить перемычку снизу, чтобы не выпал мешок** |  | 2026-09-21 11:00 → 2026-09-22 11:00 (+1d) | 29.25d → 30.25d |  | 123.34d → 122.34d |  |
| 1489 | покрасить перемычки система безопасности) | 2026-09-21 09:00 → 2026-09-22 09:00 (+1d) | 2026-09-21 11:00 → 2026-09-22 11:00 (+1d) |  |  | 123.34d → 122.34d | constraint start no earlier than 2026-09-21 09:00 → start no earlier than 2026-09-22 09:00 |
| 1711 | **5 цех** |  | 2026-11-26 11:00 → 2027-02-02 11:00 (+68d) | 919.25d? → 967.25d? |  | 74.34d → 26.34d |  |
| 1712 | на 2 этаж раковина Установка смесителей (краны) с гибкой подводкой, получить на складе | 2026-09-19 09:00 → 2026-09-21 09:00 A (+2d) | 2026-09-19 10:00 → 2026-09-21 10:00 A (+2d) |  | 0% → 100% | 125.47d → none | constraint start no earlier than 2026-09-19 09:00 → start no earlier than 2026-09-21 09:00; resources Бобренок В → Некрасов А |
| 1726 | **подготовить сетку на мал дробилку 3 и 4мм** |  | 2026-09-22 10:00 → 2026-09-25 10:00 (+3d) | 10.12d → 13.12d |  | 122.47d → 119.47d |  |
| 1728 | вырезатиь сетку в размер | 2026-09-22 09:00 → 2026-09-25 09:00 (+3d) | 2026-09-22 10:00 → 2026-09-25 10:00 (+3d) |  |  | 122.47d → 119.47d | constraint start no earlier than 2026-09-22 09:00 → start no earlier than 2026-09-25 09:00 |
| 1742 | **монтаж вода в 5ц** |  | 2026-09-22 13:00 → 2026-09-22 16:00 | 36.5d → 36.75d |  | 122.09d → 121.84d |  |
| 1746 | установить в конце линии расширительный бак / защита от гидроудара | 2026-09-21 09:00 A | 2026-09-21 11:00 A |  | 0% → 100% | 122.84d → none |  |
| 1749 | тестирование системы | 2026-09-22 11:00 → 2026-09-21 09:00 A (-1d) | 2026-09-22 13:00 → 2026-09-21 11:00 A (-1d) |  | 0% → 100% | 122.09d → none |  |
| 1804 | **востановить коробку тельфера** |  | 2026-09-18 11:05 → 2027-02-02 11:00 (+137d) | 79.26d → 179.25d |  | 126.33d → 26.34d |  |
| 1808 | замена | 2026-09-18 09:05 → 2027-02-02 09:00 (+137d) | 2026-09-18 11:05 → 2027-02-02 11:00 (+137d) |  |  | 126.33d → 26.34d | constraint start no earlier than 2026-06-23 09:00 → start no earlier than 2027-02-02 09:00 |
| 1981 | проверка черетежей / подготовка к сборке | 2026-09-21 09:00 → 2026-09-25 09:00 (+4d) | 2026-09-21 10:00 → 2026-09-25 10:00 (+4d) |  |  | 121.47d → 117.47d | constraint start no earlier than 2026-09-21 09:00 → start no earlier than 2026-09-25 09:00 |
| 1982 | сборка | 2026-09-22 09:00 → 2026-09-25 10:00 (+3d) | 2026-09-23 18:00 → 2026-09-28 10:00 (+5d) |  |  | 120.59d → 117.47d |  |
| 2056 | **монтаж форсунки в линию** |  |  | 259.5d? → 261.5d? |  |  |  |
| 2202 | **слесарное помещение** |  | 2026-09-21 11:00 → 2026-09-22 17:00 (+1d) | 77.25d? → 78.88d? |  | 123.34d → 121.72d |  |
| 2203 | **уборка и сортировка. Приготовить, дневные проверят и продолжат** | 2026-09-18 09:00 → 2026-09-21 09:00 (+3d) | 2026-09-21 11:00 → 2026-09-22 17:00 (+1d) | 3.25d → 1.88d |  | 123.34d → 121.72d |  |
| 2204 | освободить стеллаж для оперативного хранения с ФИО | 2026-09-18 16:00 → 2026-09-22 16:00 (+4d) | 2026-09-18 17:00 → 2026-09-22 17:00 (+4d) |  |  | 125.72d → 121.72d | constraint start no earlier than 2026-09-18 08:00 → start no earlier than 2026-09-22 09:00; resources Бундин В → Макаревич А |
| 2205 | куча №1 - не годное на выброс | 2026-09-18 09:00 → 2026-09-22 09:00 (+4d) | 2026-09-18 11:00 → 2026-09-22 11:00 (+4d) |  |  | 125.72d → 121.72d | constraint start no earlier than 2026-09-18 09:00 → start no earlier than 2026-09-22 09:00; resources Бундин В → Макаревич А |
| 2206 | куча №2 - годное, но хранить нужно на дальних складах | 2026-09-18 11:00 → 2026-09-22 11:00 (+4d) | 2026-09-18 13:00 → 2026-09-22 13:00 (+4d) |  |  | 125.72d → 121.72d | constraint start no earlier than 2026-09-18 08:00 → start no earlier than 2026-09-21 09:00; resources Бундин В → Макаревич А |
| 2207 | куча №3 - не понятно где хранить. | 2026-09-18 14:00 → 2026-09-22 14:00 (+4d) | 2026-09-18 16:00 → 2026-09-22 16:00 (+4d) |  |  | 125.72d → 121.72d | resources Бундин В → Макаревич А |
| 2453 | **1 цех** |  |  |  | 44% → 43% |  |  |
| 2532 | **линия 2** |  |  |  | 36% → 33% |  |  |
| 2560 | **блок тэнов сушки - протяжка** |  | 2026-09-11 13:00 → 2026-09-23 15:00 (+12d) | 83.5d? → 95.62d? | 43% → 25% | 133.09d → 120.97d |  |
| 2585 | **Квадропак** |  | 2026-06-15 13:00 A → 2026-09-23 10:00 (+100d) | 38.5d → 115.12d | 100% → 90% | none → 121.47d |  |
| 3059 | **офис** |  |  |  | 96% → 97% |  |  |
| 3060 | монтаж полочка Курдюмова продожить | 2026-09-21 09:00 → 2026-09-22 09:00 (+1d) | 2026-09-21 11:00 → 2026-09-22 10:00 (+1d) | 2h → 1h |  | 123.34d → 122.47d | was named монтаж полочка Курдюмова; constraint start no earlier than 2026-09-21 09:00 → start no earlier than 2026-09-22 09:00 |
| 3061 | **Ремонт бойлера** |  | 2026-09-21 11:00 A |  | 90% → 100% | 123.34d → none |  |
| 3065 | устранить утечку / монтаж | 2026-09-21 09:00 A | 2026-09-21 11:00 A |  | 0% → 100% | 123.34d → none |  |

| ID | Task | Start | Finish | Duration | Complete | Total float | Other |
| --- | --- | --- | --- | --- | --- | --- | --- |
| 3090 | выбивает автомат у Монича, нет селективности, замена автоматов. Ремонт освещения корридор | 2026-09-22 09:00 → 2026-09-25 09:00 (+3d) | 2026-09-22 13:00 → 2026-09-25 13:00 (+3d) |  |  | 122.09d → 119.09d | constraint start no earlier than 2026-09-22 09:00 → start no earlier than 2026-09-25 09:00 |
| 3218 | **территория** |  | 2026-09-22 13:00 → 2026-09-25 09:30 (+3d) | 418.5d? → 421.06d? | 57% → 58% | 122.09d → 119.53d |  |
| 3237 | установить люки колодцев возле на территории | 2026-09-22 09:00 → 2026-09-25 09:00 (+3d) | 2026-09-22 13:00 → 2026-09-25 09:30 (+3d) | 4h → 30min |  |  | was named установить люки колодцев на всей территории; constraint start no earlier than 2026-09-22 09:00 → start no earlier than 2026-09-25 09:00; resources Тимофеев В → Олег |

## Version 12 (saved 2026-09-22, file 07.09.26.mpp)

Last finish stays 2027-03-10. Complete tasks 2186 → 2194.

Added:

| ID | Task | Duration | Start | Finish | Constraint | Resources |
| --- | --- | --- | --- | --- | --- | --- |
| 2480 | Ревизия питателя, контроль состояния подшипников/втулки/шестерен | 30min | 2026-09-23 09:00 | 2026-09-23 09:30 | start no earlier than 2026-09-23 09:00 | Некрасов А |
| 2484 | контроль привода, подшипников | 15min | 2026-09-23 09:00 | 2026-09-23 09:15 | start no earlier than 2026-09-23 09:00 | Некрасов А |
| 2493 | вскрытие электородов, чистка (при остановке линии на мойку, если не остановилась, передать по смене Бундину) | 1h | 2026-09-22 09:00 | 2026-09-22 10:00 | start no earlier than 2026-09-22 09:00 | Макаревич А; Бундин В |
| 2500 | тэны и термпоры шнеков- прортяжка | 30min | 2026-09-23 09:00 | 2026-09-23 09:30 | start no earlier than 2026-09-23 09:00 | Некрасов А |
| 2501 | Чистка фильтра | 30min | 2026-09-23 09:00 | 2026-09-23 09:30 | start no earlier than 2026-09-23 09:00 | Бундин В |
| 2506 | частотные привода экструдера, ножей, питателя - продувка | 15min | 2026-09-23 09:00 | 2026-09-23 09:15 | start no earlier than 2026-09-23 09:00 | Некрасов А |
| 2510 | ревизия/ проверка токов | 15min | 2026-09-23 09:00 | 2026-09-23 09:15 | start no earlier than 2026-09-23 09:00 | Труфанов А |
| 2516 | Осмотр, продувка, протяжка контактов | 20min | 2026-09-23 09:00 | 2026-09-23 09:20 | start no earlier than 2026-09-23 09:00 | Труфанов А |
| 2520 | Дефектовка - проверить подачу, вибрации, посторонние шумы. | 15min | 2026-09-23 09:00 | 2026-09-23 09:15 | start no earlier than 2026-09-23 09:00 | Некрасов А |
| 2541 | Контроль состояния сетки/цепи | 30min | 2026-09-23 09:00 | 2026-09-23 09:30 | start no earlier than 2026-09-23 09:00 | Некрасов А |
| 2542 | Смазка цепи (при наличии на складе) | 1h | 2026-09-23 09:00 | 2026-09-23 10:00 | start no earlier than 2026-09-23 09:00 | Некрасов А |
| 2551 | Ревизия питателя, контроль состояния подшипников/втулки/шестерен | 30min | 2026-09-23 09:00 | 2026-09-23 09:30 | start no earlier than 2026-09-23 09:00 | Бундин В |
| 2555 | контроль привода, подшипников | 15min | 2026-09-23 09:00 | 2026-09-23 09:15 | start no earlier than 2026-09-23 09:00 | Бундин В |
| 2561 | вскрытие электородов, чистка (при остановке линии на мойку, если не остановилась, передать по смене Бундину) | 1h | 2026-09-22 09:00 | 2026-09-22 10:00 | start no earlier than 2026-09-22 09:00 | Макаревич А; Бундин В |
| 2567 | частотные привода экструдера, ножей, питателя - продувка | 15min | 2026-09-23 09:00 | 2026-09-23 09:15 | start no earlier than 2026-09-23 09:00 | Труфанов А |
| 2627 | Осмотр всех упаковщиков/транспортеров/накопительных столов/ всех щитков оборудования | 2h | 2026-09-23 09:00 | 2026-09-23 11:00 | start no earlier than 2026-09-23 09:00 | Тимофеев В |

Removed: 2573 смеситель СМ-500; 2574 шнек выгрузки смесителя; 2575 электромотор экструдера раборка замена подшипников / есть шум; 2576 редуктор шнеков экструдера; 2577 пневотранспорт вентилятор; 2578 пневотранспорт роторный питатель - проверка масла; 2579 привод сетки ПЕЧИ сушки - прорверка масла; 2580 насос подачи жира и смесительный узел, баки подогрева

Changed:

| ID | Task | Start | Finish | Duration | Complete | Total float | Other |
| --- | --- | --- | --- | --- | --- | --- | --- |
| 28 | **монтаж перегородка корридор** |  | 2026-09-24 18:00 → 2026-09-29 18:00 (+5d) | 15d → 19d |  | 119.59d → 115.59d |  |
| 32 | монтаж | 2026-09-23 09:00 → 2026-09-28 09:00 (+5d) | 2026-09-24 18:00 → 2026-09-29 18:00 (+5d) |  |  | 119.59d → 115.59d | constraint start no earlier than 2026-09-23 09:00 → start no earlier than 2026-09-28 09:00 |
| 51 | **сместить квадропак в сторону охладителя 2л** |  | 2026-09-23 13:00 → 2026-09-30 13:00 (+7d) | 13.5d → 19.5d |  | 121.09d → 115.09d |  |
| 54 | доработка перил | 2026-09-23 09:00 → 2026-09-30 09:00 (+7d) | 2026-09-23 13:00 → 2026-09-30 13:00 (+7d) |  |  | 121.09d → 115.09d | constraint start no earlier than 2026-09-23 09:00 → start no earlier than 2026-09-30 09:00 |
| 86 | **продумать как сделать герметичную крышку на смесителе сухого гидрализата** |  | 2026-09-23 11:00 → 2026-09-29 11:00 (+6d) | 24.25d → 29.25d |  | 121.34d → 116.34d |  |
| 90 | установка на струбцинах с уплотнителями | 2026-09-23 09:00 → 2026-09-29 09:00 (+6d) | 2026-09-23 11:00 → 2026-09-29 11:00 (+6d) |  |  | 121.34d → 116.34d | constraint start no earlier than 2026-09-23 09:00 → start no earlier than 2026-09-29 09:00; resources Тимофеев В → Тимофеев В; Домоводов К |
| 200 | **сборка дозатор на квадропак** |  | 2026-09-23 11:00 → 2026-09-29 11:00 (+6d) | 59.25d → 64.25d |  | 121.34d → 116.34d |  |
| 217 | сборка дозатор | 2026-09-23 09:00 → 2026-09-28 09:00 (+5d) | 2026-09-23 11:00 → 2026-09-28 11:00 (+5d) |  |  | 121.34d → 117.34d | constraint start no earlier than 2026-09-23 09:00 → start no earlier than 2026-09-28 09:00 |
| 220 | закрыть металлом пустые места между площадками квадропак и дозатор | 2026-09-23 09:00 → 2026-09-29 09:00 (+6d) | 2026-09-23 11:00 → 2026-09-29 11:00 (+6d) |  |  | 121.34d → 116.34d | constraint start no earlier than 2026-09-23 09:00 → start no earlier than 2026-09-29 09:00 |
| 298 | **установить резервную трубку/штангу с форсункой на подачу жира** |  | 2026-10-01 18:00 → 2026-10-08 18:00 (+7d) | 23d → 28d |  | 113.59d → 108.59d |  |
| 301 | монтаж спец кронштенна | 2026-09-23 09:00 → 2026-09-29 09:00 (+6d) | 2026-09-23 10:00 → 2026-09-29 10:00 (+6d) |  |  | 113.59d → 108.59d | constraint start no earlier than 2026-09-23 09:00 → start no earlier than 2026-09-29 09:00 |
| 302 | заявка фитинги / тройники / краны / трубка | 2026-09-23 10:00 → 2026-09-29 10:00 (+6d) | 2026-09-23 11:00 → 2026-09-29 11:00 (+6d) |  |  | 113.59d → 108.59d |  |
| 303 | доставка контроль | 2026-09-29 11:00 → 2026-10-06 11:00 (+7d) | 2026-09-29 11:00 → 2026-10-06 11:00 (+7d) |  |  | 113.59d → 108.59d |  |
| 304 | сборка в мастерской | 2026-09-30 11:00 → 2026-10-07 11:00 (+7d) | 2026-09-30 16:00 → 2026-10-07 16:00 (+7d) |  |  | 113.59d → 108.59d |  |
| 305 | монтаж на линию | 2026-10-01 16:00 → 2026-10-08 16:00 (+7d) | 2026-10-01 18:00 → 2026-10-08 18:00 (+7d) |  |  | 113.59d → 108.59d |  |
| 537 | монтаж 1 линия расходомер / кабель / блок питания | 2026-09-23 09:00 A → 2026-09-28 09:00 A (+5d) | 2026-09-23 12:00 → 2026-09-28 12:00 (+5d) |  |  |  | constraint start no earlier than 2026-09-23 09:00 → start no earlier than 2026-09-28 09:00 |
| 740 | **Дражжировка конвейер №1 после печки** |  | 2026-09-23 10:00 → 2026-09-30 10:00 (+7d) | 115.12d → 121.12d |  | 121.47d → 115.47d |  |
| 741 | Поставить резьбовые клепки на боковой кожух, где кончается лента | 2026-09-23 09:00 → 2026-09-30 09:00 (+7d) | 2026-09-23 10:00 → 2026-09-30 10:00 (+7d) |  |  | 121.47d → 115.47d | constraint start no earlier than 2026-09-23 09:00 → start no earlier than 2026-09-30 09:00; resources Макаревич А → Тимофеев В |
| 766 | **лаборатория** | 2026-09-22 09:00 A | 2026-09-22 10:00 A |  | 0% → 100% | 122.47d → none |  |
| 767 | Перегорел тэн на дигистре | 2026-09-22 09:00 A | 2026-09-22 09:30 A |  | 0% → 100% | 122.53d → none |  |
| 768 | Поставить колбу в лаборотории на бульбуляторе, колба в лаборатории | 2026-09-22 09:00 A | 2026-09-22 10:00 A |  | 0% → 100% | 122.47d → none |  |
| 827 | **установить сифон ф110 в линию слива жиров** |  | 2026-09-24 11:30 → 2026-09-29 11:30 (+5d) | 36.31d → 40.31d |  | 120.28d → 116.28d |  |
| 829 | возможно ли убрать сифоны ф50, достаточно ли заслонки без гидрозатвора? Как сделать гидрозатвор ф100 | 2026-09-23 09:00 → 2026-09-28 09:00 (+5d) | 2026-09-23 09:15 → 2026-09-28 09:15 (+5d) |  |  | 120.28d → 116.28d | constraint start no earlier than 2026-09-23 09:00 → start no earlier than 2026-09-28 09:00 |
| 830 | решение | 2026-09-24 09:15 → 2026-09-29 09:15 (+5d) | 2026-09-24 09:15 → 2026-09-29 09:15 (+5d) |  |  | 120.28d → 116.28d |  |
| 831 | контроль доставка | 2026-09-24 09:15 → 2026-09-29 09:15 (+5d) | 2026-09-24 09:30 → 2026-09-29 09:30 (+5d) |  |  | 120.28d → 116.28d |  |
| 832 | монтаж | 2026-09-24 09:30 → 2026-09-29 09:30 (+5d) | 2026-09-24 11:30 → 2026-09-29 11:30 (+5d) |  |  | 120.28d → 116.28d |  |
| 1378 | **разделить воду на ПГ и экструдер** | 2026-09-23 09:00 → 2026-09-28 09:00 (+5d) | 2026-09-23 11:00 → 2026-09-28 11:00 (+5d) |  |  |  |  |
| 1379 | изготовить промежуточную емкость для прекондера, подача воды, сделать по аналогу 3 цеха | 2026-09-23 09:00 → 2026-09-28 09:00 (+5d) | 2026-09-23 11:00 → 2026-09-28 11:00 (+5d) |  |  |  | constraint start no earlier than 2026-09-23 09:00 → start no earlier than 2026-09-28 09:00 |
| 1396 | **3 цех** |  |  |  | 78% → 79% |  |  |
| 1397 | **обеспечить быстрое переключение продукта из барабана годен/брак - охладитель/тазик** |  |  |  | 68% → 98% |  |  |
| 1404 | Доработка короба после барабанов для ссыпки в емкость, установка ограничителей, язычка. Подробности у Труфанова | 2026-09-21 09:00 A | 2026-09-21 16:00 A |  | 0% → 100% | 122.84d → none |  |
| 1406 | **Дражжировка** |  | 2026-09-23 11:00 → 2026-09-28 11:00 (+5d) | 6.25d → 10.25d |  | 121.34d → 117.34d |  |
| 1410 | Перенести частотник со стены ближе к барабанам (установку согласовать с Домоводовым) | 2026-09-23 09:00 → 2026-09-28 09:00 (+5d) | 2026-09-23 11:00 → 2026-09-28 11:00 (+5d) |  |  | 121.34d → 117.34d | constraint start no earlier than 2026-09-23 09:00 → start no earlier than 2026-09-28 09:00 |
| 1415 | **Разобрать регулировку ножевого узла, достать вал на котором установлен штурвал** | 2026-09-18 09:00 A |  |  | 0% → 40% |  |  |
| 1416 | Снять вал, передать Зорькину | 2026-09-22 09:00 A | 2026-09-22 10:00 A |  | 0% → 100% | 122.47d → none |  |
| 1421 | **Найти и установить жироуловитель с синего склада на жирах мойка** |  | 2026-09-23 11:20 → 2026-09-28 10:00 (+5d) | 7.29d → 11.12d |  | 121.3d → 117.47d |  |
| 1425 | Монтаж | 2026-09-23 10:20 → 2026-09-28 09:00 (+5d) | 2026-09-23 11:20 → 2026-09-28 10:00 (+5d) |  |  | 121.3d → 117.47d | constraint start no earlier than 2026-09-16 08:00 → start no earlier than 2026-09-28 09:00 |
| 1711 | **5 цех** |  |  |  | 61% → 62% |  |  |
| 1742 | **монтаж вода в 5ц** |  |  |  | 69% → 72% |  |  |
| 1748 | переключение линии "без бачка" | 2026-09-22 09:00 A | 2026-09-22 11:00 A |  | 0% → 100% | 122.34d → none |  |
| 2453 | **1 цех** |  |  |  | 43% → 46% |  |  |
| 2454 | **Разобрать улитки с охладителя 2 линия, 4 улитки на печах и улитки циклонов - замена подшипников, каких нет сообщить** |  | 2026-09-23 13:00 → 2026-09-23 11:00 | 16.5d → 16.25d | 78% → 85% | 121.09d → 121.34d |  |
| 2462 | линия 2 вентилятор циклона 2 |  | 2026-09-23 13:00 → 2026-09-23 11:00 | 4h → 2h |  |  | was named линия 2 вентилятор циклона 1; resources Бундин В → Бундин В; Некрасов А |
| 2473 | **линия 1** |  | 2026-08-12 10:00 A → 2026-09-23 09:30 (+42d) | 105.12d? → 140.06d? | 100% → 92% | none → 121.53d |  |
| 2474 | **питатель экструдера** |  | 2026-07-29 09:20 A → 2026-09-23 09:30 (+56d) | 95.04d? → 140.06d? | 100% → 95% | none → 121.53d |  |
| 2481 | **прекондицинер экструдера** |  | 2026-07-29 09:15 A → 2026-09-23 09:15 (+56d) | 55.03d → 100.03d | 100% → 67% | none → 121.56d |  |
| 2485 | **парогенератор** |  | 2026-08-12 10:00 A → 2026-09-22 10:00 (+41d) | 90.12d → 124.12d | 100% → 92% | none → 122.47d |  |
| 2494 | **редуктор экструдера и маслянная станция** |  | 2026-09-11 13:00 → 2026-09-23 10:00 (+12d) | 637.5d → 649.12d | 37% → 34% | 133.09d → 121.47d |  |
| 2502 | **шкаф управления экструдером** |  | 2026-07-29 09:15 A → 2026-09-23 09:15 (+56d) | 86.03d → 131.03d | 100% → 83% | none → 121.56d |  |
| 2507 | **блок тэнов сушки** |  | 2026-08-26 09:15 → 2026-09-23 09:15 (+28d) | 70.03d → 95.03d | 80% → 67% | 146.56d → 121.56d |  |
| 2517 | **барабан смесительный дрожировка - прорверка подшипнки , реуктор** |  | 2026-07-29 09:15 A → 2026-09-23 09:15 (+56d) | 105.03d → 150.03d | 100% → 90% | none → 121.56d |  |
| 2543 | **линия 2** |  |  |  | 33% → 47% |  |  |
| 2544 | **питатель экструдера** |  | 2026-07-29 09:20 A → 2026-09-23 09:30 (+56d) | 95.04d → 140.06d | 100% → 90% | none → 121.53d |  |
| 2552 | **прекондицинер экструдера** |  | 2026-07-29 09:15 A → 2026-09-23 09:15 (+56d) | 55.03d → 100.03d | 100% → 67% | none → 121.56d |  |
| 2562 | **шкаф управления экструдером** |  | 2026-07-29 09:15 A → 2026-09-23 09:15 (+56d) | 100.03d → 145.03d | 100% → 86% | none → 121.56d |  |
| 2568 | **редуктор экструдера и маслянная станция** |  | 2026-09-23 11:00 → 2026-09-23 10:00 | 95.25d → 95.12d | 56% → 71% | 121.34d → 121.47d |  |
| 2574 | Осмотр редуктор-двигатель, нехороший шум, проверить втулки МУВП/заменить |  | 2026-09-23 11:00 → 2026-09-23 10:00 | 2h → 1h |  | 121.34d → 121.47d | resources Труфанов А → Бундин В; Некрасов А |
| 2586 | охладитель сеточный - смазка, натяжка цепи. Проверка редуктор | 2024-10-04 09:00 → 2026-09-23 09:00 (+719d) | 2024-10-04 10:00 → 2026-09-23 10:00 (+719d) |  |  | 639.47d → 121.47d | constraint start no earlier than 2024-10-04 09:00 → start no earlier than 2026-09-23 09:00; resources Тимофеев В → Бундин В; Некрасов А |
| 2602 | **Парогенератор** |  | 2026-06-10 11:00 A |  | 33% → 100% | 201.34d → none |  |
| 2603 | читска парогенератора, если нужно замена электродов | 2026-06-10 09:00 A | 2026-06-10 11:00 A |  | 0% → 100% | 201.34d → none |  |
| 2613 | **упаковщкики** |  | 2026-08-26 11:00 → 2026-09-23 11:00 (+28d) | 398.25d → 423.25d | 15% → 14% | 146.34d → 121.34d |  |
| 2710 | ревизия | 2026-09-23 09:00 → 2026-09-29 09:00 (+6d) | 2026-09-23 10:00 → 2026-09-29 10:00 (+6d) |  |  | 121.47d → 116.47d | constraint start no earlier than 2026-09-23 09:00 → start no earlier than 2026-09-29 09:00 |
| 3068 | монтаж полочка Курдюмова продожить | 2026-09-22 09:00 A | 2026-09-22 10:00 A |  | 0% → 100% | 122.47d → none |  |
| 3109 | **склад упаковки** |  | 2026-09-22 13:00 → 2026-09-30 13:00 (+8d) | 128.5d? → 135.5d? |  | 122.09d → 115.09d |  |
| 3110 | переделать крепление рамы наруж блока - к МК задния, анкера убрать | 2026-09-22 09:00 → 2026-09-30 09:00 (+8d) | 2026-09-22 13:00 → 2026-09-30 13:00 (+8d) |  |  | 122.09d → 115.09d | constraint start no earlier than 2026-09-22 09:00 → start no earlier than 2026-09-30 09:00 |
| 3227 | Обход по воде протянутой до 5 цеха, проверка протечек во всех узлах по возможности устранить, если нет возможности, перекрыть в 3-ем цехе | 2026-09-21 09:00 A | 2026-09-21 09:30 A |  | 0% → 100% | 123.53d → none |  |

## Version 13 (saved 2026-09-23, file 07.09.26.mpp)

Last finish stays 2027-03-10. Complete tasks 2194 → 2209.

Added:

| ID | Task | Duration | Start | Finish | Predecessors | Constraint | Resources |
| --- | --- | --- | --- | --- | --- | --- | --- |
| 55 | **квадропак - сделать силиконовый успокоитель между нория и весы 800*250 шаг шторок 60** | 9.25d | 2026-09-24 09:00 | 2026-10-06 11:00 |  |  |  |
| 56 | заявка прозрачный силикон | 10min | 2026-09-24 09:00 | 2026-09-24 09:10 |  | start no earlier than 2026-09-24 09:00 | Зорькин В |
| 57 | доставка контроль | 10min | 2026-10-02 09:10 | 2026-10-02 09:20 | 56FS+7d | start no earlier than 2026-09-23 08:00 | Зорькин В |
| 58 | сборка | 2h | 2026-10-06 09:00 | 2026-10-06 11:00 | 57 | start no earlier than 2026-10-06 09:00 | Тимофеев В |
| 59 | квадропак - ремонт люфта штанги нажима роликов открытия захватов на станции №1 | 4h | 2026-09-30 09:00 | 2026-09-30 13:00 |  | start no earlier than 2026-09-30 09:00 | Тимофеев В |
| 60 | квадропак - кронштейн пневовстряхивателя - востановить резтбу сквозную | 1h | 2026-09-30 09:00 | 2026-09-30 10:00 |  | start no earlier than 2026-09-30 09:00 | Тимофеев В |
| 771 | кран на жирах нет стопора - вращение на 360 устранить, найти этот кран. | 30min | 2026-09-24 09:00 | 2026-09-24 09:30 |  | start no earlier than 2026-09-24 09:00 | Тимофеев В |
| 777 | установить трубку жир ф12 - нарезать резьбу под фитинг / сверлить под "струйки" | 2h | 2026-09-24 09:00 | 2026-09-24 11:00 |  | start no earlier than 2026-09-24 09:00 | Тимофеев В |
| 2348 | контроль | 0d | 2026-09-30 09:00 | 2026-09-30 09:00 | 2346FS+20d | start no earlier than 2026-09-30 09:00 | Зорькин В |
| 2675 | Осмотр подшипников / смазка | 15min | 2026-09-24 09:00 | 2026-09-24 09:15 |  | start no earlier than 2026-09-24 09:00 | Некрасов А |
| 2676 | Ревизия масла редуктора | 15min | 2026-09-24 09:00 | 2026-09-24 09:15 |  | start no earlier than 2026-09-24 09:00 | Некрасов А |
| 2694 | Чистка | 1h | 2026-09-23 09:00 | 2026-09-23 10:00 |  | start no earlier than 2026-09-23 09:00 | Дедов В |
| 2734 | ремонт стыка ленты | 4h | 2026-09-24 09:00 | 2026-09-24 13:00 |  | start no earlier than 2026-09-24 09:00 | Тимофеев В; Бундин В |
| 2740 | перенос датчика / доработать лопатки - что бы останавливался раньше, без спресовывания шнеком | 1h | 2026-09-24 09:00 | 2026-09-24 10:00 |  | start no earlier than 2026-09-24 09:00 | Труфанов А |
| 2752 | Ревизия шестерен и подшипников | 1h | 2026-10-01 09:00 | 2026-10-01 10:00 |  | start no earlier than 2026-10-01 09:00 | Тимофеев В |
| 2765 | Проверка масла | 10min | 2026-09-24 09:00 | 2026-09-24 09:10 |  | start no earlier than 2026-09-24 09:00 | Некрасов А |
| 2782 | Чистка фильтра | 15min | 2026-09-24 09:00 | 2026-09-24 09:15 |  | start no earlier than 2026-09-24 09:00 | Некрасов А |
| 2794 | продувка частотного привода | 10min | 2026-09-25 09:00 | 2026-09-25 09:10 |  | start no earlier than 2026-09-25 09:00 | Некрасов А |
| 2807 | Контроль редуктора, осмотр, проверка масла | 30min | 2026-09-24 09:00 | 2026-09-24 09:30 |  | start no earlier than 2026-09-24 09:00 | Некрасов А |
| 2813 | Осмотр, очистка от пыли | 2h | 2026-09-24 09:00 | 2026-09-24 11:00 |  | start no earlier than 2026-09-24 09:00 | Некрасов А |
| 2825 | Продувка. Замена подогретых жил | 2h | 2026-09-24 09:00 | 2026-09-24 11:00 |  | start no earlier than 2026-09-24 09:00 | Труфанов А |
| 2834 | Продувка. Замена подогретых жил | 2h | 2026-09-24 09:00 | 2026-09-24 11:00 |  | start no earlier than 2026-09-24 09:00 | Труфанов А |
| 2843 | очистка валов и ленты / контроль крепления редуктора / состояния подшипника | 30min | 2026-09-24 09:00 | 2026-09-24 09:30 |  | start no earlier than 2026-09-24 09:00 | Тимофеев В |
| 2855 | Осмотр соединений фитингов, трехходового крана бежит/не бежит | 10min | 2026-09-18 09:00 | 2026-09-18 09:10 |  | start no earlier than 2026-09-18 09:00 | Тимофеев В |
| 2870 | ревизия люфтов, фиксации смазки подшипников | 30min | 2026-09-24 09:00 | 2026-09-24 09:30 |  | start no earlier than 2026-09-24 09:00 | Тимофеев В |
| 2893 | ревизия люфтов, фиксации, смазки подшипников | 15min | 2026-09-25 09:00 | 2026-09-25 09:15 |  | start no earlier than 2026-09-25 09:00 | Некрасов А |
| 2926 | Чистка ТЭНов | 2h | 2026-09-24 09:00 | 2026-09-24 11:00 |  | start no earlier than 2026-09-24 09:00 | Бундин В |
| 2971 | чистка фильтров | 20min | 2026-09-24 09:00 | 2026-09-24 09:20 |  | start no earlier than 2026-09-24 09:00 | Тимофеев В; Бундин В |
| 2981 | чистка фильтров | 20min | 2026-09-24 09:00 | 2026-09-24 09:20 |  | start no earlier than 2026-09-24 09:00 | Тимофеев В; Бундин В |
| 2989 | чистка фильтров | 20min | 2026-09-24 09:00 | 2026-09-24 09:20 |  | start no earlier than 2026-09-24 09:00 | Тимофеев В; Бундин В |

Removed: 2657 линия 3; 2709 нория 1 загрзка в смеситель; 2710 ревизия

Changed:

| ID | Task | Start | Finish | Duration | Complete | Total float | Predecessors | Other |
| --- | --- | --- | --- | --- | --- | --- | --- | --- |
| 11 | Реанимировать весы, чтобы показывали. Смесители | 2026-09-22 09:00 → 2026-09-24 09:00 (+2d) | 2026-09-22 10:00 → 2026-09-24 10:00 (+2d) |  |  | 122.47d → 120.47d |  | constraint start no earlier than 2026-09-22 09:00 → start no earlier than 2026-09-24 09:00 |
| 13 | **Дополнительное освещение на Рампе** |  | 2026-09-24 10:10 → 2026-09-25 10:05 (+1d) | 13.15d → 14.14d |  | 120.45d → 119.46d |  |  |
| 17 | контроль | 2026-09-23 09:05 → 2026-09-24 09:00 (+1d) | 2026-09-23 09:10 → 2026-09-24 09:05 (+1d) |  |  | 120.45d → 119.46d |  | constraint start no earlier than 2026-09-16 08:00 → start no earlier than 2026-09-24 09:00 |
| 18 | пожключение выключателя | 2026-09-24 09:10 → 2026-09-25 09:05 (+1d) | 2026-09-24 10:10 → 2026-09-25 10:05 (+1d) |  |  | 120.45d → 119.46d |  |  |
| 63 | Сделать основную кнопку на НОТИСЕ, чтоб срабатывало от нее, а не от блока управления (схему взять у нас в кабинете) | 2026-09-22 09:00 A | 2026-09-22 10:00 A |  | 0% → 100% |  |  |  |
| 68 | **Не работают роль ставни на жирах, не стопоряться сделать/устранить неисправность** |  | 2026-09-22 09:10 → 2026-09-23 09:10 (+1d) | 13.02d → 14.02d |  | 122.57d → 121.57d |  |  |
| 71 | согласовать с подрядчиком дату ремонта | 2026-09-22 09:00 → 2026-09-23 09:00 (+1d) | 2026-09-22 09:10 → 2026-09-23 09:10 (+1d) |  |  | 122.57d → 121.57d |  | constraint start no earlier than 2026-09-22 09:00 → start no earlier than 2026-09-23 09:00 |
| 93 | печать уплотненителей крышек | 2026-09-22 09:00 → 2026-09-23 09:00 (+1d) | 2026-09-22 13:00 → 2026-09-23 13:00 (+1d) |  |  | 121.84d → 120.84d |  | constraint start no earlier than 2026-09-22 09:00 → start no earlier than 2026-09-23 09:00 |
| 150 | **зависает диспелей на расходомере 2л** |  | 2026-09-23 09:30 → 2026-09-30 09:30 (+7d) | 36.06d → 42.06d |  | 121.53d → 115.53d |  |  |
| 153 | объеденить минус шину контроллера с нулевым проводом оборудования ч/з резистор 10 Ом | 2026-09-23 09:00 → 2026-09-30 09:00 (+7d) | 2026-09-23 09:30 → 2026-09-30 09:30 (+7d) |  |  | 121.53d → 115.53d |  | constraint start no earlier than 2026-09-23 09:00 → start no earlier than 2026-09-30 09:00 |
| 165 | **ревизия красного смесителя 2 линия (просыпается мука)** |  | 2026-09-23 09:15 → 2026-09-24 09:15 (+1d) | 32.03d → 33.03d |  | 121.56d → 120.56d |  |  |
| 168 | контроль поставки уплотнение торцевое вала | 2026-09-23 09:00 → 2026-09-24 09:00 (+1d) | 2026-09-23 09:15 → 2026-09-24 09:15 (+1d) |  |  | 121.56d → 120.56d |  | constraint start no earlier than 2026-09-23 09:00 → start no earlier than 2026-09-24 09:00 |
| 206 | **сборка дозатор на квадропак** |  |  |  | 84% → 86% |  |  |  |
| 224 | тест компонентов | 2026-09-23 09:00 A | 2026-09-23 10:00 A |  | 0% → 100% | 121.47d → none |  |  |
| 312 | **установить автоматику запуска шнека + смеситель по датчику уровня сырья в бункере экструдера** | 2026-09-22 09:00 → 2026-09-24 09:00 (+2d) | 2026-10-05 12:10 → 2026-10-07 12:10 (+2d) |  |  | 112.2d → 110.2d |  |  |
| 313 | разработка схема / компановка | 2026-09-22 09:00 → 2026-09-24 09:00 (+2d) | 2026-09-22 10:00 → 2026-09-24 10:00 (+2d) |  |  | 112.2d → 110.2d |  | constraint start no earlier than 2026-09-22 09:00 → start no earlier than 2026-09-24 09:00 |
| 314 | заявка датчики / пускатели / эл щит | 2026-09-22 10:00 → 2026-09-24 10:00 (+2d) | 2026-09-22 12:00 → 2026-09-24 12:00 (+2d) |  |  | 112.2d → 110.2d |  |  |
| 315 | доставка контроль | 2026-09-30 12:00 → 2026-10-02 12:00 (+2d) | 2026-09-30 12:05 → 2026-10-02 12:05 (+2d) |  |  | 112.2d → 110.2d |  |  |
| 316 | контроль поставки | 2026-10-01 12:05 → 2026-10-05 12:05 (+4d) | 2026-10-01 12:10 → 2026-10-05 12:10 (+4d) |  |  | 112.2d → 110.2d |  |  |
| 317 | сборка ШУ | 2026-10-01 12:10 → 2026-10-05 12:10 (+4d) | 2026-10-02 12:10 → 2026-10-06 12:10 (+4d) |  |  | 112.2d → 110.2d |  |  |
| 318 | монтаж в линию | 2026-10-02 12:10 → 2026-10-06 12:10 (+4d) | 2026-10-05 12:10 → 2026-10-07 12:10 (+2d) |  |  | 112.2d → 110.2d |  |  |
| 437 | **заменить фильтры на жиротопка** |  | 2026-09-24 11:15 → 2026-10-01 10:00 (+7d) | 10.28d → 16.12d |  | 120.31d → 114.47d |  |  |
| 440 | замена | 2026-09-24 10:15 → 2026-10-01 09:00 (+7d) | 2026-09-24 11:15 → 2026-10-01 10:00 (+7d) |  |  | 120.31d → 114.47d |  | constraint start no earlier than 2026-07-23 09:00 → start no earlier than 2026-10-01 09:00 |
| 772 | Проверить весы на смесителе прыгают в диапазаоне 40кг | 2026-09-22 09:00 → 2026-09-23 09:00 (+1d) | 2026-09-22 10:00 → 2026-09-23 10:00 (+1d) |  |  | 122.47d → 121.47d |  | constraint start no earlier than 2026-09-22 09:00 → start no earlier than 2026-09-23 09:00 |
| 776 | Сделать ручки и щеколду для мусорки на улице | 2026-09-22 09:00 → 2026-09-25 09:00 (+3d) | 2026-09-22 10:00 → 2026-09-25 10:00 (+3d) |  |  | 122.47d → 119.47d |  | constraint start no earlier than 2026-09-22 09:00 → start no earlier than 2026-09-25 09:00; resources Макаревич А → Некрасов А |
| 787 | **ревизия сливной шланг моечная машинка** |  | 2026-09-24 11:30 → 2026-09-25 11:15 (+1d) | 10.31d → 11.28d |  | 120.28d → 119.31d |  |  |
| 790 | контроль доставки | 2026-09-23 09:15 → 2026-09-24 09:00 (+1d) | 2026-09-23 09:30 → 2026-09-24 09:15 (+1d) |  |  | 120.28d → 119.31d |  | constraint start no earlier than 2026-09-10 08:00 → start no earlier than 2026-09-24 09:00 |
| 791 | монтаж | 2026-09-24 09:30 → 2026-09-25 09:15 (+1d) | 2026-09-24 11:30 → 2026-09-25 11:15 (+1d) |  |  | 120.28d → 119.31d |  |  |
| 1132 | **сделать горловину на быстросъемах прекондиционер** |  |  |  | 65% → 100% |  |  |  |
| 1133 | заказать защелки | 2026-08-31 09:00 A | 2026-08-31 18:00 A |  | 0% → 100% | 142.59d → none |  |  |
| 1215 | **забивает лоток прекондиционер/экструдер, передалать** | 2026-08-31 09:00 A | 2026-09-01 15:00 A |  | 0% → 100% | 141.97d → none |  |  |
| 1216 | изготовить чертежи лекалы для воронки | 2026-08-31 09:00 A | 2026-08-31 10:00 A |  | 0% → 100% | 141.97d → none |  |  |
| 1217 | изготовление воронки | 2026-09-01 10:00 A | 2026-09-01 15:00 A |  | 0% → 100% | 141.97d → none |  |  |
| 1404 | **3 цех** |  |  |  | 79% → 78% |  |  |  |
| 1405 | **обеспечить быстрое переключение продукта из барабана годен/брак - охладитель/тазик** |  | 2026-09-22 09:30 A |  | 98% → 100% | 122.53d → none |  |  |
| 1413 | установить на место, испытание | 2026-09-22 09:00 A | 2026-09-22 09:30 A |  | 0% → 100% | 122.53d → none |  |  |
| 1414 | **Дражжировка** |  |  |  | 79% → 86% |  |  |  |
| 1419 | на коневейер циклон-барабан установить полосу сбоку ленты не дающую грануле скатываться обратно, примеры посмотреть в 1 цеху | 2026-09-22 09:00 A | 2026-09-22 10:00 A |  | 0% → 100% | 122.47d → none |  |  |
| 1432 | Контроль | 2026-09-23 10:15 → 2026-09-24 09:00 (+1d) | 2026-09-23 10:20 → 2026-09-24 09:05 (+1d) |  |  | 121.3d → 120.46d |  | constraint start no earlier than 2026-09-16 08:00 → start no earlier than 2026-09-24 09:00 |
| 1479 | **сборка квадропака 3 цех** |  | 2026-09-22 13:00 → 2026-09-25 13:00 (+3d) | 32.5d → 35.5d |  | 122.09d → 119.09d |  |  |
| 1487 | тест на пакетах | 2026-09-22 09:00 → 2026-09-25 09:00 (+3d) | 2026-09-22 13:00 → 2026-09-25 13:00 (+3d) |  |  | 122.09d → 119.09d |  | constraint start no earlier than 2026-09-22 09:00 → start no earlier than 2026-09-25 09:00; resources Дедов В → Труфанов А; Зорькин В |
| 1494 | **карусель добавить перемычку снизу, чтобы не выпал мешок** |  |  |  | 7% → 93% |  |  |  |
| 1497 | покрасить перемычки система безопасности) | 2026-09-22 09:00 A | 2026-09-22 11:00 A |  | 0% → 100% | 122.34d → none |  |  |
| 1671 | **приточная вентиляция** |  | 2026-05-04 11:00 → 2026-09-23 11:00 (+142d) | 41.25d → 148.25d | 31% → 48% | 228.34d → 121.34d |  |  |
| 1674 | монтаж изоляционных прокладок вводный автомат между фазами | 2026-03-20 09:00 → 2026-09-23 09:00 (+187d) | 2026-03-20 11:00 → 2026-09-23 11:00 (+187d) |  |  | 259.34d → 121.34d |  | constraint start no earlier than 2026-03-20 09:00 → start no earlier than 2026-09-23 09:00 |
| 1675 | подключить нулевой провод шкаф управления | 2026-03-20 09:00 → 2026-09-23 09:00 (+187d) | 2026-03-20 11:00 → 2026-09-23 11:00 (+187d) |  |  | 259.34d → 121.34d |  | constraint start no earlier than 2026-03-20 09:00 → start no earlier than 2026-09-23 09:00 |
| 1676 | монтаж перемычек от автомата на ТВ реле . Звонить Дедову | 2026-03-20 09:00 → 2026-09-23 09:00 (+187d) | 2026-03-20 18:00 → 2026-09-23 11:00 (+187d) | 1d → 2h |  | 258.59d → 121.34d |  | constraint start no earlier than 2026-03-20 09:00 → start no earlier than 2026-09-23 09:00 |
| 1717 | **установить зажим троса на тельфер** |  | 2026-09-25 11:15 → 2026-10-01 18:00 (+6d) | 21.28d? → 27d? |  | 119.31d → 113.59d |  |  |
| 1720 | монтаж | 2026-09-24 11:15 → 2026-10-01 09:00 (+7d) | 2026-09-25 11:15 → 2026-10-01 18:00 (+6d) |  |  | 119.31d → 113.59d |  | constraint start no earlier than 2026-09-08 08:00 → start no earlier than 2026-10-01 09:00 |
| 1745 | **монтаж вода в 5ц** |  |  |  | 72% → 80% |  |  |  |
| 1750 | Установка точек воды для пожврного гидранта и набора воды для поломоечной машинки цех 3,4,5а и 5 | 2026-09-22 09:00 A | 2026-09-22 16:00 A |  | 0% → 100% | 121.84d → none |  |  |
| 2205 | **слесарное помещение** |  |  |  | 56% → 88% |  |  |  |
| 2206 | **уборка и сортировка. Приготовить, дневные проверят и продолжат** | 2026-09-21 09:00 A |  |  | 0% → 78% |  |  |  |
| 2207 | освободить стеллаж для оперативного хранения с ФИО | 2026-09-22 16:00 A | 2026-09-22 17:00 A |  | 0% → 100% | 121.72d → none |  |  |
| 2208 | куча №1 - не годное на выброс | 2026-09-22 09:00 A | 2026-09-22 11:00 A |  | 0% → 100% | 121.72d → none |  |  |
| 2209 | куча №2 - годное, но хранить нужно на дальних складах | 2026-09-22 11:00 A | 2026-09-22 13:00 A |  | 0% → 100% | 121.72d → none |  |  |
| 2210 | куча №3 - не понятно где хранить. | 2026-09-22 14:00 A | 2026-09-22 16:00 A |  | 0% → 100% | 121.72d → none |  |  |
| 2344 | **ремонт датчик расхода пара с линия 3** | 2026-09-01 09:00 A | 2026-09-28 09:55 → 2026-10-07 09:20 (+9d) | 25.11d → 32.04d |  | 117.48d → 110.55d |  |  |
| 2347 | контроль | 2026-09-22 09:35 A | 2026-09-22 09:35 A |  | 0% → 100% | 117.48d → none |  | resources Шуранов Ю → Зорькин В |
| 2349 | орг забрать сремонта | 2026-09-28 09:35 → 2026-10-07 09:00 (+9d) | 2026-09-28 09:55 → 2026-10-07 09:20 (+9d) |  |  | 117.48d → 110.55d | 2347FS+5d → 2347FS+5d, 2348FS+5d |  |
| 2456 | **ТО** | 2023-03-10 09:00 A → 2023-12-28 09:00 A (+293d) |  | 981.25d? → 772.25d? |  |  |  |  |
| 2457 | **1 цех** |  |  |  | 46% → 47% |  |  |  |
| 2477 | **линия 1** |  |  |  | 92% → 97% |  |  |  |
| 2489 | **парогенератор** |  | 2026-09-22 10:00 A |  | 92% → 100% | 122.47d → none |  |  |
| 2497 | вскрытие электородов, чистка (при остановке линии на мойку, если не остановилась, передать по смене Бундину) | 2026-09-22 09:00 A | 2026-09-22 10:00 A |  | 0% → 100% | 122.47d → none |  |  |
| 2565 | вскрытие электородов, чистка (при остановке линии на мойку, если не остановилась, передать по смене Бундину) | 2026-09-22 09:00 → 2026-09-23 09:00 (+1d) | 2026-09-22 10:00 → 2026-09-23 10:00 (+1d) |  |  | 122.47d → 121.47d |  | constraint start no earlier than 2026-09-22 09:00 → start no earlier than 2026-09-23 09:00; resources Макаревич А; Бундин В → Некрасов А |
| 2659 | **2 цех** | 2023-03-10 09:00 A → 2023-12-28 09:00 A (+293d) |  | 981.25d? → 772.25d? | 64% → 62% |  |  |  |
| 2660 | обдув пыли с вентиляции и балки кровли зона жир + экструдер + упаковка | 2026-08-20 09:00 A | 2026-08-20 12:00 A |  | 0% → 100% | 150.22d → none |  |  |
| 2661 | **прекондицинер экструдера** |  | 2026-09-17 09:15 A → 2026-09-24 09:15 (+7d) | 633.03d? → 640.03d? | 100% → 98% | none → 120.56d |  |  |
| 2677 | **парогенератор** |  | 2026-09-17 10:00 A → 2026-09-23 10:00 (+6d) | 633d → 639d | 100% → 94% | none → 121.47d |  |  |

| ID | Task | Start | Finish | Duration | Complete | Total float | Other |
| --- | --- | --- | --- | --- | --- | --- | --- |
| 2715 | **смеситель СМ-1500** |  | 2026-09-24 09:10 → 2026-10-01 09:10 (+7d) | 150.02d → 156.02d |  | 120.57d → 114.57d |  |
| 2724 | Осмотр подшипников/контроль масла | 2026-09-24 09:00 → 2026-10-01 09:00 (+7d) | 2026-09-24 09:10 → 2026-10-01 09:10 (+7d) |  |  | 120.57d → 114.57d | constraint start no earlier than 2026-09-24 09:00 → start no earlier than 2026-10-01 09:00 |
| 2725 | **нория 2 выгрузки смесителя** |  | 2026-09-17 09:30 A → 2026-09-24 13:00 (+7d) | 143.06d → 150.5d | 100% → 62% | none → 120.09d |  |
| 2735 | **бункер-накопитель с шнековой разкгрузкой синий** |  | 2026-09-24 09:05 → 2026-09-24 10:00 | 100.01d → 100.12d | 99% → 89% | 120.58d → 120.47d |  |
| 2741 | Осмотр |  |  |  |  |  | resources Тимофеев В → Труфанов А |
| 2742 | **питатель экструдера** |  | 2026-09-17 10:00 A → 2026-10-01 10:00 (+14d) | 128.12d → 141.12d | 100% → 94% | none → 114.47d |  |
| 2760 | **мотор-редуктор привод шнеков** |  | 2026-09-17 09:10 → 2026-09-24 09:10 (+7d) | 23.02d → 30.02d | 20% → 19% | 127.57d → 120.57d |  |
| 2766 | **редуктор шнеков экструдера - проверка масла** |  | 2026-09-17 09:15 A → 2026-09-24 09:15 (+7d) | 416.03d → 423.03d | 100% → 95% | none → 120.56d |  |
| 2783 | **шкаф управления экструдером** |  | 2026-09-17 09:10 A → 2026-09-25 09:10 (+8d) | 143.02d → 151.02d | 100% → 90% | none → 119.57d |  |
| 2800 | Ревизия узлов/масла. Очистка мотора от пыли |  |  |  |  |  | was named Ревизия узлов/масла; resources Бобренок В → Бундин В |
| 2801 | **печь - валы этажей, подшипники, цепи** |  | 2026-09-24 10:00 → 2026-10-01 10:00 (+7d) | 140.12d → 146.12d | 80% → 73% | 120.47d → 114.47d |  |
| 2808 | Смазка всех цепей (если не смазаны) | 2026-09-24 09:00 → 2026-10-01 09:00 (+7d) | 2026-09-24 10:00 → 2026-10-01 10:00 (+7d) |  |  | 120.47d → 114.47d | constraint start no earlier than 2026-09-24 09:00 → start no earlier than 2026-10-01 09:00 |
| 2809 | **вентиляторы обдува сушки** |  | 2026-09-17 11:00 → 2026-09-24 11:00 (+7d) | 143.25d? → 150.25d? | 11% → 10% | 127.34d → 120.34d |  |
| 2814 | **шкаф управления тэнами сушки главный** |  | 2026-09-17 09:10 → 2026-09-24 11:00 (+7d) | 143.02d → 150.25d | 89% → 63% | 127.57d → 120.34d |  |
| 2826 | **шкаф управления тэнами твердотельный** |  | 2026-09-17 09:10 A → 2026-09-24 11:00 (+7d) | 143.02d → 150.25d | 100% → 43% | none → 120.34d |  |
| 2835 | **конвейер №1 с печи в дрожировщик** |  | 2026-09-17 09:30 A → 2026-09-24 09:30 (+7d) | 143.06d → 150.06d | 100% → 84% | none → 120.53d |  |
| 2844 | **барабан смесительный дрожировка** |  | 2026-09-17 09:10 → 2026-09-18 09:10 (+1d) | 713.02d → 714.02d | 82% → 81% | 127.57d → 126.57d |  |
| 2862 | **конвейер №2 с дрожировки в охладитель** |  | 2026-09-17 09:30 A → 2026-09-24 09:30 (+7d) | 143.06d → 150.06d | 100% → 84% | none → 120.53d |  |
| 2885 | Ревизия сетки, контроль роспуска, подогнуть, где что можно, что бы не зацепилось |  |  |  |  |  | resources Бобренок В → Труфанов А |
| 2886 | Смазка подшипников привод охладителя |  |  |  |  |  | resources Бобренок В → Труфанов А |
| 2887 | Смазка всех цепей |  |  |  |  |  | resources Бобренок В → Труфанов А |
| 2888 | **конвейер 3 с охладителя в упаковку** |  | 2026-09-17 09:15 → 2026-09-25 09:15 (+8d) | 29.03d → 37.03d | 99% → 80% | 0d → 119.56d |  |
| 2903 | смазка вращающиющихся механизмов |  |  |  |  |  | resources Бобренок В → Бундин В |
| 2904 | протяжка креплений поворотных лап захвата |  |  |  |  |  | resources Бобренок В → Бундин В |
| 2905 | чистка вала ленты выгрзного транспортера |  |  |  |  |  | resources Бобренок В → Бундин В |
| 2911 | **БЕСТРОМ** |  | 2026-09-17 09:30 → 2026-09-24 11:00 (+7d) | 713.06d → 720.25d | 77% → 70% | 127.53d → 120.34d |  |
| 2960 | **приточнго-вытяжная венгтиляция и смесительный узел** |  |  |  |  |  | resources ТО → none |
| 2963 | **кондиционер 1** |  | 2026-09-17 09:20 → 2026-09-24 09:20 (+7d) | 633.04d? → 640.04d? | 99% → 97% | 0d → 120.55d |  |
| 2972 | **кондиционер 2** |  | 2026-09-17 09:30 → 2026-09-24 09:20 (+7d) | 633.06d? → 640.04d? | 99% → 97% | 0d → 120.55d |  |
| 2982 | **кондиционер 3** |  | 2026-09-17 09:20 A → 2026-09-24 09:20 (+7d) | 143.04d → 150.04d | 100% → 86% | none → 120.55d |  |
| 3046 | **синий склад** |  | 2026-09-23 12:00 → 2026-09-30 12:00 (+7d) | 104.38d → 110.38d |  | 121.22d → 115.22d |  |
| 3048 | монтаж включателя света с улицы, возле вход. Двери | 2026-09-23 09:00 → 2026-09-30 09:00 (+7d) | 2026-09-23 12:00 → 2026-09-30 12:00 (+7d) |  |  | 121.22d → 115.22d | constraint start no earlier than 2026-09-23 09:00 → start no earlier than 2026-09-30 09:00 |
| 3248 | **территория** |  |  |  | 58% → 72% |  |  |

## Version 14 (saved 2026-09-24, file 07.09.26.mpp)

Last finish stays 2027-03-10. Complete tasks 2209 → 2247.

Added:

| ID | Task | Duration | Start | Finish | Constraint | Resources |
| --- | --- | --- | --- | --- | --- | --- |
| 2 | Повторный замер параметров в 1 цеху, вентилляция (подробности по точкам у Домоводова) | 5h | 2026-09-25 09:00 | 2026-09-25 15:00 | start no earlier than 2026-09-25 09:00 | Труфанов А; Некрасов А |
| 772 | изготовить ножки на бункер нории БЕСТРОМ | 3h | 2026-09-26 09:00 | 2026-09-26 12:00 | start no earlier than 2026-09-26 09:00 | Бобренок В |
| 773 | подготовить сменную трубку для подачи жира, насверлить резьбу, отверстия | 2h | 2026-09-25 09:00 | 2026-09-25 11:00 | start no earlier than 2026-09-25 09:00 | Тимофеев В |
| 862 | Подключить колорифер в противоток, гибкую подводку получить на складе | 2h | 2026-09-24 09:00 | 2026-09-24 11:00 | start no earlier than 2026-09-24 08:00 | Дедов В |
| 2225 | Собрать редуктор питателя, который разобранный на верстаке | 2h | 2026-09-25 09:00 | 2026-09-25 11:00 | start no earlier than 2026-09-25 09:00 | Бундин В |

Changed:

| ID | Task | Start | Finish | Duration | Complete | Total float | Predecessors | Other |
| --- | --- | --- | --- | --- | --- | --- | --- | --- |
| 13 | Закрыть каналыгу. На анкера | 2026-09-15 09:00 A | 2026-09-15 11:00 A |  | 0% → 100% | 129.34d → none |  |  |
| 14 | **Дополнительное освещение на Рампе** |  | 2026-09-25 10:05 → 2026-09-26 10:05 (+1d) | 14.14d → 15.14d |  | 119.46d → 118.46d |  |  |
| 18 | контроль | 2026-09-24 09:00 → 2026-09-25 09:00 (+1d) | 2026-09-24 09:05 → 2026-09-25 09:05 (+1d) |  |  | 119.46d → 118.46d |  | constraint start no earlier than 2026-09-24 09:00 → start no earlier than 2026-09-25 09:00 |
| 19 | пожключение выключателя | 2026-09-25 09:05 → 2026-09-26 09:05 (+1d) | 2026-09-25 10:05 → 2026-09-26 10:05 (+1d) |  |  | 119.46d → 118.46d |  |  |
| 39 | **ревизия парогенератор КАРЧЕР** | 2026-09-23 09:00 → 2026-09-21 09:00 A (-2d) | 2026-09-25 18:00 → 2026-09-24 09:15 A (-1d) | 3d? → 3.03d? | 0% → 100% | 118.59d → none |  |  |
| 40 | орг отправить курьера на пнд | 2026-09-23 09:00 A | 2026-09-23 09:15 A |  | 0% → 100% | 120.53d → none |  |  |
| 41 | контроль доставки | 2026-09-24 09:00 A | 2026-09-24 09:15 A |  | 0% → 100% | 119.56d → none |  |  |
| 42 | монтаж | 2026-09-25 09:00 → 2026-09-21 09:00 A (-4d) | 2026-09-25 18:00 → 2026-09-21 18:00 A (-4d) |  | 0% → 100% | 118.59d → none |  |  |
| 56 | **квадропак - сделать силиконовый успокоитель между нория и весы 800*250 шаг шторок 60** | 2026-09-24 09:00 → 2026-09-25 09:00 (+1d) |  | 9.25d → 8.25d |  |  |  |  |
| 57 | заявка прозрачный силикон | 2026-09-24 09:00 → 2026-09-25 09:00 (+1d) | 2026-09-24 09:10 → 2026-09-25 09:10 (+1d) |  |  | 113.3d → 112.3d |  | constraint start no earlier than 2026-09-24 09:00 → start no earlier than 2026-09-25 09:00 |
| 58 | доставка контроль | 2026-10-02 09:10 → 2026-10-05 09:10 (+3d) | 2026-10-02 09:20 → 2026-10-05 09:20 (+3d) |  |  | 113.3d → 112.3d |  |  |
| 62 | Ревизия утечек воздуха на квадропаке (важно проверить пневмораспределителях) и вакуумную систему (если работают, отменяем задание) | 2026-09-23 09:00 A | 2026-09-23 11:00 A |  | 0% → 100% |  |  |  |
| 63 | Комплексное ТО квадропака, проверка всех соединений, протяжка болтов на всех узлах | 2026-09-23 09:00 A | 2026-09-23 11:00 A |  | 0% → 100% |  |  |  |
| 69 | **Не работают роль ставни на жирах, не стопоряться сделать/устранить неисправность** |  | 2026-09-23 09:10 → 2026-09-29 09:10 (+6d) | 14.02d → 19.02d |  | 121.57d → 116.57d |  |  |
| 72 | согласовать с подрядчиком дату ремонта | 2026-09-23 09:00 → 2026-09-29 09:00 (+6d) | 2026-09-23 09:10 → 2026-09-29 09:10 (+6d) |  |  | 121.57d → 116.57d |  | constraint start no earlier than 2026-09-23 09:00 → start no earlier than 2026-09-29 09:00 |
| 94 | печать уплотненителей крышек | 2026-09-23 09:00 → 2026-09-28 09:00 (+5d) | 2026-09-23 13:00 → 2026-09-28 13:00 (+5d) |  |  | 120.84d → 116.84d |  | constraint start no earlier than 2026-09-23 09:00 → start no earlier than 2026-09-28 09:00 |
| 166 | **ревизия красного смесителя 2 линия (просыпается мука)** |  | 2026-09-24 09:15 → 2026-09-25 09:15 (+1d) | 33.03d → 34.03d |  | 120.56d → 119.56d |  |  |
| 169 | контроль поставки уплотнение торцевое вала | 2026-09-24 09:00 → 2026-09-25 09:00 (+1d) | 2026-09-24 09:15 → 2026-09-25 09:15 (+1d) |  |  | 120.56d → 119.56d |  | constraint start no earlier than 2026-09-24 09:00 → start no earlier than 2026-09-25 09:00 |
| 207 | **сборка дозатор на квадропак** |  | 2026-09-29 11:00 → 2026-09-30 10:00 (+1d) | 64.25d → 65.12d | 86% → 92% | 116.34d → 115.47d |  |  |
| 224 | сборка дозатор | 2026-09-28 09:00 A | 2026-09-28 11:00 A |  | 0% → 100% | 117.34d → none |  |  |
| 226 | монтаж кнопка дозатор ОН/ОФФ | 2026-09-23 09:00 → 2026-09-30 09:00 (+7d) | 2026-09-23 10:00 → 2026-09-30 10:00 (+7d) |  |  | 121.47d → 115.47d |  | constraint start no earlier than 2026-09-23 09:00 → start no earlier than 2026-09-30 09:00 |
| 241 | **заменить амперметры неиспрвные на ШУ 1 и 2 линия (они на складе приехали сегодня новые посмотреть фото в выдаче)** |  |  |  | 99% → 100% |  |  |  |
| 243 | контроль датч тока | 2026-09-09 09:00 A | 2026-09-09 09:00 A |  | 0% → 100% | 135.59d → none |  |  |
| 583 | **установить принтер датаматрикс на пролистыватель** |  | 2026-08-31 18:00 → 2026-09-30 18:00 (+30d) | 122d? → 150d? |  | 142.59d → 114.59d |  |  |
| 585 | настройка ПО с агрегатором | 2026-08-31 09:00 → 2026-09-30 09:00 (+30d) | 2026-08-31 18:00 → 2026-09-30 18:00 (+30d) |  |  | 142.59d → 114.59d |  | constraint start no earlier than 2026-08-31 09:00 → start no earlier than 2026-09-30 09:00 |
| 779 | Сделать ручки и щеколду для мусорки на улице |  |  |  |  |  |  | resources Некрасов А → Бундин В |
| 790 | **ревизия сливной шланг моечная машинка** |  | 2026-09-25 11:15 → 2026-09-26 11:15 (+1d) | 11.28d → 12.28d |  | 119.31d → 118.31d |  |  |
| 793 | контроль доставки | 2026-09-24 09:00 → 2026-09-25 09:00 (+1d) | 2026-09-24 09:15 → 2026-09-25 09:15 (+1d) |  |  | 119.31d → 118.31d |  | constraint start no earlier than 2026-09-24 09:00 → start no earlier than 2026-09-25 09:00 |
| 794 | монтаж | 2026-09-25 09:15 → 2026-09-26 09:15 (+1d) | 2026-09-25 11:15 → 2026-09-26 11:15 (+1d) |  |  | 119.31d → 118.31d |  |  |
| 797 | **реверс теплоносителя в приточном калорифере** |  |  |  | 10% → 20% |  |  |  |
| 799 | контроль доставки | 2026-09-14 09:05 A | 2026-09-14 09:20 A |  | 0% → 100% | 130.55d → none |  |  |
| 860 | **усиление подогрев приточной вентиляции** |  |  |  | 25% → 22% |  |  |  |
| 915 | **ремонт осушителя компрессора 2ц** |  | 2026-10-01 11:00 → 2026-10-06 11:30 (+5d) | 44.25d → 47.31d |  | 114.34d → 111.28d |  |  |
| 917 | заявка фреон 134а | 2026-09-21 09:00 → 2026-09-25 09:00 (+4d) | 2026-09-21 09:15 → 2026-09-25 09:15 (+4d) |  |  | 115.28d → 111.28d |  | constraint start no earlier than 2026-09-21 09:00 → start no earlier than 2026-09-25 09:00 |
| 918 | доставка контроль | 2026-09-29 09:15 → 2026-10-05 09:15 (+6d) | 2026-09-29 09:30 → 2026-10-05 09:30 (+6d) |  |  | 115.28d → 111.28d |  |  |
| 919 | заправить хладогент | 2026-10-01 09:00 → 2026-10-06 09:30 (+5d) | 2026-10-01 11:00 → 2026-10-06 11:30 (+5d) |  |  | 114.34d → 111.28d |  |  |
| 1005 | **ремонт эл котел №3 охладитель** |  |  |  | 91% → 92% | 120.31d → 119.31d |  |  |
| 1011 | Контроль доставки | 2026-09-09 09:00 A | 2026-09-09 09:05 A |  | 0% → 100% | 130.55d → none |  |  |
| 1163 | **установить водоподготовку на парогенератор** |  | 2026-09-28 18:00 → 2026-10-09 18:00 (+11d) | 130d? → 139d? |  | 116.59d → 107.59d |  |  |
| 1164 | планирование монтажа | 2026-08-31 09:00 → 2026-10-05 09:00 (+35d) | 2026-08-31 10:00 → 2026-10-05 10:00 (+35d) |  |  | 143.47d → 112.47d |  | constraint start no earlier than 2026-08-31 09:00 → start no earlier than 2026-10-05 09:00 |
| 1168 | монтаж (установка) | 2026-09-28 09:00 → 2026-10-09 09:00 (+11d) | 2026-09-28 18:00 → 2026-10-09 18:00 (+11d) |  |  | 116.59d → 107.59d |  | constraint start no earlier than 2026-09-28 09:00 → start no earlier than 2026-10-09 09:00 |
| 1379 | **установить пульты на регулировку шибиров вентиляции** |  | 2026-09-25 18:00 → 2026-10-02 18:00 (+7d) | 25d? → 31d? |  | 118.59d → 112.59d |  |  |
| 1382 | монтаж | 2026-09-25 09:00 → 2026-10-02 09:00 (+7d) | 2026-09-25 18:00 → 2026-10-02 18:00 (+7d) |  |  | 118.59d → 112.59d |  | constraint start no earlier than 2026-09-25 09:00 → start no earlier than 2026-10-02 09:00 |
| 1408 | **3 цех** |  | 2026-09-29 18:00 → 2026-09-30 11:00 (+1d) | 288d? → 288.25d? |  | 115.59d → 115.34d |  |  |
| 1418 | **Дражжировка** |  | 2026-09-28 11:00 → 2026-09-30 11:00 (+2d) | 10.25d → 12.25d |  | 117.34d → 115.34d |  |  |
| 1422 | Перенести частотник со стены ближе к барабанам, смонтировать на раму барабанов | 2026-09-28 09:00 → 2026-09-30 09:00 (+2d) | 2026-09-28 11:00 → 2026-09-30 11:00 (+2d) |  |  | 117.34d → 115.34d |  | was named Перенести частотник со стены ближе к барабанам (установку согласовать с Домоводовым); constraint start no earlier than 2026-09-28 09:00 → start no earlier than 2026-09-30 09:00; resources Некрасов А → Дедов В |
| 1427 | **Разобрать регулировку ножевого узла, достать вал на котором установлен штурвал** |  | 2026-09-25 10:00 → 2026-09-26 10:10 (+1d) | 7.12d → 8.15d |  | 119.47d → 118.45d |  |  |
| 1430 | контроль | 2026-09-24 17:50 → 2026-09-25 09:00 (+1d) | 2026-09-24 18:00 → 2026-09-25 09:10 (+1d) |  |  | 119.47d → 118.45d |  | constraint none → start no earlier than 2026-09-25 09:00 |
| 1431 | установка | 2026-09-25 09:00 → 2026-09-26 09:10 (+1d) | 2026-09-25 10:00 → 2026-09-26 10:10 (+1d) |  |  | 119.47d → 118.45d | 1430 → 1430FS+1d |  |
| 1439 | Перенести регулировку подачи жира, ближе к барабанам. Перенос частотник на раму барабанов | 2026-09-25 09:00 → 2026-09-29 09:00 (+4d) | 2026-09-25 13:00 → 2026-09-29 13:00 (+4d) |  |  | 119.09d → 116.09d |  | constraint start no earlier than 2026-09-25 09:00 → start no earlier than 2026-09-29 09:00 |
| 1528 | **на тепловых реле 1 и 2 смесителя добавить порог выключения** |  |  |  | 33% → 100% |  |  |  |
| 1531 | замена тепловых реле, получить на складе | 2026-09-03 09:00 A | 2026-09-03 10:00 A |  | 0% → 100% | 140.47d → none |  |  |
| 1675 | **приточная вентиляция** |  | 2026-09-23 11:00 → 2026-09-24 11:00 (+1d) | 148.25d → 149.25d |  | 121.34d → 120.34d |  |  |
| 1678 | монтаж изоляционных прокладок вводный автомат между фазами | 2026-09-23 09:00 → 2026-09-24 09:00 (+1d) | 2026-09-23 11:00 → 2026-09-24 11:00 (+1d) |  |  | 121.34d → 120.34d |  | constraint start no earlier than 2026-09-23 09:00 → start no earlier than 2026-09-24 09:00 |
| 1679 | подключить нулевой провод шкаф управления | 2026-09-23 09:00 → 2026-09-24 09:00 (+1d) | 2026-09-23 11:00 → 2026-09-24 11:00 (+1d) |  |  | 121.34d → 120.34d |  | constraint start no earlier than 2026-09-23 09:00 → start no earlier than 2026-09-24 09:00 |
| 1680 | монтаж перемычек от автомата на ТВ реле . Звонить Дедову | 2026-09-23 09:00 → 2026-09-24 09:00 (+1d) | 2026-09-23 11:00 → 2026-09-24 11:00 (+1d) |  |  | 121.34d → 120.34d |  | constraint start no earlier than 2026-09-23 09:00 → start no earlier than 2026-09-24 09:00 |
| 1725 | **ремонт насос водоснабжения** |  | 2026-11-26 11:00 A |  | 43% → 100% | 74.34d → none |  |  |
| 1726 | перекрутить американку для удобного обслуживания | 2026-11-26 09:00 A | 2026-11-26 11:00 A |  | 0% → 100% | 74.34d → none |  |  |
| 1733 | **подготовить сетку на мал дробилку 3 и 4мм** |  | 2026-09-25 10:00 → 2026-09-29 10:00 (+4d) | 13.12d → 16.12d |  | 119.47d → 116.47d |  |  |
| 1735 | вырезатиь сетку в размер | 2026-09-25 09:00 → 2026-09-29 09:00 (+4d) | 2026-09-25 10:00 → 2026-09-29 10:00 (+4d) |  |  | 119.47d → 116.47d |  | constraint start no earlier than 2026-09-25 09:00 → start no earlier than 2026-09-29 09:00 |
| 1757 | выяснить возможность обмена тройников 1+1/4-1/2 на 3/4-1/2 | 2026-09-21 09:00 A | 2026-09-21 09:15 A |  | 0% → 100% | 123.56d → none |  |  |
| 1779 | **монтаж тепловые пушки подвесные 5 цех** |  |  |  | 32% → 36% |  |  |  |
| 1783 | контроль доставки | 2026-09-21 09:00 A | 2026-09-21 10:00 A |  | 0% → 100% | 120.47d → none |  |  |
| 1784 | монтаж |  |  |  |  |  |  | resources Некрасов А → Некрасов А; Труфанов А |
| 1988 | проверка черетежей / подготовка к сборке | 2026-09-25 09:00 → 2026-09-28 09:00 (+3d) | 2026-09-25 10:00 → 2026-09-28 10:00 (+3d) |  |  | 117.47d → 115.47d |  | constraint start no earlier than 2026-09-25 09:00 → start no earlier than 2026-09-28 09:00 |
| 1989 | сборка | 2026-09-25 10:00 → 2026-09-28 10:00 (+3d) | 2026-09-28 10:00 → 2026-09-30 10:00 (+2d) |  |  | 117.47d → 115.47d |  |  |
| 2209 | **слесарное помещение** |  | 2026-09-22 17:00 → 2026-09-25 11:00 (+3d) | 78.88d? → 81.25d? |  | 121.72d → 119.34d |  |  |
| 2210 | **уборка и сортировка. Приготовить, дневные проверят и продолжат** | 2026-09-21 09:00 A → 2026-09-22 09:00 A (+1d) | 2026-09-22 17:00 → 2026-09-25 11:00 (+3d) | 1.88d → 3.25d |  | 121.72d → 119.34d |  |  |
| 2215 | сортировка и перемещение мусор / металлолм/ дальние стеллажи | 2026-09-21 09:00 → 2026-09-25 09:00 (+4d) | 2026-09-21 11:00 → 2026-09-25 11:00 (+4d) |  |  | 123.34d → 119.34d |  | constraint start no earlier than 2026-09-21 09:00 → start no earlier than 2026-09-25 09:00 |
| 2461 | **ТО** |  |  |  | 39% → 41% |  |  |  |

| ID | Task | Start | Finish | Duration | Complete | Total float | Other |
| --- | --- | --- | --- | --- | --- | --- | --- |
| 2462 | **1 цех** |  |  |  | 47% → 54% |  |  |
| 2463 | **Разобрать улитки с охладителя 2 линия, 4 улитки на печах и улитки циклонов - замена подшипников, каких нет сообщить** |  |  |  | 85% → 95% |  |  |
| 2471 | линия 2 вентилятор циклона 2 | 2026-09-23 09:00 A | 2026-09-23 11:00 A |  | 0% → 100% |  |  |
| 2482 | **линия 1** |  | 2026-09-23 09:30 A |  | 97% → 100% | 121.53d → none |  |
| 2483 | **питатель экструдера** |  | 2026-09-23 09:30 A |  | 95% → 100% | 121.53d → none |  |
| 2489 | Ревизия питателя, контроль состояния подшипников/втулки/шестерен | 2026-09-23 09:00 A | 2026-09-23 09:30 A |  | 0% → 100% | 121.53d → none |  |
| 2490 | **прекондицинер экструдера** |  | 2026-09-23 09:15 A |  | 67% → 100% | 121.56d → none |  |
| 2493 | контроль привода, подшипников | 2026-09-23 09:00 A | 2026-09-23 09:15 A |  | 0% → 100% | 121.56d → none |  |
| 2503 | **редуктор экструдера и маслянная станция** |  |  |  | 34% → 43% |  |  |
| 2509 | тэны и термпоры шнеков- прортяжка | 2026-09-23 09:00 A | 2026-09-23 09:30 A |  | 0% → 100% | 121.53d → none |  |
| 2510 | Чистка фильтра | 2026-09-23 09:00 A | 2026-09-23 09:30 A |  | 0% → 100% | 121.53d → none |  |
| 2511 | **шкаф управления экструдером** |  | 2026-09-23 09:15 A |  | 83% → 100% | 121.56d → none |  |
| 2515 | частотные привода экструдера, ножей, питателя - продувка | 2026-09-23 09:00 A | 2026-09-23 09:15 A |  | 0% → 100% | 121.56d → none |  |
| 2516 | **блок тэнов сушки** |  |  |  | 67% → 83% |  |  |
| 2519 | ревизия/ проверка токов | 2026-09-23 09:00 A | 2026-09-23 09:15 A |  | 0% → 100% | 121.56d → none |  |
| 2525 | Осмотр, продувка, протяжка контактов | 2026-09-23 09:00 A | 2026-09-23 09:20 A |  | 0% → 100% | 121.55d → none |  |
| 2526 | **барабан смесительный дрожировка - прорверка подшипнки , реуктор** |  | 2026-09-23 09:15 A |  | 90% → 100% | 121.56d → none |  |
| 2529 | Дефектовка - проверить подачу, вибрации, посторонние шумы. | 2026-09-23 09:00 A | 2026-09-23 09:15 A |  | 0% → 100% | 121.56d → none |  |
| 2550 | Контроль состояния сетки/цепи | 2026-09-23 09:00 A | 2026-09-23 09:30 A |  | 0% → 100% | 121.53d → none |  |
| 2551 | Смазка цепи (при наличии на складе) | 2026-09-23 09:00 A | 2026-09-23 10:00 A |  | 0% → 100% | 121.47d → none |  |
| 2552 | **линия 2** |  |  |  | 47% → 72% |  |  |
| 2553 | **питатель экструдера** |  | 2026-09-23 09:30 A |  | 90% → 100% | 121.53d → none |  |
| 2560 | Ревизия питателя, контроль состояния подшипников/втулки/шестерен | 2026-09-23 09:00 A | 2026-09-23 09:30 A |  | 0% → 100% | 121.53d → none |  |
| 2561 | **прекондицинер экструдера** |  | 2026-09-23 09:15 A |  | 67% → 100% | 121.56d → none |  |
| 2564 | контроль привода, подшипников | 2026-09-23 09:00 A | 2026-09-23 09:15 A |  | 0% → 100% | 121.56d → none |  |
| 2570 | вскрытие электородов, чистка (при остановке линии на мойку, если не остановилась, передать по смене Бундину) | 2026-09-23 09:00 A | 2026-09-23 10:00 A |  | 0% → 100% | 121.47d → none |  |
| 2571 | **шкаф управления экструдером** |  | 2026-09-23 09:15 A |  | 86% → 100% | 121.56d → none |  |
| 2576 | частотные привода экструдера, ножей, питателя - продувка | 2026-09-23 09:00 A | 2026-09-23 09:15 A |  | 0% → 100% | 121.56d → none |  |
| 2577 | **редуктор экструдера и маслянная станция** |  | 2026-09-23 10:00 A |  | 71% → 100% | 121.47d → none |  |
| 2583 | Осмотр редуктор-двигатель, нехороший шум, проверить втулки МУВП/заменить | 2026-09-23 09:00 A | 2026-09-23 10:00 A |  | 0% → 100% | 121.47d → none |  |
| 2584 | **блок тэнов сушки - протяжка** |  |  |  | 25% → 67% |  |  |
| 2587 | Полное ТО шкафа управления, замена всех отгоревших жил/клемм, протяжка контактов | 2026-09-23 09:00 A | 2026-09-23 15:00 A |  | 0% → 100% | 120.97d → none |  |
| 2595 | охладитель сеточный - смазка, натяжка цепи. Проверка редуктор | 2026-09-23 09:00 A | 2026-09-23 10:00 A |  | 0% → 100% | 121.47d → none |  |
| 2601 | **Квадропак** |  | 2026-09-23 10:00 → 2026-09-30 10:00 (+7d) | 115.12d → 121.12d |  | 121.47d → 115.47d |  |
| 2610 | Закрепить, подровнять, слесарные работы которые требуются | 2026-09-23 09:00 → 2026-09-30 09:00 (+7d) | 2026-09-23 10:00 → 2026-09-30 10:00 (+7d) |  |  | 121.47d → 115.47d | constraint start no earlier than 2026-09-23 09:00 → start no earlier than 2026-09-30 09:00 |
| 2622 | **упаковщкики** |  | 2026-09-23 11:00 → 2026-09-30 11:00 (+7d) | 423.25d → 429.25d |  | 121.34d → 115.34d |  |
| 2636 | Осмотр всех упаковщиков/транспортеров/накопительных столов/ всех щитков оборудования | 2026-09-23 09:00 → 2026-09-30 09:00 (+7d) | 2026-09-23 11:00 → 2026-09-30 11:00 (+7d) |  |  | 121.34d → 115.34d | constraint start no earlier than 2026-09-23 09:00 → start no earlier than 2026-09-30 09:00 |
| 2788 | **шкаф управления экструдером** |  | 2026-09-25 09:10 → 2026-10-01 09:10 (+6d) | 151.02d → 156.02d |  | 119.57d → 114.57d |  |
| 2799 | продувка частотного привода | 2026-09-25 09:00 → 2026-10-01 09:00 (+6d) | 2026-09-25 09:10 → 2026-10-01 09:10 (+6d) |  |  | 119.57d → 114.57d | constraint start no earlier than 2026-09-25 09:00 → start no earlier than 2026-10-01 09:00 |
| 2893 | **конвейер 3 с охладителя в упаковку** |  | 2026-09-25 09:15 → 2026-10-01 09:15 (+6d) | 37.03d → 42.03d |  | 119.56d → 114.56d |  |
| 2898 | ревизия люфтов, фиксации, смазки подшипников | 2026-09-25 09:00 → 2026-10-01 09:00 (+6d) | 2026-09-25 09:15 → 2026-10-01 09:15 (+6d) |  |  | 119.56d → 114.56d | constraint start no earlier than 2026-09-25 09:00 → start no earlier than 2026-10-01 09:00 |
| 3094 | **офис** |  | 2026-09-28 11:00 → 2026-09-29 13:00 (+1d) | 932.25d? → 933.5d? |  | 117.34d → 116.09d |  |
| 3125 | выбивает автомат у Монича, нет селективности, замена автоматов. Ремонт освещения корридор | 2026-09-25 09:00 → 2026-09-29 09:00 (+4d) | 2026-09-25 13:00 → 2026-09-29 13:00 (+4d) |  |  | 119.09d → 116.09d | constraint start no earlier than 2026-09-25 09:00 → start no earlier than 2026-09-29 09:00 |
| 3253 | **территория** |  | 2026-09-25 09:30 → 2026-09-25 18:00 | 421.06d? → 422d? | 72% → 71% | 119.53d → 118.59d |  |
| 3257 | **орг водосток КПП - 5ц** | 2026-08-31 09:00 A | 2026-08-31 09:15 A |  | 0% → 100% | 143.56d → none |  |
| 3258 | получить КП от Вугара | 2026-08-31 09:00 A | 2026-08-31 09:15 A |  | 0% → 100% | 143.56d → none |  |
| 3259 | **орг водосток между 4 и5А** | 2026-08-31 09:00 A | 2026-08-31 09:15 A |  | 0% → 100% | 143.56d → none |  |
| 3260 | получить КП от Вугара | 2026-08-31 09:00 A | 2026-08-31 09:15 A |  | 0% → 100% | 143.56d → none |  |
| 3261 | **Белявский выравнивание стены** |  | 2026-09-02 10:15 A |  | 13% → 100% | 141.44d → none |  |
| 3262 | оформить план работ, эскиз предложенный ГИП Глуходед | 2026-09-01 09:00 A | 2026-09-01 10:00 A |  | 0% → 100% | 141.44d → none |  |
| 3263 | поиск подрядчика на перекладку панели | 2026-09-01 09:00 A | 2026-09-01 10:00 A |  | 0% → 100% | 142.47d → none |  |
| 3266 | согл работы с ГД | 2026-09-01 10:00 A | 2026-09-01 10:00 A |  | 0% → 100% | 141.44d → none |  |
| 3267 | заказ кран | 2026-09-02 10:00 A | 2026-09-02 10:15 A |  | 0% → 100% | 141.44d → none |  |
| 3272 | установить люки колодцев возле на территории |  | 2026-09-25 09:30 → 2026-09-25 18:00 | 30min → 1d |  |  | resources Олег → Бобренок В; Некрасов А |

## Version 15 (saved 2026-09-25, file 07.09.26.mpp)

Last finish stays 2027-03-10. Complete tasks 2247 → 2284.

Added:

| ID | Task | Duration | Start | Finish | Predecessors | Constraint | Resources |
| --- | --- | --- | --- | --- | --- | --- | --- |
| 3 | замеры в точках выброса вентиляции с проедставителем | 6h | 2026-09-28 09:00 | 2026-09-28 16:00 |  | start no earlier than 2026-09-28 09:00 | Труфанов А; Некрасов А |
| 4 | изготовить переход между прекондиционер и экструдер на 1 линию | 1d? | 2026-09-27 09:00 | 2026-09-27 18:00 |  | start no earlier than 2026-09-27 09:00 | Макаревич А |
| 14 | **ремонт весов смеситель 1 линия** | 1.12d | 2026-09-24 09:00 A | 2026-09-25 10:00 |  |  |  |
| 16 | подключить блок питания найти на складе | 1h | 2026-09-25 09:00 | 2026-09-25 10:00 |  | start no earlier than 2026-09-25 08:00 | Бундин В |
| 230 | установить на пружины раму дозатора + квеличить её массу | 4h | 2026-09-25 09:00 A | 2026-09-25 13:00 A |  | start no earlier than 2026-09-25 08:00 | Некрасов А; Труфанов А |
| 231 | покупка за нал / найти доп пружины | 1h | 2026-09-28 09:00 | 2026-09-28 10:00 |  | start no earlier than 2026-09-28 09:00 | Зорькин В |
| 232 | увеличить доп пружины, сжались ноль | 4h | 2026-09-28 09:00 | 2026-09-28 13:00 |  | start no earlier than 2026-09-28 09:00 | Некрасов А; Труфанов А |
| 780 | **установить 4 трубки с быстросъемами в барабаны жиров** | 3.5d | 2026-09-25 09:00 A | 2026-09-28 13:00 |  |  |  |
| 782 | подготовить трубку 3 и 4 | 4h | 2026-09-28 09:00 | 2026-09-28 13:00 |  | start no earlier than 2026-09-28 09:00 | Тимофеев В |
| 1418 | сопряжение круглой входной воронки в экструдер с квадратом выхода прекондиционера как в 2ц | 5h | 2026-09-26 09:00 | 2026-09-26 15:00 |  | start no earlier than 2026-09-26 09:00 | Бундин В |
| 1692 | проверить все подключения / тест | 2h | 2026-09-29 09:00 | 2026-09-29 11:00 |  | start no earlier than 2026-09-29 09:00 | Дедов В |
| 2237 | отпраитвь на перемонтку | 15min | 2026-09-28 09:00 | 2026-09-28 09:15 |  | start no earlier than 2026-09-28 09:00 | Зорькин В |
| 2238 | контроль | 15min | 2026-10-05 09:15 | 2026-10-05 09:30 | 2237FS+5d | start no earlier than 2026-09-25 08:00 | Зорькин В |
| 2239 | орг забрать | 15min | 2026-10-07 09:30 | 2026-10-07 09:45 | 2238FS+2d | start no earlier than 2026-09-25 08:00 | Зорькин В |
| 2240 | сборка | 2h | 2026-10-08 09:45 | 2026-10-08 11:45 | 2239FS+1d | start no earlier than 2026-09-25 08:00 | Бундин В |
| 3288 | разложить по местам | 4h | 2026-09-25 09:00 A | 2026-09-25 13:00 A |  | start no earlier than 2026-09-25 08:00 | Бобренок В |
| 3289 | врезать в асфальт | 4h | 2026-10-06 09:00 | 2026-10-06 13:00 |  | start no earlier than 2026-10-06 09:00 | Тимофеев В; Олег |

Changed:

| ID | Task | Start | Finish | Duration | Complete | Total float | Predecessors | Other |
| --- | --- | --- | --- | --- | --- | --- | --- | --- |
| 2 | Повторный замер параметров в 1 цеху, вентилляция (подробности по точкам у Домоводова) | 2026-09-25 09:00 A | 2026-09-25 15:00 A |  | 0% → 100% | 118.97d → none |  |  |
| 5 | **замена ленты пролистывателя** |  | 2026-09-29 12:45 → 2026-10-12 18:00 (+13d) | 10.47d → 21d |  | 116.12d → 106.59d |  |  |
| 9 | склеить ремень | 2026-09-26 12:45 → 2026-10-09 09:00 (+13d) | 2026-09-26 17:45 → 2026-10-09 13:00 (+13d) |  |  | 116.12d → 106.59d |  | constraint start no earlier than 2026-09-18 08:00 → start no earlier than 2026-10-09 09:00 |
| 10 | замена лент | 2026-09-28 17:45 → 2026-10-12 14:00 (+14d) | 2026-09-29 12:45 → 2026-10-12 18:00 (+13d) |  |  | 116.12d → 106.59d |  |  |
| 15 | Реанимировать весы, чтобы показывали. Смесители | 2026-09-24 09:00 A | 2026-09-24 10:00 A |  | 0% → 100% | 120.47d → none |  |  |
| 23 | пожключение выключателя |  |  |  |  | 118.46d → 119.46d |  | constraint start no earlier than 2026-09-16 08:00 → start no earlier than 2026-09-26 09:00 |
| 25 | **реконструкция хранения гидролизатов и маршрут подачи навесок** |  | 2026-09-29 18:00 → 2026-10-09 10:30 (+10d) | 21d? → 29.19d? |  | 115.59d → 108.41d |  |  |
| 28 | **монтаж доп плащадки** | 2026-09-10 09:00 → 2026-09-28 09:00 (+18d) | 2026-09-29 18:00 → 2026-10-09 10:30 (+10d) | 19d → 9.19d |  | 115.59d → 108.41d |  |  |
| 29 | составить чертеж площадки | 2026-09-10 09:00 → 2026-09-28 09:00 (+18d) | 2026-09-10 10:00 → 2026-09-28 10:00 (+18d) |  |  | 125.41d → 108.41d |  | constraint start no earlier than 2026-09-10 09:00 → start no earlier than 2026-09-28 09:00 |
| 30 | заявка | 2026-09-11 10:00 → 2026-09-29 10:00 (+18d) | 2026-09-11 10:15 → 2026-09-29 10:15 (+18d) |  |  | 125.41d → 108.41d |  |  |
| 31 | контроль доставки | 2026-09-16 10:15 → 2026-10-06 10:15 (+20d) | 2026-09-16 10:30 → 2026-10-06 10:30 (+20d) |  |  | 125.41d → 108.41d |  |  |
| 32 | монтаж | 2026-09-28 09:00 → 2026-10-07 10:30 (+9d) | 2026-09-29 18:00 → 2026-10-09 10:30 (+10d) |  |  | 115.59d → 108.41d |  |  |
| 33 | **монтаж перегородка корридор** | 2026-09-10 09:00 → 2026-09-25 09:00 (+15d) | 2026-09-29 18:00 → 2026-10-05 10:30 (+6d) | 19d → 8.19d |  | 115.59d → 112.41d |  |  |
| 34 | составить чертеж площадки | 2026-09-10 09:00 → 2026-09-25 09:00 (+15d) | 2026-09-10 10:00 → 2026-09-25 10:00 (+15d) |  |  | 134.47d → 112.41d |  | constraint start no earlier than 2026-09-10 09:00 → start no earlier than 2026-09-25 09:00 |
| 35 | заявка | 2026-09-10 09:00 → 2026-09-25 10:00 (+15d) | 2026-09-10 09:15 → 2026-09-25 10:15 (+15d) |  |  | 126.53d → 112.41d | none → 34 |  |
| 36 | контроль доставки | 2026-09-15 09:15 → 2026-09-30 10:15 (+15d) | 2026-09-15 09:30 → 2026-09-30 10:30 (+15d) |  |  | 126.53d → 112.41d |  |  |
| 37 | монтаж | 2026-09-28 09:00 → 2026-10-01 10:30 (+3d) | 2026-09-29 18:00 → 2026-10-05 10:30 (+6d) |  |  | 115.59d → 112.41d |  |  |
| 56 | **сместить квадропак в сторону охладителя 2л** |  |  | 19.5d → 20.5d |  |  |  |  |
| 60 | **квадропак - сделать силиконовый успокоитель между нория и весы 800*250 шаг шторок 60** |  |  | 8.25d → 9.25d |  |  |  |  |
| 62 | доставка контроль | 2026-10-05 09:10 → 2026-10-02 09:10 (-3d) | 2026-10-05 09:20 → 2026-10-02 09:20 (-3d) |  |  | 112.3d → 113.3d |  |  |
| 73 | **Не работают роль ставни на жирах, не стопоряться сделать/устранить неисправность** |  |  | 19.02d → 20.02d |  |  |  |  |
| 97 | **продумать как сделать герметичную крышку на смесителе сухого гидрализата** |  |  | 29.25d → 30.25d |  |  |  |  |
| 140 | **палетообмостчик монтаж в 1ц** |  | 2026-09-28 12:00 → 2026-09-29 12:00 (+1d) | 39.38d → 41.38d |  | 117.22d → 116.22d |  |  |
| 147 | монтаж | 2026-09-28 09:00 → 2026-09-29 09:00 (+1d) | 2026-09-28 12:00 → 2026-09-29 12:00 (+1d) |  |  | 117.22d → 116.22d |  | constraint start no earlier than 2026-09-28 09:00 → start no earlier than 2026-09-29 09:00 |
| 148 | **замена сетка печи линия 1** |  | 2026-09-28 09:45 → 2026-10-02 09:45 (+4d) | 39.09d? → 44.09d? |  | 117.5d → 113.5d |  |  |
| 152 | контроль доставки | 2026-09-25 09:00 → 2026-09-30 09:00 (+5d) | 2026-09-25 09:15 → 2026-09-30 09:15 (+5d) |  |  | 117.5d → 113.5d |  | constraint start no earlier than 2026-08-10 08:00 → start no earlier than 2026-09-30 09:00 |
| 153 | приемка | 2026-09-25 09:15 → 2026-09-30 09:15 (+5d) | 2026-09-25 09:45 → 2026-09-30 09:45 (+5d) |  |  | 117.5d → 113.5d |  |  |
| 154 | замена | 2026-09-26 09:45 → 2026-10-01 09:45 (+5d) | 2026-09-28 09:45 → 2026-10-02 09:45 (+4d) |  |  | 117.5d → 113.5d |  | constraint start no earlier than 2026-08-10 08:00 → start no earlier than 2026-09-26 09:00 |
| 155 | **зависает диспелей на расходомере 2л** |  |  | 42.06d → 43.06d |  |  |  |  |
| 211 | **сборка дозатор на квадропак** |  |  | 65.12d → 66.12d | 92% → 83% |  |  |  |
| 312 | **установить резервную трубку/штангу с форсункой на подачу жира** |  |  | 28d → 29d |  |  |  |  |
| 320 | **установить автоматику запуска шнека + смеситель по датчику уровня сырья в бункере экструдера** |  | 2026-10-07 12:10 → 2026-10-06 12:10 (-1d) |  |  | 110.2d → 111.2d |  |  |
| 323 | доставка контроль | 2026-10-02 12:00 → 2026-10-01 12:00 (-1d) | 2026-10-02 12:05 → 2026-10-01 12:05 (-1d) |  |  | 110.2d → 111.2d |  |  |
| 324 | контроль поставки | 2026-10-05 12:05 → 2026-10-02 12:05 (-3d) | 2026-10-05 12:10 → 2026-10-02 12:10 (-3d) |  |  | 110.2d → 111.2d |  |  |
| 325 | сборка ШУ | 2026-10-05 12:10 → 2026-10-02 12:10 (-3d) | 2026-10-06 12:10 → 2026-10-05 12:10 (-1d) |  |  | 110.2d → 111.2d |  |  |
| 326 | монтаж в линию | 2026-10-06 12:10 → 2026-10-05 12:10 (-1d) | 2026-10-07 12:10 → 2026-10-06 12:10 (-1d) |  |  | 110.2d → 111.2d |  |  |
| 445 | **заменить фильтры на жиротопка** |  |  | 16.12d → 17.12d |  |  |  |  |
| 450 | **обслуживание инсекьюеров, утлизация отработанных ламп** |  | 2026-09-28 10:00 → 2026-10-05 10:00 (+7d) | 120.12d → 126.12d |  | 117.47d → 112.47d |  |  |
| 458 | подготовить лампы к утилизации | 2026-09-28 09:00 → 2026-10-05 09:00 (+7d) | 2026-09-28 10:00 → 2026-10-05 10:00 (+7d) |  |  | 117.47d → 112.47d |  | constraint start no earlier than 2026-09-28 09:00 → start no earlier than 2026-10-05 09:00 |
| 551 | монтаж 1 линия расходомер / кабель / блок питания | 2026-09-28 09:00 A → 2026-10-07 09:00 A (+9d) | 2026-09-28 12:00 → 2026-10-07 12:00 (+9d) |  |  |  |  | constraint start no earlier than 2026-09-28 09:00 → start no earlier than 2026-10-07 09:00 |
| 590 | **установить принтер датаматрикс на пролистыватель** |  |  | 150d? → 151d? |  |  |  |  |
| 754 | **Дражжировка конвейер №1 после печки** |  |  | 121.12d → 122.12d |  |  |  |  |
| 781 | подготовить сменную трубку для подачи жира, насверлить резьбу, отверстия | 2026-09-25 09:00 A | 2026-09-25 11:00 A |  | 0% → 100% | 119.34d → none |  |  |
| 783 | кран на жирах нет стопора - вращение на 360 устранить, найти этот кран. | 2026-09-24 09:00 A | 2026-09-24 09:30 A |  | 0% → 100% | 120.53d → none |  |  |
| 789 | установить трубку жир ф12 - нарезать резьбу под фитинг / сверлить под "струйки" | 2026-09-24 09:00 A | 2026-09-24 11:00 A |  | 0% → 100% | 120.34d → none |  |  |
| 799 | **ревизия сливной шланг моечная машинка** |  | 2026-09-26 11:15 → 2026-10-02 11:00 (+6d) | 12.28d → 18.25d |  | 118.31d → 113.34d |  |  |
| 803 | монтаж | 2026-09-26 09:15 → 2026-10-02 09:00 (+6d) | 2026-09-26 11:15 → 2026-10-02 11:00 (+6d) |  |  | 118.31d → 113.34d |  | constraint start no earlier than 2026-09-10 08:00 → start no earlier than 2026-10-02 09:00 |
| 806 | **реверс теплоносителя в приточном калорифере** |  | 2026-09-25 11:00 → 2026-09-24 11:00 A (-1d) | 29.25d → 28.25d | 20% → 100% | 119.34d → none |  |  |
| 809 | монтаж | 2026-09-25 09:00 → 2026-09-24 09:00 A (-1d) | 2026-09-25 11:00 → 2026-09-24 11:00 A (-1d) |  | 0% → 100% | 119.34d → none |  | constraint start no earlier than 2026-09-25 09:00 → start no earlier than 2026-09-24 09:00; resources Бундин В → Дедов В |
| 843 | перенос инсекютер ниже на фасовке, для возможности доступа операторами | 2026-09-24 09:00 A | 2026-09-24 10:00 A |  | 0% → 100% | 120.47d → none |  |  |
| 847 | **установить сифон ф110 в линию слива жиров** |  | 2026-09-29 11:30 → 2026-10-06 11:30 (+7d) | 40.31d → 46.31d |  | 116.28d → 111.28d |  |  |
| 849 | возможно ли убрать сифоны ф50, достаточно ли заслонки без гидрозатвора? Как сделать гидрозатвор ф100 | 2026-09-28 09:00 → 2026-10-05 09:00 (+7d) | 2026-09-28 09:15 → 2026-10-05 09:15 (+7d) |  |  | 116.28d → 111.28d |  | constraint start no earlier than 2026-09-28 09:00 → start no earlier than 2026-10-05 09:00 |
| 850 | решение | 2026-09-29 09:15 → 2026-10-06 09:15 (+7d) | 2026-09-29 09:15 → 2026-10-06 09:15 (+7d) |  |  | 116.28d → 111.28d |  |  |
| 851 | контроль доставка | 2026-09-29 09:15 → 2026-10-06 09:15 (+7d) | 2026-09-29 09:30 → 2026-10-06 09:30 (+7d) |  |  | 116.28d → 111.28d |  |  |
| 852 | монтаж | 2026-09-29 09:30 → 2026-10-06 09:30 (+7d) | 2026-09-29 11:30 → 2026-10-06 11:30 (+7d) |  |  | 116.28d → 111.28d |  |  |
| 869 | **усиление подогрев приточной вентиляции** |  | 2026-09-28 14:15 → 2026-10-02 18:00 (+4d) | 36.53d? → 42d? | 22% → 33% | 117.06d → 112.59d |  |  |
| 871 | Подключить колорифер в противоток, гибкую подводку получить на складе | 2026-09-24 09:00 A | 2026-09-24 11:00 A |  | 0% → 100% | 120.34d → none |  |  |
| 874 | монтаж | 2026-09-26 14:15 → 2026-10-02 09:00 (+6d) | 2026-09-28 14:15 → 2026-10-02 18:00 (+4d) |  |  | 117.06d → 112.59d |  | constraint start no earlier than 2026-08-10 08:00 → start no earlier than 2026-10-02 09:00 |
| 879 | **обеспечить не менее +15 зимой в зоне хранения навесок** |  |  | 65.34d? → 66.34d? |  |  |  |  |
| 880 | **утепление стены** |  | 2026-09-28 18:00 → 2026-09-30 18:00 (+2d) | 26d? → 29d? |  | 116.59d → 114.59d |  |  |
| 884 | монтаж утеплитель и листы | 2026-09-28 09:00 → 2026-09-30 09:00 (+2d) | 2026-09-28 18:00 → 2026-09-30 18:00 (+2d) |  |  | 116.59d → 114.59d |  | constraint start no earlier than 2026-09-28 09:00 → start no earlier than 2026-09-30 09:00 |
| 889 | **тепловые завесы в 2ц зона подачи навесок** |  |  | 56.34d? → 57.34d? |  |  |  |  |
| 896 | **монтаж кабель** |  |  | 43.38d? → 44.38d? |  |  |  |  |
| 905 | **пролистыватель с апликтором заказ** |  | 2026-09-28 18:00 → 2026-10-05 18:00 (+7d) | 42d? → 48d? |  | 116.59d → 111.59d |  |  |
| 912 | монтаж | 2026-09-28 09:00 → 2026-10-05 09:00 (+7d) | 2026-09-28 18:00 → 2026-10-05 18:00 (+7d) |  |  | 116.59d → 111.59d |  | constraint start no earlier than 2026-09-28 09:00 → start no earlier than 2026-10-05 09:00 |
| 924 | **ремонт осушителя компрессора 2ц** |  | 2026-10-06 11:30 → 2026-10-05 11:30 (-1d) |  |  | 111.28d → 112.28d |  |  |
| 927 | доставка контроль | 2026-10-05 09:15 → 2026-10-02 09:15 (-3d) | 2026-10-05 09:30 → 2026-10-02 09:30 (-3d) |  |  | 111.28d → 112.28d |  |  |
| 928 | заправить хладогент | 2026-10-06 09:30 → 2026-10-05 09:30 (-1d) | 2026-10-06 11:30 → 2026-10-05 11:30 (-1d) |  |  | 111.28d → 112.28d |  |  |
| 1172 | **установить водоподготовку на парогенератор** |  |  | 139d? → 140d? |  |  |  |  |
| 1353 | **установить на охладитель ролики + скольжение трубы** |  | 2026-09-28 18:00 → 2026-10-05 18:00 (+7d) | 26d? → 32d? |  | 116.59d → 111.59d |  |  |

| ID | Task | Start | Finish | Duration | Complete | Total float | Other |
| --- | --- | --- | --- | --- | --- | --- | --- |
| 1355 | установить держатели труб | 2026-09-28 09:00 → 2026-10-05 09:00 (+7d) | 2026-09-28 18:00 → 2026-10-05 18:00 (+7d) |  |  | 116.59d → 111.59d | constraint start no earlier than 2026-09-28 09:00 → start no earlier than 2026-10-05 09:00 |
| 1380 | **схема блокировки роль ворот при открытым шлюзе + авт закрытие + датчик препятствия** |  | 2026-09-28 13:00 → 2026-10-05 13:00 (+7d) | 18.5d → 24.5d |  | 117.09d → 112.09d |  |
| 1382 | монтаж | 2026-09-28 09:00 → 2026-10-05 09:00 (+7d) | 2026-09-28 13:00 → 2026-10-05 13:00 (+7d) |  |  | 117.09d → 112.09d | constraint start no earlier than 2026-09-28 09:00 → start no earlier than 2026-10-05 09:00 |
| 1388 | **установить пульты на регулировку шибиров вентиляции** |  |  | 31d? → 32d? |  |  |  |
| 1399 | **разделить воду на ПГ и экструдер** | 2026-09-28 09:00 → 2026-10-05 09:00 (+7d) | 2026-09-28 11:00 → 2026-10-05 11:00 (+7d) |  |  |  |  |
| 1400 | изготовить промежуточную емкость для прекондера, подача воды, сделать по аналогу 3 цеха | 2026-09-28 09:00 → 2026-10-05 09:00 (+7d) | 2026-09-28 11:00 → 2026-10-05 11:00 (+7d) |  |  |  | constraint start no earlier than 2026-09-28 09:00 → start no earlier than 2026-10-05 09:00 |
| 1401 | **отмена** |  |  | 83.31d? → 84.31d? |  |  |  |
| 1402 | **найти места утечки тепла под потолком- перемерзает труба подачи воды в 3 цех** |  |  | 83.31d? → 84.31d? |  |  |  |
| 1417 | **3 цех** |  | 2026-09-30 11:00 → 2026-10-02 16:00 (+2d) | 288.25d? → 291.75d? |  | 115.34d → 112.84d |  |
| 1428 | **Дражжировка** |  |  | 12.25d → 13.25d |  |  |  |
| 1437 | **Разобрать регулировку ножевого узла, достать вал на котором установлен штурвал** | 2026-09-18 09:00 A → 2026-09-21 09:00 A (+3d) | 2026-09-26 10:10 → 2026-09-29 10:00 (+3d) | 8.15d → 8.12d |  | 118.45d → 116.47d |  |
| 1439 | Заявка по образцу | 2026-09-18 09:00 → 2026-09-21 09:00 (+3d) | 2026-09-18 09:20 → 2026-09-21 09:20 (+3d) |  |  | 118.47d → 116.47d | constraint start no earlier than 2026-09-18 09:00 → start no earlier than 2026-09-21 09:00 |
| 1440 | контроль | 2026-09-25 09:00 → 2026-09-27 17:50 (+2d) | 2026-09-25 09:10 → 2026-09-27 18:00 (+2d) |  |  | 118.45d → 116.47d |  |
| 1441 | установка | 2026-09-26 09:10 → 2026-09-29 09:00 (+3d) | 2026-09-26 10:10 → 2026-09-29 10:00 (+3d) |  |  | 118.45d → 116.47d |  |
| 1443 | **Найти и установить жироуловитель с синего склада на жирах мойка** |  |  | 11.12d → 12.12d |  |  |  |
| 1453 | **Гранулы выходили из печи со следами смазки** | 2026-09-25 09:00 → 2026-10-02 09:00 (+7d) | 2026-09-25 13:00 → 2026-10-02 13:00 (+7d) |  |  | 119.09d → 113.09d |  |
| 1454 | (сделать направляющие в печи); | 2026-09-25 09:00 → 2026-10-02 09:00 (+7d) | 2026-09-25 13:00 → 2026-10-02 13:00 (+7d) |  |  | 119.09d → 113.09d | constraint start no earlier than 2026-09-25 09:00 → start no earlier than 2026-10-02 09:00 |
| 1455 | **С двигателя экструдера выдавило много масла;** |  | 2026-09-29 12:15 → 2026-10-02 16:00 (+3d) | 10.41d → 14.75d |  | 116.19d → 112.84d |  |
| 1459 | монтаж датчик в редуктор | 2026-09-26 15:15 → 2026-10-01 09:00 (+5d) | 2026-09-26 17:15 → 2026-10-01 11:00 (+5d) |  |  | 116.19d → 112.84d | constraint start no earlier than 2026-09-18 08:00 → start no earlier than 2026-10-01 09:00 |
| 1460 | подключение датчика в схему - блокировка по уровню | 2026-09-28 17:15 → 2026-10-02 11:00 (+4d) | 2026-09-29 12:15 → 2026-10-02 16:00 (+3d) |  |  | 116.19d → 112.84d |  |
| 1465 | **установить ограничитель на дверь что бы попадала под движение рольворот** | 2026-09-15 09:00 → 2026-09-22 09:00 (+7d) | 2026-09-26 10:00 → 2026-09-28 10:30 (+2d) | 11.12d → 6.19d |  | 118.47d → 117.41d |  |
| 1466 | заявка | 2026-09-15 09:00 → 2026-09-22 09:00 (+7d) | 2026-09-15 09:15 → 2026-09-22 09:15 (+7d) |  |  | 123.41d → 117.41d | constraint start no earlier than 2026-09-15 09:00 → start no earlier than 2026-09-22 09:00 |
| 1467 | контроль доставки | 2026-09-20 09:15 → 2026-09-27 09:15 (+7d) | 2026-09-20 09:30 → 2026-09-27 09:30 (+7d) |  |  | 123.41d → 117.41d |  |
| 1468 | монтаж | 2026-09-26 09:00 → 2026-09-28 09:30 (+2d) | 2026-09-26 10:00 → 2026-09-28 10:30 (+2d) |  |  | 118.47d → 117.41d |  |
| 1486 | **доп мощности для приточной вентиляции** |  | 2026-09-29 18:00 → 2026-09-28 18:00 (-1d) |  |  | 115.59d → 116.59d |  |
| 1491 | монтаж |  | 2026-09-29 18:00 → 2026-09-28 18:00 (-1d) |  |  | 115.59d → 116.59d |  |
| 1493 | **сборка квадропака 3 цех** |  | 2026-09-25 13:00 → 2026-09-30 13:00 (+5d) | 35.5d → 40.5d |  | 119.09d → 115.09d |  |
| 1501 | тест на пакетах | 2026-09-25 09:00 → 2026-09-30 09:00 (+5d) | 2026-09-25 13:00 → 2026-09-30 13:00 (+5d) |  |  | 119.09d → 115.09d | constraint start no earlier than 2026-09-25 09:00 → start no earlier than 2026-09-30 09:00 |
| 1685 | **приточная вентиляция** |  | 2026-09-24 11:00 → 2026-09-29 11:00 (+5d) | 149.25d → 154.25d | 48% → 85% | 120.34d → 116.34d |  |
| 1688 | монтаж изоляционных прокладок вводный автомат между фазами | 2026-09-24 09:00 A | 2026-09-24 11:00 A |  | 0% → 100% | 120.34d → none |  |
| 1689 | подключить нулевой провод шкаф управления | 2026-09-24 09:00 A | 2026-09-24 11:00 A |  | 0% → 100% | 120.34d → none |  |
| 1690 | монтаж перемычек от автомата на ТВ реле . Звонить Дедову | 2026-09-24 09:00 A | 2026-09-24 11:00 A |  | 0% → 100% | 120.34d → none |  |
| 1729 | **5 цех** |  |  | 967.25d? → 968.25d? |  |  |  |
| 1732 | **установить зажим троса на тельфер** |  |  | 27d? → 28d? |  |  |  |
| 1736 | **ремонт насос водоснабжения** |  |  | 66.25d → 67.25d |  |  |  |
| 1744 | **подготовить сетку на мал дробилку 3 и 4мм** |  |  | 16.12d → 17.12d |  |  |  |
| 1754 | **проект новая дробилка** |  | 2026-10-08 09:15 → 2026-10-07 09:15 (-1d) |  |  | 109.56d → 110.56d |  |
| 1755 | **кабель для доп мощности** |  | 2026-10-08 09:15 → 2026-10-07 09:15 (-1d) |  |  | 109.56d → 110.56d |  |
| 1759 | монтаж |  | 2026-10-08 09:15 → 2026-10-07 09:15 (-1d) |  |  | 109.56d → 110.56d |  |
| 1790 | **монтаж тепловые пушки подвесные 5 цех** |  | 2026-09-29 18:00 → 2026-09-30 18:00 (+1d) | 34d → 36d |  | 115.59d → 114.59d |  |
| 1795 | монтаж | 2026-09-28 09:00 → 2026-09-29 09:00 (+1d) | 2026-09-29 18:00 → 2026-09-30 18:00 (+1d) |  |  | 115.59d → 114.59d | constraint start no earlier than 2026-09-28 09:00 → start no earlier than 2026-09-29 09:00 |
| 1822 | **востановить коробку тельфера** |  |  | 179.25d → 180.25d |  |  |  |
| 1999 | проверка черетежей / подготовка к сборке | 2026-09-28 09:00 → 2026-09-29 09:00 (+1d) | 2026-09-28 10:00 → 2026-09-29 10:00 (+1d) |  |  | 115.47d → 114.47d | constraint start no earlier than 2026-09-28 09:00 → start no earlier than 2026-09-29 09:00 |
| 2000 | сборка | 2026-09-28 10:00 → 2026-09-29 10:00 (+1d) | 2026-09-30 10:00 → 2026-10-01 10:00 (+1d) |  |  | 115.47d → 114.47d |  |
| 2023 | **модернизация** |  |  | 981.5d? → 982.5d? |  |  |  |
| 2068 | **качественное нанесение жира тесты** |  |  | 268.5d? → 269.5d? |  |  |  |
| 2178 | **техника** |  |  | 636.03d? → 637.03d? |  |  |  |
| 2180 | **капремонт погрузчика коматсу короткий** |  |  | 49.03d → 50.03d |  |  |  |
| 2226 | сортировка и перемещение мусор / металлолм/ дальние стеллажи |  |  |  |  | 119.34d → 120.34d | resources Некрасов А; Тимофеев В; Труфанов А → Бундин В |
| 2235 | **ЗИП ремонт** |  |  | 641.25d? → 642.25d? | 54% → 53% |  |  |
| 2236 | **Собрать редуктор питателя, который разобранный на верстаке** | 2026-09-25 09:00 → 2026-09-28 09:00 (+3d) | 2026-09-25 11:00 → 2026-10-08 11:45 (+13d) | 2h → 8.34d |  | 119.34d → 109.25d | constraint start no earlier than 2026-09-25 09:00 → none; resources Бундин В → none |
| 2245 | **ремонт редутор печи №?** |  | 2026-10-05 11:30 → 2026-10-02 11:30 (-3d) |  |  | 112.28d → 113.28d |  |
| 2251 | контроль изг шетесиерен | 2026-10-02 09:15 → 2026-10-01 09:15 (-1d) | 2026-10-02 09:30 → 2026-10-01 09:30 (-1d) |  |  | 112.28d → 113.28d |  |
| 2252 | сборка редутор венец | 2026-10-05 09:30 → 2026-10-02 09:30 (-3d) | 2026-10-05 11:30 → 2026-10-02 11:30 (-3d) |  |  | 112.28d → 113.28d |  |
| 2364 | **ремонт датчик расхода пара с линия 3** |  |  | 32.04d → 33.04d |  |  |  |
| 2476 | **ТО** |  | 2026-12-04 11:00 → 2026-12-03 11:00 (-1d) |  | 41% → 43% | 68.34d → 69.34d |  |
| 2616 | **Квадропак** |  |  | 121.12d → 122.12d |  |  |  |
| 2637 | **упаковщкики** |  |  | 429.25d → 430.25d |  |  |  |
| 2679 | **2 цех** |  | 2026-12-04 11:00 → 2026-12-03 11:00 (-1d) |  | 62% → 68% | 68.34d → 69.34d |  |
| 2681 | **прекондицинер экструдера** |  | 2026-09-24 09:15 A |  | 98% → 100% | 120.56d → none |  |
| 2695 | Осмотр подшипников / смазка | 2026-09-24 09:00 A | 2026-09-24 09:15 A |  | 0% → 100% | 120.56d → none |  |
| 2696 | Ревизия масла редуктора | 2026-09-24 09:00 A | 2026-09-24 09:15 A |  | 0% → 100% | 120.56d → none |  |
| 2715 | **привод сетки ПЕЧИ сушки** |  | 2026-12-04 11:00 → 2026-12-03 11:00 (-1d) |  |  | 68.34d → 69.34d |  |
| 2728 | смазка цепей пищ смазкой по графику 3 мес | 2026-12-04 10:00 → 2026-12-03 10:00 (-1d) | 2026-12-04 11:00 → 2026-12-03 11:00 (-1d) |  |  | 68.34d → 69.34d |  |
| 2735 | **смеситель СМ-1500** |  |  | 156.02d → 157.02d |  |  |  |
| 2745 | **нория 2 выгрузки смесителя** |  | 2026-09-24 13:00 A |  | 62% → 100% | 120.09d → none |  |
| 2754 | ремонт стыка ленты - ревитзия, ремонт продлить | 2026-09-24 09:00 A | 2026-09-24 13:00 A |  | 0% → 100% | 120.09d → none | was named ремонт стыка ленты |
| 2755 | **бункер-накопитель с шнековой разкгрузкой синий** |  | 2026-09-24 10:00 A |  | 89% → 100% | 120.47d → none |  |
| 2760 | перенос датчика / доработать лопатки - что бы останавливался раньше, без спресовывания шнеком | 2026-09-24 09:00 A | 2026-09-24 10:00 A |  | 0% → 100% | 120.47d → none |  |
| 2761 | Осмотр | 2026-09-24 09:00 A | 2026-09-24 09:05 A |  | 0% → 100% | 120.58d → none |  |

| ID | Task | Start | Finish | Duration | Complete | Total float | Other |
| --- | --- | --- | --- | --- | --- | --- | --- |
| 2762 | **питатель экструдера** |  |  | 141.12d → 142.12d |  |  |  |
| 2780 | **мотор-редуктор привод шнеков** |  |  |  | 19% → 25% | 120.57d → 121.57d |  |
| 2785 | Проверка масла | 2026-09-24 09:00 A | 2026-09-24 09:10 A |  | 0% → 100% | 120.57d → none |  |
| 2786 | **редуктор шнеков экструдера - проверка масла** |  | 2026-09-24 09:15 A |  | 95% → 100% | 120.56d → none |  |
| 2802 | Чистка фильтра | 2026-09-24 09:00 A | 2026-09-24 09:15 A |  | 0% → 100% | 120.56d → none |  |
| 2803 | **шкаф управления экструдером** |  |  | 156.02d → 157.02d |  |  |  |
| 2815 | **пневотранспорт роторный питатель** |  |  |  | 44% → 52% | 120.55d → 121.55d |  |
| 2820 | Ревизия узлов/масла. Очистка мотора от пыли | 2026-09-24 09:00 A | 2026-09-24 09:20 A |  | 0% → 100% | 120.55d → none |  |
| 2821 | **печь - валы этажей, подшипники, цепи** |  |  | 146.12d → 147.12d | 73% → 82% |  |  |
| 2827 | Контроль редуктора, осмотр, проверка масла | 2026-09-24 09:00 A | 2026-09-24 09:30 A |  | 0% → 100% | 120.53d → none |  |
| 2829 | **вентиляторы обдува сушки** |  |  |  | 10% → 20% | 120.34d → 121.34d |  |
| 2833 | Осмотр, очистка от пыли | 2026-09-24 09:00 A | 2026-09-24 11:00 A |  | 0% → 100% | 120.34d → none |  |
| 2834 | **шкаф управления тэнами сушки главный** |  |  |  | 63% → 93% | 120.34d → 121.34d |  |
| 2845 | Продувка. Замена подогретых жил | 2026-09-24 09:00 A | 2026-09-24 11:00 A |  | 0% → 100% | 120.34d → none |  |
| 2846 | **шкаф управления тэнами твердотельный** |  | 2026-09-24 11:00 A |  | 43% → 100% | 120.34d → none |  |
| 2854 | Продувка. Замена подогретых жил | 2026-09-24 09:00 A | 2026-09-24 11:00 A |  | 0% → 100% | 120.34d → none |  |
| 2855 | **конвейер №1 с печи в дрожировщик** |  | 2026-09-24 09:30 A |  | 84% → 100% | 120.53d → none |  |
| 2863 | очистка валов и ленты / контроль крепления редуктора / состояния подшипника | 2026-09-24 09:00 A | 2026-09-24 09:30 A |  | 0% → 100% | 120.53d → none |  |
| 2882 | **конвейер №2 с дрожировки в охладитель** |  | 2026-09-24 09:30 A |  | 84% → 100% | 120.53d → none |  |
| 2890 | ревизия люфтов, фиксации смазки подшипников | 2026-09-24 09:00 A | 2026-09-24 09:30 A |  | 0% → 100% | 120.53d → none |  |
| 2891 | **охладитель сеточный** |  |  |  | 49% → 64% | 120.34d → 121.34d |  |
| 2905 | Ревизия сетки, контроль роспуска, подогнуть, где что можно, что бы не зацепилось | 2026-09-24 09:00 A | 2026-09-24 10:00 A |  | 0% → 100% | 120.47d → none |  |
| 2906 | Смазка подшипников привод охладителя | 2026-09-24 09:00 A | 2026-09-24 09:30 A |  | 0% → 100% | 120.53d → none |  |
| 2907 | Смазка всех цепей | 2026-09-24 09:00 A | 2026-09-24 11:00 A |  | 0% → 100% | 120.34d → none |  |
| 2908 | **конвейер 3 с охладителя в упаковку** |  |  | 42.03d → 43.03d |  |  |  |
| 2914 | **упаковка** |  | 2026-09-24 10:00 A |  | 92% → 100% | 120.47d → none |  |
| 2921 | запайщик 1 и 2 проверка перемычек/тефлона замена при необходимости | 2026-09-24 09:00 A | 2026-09-24 10:00 A |  | 0% → 100% | 120.47d → none |  |
| 2922 | **квадропак** |  | 2026-09-24 11:00 → 2026-10-01 10:30 (+7d) | 36.25d → 43.19d | 18% → 55% | 120.34d → 114.41d |  |
| 2923 | смазка вращающиющихся механизмов | 2026-09-24 09:00 → 2026-10-01 09:00 (+7d) | 2026-09-24 09:30 → 2026-10-01 09:30 (+7d) |  |  | 120.41d → 114.41d | constraint start no earlier than 2026-09-24 09:00 → start no earlier than 2026-10-01 09:00 |
| 2924 | протяжка креплений поворотных лап захвата | 2026-09-24 09:30 → 2026-10-01 09:30 (+7d) | 2026-09-24 10:00 → 2026-10-01 10:00 (+7d) |  |  | 120.41d → 114.41d |  |
| 2925 | чистка вала ленты выгрзного транспортера | 2026-09-24 10:00 → 2026-10-01 10:00 (+7d) | 2026-09-24 10:30 → 2026-10-01 10:30 (+7d) |  |  | 120.41d → 114.41d |  |
| 2930 | снимать ковши для доступка к подшинику, нуждающего в смазке( сообщил Некрасов) | 2026-09-24 09:00 A | 2026-09-24 11:00 A |  | 0% → 100% | 120.34d → none | resources Некрасов А → Бундин В |
| 2931 | **БЕСТРОМ** |  |  |  | 70% → 80% | 120.34d → 121.34d |  |
| 2946 | Чистка ТЭНов | 2026-09-24 09:00 A | 2026-09-24 11:00 A |  | 0% → 100% | 120.34d → none |  |
| 2980 | **приточнго-вытяжная венгтиляция и смесительный узел** |  | 2026-09-24 09:30 → 2026-10-01 09:30 A (+7d) | 120.06d → 127.06d | 67% → 100% | 120.53d → none |  |
| 2982 | Осмотр состояния фильтра приточки/замена | 2026-09-24 09:00 → 2026-10-01 09:00 A (+7d) | 2026-09-24 09:30 → 2026-10-01 09:30 A (+7d) |  | 0% → 100% | 120.53d → none | constraint start no earlier than 2026-09-24 09:00 → start no earlier than 2026-10-01 09:00 |
| 2983 | **кондиционер 1** |  |  |  | 97% → 99% | 120.55d → 0d |  |
| 2991 | чистка фильтров | 2026-09-24 09:00 A | 2026-09-24 09:20 A |  | 0% → 100% | 120.55d → none |  |
| 2992 | **кондиционер 2** |  |  |  | 97% → 99% | 120.55d → 0d |  |
| 3001 | чистка фильтров | 2026-09-24 09:00 A | 2026-09-24 09:20 A |  | 0% → 100% | 120.55d → none |  |
| 3002 | **кондиционер 3** |  | 2026-09-24 09:20 A |  | 86% → 100% | 120.55d → none |  |
| 3009 | чистка фильтров | 2026-09-24 09:00 A | 2026-09-24 09:20 A |  | 0% → 100% | 120.55d → none |  |
| 3066 | **синий склад** |  |  | 110.38d → 111.38d |  |  |  |
| 3109 | **офис** |  | 2026-09-29 13:00 → 2026-10-07 11:00 (+8d) | 933.5d? → 940.25d? |  | 116.09d → 110.34d |  |
| 3142 | замена регистр отопления нач снабжения | 2026-09-28 09:00 → 2026-10-07 09:00 (+9d) | 2026-09-28 11:00 → 2026-10-07 11:00 (+9d) |  |  | 117.34d → 110.34d | constraint start no earlier than 2026-09-28 09:00 → start no earlier than 2026-10-07 09:00 |
| 3151 | **склад упаковки** |  |  | 135.5d? → 136.5d? |  |  |  |
| 3170 | **РЭФ контейнеры** |  |  | 210.59d? → 211.59d? |  |  |  |
| 3241 | **ТБ** |  |  | 926.25d? → 927.25d? |  |  |  |
| 3268 | **территория** |  | 2026-09-25 18:00 → 2026-10-06 13:00 (+11d) | 422d? → 430.5d? | 71% → 73% | 118.59d → 111.09d |  |
| 3287 | **установить люки колодцев возле на территории** | 2026-09-25 09:00 A |  | 1d → 1d? | 0% → 50% |  | constraint start no earlier than 2026-09-25 09:00 → none; resources Бобренок В; Некрасов А → none |

## Version 16 (saved 2026-09-28, file 07.09.26.mpp)

Last finish stays 2027-03-10. Complete tasks 2284 → 2290.

Added:

| ID | Task | Duration | Start | Finish | Constraint | Resources |
| --- | --- | --- | --- | --- | --- | --- |
| 2 | Проверка весов на 2 линии красный смеситель, со слов валентина, после замены блока питания, работает, а потом выбивает весы, перестают работать | 1h | 2026-09-29 09:00 | 2026-09-29 10:00 | start no earlier than 2026-09-29 09:00 | Дедов В |
| 780 | Изготовить носик на подаче сухого гидролизата под уклоном ближе к барабану | 3h | 2026-09-29 09:00 | 2026-09-29 12:00 | start no earlier than 2026-09-29 09:00 | Тимофеев В |
| 781 | Изготовление рамы на ножках для переноса всего барабана с сухим гидролизатом к нижнему барабану | 4h | 2026-09-29 09:00 | 2026-09-29 13:00 | start no earlier than 2026-09-29 09:00 | Тимофеев В |
| 2224 | Разбор полок на стеллаже, наведенеие порядка | 3h | 2026-09-29 09:00 | 2026-09-29 12:00 | start no earlier than 2026-09-29 09:00 | Некрасов А; Труфанов А |
| 2225 | Ремонт электродов парогенератора | 3h | 2026-09-28 09:00 | 2026-09-28 12:00 | start no earlier than 2026-09-28 08:00 | Бобренок В |
| 3073 | Монтаж доп освещения | 2h | 2026-09-26 09:00 A | 2026-09-26 11:00 A | start no earlier than 2026-09-26 09:00 | Бобренок В |
| 3158 | Повесить доп светильники 3 шт (спросить у Лехи, где нужны) | 3h | 2026-10-02 09:00 | 2026-10-02 12:00 | start no earlier than 2026-10-02 09:00 | Труфанов А; Некрасов А |
| 3164 | Замена тэна на бойлере | 1h | 2026-09-28 09:00 | 2026-09-28 10:00 | start no earlier than 2026-09-28 08:00 | Бобренок В |
| 3277 | Накачать котлы на всех узлах отопления | 4h | 2026-09-28 09:00 | 2026-09-28 13:00 | start no earlier than 2026-09-28 08:00 | Бобренок В |

Changed:

| ID | Task | Start | Finish | Duration | Complete | Total float | Other |
| --- | --- | --- | --- | --- | --- | --- | --- |
| 4 | замеры в точках выброса вентиляции с проедставителем | 2026-09-28 09:00 → 2026-09-29 09:00 (+1d) | 2026-09-28 16:00 → 2026-09-29 16:00 (+1d) |  |  | 116.84d → 115.84d | constraint start no earlier than 2026-09-28 09:00 → start no earlier than 2026-09-29 09:00 |
| 15 | **ремонт весов смеситель 1 линия** |  | 2026-09-25 10:00 A |  | 50% → 100% | 120.47d → none |  |
| 17 | подключить блок питания найти на складе | 2026-09-25 09:00 A | 2026-09-25 10:00 A |  | 0% → 100% | 120.47d → none |  |
| 98 | **продумать как сделать герметичную крышку на смесителе сухого гидрализата** |  | 2026-09-29 11:00 → 2026-10-06 11:00 (+7d) | 30.25d → 35.25d |  | 116.34d → 111.34d |  |
| 102 | установка на струбцинах с уплотнителями | 2026-09-29 09:00 → 2026-10-06 09:00 (+7d) | 2026-09-29 11:00 → 2026-10-06 11:00 (+7d) |  |  | 116.34d → 111.34d | constraint start no earlier than 2026-09-29 09:00 → start no earlier than 2026-10-06 09:00 |
| 141 | **палетообмостчик монтаж в 1ц** |  | 2026-09-29 12:00 → 2026-10-05 12:00 (+6d) | 41.38d → 45.38d |  | 116.22d → 112.22d |  |
| 148 | монтаж | 2026-09-29 09:00 → 2026-10-05 09:00 (+6d) | 2026-09-29 12:00 → 2026-10-05 12:00 (+6d) |  |  | 116.22d → 112.22d | constraint start no earlier than 2026-09-29 09:00 → start no earlier than 2026-10-05 09:00 |
| 212 | **сборка дозатор на квадропак** |  | 2026-09-30 10:00 → 2026-10-02 13:00 (+2d) | 66.12d → 68.5d |  | 115.47d → 113.09d |  |
| 229 | сборка дозатор | 2026-09-28 09:00 A → 2026-09-25 09:00 A (-3d) | 2026-09-28 11:00 A → 2026-09-25 11:00 A (-3d) |  |  |  |  |
| 233 | увеличить доп пружины, сжались ноль | 2026-09-28 09:00 → 2026-10-02 09:00 (+4d) | 2026-09-28 13:00 → 2026-10-02 13:00 (+4d) |  |  | 117.09d → 113.09d | constraint start no earlier than 2026-09-28 09:00 → start no earlier than 2026-10-02 09:00 |
| 235 | закрыть металлом пустые места между площадками квадропак и дозатор | 2026-09-29 09:00 → 2026-09-30 09:00 (+1d) | 2026-09-29 11:00 → 2026-09-30 11:00 (+1d) |  |  | 116.34d → 115.34d | constraint start no earlier than 2026-09-29 09:00 → start no earlier than 2026-09-30 09:00 |
| 313 | **установить резервную трубку/штангу с форсункой на подачу жира** |  | 2026-10-08 18:00 → 2026-10-12 18:00 (+4d) | 29d → 31d |  | 108.59d → 106.59d |  |
| 316 | монтаж спец кронштенна | 2026-09-29 09:00 → 2026-10-01 09:00 (+2d) | 2026-09-29 10:00 → 2026-10-01 10:00 (+2d) |  |  | 108.59d → 106.59d | constraint start no earlier than 2026-09-29 09:00 → start no earlier than 2026-10-01 09:00 |
| 317 | заявка фитинги / тройники / краны / трубка | 2026-09-29 10:00 → 2026-10-01 10:00 (+2d) | 2026-09-29 11:00 → 2026-10-01 11:00 (+2d) |  |  | 108.59d → 106.59d |  |
| 318 | доставка контроль | 2026-10-06 11:00 → 2026-10-08 11:00 (+2d) | 2026-10-06 11:00 → 2026-10-08 11:00 (+2d) |  |  | 108.59d → 106.59d |  |
| 319 | сборка в мастерской | 2026-10-07 11:00 → 2026-10-09 11:00 (+2d) | 2026-10-07 16:00 → 2026-10-09 16:00 (+2d) |  |  | 108.59d → 106.59d |  |
| 320 | монтаж на линию | 2026-10-08 16:00 → 2026-10-12 16:00 (+4d) | 2026-10-08 18:00 → 2026-10-12 18:00 (+4d) |  |  | 108.59d → 106.59d |  |
| 782 | изготовить ножки на бункер нории БЕСТРОМ | 2026-09-26 09:00 A | 2026-09-26 12:00 A |  | 0% → 100% | 119.22d → none |  |
| 791 | Сделать ручки и щеколду для мусорки на улице | 2026-09-25 09:00 A | 2026-09-25 10:00 A |  | 0% → 100% | 120.47d → none |  |
| 1420 | **3 цех** |  | 2026-10-02 16:00 → 2026-10-06 13:00 (+4d) | 291.75d? → 293.5d? |  | 112.84d → 111.09d |  |
| 1421 | сопряжение круглой входной воронки в экструдер с квадратом выхода прекондиционера как в 2ц | 2026-09-26 09:00 → 2026-10-02 09:00 (+6d) | 2026-09-26 15:00 → 2026-10-02 15:00 (+6d) |  |  | 118.97d → 112.97d | constraint start no earlier than 2026-09-26 09:00 → start no earlier than 2026-10-02 09:00 |
| 1440 | **Разобрать регулировку ножевого узла, достать вал на котором установлен штурвал** |  | 2026-09-29 10:00 → 2026-10-05 10:00 (+6d) | 8.12d → 12.12d |  | 116.47d → 112.47d |  |
| 1443 | контроль | 2026-09-27 17:50 → 2026-09-28 09:00 (+1d) | 2026-09-27 18:00 → 2026-09-28 09:10 (+1d) |  |  | 116.47d → 116.45d | constraint start no earlier than 2026-09-25 09:00 → start no earlier than 2026-09-28 09:00 |
| 1444 | установка | 2026-09-29 09:00 → 2026-10-05 09:00 (+6d) | 2026-09-29 10:00 → 2026-10-05 10:00 (+6d) |  |  | 116.47d → 112.47d | constraint none → start no earlier than 2026-10-05 09:00 |
| 1446 | **Найти и установить жироуловитель с синего склада на жирах мойка** |  | 2026-09-28 10:00 → 2026-10-02 10:00 (+4d) | 12.12d → 16.12d |  | 117.47d → 113.47d |  |
| 1450 | Монтаж | 2026-09-28 09:00 → 2026-10-02 09:00 (+4d) | 2026-09-28 10:00 → 2026-10-02 10:00 (+4d) |  |  | 117.47d → 113.47d | constraint start no earlier than 2026-09-28 09:00 → start no earlier than 2026-10-02 09:00 |
| 1452 | Перенести регулировку подачи жира, ближе к барабанам. Перенос частотник на раму барабанов | 2026-09-29 09:00 → 2026-10-06 09:00 (+7d) | 2026-09-29 13:00 → 2026-10-06 13:00 (+7d) |  |  | 116.09d → 111.09d | constraint start no earlier than 2026-09-29 09:00 → start no earlier than 2026-10-06 09:00 |
| 1468 | **установить ограничитель на дверь что бы попадала под движение рольворот** |  | 2026-09-28 10:30 → 2026-09-29 10:15 (+1d) | 6.19d → 7.16d |  | 117.41d → 116.44d |  |
| 1470 | контроль доставки | 2026-09-27 09:15 → 2026-09-28 09:00 (+1d) | 2026-09-27 09:30 → 2026-09-28 09:15 (+1d) |  |  | 117.41d → 116.44d | constraint start no earlier than 2026-09-03 08:00 → start no earlier than 2026-09-28 09:00 |
| 1471 | монтаж | 2026-09-28 09:30 → 2026-09-29 09:15 (+1d) | 2026-09-28 10:30 → 2026-09-29 10:15 (+1d) |  |  | 117.41d → 116.44d |  |
| 1747 | **подготовить сетку на мал дробилку 3 и 4мм** |  | 2026-09-29 10:00 → 2026-09-23 10:00 A (-6d) | 17.12d → 11.12d | 33% → 100% | 116.47d → none |  |
| 1749 | вырезатиь сетку в размер | 2026-09-29 09:00 → 2026-09-23 09:00 A (-6d) | 2026-09-29 10:00 → 2026-09-23 10:00 A (-6d) |  | 0% → 100% | 116.47d → none |  |
| 1793 | **монтаж тепловые пушки подвесные 5 цех** |  | 2026-09-30 18:00 → 2026-10-06 18:00 (+6d) | 36d → 40d |  | 114.59d → 110.59d |  |
| 1798 | монтаж | 2026-09-29 09:00 → 2026-10-05 09:00 (+6d) | 2026-09-30 18:00 → 2026-10-06 18:00 (+6d) |  |  | 114.59d → 110.59d | constraint start no earlier than 2026-09-29 09:00 → start no earlier than 2026-10-05 09:00 |
| 2002 | проверка черетежей / подготовка к сборке | 2026-09-29 09:00 → 2026-10-06 09:00 (+7d) | 2026-09-29 10:00 → 2026-10-06 10:00 (+7d) |  |  | 114.47d → 109.47d | constraint start no earlier than 2026-09-29 09:00 → start no earlier than 2026-10-06 09:00 |
| 2003 | сборка | 2026-09-29 10:00 → 2026-10-06 10:00 (+7d) | 2026-10-01 10:00 → 2026-10-08 10:00 (+7d) |  |  | 114.47d → 109.47d | constraint start no earlier than 2026-09-22 09:00 → start no earlier than 2026-10-05 09:00 |
| 2223 | **слесарное помещение** |  | 2026-09-25 11:00 → 2026-09-29 12:00 (+4d) | 81.25d? → 85.38d? | 88% → 76% | 120.34d → 116.22d |  |
| 2226 | **уборка и сортировка. Приготовить, дневные проверят и продолжат** |  | 2026-09-25 11:00 A |  | 78% → 100% | 120.34d → none |  |
| 2231 | сортировка и перемещение мусор / металлолм/ дальние стеллажи | 2026-09-25 09:00 A | 2026-09-25 11:00 A |  | 0% → 100% | 120.34d → none |  |
| 3071 | **синий склад** |  |  |  | 48% → 52% |  |  |
| 3146 | выбивает автомат у Монича, нет селективности, замена автоматов. Ремонт освещения корридор |  |  |  |  |  | resources Тимофеев В; Дедов В → Дедов В |
| 3157 | **склад упаковки** |  | 2026-09-30 13:00 → 2026-10-02 12:00 (+2d) | 136.5d? → 138.38d? | 98% → 97% | 115.09d → 113.22d |  |
| 3163 | **установить бойлер** |  | 2026-06-16 11:00 A → 2026-09-28 10:00 (+104d) | 11.25d → 92.12d | 100% → 89% | none → 117.47d |  |
| 3276 | **территория** |  |  |  | 73% → 71% |  |  |

## Version 17 (saved 2026-09-29, file 07.09.26.mpp)

Last finish stays 2027-03-10. Complete tasks 2290 → 2302.

Added:

| ID | Task | Duration | Start | Finish | Constraint | Resources |
| --- | --- | --- | --- | --- | --- | --- |
| 2 | Монтаж трассы слива в раковину с рекурператоров | 7h | 2026-09-30 09:00 | 2026-09-30 17:00 | start no earlier than 2026-09-30 09:00 | Труфанов А; Некрасов А |
| 781 | Повесить полочки с образцами в места отмеченные крестиком (фото у зорькина), связаться с мастером, он покажет | 1h | 2026-09-29 09:00 | 2026-09-29 10:00 | start no earlier than 2026-09-29 08:00 | Бундин В |
| 782 | Продуть всю вентиляшку на жирах с люльки | 2h | 2026-09-29 09:00 | 2026-09-29 11:00 | start no earlier than 2026-09-29 08:00 | Бундин В |
| 2501 | Проверка фильтра, по необходимости замена | 1h | 2026-09-30 09:00 | 2026-09-30 10:00 | start no earlier than 2026-09-30 09:00 | Дедов В |
| 2507 | проверка гидроаккумулятора | 10min | 2026-09-30 09:00 | 2026-09-30 09:10 | start no earlier than 2026-09-30 09:00 | Тимофеев В |
| 2516 | Ревизия питателя, контроль состояния подшипников/втулки/шестерен/втулки | 30min | 2026-09-30 09:00 | 2026-09-30 09:30 | start no earlier than 2026-09-30 09:00 | Тимофеев В |
| 2521 | контроль привода, подшипников/при необходимости замена | 15min | 2026-09-30 09:00 | 2026-09-30 09:15 | start no earlier than 2026-09-30 09:00 | Тимофеев В |
| 2531 | вскрытие электородов, чистка (при остановке линии на мойку, если не остановилась, передать по смене Тимофееву) | 1h | 2026-09-29 09:00 | 2026-09-29 10:00 | start no earlier than 2026-09-29 09:00 | Бундин В; Тимофеев В |
| 2540 | Чистка фильтра/тэны и термопары шнеков - протяжка | 30min | 2026-09-30 09:00 | 2026-09-30 09:30 | start no earlier than 2026-09-30 09:00 | Тимофеев В |
| 2546 | частотные привода экструдера, ножей, питателя - продувка | 15min | 2026-09-30 09:00 | 2026-09-30 09:15 | start no earlier than 2026-09-30 09:00 | Тимофеев В |
| 2551 | ревизия/ проверка токов | 15min | 2026-09-30 09:00 | 2026-09-30 09:15 | start no earlier than 2026-09-30 09:00 | Тимофеев В |
| 2558 | Осмотр, продувка, протяжка контактов | 20min | 2026-09-30 09:00 | 2026-09-30 09:20 | start no earlier than 2026-09-30 09:00 | Тимофеев В |
| 2563 | Дефектовка - проверить подачу, вибрации, посторонние шумы/проверка фильтров/насосов/фитингов | 15min | 2026-09-30 09:00 | 2026-09-30 09:15 | start no earlier than 2026-09-30 09:00 | Тимофеев В |
| 2577 | Контроль состояния сетки/цепи | 1h | 2026-09-30 09:00 | 2026-09-30 10:00 | start no earlier than 2026-09-30 09:00 | Тимофеев В |
| 2578 | Проверка масла на приводе/осмотр | 30min | 2026-09-30 09:00 | 2026-09-30 09:30 | start no earlier than 2026-09-30 09:00 | Тимофеев В |
| 2588 | Ревизия питателя, контроль состояния подшипников/втулки/шестерен | 30min | 2026-09-30 09:00 | 2026-09-30 09:30 | start no earlier than 2026-09-30 09:00 | Дедов В |
| 2593 | контроль привода, подшипников | 15min | 2026-09-30 09:00 | 2026-09-30 09:15 | start no earlier than 2026-09-30 09:00 | Дедов В |
| 2600 | вскрытие электородов, чистка (при остановке линии на мойку, если не остановилась, передать по смене Дедову) | 1h | 2026-09-29 09:00 | 2026-09-29 10:00 | start no earlier than 2026-09-29 08:00 | Бундин В; Дедов В |
| 2607 | частотные привода экструдера, ножей, питателя - продувка | 15min | 2026-09-30 09:00 | 2026-09-30 09:15 | start no earlier than 2026-09-30 09:00 | Дедов В |
| 2615 | Чистка фильтра/тэны и термопары шнеков - протяжка | 30min | 2026-09-30 09:00 | 2026-09-30 09:30 | start no earlier than 2026-09-30 09:00 | Дедов В |
| 2620 | Ревизия, проверка жил, проверка токов | 20min | 2026-09-30 09:00 | 2026-09-30 09:20 | start no earlier than 2026-09-30 09:00 | Дедов В |
| 2631 | ревизия/ проверка токов/протяжка контактов | 15min | 2026-09-30 09:00 | 2026-09-30 09:15 | start no earlier than 2026-09-30 09:00 | Дедов В |
| 2636 | Установить дополнительные пружины на дозатор | 1h | 2026-09-30 09:00 | 2026-09-30 10:00 | start no earlier than 2026-09-30 09:00 | Труфанов А; Некрасов А |
| 2653 | Дефектовка - проверить подачу, вибрации, посторонние шумы/проверка фильтров/насосов/фитингов | 15min | 2026-09-30 09:00 | 2026-09-30 09:15 | start no earlier than 2026-09-30 09:00 | Дедов В |
| 2682 | продувка радиаторов осушителя и компрессора, слив конденсата | 1h | 2026-09-30 09:00 | 2026-09-30 10:00 | start no earlier than 2026-09-30 09:00 | Дедов В |
| 2687 | осушитель 1 цех/слить конденсат | 20min | 2026-09-30 09:00 | 2026-09-30 09:20 | start no earlier than 2026-09-30 09:00 | Дедов В |
| 2720 | Ревизия масла редуктора/осмотр подшипников/ смазка при необходимости | 15min | 2026-09-29 09:00 | 2026-09-29 09:15 | start no earlier than 2026-09-29 08:00 | Бундин В |
| 2739 | Чистка | 1h | 2026-09-29 09:00 | 2026-09-29 10:00 | start no earlier than 2026-09-29 08:00 |  |
| 2754 | прорверка масла редуктор / натяжка цепи/ ремень/осмотр сетки | 30min | 2026-09-29 09:00 | 2026-09-29 09:30 | start no earlier than 2026-09-29 08:00 |  |
| 2761 | ревизия перемычек | 1h | 2026-09-29 09:00 | 2026-09-29 10:00 | start no earlier than 2026-09-29 08:00 |  |
| 2807 | Осмотр подшипников, муфты, шестерен | 20min | 2026-09-29 09:00 | 2026-09-29 09:20 | start no earlier than 2026-09-29 08:00 | Бундин В |
| 2814 | Проверка масла | 10min | 2026-09-29 09:00 | 2026-09-29 09:10 | start no earlier than 2026-09-29 08:00 | Бундин В |
| 2832 | Чистка фильтра | 15min | 2026-09-29 09:00 | 2026-09-29 09:15 | start no earlier than 2026-09-29 08:00 | Бундин В |
| 2859 | Контроль редуктора, осмотр, проверка масла | 30min | 2026-09-29 09:00 | 2026-09-29 09:30 | start no earlier than 2026-09-29 08:00 | Бундин В |
| 2877 | протяжка контактов, продувка шкафа, частотного привода | 10min | 2026-09-29 09:00 | 2026-09-29 09:10 | start no earlier than 2026-09-29 08:00 |  |
| 2887 | Продувка | 10min | 2026-09-29 09:00 | 2026-09-29 09:10 | start no earlier than 2026-09-29 08:00 | Бундин В |
| 2909 | Осмотр подшипников редукторов | 15min | 2026-09-29 09:00 | 2026-09-29 09:15 | start no earlier than 2026-09-29 08:00 | Бундин В |
| 2910 | Осмотр соединений фитингов, трехходового крана бежит/не бежит | 10min | 2026-09-29 09:00 | 2026-09-29 09:10 | start no earlier than 2026-09-29 08:00 | Бундин В |
| 2917 | Осмотр/ревизия насоса гидролизата, проверка всех соединений | 10min | 2026-09-29 09:00 | 2026-09-29 09:10 | start no earlier than 2026-09-29 08:00 | Бундин В |
| 2944 | Ремонт уголка на охладителе, позвонить мне, перешлю видео | 30min | 2026-09-29 09:00 | 2026-09-29 09:30 | start no earlier than 2026-09-29 08:00 | Бундин В |

Removed: 2553 конвейер №2 с дрожировки в охладитель - проверка подшипники , редуктор; 2554 охладитель сеточный - смазка, натяжка цепи. Проверка редуктор; 2556 смеситель СМ-500; 2557 шнек выгрузки смесителя; 2558 электромотор экструдера; 2559 редуктор шнеков экструдера; 2560 чистка фильтр редутор шнеков; 2566 насос подачи жира и смесительный узел, баки подогрева протяжка; 2568 проверка передаточн число редуктора/сравнить с 2л. Проверить остатки для замены на менее скоростной

Changed:

| ID | Task | Start | Finish | Duration | Complete | Total float | Other |
| --- | --- | --- | --- | --- | --- | --- | --- |
| 5 | замеры в точках выброса вентиляции с проедставителем | 2026-09-29 09:00 A | 2026-09-29 16:00 A |  | 0% → 100% | 115.84d → none |  |
| 160 | объеденить минус шину контроллера с нулевым проводом оборудования ч/з резистор 10 Ом |  |  |  |  |  | resources Труфанов А → Дедов В |
| 887 | **утепление стены** |  | 2026-09-30 18:00 → 2026-10-02 18:00 (+2d) | 29d? → 31d? |  | 114.59d → 112.59d |  |
| 891 | монтаж утеплитель и листы | 2026-09-30 09:00 → 2026-10-02 09:00 (+2d) | 2026-09-30 18:00 → 2026-10-02 18:00 (+2d) |  |  | 114.59d → 112.59d | constraint start no earlier than 2026-09-30 09:00 → start no earlier than 2026-10-02 09:00 |
| 1500 | **сборка квадропака 3 цех** |  | 2026-09-30 13:00 → 2026-10-05 13:00 (+5d) | 40.5d → 43.5d |  | 115.09d → 112.09d |  |
| 1508 | тест на пакетах | 2026-09-30 09:00 → 2026-10-05 09:00 (+5d) | 2026-09-30 13:00 → 2026-10-05 13:00 (+5d) |  |  | 115.09d → 112.09d | constraint start no earlier than 2026-09-30 09:00 → start no earlier than 2026-10-05 09:00 |
| 2227 | **слесарное помещение** |  | 2026-09-29 12:00 → 2026-10-02 12:00 (+3d) | 85.38d? → 88.38d? |  | 116.22d → 113.22d |  |
| 2228 | Разбор полок на стеллаже, наведенеие порядка | 2026-09-29 09:00 → 2026-10-02 09:00 (+3d) | 2026-09-29 12:00 → 2026-10-02 12:00 (+3d) |  |  | 116.22d → 113.22d | constraint start no earlier than 2026-09-29 09:00 → start no earlier than 2026-10-02 09:00 |
| 2485 | **ТО** |  |  |  | 43% → 45% |  |  |
| 2486 | **1 цех** |  |  |  | 54% → 60% |  |  |
| 2496 | ТО ШУ печи №1 (замена кабеля, наконечников…) | 2026-08-27 09:00 A | 2026-08-27 10:00 A |  | 0% → 100% | 146.47d → none |  |
| 2497 | **приточная вентиляция** |  | 2026-07-29 10:00 A → 2026-09-30 10:00 (+63d) | 105.12d → 157.12d | 100% → 75% | none → 115.47d |  |
| 2502 | **техническая вода** |  | 2026-05-27 09:30 A → 2026-09-30 09:10 (+126d) | 55.06d → 152.02d | 100% → 89% | none → 115.57d |  |
| 2508 | **линия 1** |  | 2026-09-23 09:30 A → 2026-09-30 09:30 (+7d) | 140.06d? → 147.06d? | 100% → 93% | none → 115.53d |  |
| 2509 | **питатель экструдера** |  | 2026-09-23 09:30 A → 2026-09-30 09:30 (+7d) | 140.06d? → 147.06d? | 100% → 95% | none → 115.53d |  |
| 2517 | **прекондицинер экструдера** |  | 2026-09-23 09:15 A → 2026-09-30 09:15 (+7d) | 100.03d → 107.03d | 100% → 75% | none → 115.56d |  |
| 2522 | **парогенератор** |  | 2026-09-22 10:00 A → 2026-09-29 10:00 (+7d) | 124.12d → 131.12d | 100% → 92% | none → 116.47d |  |
| 2532 | **редуктор экструдера и маслянная станция** | 2024-04-04 09:00 A → 2024-05-07 09:00 A (+33d) | 2026-09-23 10:00 → 2026-09-30 10:00 (+7d) | 649.12d → 633.12d | 43% → 72% | 122.47d → 115.47d |  |
| 2536 | тэны и термпары шнеков- прортяжка |  |  |  |  |  | was named тэны и термпоры шнеков- прортяжка |
| 2541 | **шкаф управления экструдером** |  | 2026-09-23 09:15 A → 2026-09-30 09:15 (+7d) | 131.03d → 138.03d | 100% → 86% | none → 115.56d |  |
| 2547 | **блок тэнов сушки** |  | 2026-09-23 09:15 → 2026-09-30 09:15 (+7d) | 95.03d → 102.03d | 83% → 71% | 122.56d → 115.56d |  |
| 2559 | **барабан смесительный дрожировка - прорверка подшипнки , реуктор** |  | 2026-09-23 09:15 A → 2026-09-30 09:15 (+7d) | 150.03d → 157.03d | 100% → 91% | none → 115.56d |  |
| 2567 | вентиляторы обдува сушки | 2024-06-14 09:00 A | 2024-06-14 11:00 A |  | 0% → 100% | 720.34d → none |  |
| 2568 | пневотранспорт вентилятор | 2024-05-07 09:00 A | 2024-05-07 11:00 A |  | 0% → 100% | 748.34d → none |  |
| 2569 | пневотранспорт роторный питатель - проверка масла | 2025-02-17 09:00 A | 2025-02-17 09:30 A |  | 0% → 100% | 544.53d → none |  |
| 2571 | привод сетки ПЕЧИ сушки - прорверка масла | 2025-02-17 09:00 A | 2025-02-17 09:30 A |  | 0% → 100% | 544.53d → none |  |
| 2579 | **линия 2** |  |  |  | 72% → 80% |  |  |
| 2580 | **питатель экструдера** |  | 2026-09-23 09:30 A → 2026-09-30 09:30 (+7d) | 140.06d → 147.06d | 100% → 91% | none → 115.53d |  |
| 2589 | **прекондицинер экструдера** |  | 2026-09-23 09:15 A → 2026-09-30 09:15 (+7d) | 100.03d → 107.03d | 100% → 75% | none → 115.56d |  |
| 2601 | **шкаф управления экструдером** |  | 2026-09-23 09:15 A → 2026-09-30 09:15 (+7d) | 145.03d → 152.03d | 100% → 88% | none → 115.56d |  |
| 2608 | **редуктор экструдера и маслянная станция** |  | 2026-09-23 10:00 A → 2026-09-30 09:30 (+7d) | 95.12d → 102.06d | 100% → 88% | none → 115.53d |  |
| 2616 | **блок тэнов сушки - протяжка** |  | 2026-09-23 15:00 → 2026-09-30 09:20 (+7d) | 95.62d? → 102.04d? | 67% → 65% | 121.97d → 115.55d |  |
| 2625 | конвейер №1 с печи в дрожировщик прорверка подшипники, реуктор | 2024-10-04 09:00 A | 2024-10-04 09:30 A |  | 0% → 100% | 640.53d → none |  |
| 2626 | барабан смесительный дрожировка - прорверка подшипнки , реуктор | 2024-10-04 09:00 A | 2024-10-04 09:30 A |  | 0% → 100% | 640.53d → none |  |
| 2627 | конвейер №2 с дрожировки в охладитель - проверка подшипники , редуктор | 2024-10-04 09:00 A | 2024-10-04 09:30 A |  | 0% → 100% | 640.53d → none |  |
| 2629 | вентиляторы обдува сушки | 2024-06-14 09:00 A | 2024-06-14 11:00 A |  | 0% → 100% | 720.34d → none |  |
| 2630 | дозатор сухой гидролизат - разборка, чистка, замена подшипников | 2026-08-20 09:00 A | 2026-08-20 11:00 A |  | 0% → 100% | 151.34d → none |  |
| 2635 | **Квадропак** |  |  |  | 90% → 82% |  |  |
| 2649 | **Дражжировка** |  | 2026-08-27 11:00 → 2026-09-30 09:15 (+34d) | 0.25d → 31.03d |  | 146.34d → 115.56d |  |
| 2672 | Осмотр всех упаковщиков/транспортеров/накопительных столов/ всех щитков оборудования |  |  |  |  |  | resources Тимофеев В → Тимофеев В; Дедов В |
| 2673 | **электрооборудование** |  | 2026-08-31 10:00 → 2026-09-30 10:00 (+30d) | 627.12d? → 656.12d? | 12% → 11% | 144.47d → 115.47d |  |
| 2680 | **Компрессор 1 цех** |  | 2026-08-31 10:00 → 2026-09-30 10:00 (+30d) | 60.12d? → 89.12d? | 20% → 18% | 144.47d → 115.47d |  |
| 2704 | **прекондицинер экструдера** |  | 2026-09-24 09:15 A → 2026-09-29 09:15 (+5d) | 640.03d? → 645.03d? | 100% → 99% | none → 116.56d |  |
| 2721 | **парогенератор** |  | 2026-09-23 10:00 → 2026-09-29 10:00 (+6d) | 639d → 645d | 94% → 95% | 122.47d → 116.47d |  |
| 2738 | Чистка | 2026-09-23 09:00 A | 2026-09-23 10:00 A |  | 0% → 100% | 122.47d → none |  |
| 2740 | **привод сетки ПЕЧИ сушки** |  |  |  | 89% → 84% |  |  |
| 2755 | **блок тэнов сушки** |  | 2026-08-13 10:00 A → 2026-09-29 10:00 (+47d) | 605.12d → 645.12d | 100% → 89% | none → 116.47d |  |
| 2762 | **смеситель СМ-1500** |  | 2026-10-01 09:10 → 2026-09-29 09:10 (-2d) | 157.02d → 155.02d |  | 114.57d → 116.57d |  |
| 2771 | Осмотр подшипников/контроль масла | 2026-10-01 09:00 → 2026-09-29 09:00 (-2d) | 2026-10-01 09:10 → 2026-09-29 09:10 (-2d) |  |  | 114.57d → 116.57d | constraint start no earlier than 2026-10-01 09:00 → start no earlier than 2026-09-29 09:00; resources Тимофеев В → Бундин В |
| 2789 | **питатель экструдера** |  | 2026-10-01 10:00 → 2026-09-29 10:00 (-2d) | 142.12d → 140.12d |  | 114.47d → 116.47d |  |
| 2799 | Ревизия шестерен и подшипников | 2026-10-01 09:00 → 2026-09-29 09:00 (-2d) | 2026-10-01 10:00 → 2026-09-29 10:00 (-2d) |  |  | 114.47d → 116.47d | constraint start no earlier than 2026-10-01 09:00 → start no earlier than 2026-09-29 09:00; resources Тимофеев В → Бундин В |
| 2800 | **привод прекондиционера** |  | 2026-09-17 09:20 A → 2026-09-29 09:20 (+12d) | 143.04d → 155.04d | 100% → 94% | none → 116.55d |  |
| 2808 | **мотор-редуктор привод шнеков** |  | 2026-09-24 09:10 → 2026-09-29 09:10 (+5d) | 30.02d → 35.02d | 25% → 24% | 121.57d → 116.57d |  |
| 2815 | **редуктор шнеков экструдера - проверка масла** |  | 2026-09-24 09:15 A → 2026-09-29 09:15 (+5d) | 423.03d → 428.03d | 100% → 96% | none → 116.56d |  |
| 2833 | **шкаф управления экструдером** |  | 2026-10-01 09:10 → 2026-09-29 09:10 (-2d) | 157.02d → 155.02d |  | 114.57d → 116.57d |  |
| 2844 | продувка частотного привода | 2026-10-01 09:00 → 2026-09-29 09:00 (-2d) | 2026-10-01 09:10 → 2026-09-29 09:10 (-2d) |  |  | 114.57d → 116.57d | constraint start no earlier than 2026-10-01 09:00 → start no earlier than 2026-09-29 09:00; resources Некрасов А → Бундин В |
| 2851 | **печь - валы этажей, подшипники, цепи** |  |  |  | 82% → 75% |  |  |
| 2865 | **шкаф управления тэнами сушки главный** |  | 2026-09-24 11:00 → 2026-09-29 09:10 (+5d) | 150.25d → 155.02d | 93% → 90% | 121.34d → 116.57d |  |
| 2878 | **шкаф управления тэнами твердотельный** |  | 2026-09-24 11:00 A → 2026-09-29 09:10 (+5d) | 150.25d → 155.02d | 100% → 95% | none → 116.57d |  |
| 2897 | **барабан смесительный дрожировка** |  | 2026-09-18 09:10 → 2026-09-29 09:15 (+11d) | 714.02d → 725.03d | 81% → 78% | 127.57d → 116.56d |  |
| 2911 | **Узел подачи гидролизата** |  | 2026-09-17 10:00 A → 2026-09-29 09:10 (+12d) | 50.12d → 62.02d | 100% → 96% | none → 116.57d |  |
| 2927 | **охладитель сеточный** |  | 2026-09-24 11:00 → 2026-09-29 09:30 (+5d) | 640.25d? → 645.06d? | 64% → 63% | 121.34d → 116.53d |  |
| 3189 | **склад упаковки** |  | 2026-10-02 12:00 → 2026-10-06 13:00 (+4d) | 138.38d? → 140.5d? |  | 113.22d → 111.09d |  |
| 3191 | переделать крепление рамы наруж блока - к МК задния, анкера убрать | 2026-09-30 09:00 → 2026-10-06 09:00 (+6d) | 2026-09-30 13:00 → 2026-10-06 13:00 (+6d) |  |  | 115.09d → 111.09d | constraint start no earlier than 2026-09-30 09:00 → start no earlier than 2026-10-06 09:00 |

## Version 18 (saved 2026-09-30, file 07.09.26.mpp)

Last finish stays 2027-03-10. Complete tasks 2302 → 2306.

Added:

| ID | Task | Duration | Start | Finish | Predecessors | Constraint | Resources |
| --- | --- | --- | --- | --- | --- | --- | --- |
| 2 | **сборка рама для труб приточной вентиляции** | 14.03d? | 2026-10-02 09:00 | 2026-10-22 09:15 |  |  |  |
| 3 | составить проект рамы | 4h | 2026-10-02 09:00 | 2026-10-02 13:00 |  | start no earlier than 2026-10-02 09:00 | Домоводов К |
| 4 | заявка металл | 4h | 2026-10-02 14:00 | 2026-10-02 18:00 | 3 | start no earlier than 2026-09-30 08:00 | Домоводов К |
| 5 | контроль доставка | 15min | 2026-10-19 09:00 | 2026-10-19 09:15 | 4FS+10d | start no earlier than 2026-09-30 08:00 | Зорькин В |
| 6 | сборка рама на земле | 2d | 2026-10-19 09:15 | 2026-10-21 09:15 | 5 | start no earlier than 2026-09-30 08:00 | Труфанов А |
| 7 | монтаж рама на цех краном | 1d? | 2026-10-21 09:15 | 2026-10-22 09:15 | 6 | start no earlier than 2026-09-30 08:00 | Некрасов А |
| 8 | герметизация неиспользуемых отверстий после модернизации вентиляции | 1d? | 2026-09-30 09:00 | 2026-09-30 18:00 |  | start no earlier than 2026-09-30 08:00 |  |
| 9 | **сборка системы дренажа для рекуператоров ввентиляции** | 3d? | 2026-09-30 09:00 | 2026-10-02 18:00 |  |  |  |
| 11 | продолжить монтаж | 1d? | 2026-10-02 09:00 | 2026-10-02 18:00 |  | start no earlier than 2026-10-02 09:00 | Труфанов А; Некрасов А |
| 790 | **пыление при загрузке при высыпании из мешка в бункер дозатора** | 13.59d | 2026-10-01 09:00 | 2026-10-20 14:45 |  |  |  |
| 791 | **изготовить рукав на дозатор для помещения в него мешка из гибкого герметичного матриала** | 13.59d | 2026-10-01 09:00 | 2026-10-20 14:45 |  |  |  |
| 792 | заявка на силикон/брезент полотно | 30min | 2026-10-01 09:00 | 2026-10-01 09:30 |  | start no earlier than 2026-10-01 09:00 | Зорькин В |
| 793 | доставка контроль | 15min | 2026-10-19 09:30 | 2026-10-19 09:45 | 792FS+12d | start no earlier than 2026-09-30 08:00 | Зорькин В |
| 794 | изготовление мешка | 4h | 2026-10-20 09:45 | 2026-10-20 14:45 | 793FS+1d | start no earlier than 2026-09-30 08:00 | Тимофеев В |
| 795 | **установить аспирационный рукав в зону бункера + фильтр + выход в цех/или общ обменную вент** | 17.09d? | 2026-10-02 09:00 | 2026-10-27 09:45 |  |  |  |
| 796 | заявка на аспирацию как в слесарке | 30min | 2026-10-02 09:00 | 2026-10-02 09:30 |  | start no earlier than 2026-10-02 09:00 | Зорькин В |
| 797 | доставка контроль | 15min | 2026-10-23 09:30 | 2026-10-23 09:45 | 796FS+15d | start no earlier than 2026-09-30 08:00 | Зорькин В |
| 798 | монтаж аспирационная установка | 1d? | 2026-10-26 09:45 | 2026-10-27 09:45 | 797FS+1d | start no earlier than 2026-09-30 08:00 | Тимофеев В |
| 799 | **пыление при дозации из шнека на продукт** | 0.38d | 2026-10-01 09:00 | 2026-10-01 12:00 |  |  |  |
| 800 | установить пластину НЕРЖ на выход шнека для отклонения порошка ближе к барабану | 2h | 2026-10-01 09:00 | 2026-10-01 11:00 |  | start no earlier than 2026-10-01 09:00 | Тимофеев В |
| 801 | **изготовить /купить патрубок типа 90 колено сантех** | 0.38d | 2026-10-01 09:00 | 2026-10-01 12:00 |  |  |  |
| 802 | модель + печать на 3д | 2h | 2026-10-01 09:00 | 2026-10-01 11:00 |  | start no earlier than 2026-10-01 09:00 | Домоводов К |
| 803 | монтаж | 1h | 2026-10-01 11:00 | 2026-10-01 12:00 | 802 | start no earlier than 2026-09-30 08:00 | Тимофеев В |
| 804 | **сыпит в одну точку барабана, образуя не нужное кольцо** | 1d | 2026-09-30 09:00 | 2026-09-30 18:00 |  |  |  |
| 805 | **перенос дозатора на второй барабан** | 1d | 2026-09-30 09:00 | 2026-09-30 18:00 |  |  |  |
| 806 | изготовить раму - составить чертежи | 2h | 2026-09-30 09:00 | 2026-09-30 11:00 |  | start no earlier than 2026-09-30 08:00 | Труфанов А |
| 807 | сборка рама | 4h | 2026-09-30 11:00 | 2026-09-30 16:00 | 806 | start no earlier than 2026-09-30 08:00 | Тимофеев В |
| 808 | перенос шнека дозатора / переключения | 2h | 2026-09-30 16:00 | 2026-09-30 18:00 | 807 | start no earlier than 2026-09-30 08:00 | Тимофеев В |
| 1764 | сборка полок для стеллажей архив бухгалтерии | 1d? | 2026-10-02 09:00 | 2026-10-02 18:00 |  | start no earlier than 2026-10-02 09:00 | Тимофеев В; Бундин В |
| 2273 | **ремонт блоков управления датерами** | 0.25d | 2026-10-02 09:00 | 2026-10-02 11:00 |  |  |  |
| 2274 | составить схему подключения - мотор / датчик / тен / -- первые компоненты на плате блока | 2h | 2026-10-02 09:00 | 2026-10-02 11:00 |  | start no earlier than 2026-10-02 09:00 | Дедов В |

Removed: 781 Повесить полочки с образцами в места отмеченные крестиком (фото у зорькина), связаться с мастером, он покажет

Changed:

| ID | Task | Start | Finish | Duration | Complete | Total float | Other |
| --- | --- | --- | --- | --- | --- | --- | --- |
| 12 | Проверка весов на 2 линии красный смеситель, со слов валентина, после замены блока питания, работает, а потом выбивает весы, перестают работать | 2026-09-29 09:00 A | 2026-09-29 10:00 A |  | 0% → 100% | 116.47d → none |  |
| 15 | изготовить переход между прекондиционер и экструдер на 1 линию | 2026-09-27 09:00 A | 2026-09-27 18:00 A |  | 0% → 100% | 117.59d → none |  |
| 650 | **модернизация вентиляции** |  | 2026-09-15 13:00 A |  | 62% → 100% | 130.09d → none |  |
| 655 | монтаж вентиляторов | 2026-05-12 09:00 A | 2026-05-12 13:00 A |  | 0% → 100% | 223.09d → none |  |
| 789 | **2 цех** |  |  |  | 89% → 88% |  |  |
| 809 | Продуть всю вентиляшку на жирах с люльки | 2026-09-29 09:00 A | 2026-09-29 11:00 A |  | 0% → 100% | 116.34d → none |  |
| 1026 | **ворота выход готовой продукции (прикрутить ролик, ролик у нас в кабинете)** |  | 2026-06-11 18:00 A |  | 99% → 100% | 0d → none | resources Труфанов А → none |
| 2109 | **монтаж форсунки в линию** |  |  | 261.5d? → 262.5d? |  |  |  |

## Version 19 (saved 2026-10-01, file 07.09.26.mpp)

Last finish stays 2027-03-10. Complete tasks 2306 → 2336.

Added:

| ID | Task | Duration | Start | Finish | Predecessors | Constraint | Resources |
| --- | --- | --- | --- | --- | --- | --- | --- |
| 2 | **Квадропак** | 5d? | 2026-10-01 09:00 | 2026-10-07 18:00 |  |  |  |
| 3 | Составить заявку на шарнир подачи пакетов (зона 1) ВЭД партнер | 1d? | 2026-10-01 09:00 | 2026-10-01 18:00 |  | start no earlier than 2026-10-01 08:00 |  |
| 4 | Получить счет - оплата | 1d? | 2026-10-02 09:00 | 2026-10-02 18:00 | 3 | start no earlier than 2026-10-01 08:00 |  |
| 5 | Контроль доставки | 1d? | 2026-10-05 09:00 | 2026-10-05 18:00 | 4 | start no earlier than 2026-10-01 08:00 |  |
| 6 | Приемка | 1d? | 2026-10-06 09:00 | 2026-10-06 18:00 | 5 | start no earlier than 2026-10-01 08:00 |  |
| 7 | Установка | 1d? | 2026-10-07 09:00 | 2026-10-07 18:00 | 6 | start no earlier than 2026-10-01 08:00 |  |
| 8 | Установить газлифты на раму весов в плоскостях Х и У | 3h | 2026-10-02 09:00 | 2026-10-02 12:00 |  | start no earlier than 2026-10-02 09:00 | Тимофеев В; Бундин В |
| 797 | Плата связи RS485 замена | 1h | 2026-10-01 09:00 | 2026-10-01 10:00 |  | start no earlier than 2026-10-01 08:00 | Дедов В |
| 798 | Подключить кабель датчика пирометра с печи | 2h | 2026-10-01 09:00 | 2026-10-01 11:00 |  | start no earlier than 2026-10-01 08:00 | Дедов В |
| 799 | Посмотреть ручки на складе, по возможности замена, если их нет ,сообщить какие закупить | 1h | 2026-10-02 09:00 | 2026-10-02 10:00 |  | start no earlier than 2026-10-02 09:00 | Бундин В; Тимофеев В |
| 800 | Посмотреть пылесос от второго цеха, должен быть в слесарке, если нет, забрать | 1h | 2026-10-02 09:00 | 2026-10-02 10:00 |  | start no earlier than 2026-10-02 09:00 | Бундин В; Тимофеев В |
| 801 | Включить отопление в лабораторию | 1h | 2026-10-02 09:00 | 2026-10-02 10:00 |  | start no earlier than 2026-10-02 09:00 | Некрасов |
| 802 | Ремонт бактерицидной лампы возле компрессора | 2h | 2026-10-01 09:00 | 2026-10-01 11:00 |  | start no earlier than 2026-10-01 08:00 | Дедов В |
| 819 | согласовоать с производством технологами старт переноса | 1h | 2026-10-05 09:00 | 2026-10-05 10:00 |  | start no earlier than 2026-10-05 09:00 | Зорькин В |
| 1466 | Установить насос с ножами в 3 цех под раковину мойки на жирах | 4h | 2026-10-02 09:00 | 2026-10-02 13:00 |  | start no earlier than 2026-10-02 09:00 | Тимофеев В; Бундин В |
| 2568 | Подготовить металоконструкцию для удобной замены редуктора прекондиционера | 4h | 2026-10-01 09:00 | 2026-10-01 13:00 |  | start no earlier than 2026-10-01 08:00 | Труфанов А; Некрасов А |
| 2569 | Замена редуктора прекондиционера | 4h | 2026-10-08 09:00 | 2026-10-08 13:00 |  | start no earlier than 2026-10-08 09:00 | Труфанов А; Тимофеев В; Некрасов А |
| 2750 | **Квадропак** | 0.12d | 2026-10-07 09:00 | 2026-10-07 10:00 |  |  |  |
| 2751 | Смазка качающихся шарниров подачи пакета и сброса | 1h | 2026-10-07 09:00 | 2026-10-07 10:00 |  | start no earlier than 2026-10-07 09:00 | Тимофеев В |
| 3199 | Кинуть времянку в серверную | 1h | 2026-10-02 09:00 | 2026-10-02 10:00 |  | start no earlier than 2026-10-02 09:00 | Некрасов А; Труфанов А |

Changed:

| ID | Task | Start | Finish | Duration | Complete | Total float | Predecessors | Other |
| --- | --- | --- | --- | --- | --- | --- | --- | --- |
| 16 | **сборка системы дренажа для рекуператоров ввентиляции** | 2026-09-30 09:00 A | 2026-10-02 18:00 → 2026-10-01 18:00 A (-1d) | 3d? → 2d? | 0% → 100% | 112.59d → none |  |  |
| 17 | Монтаж трассы слива в раковину с рекурператоров | 2026-09-30 09:00 A | 2026-09-30 17:00 A |  | 0% → 100% | 114.72d → none |  |  |
| 18 | продолжить монтаж | 2026-10-02 09:00 → 2026-10-01 09:00 A (-1d) | 2026-10-02 18:00 → 2026-10-01 18:00 A (-1d) |  | 0% → 100% | 112.59d → none |  |  |
| 74 | **сместить квадропак в сторону охладителя 2л** |  | 2026-09-30 13:00 A |  | 60% → 100% | 115.09d → none |  |  |
| 77 | доработка перил | 2026-09-30 09:00 A | 2026-09-30 13:00 A |  | 0% → 100% | 115.09d → none |  |  |
| 82 | квадропак - ремонт люфта штанги нажима роликов открытия захватов на станции №1 | 2026-09-30 09:00 A | 2026-09-30 13:00 A |  | 0% → 100% | 115.09d → none |  |  |
| 83 | квадропак - кронштейн пневовстряхивателя - востановить резтбу сквозную | 2026-09-30 09:00 A | 2026-09-30 10:00 A |  | 0% → 100% | 115.47d → none |  |  |
| 173 | **зависает диспелей на расходомере 2л** |  | 2026-09-30 09:30 → 2026-10-07 09:30 (+7d) | 43.06d → 48.06d |  | 115.53d → 110.53d |  |  |
| 176 | объеденить минус шину контроллера с нулевым проводом оборудования ч/з резистор 10 Ом | 2026-09-30 09:00 → 2026-10-07 09:00 (+7d) | 2026-09-30 09:30 → 2026-10-07 09:30 (+7d) |  |  | 115.53d → 110.53d |  | constraint start no earlier than 2026-09-30 09:00 → start no earlier than 2026-10-07 09:00 |
| 229 | **сборка дозатор на квадропак** |  | 2026-10-02 13:00 → 2026-10-07 11:00 (+5d) | 68.5d → 71.25d | 83% → 93% | 113.09d → 110.34d |  |  |
| 250 | увеличить доп пружины, сжались ноль | 2026-10-02 09:00 → 2026-10-01 09:00 A (-1d) | 2026-10-02 13:00 → 2026-10-01 13:00 A (-1d) |  | 0% → 100% | 113.09d → none |  |  |
| 251 | монтаж кнопка дозатор ОН/ОФФ | 2026-09-30 09:00 A | 2026-09-30 10:00 A |  | 0% → 100% | 115.47d → none |  |  |
| 252 | закрыть металлом пустые места между площадками квадропак и дозатор | 2026-09-30 09:00 → 2026-10-07 09:00 (+7d) | 2026-09-30 11:00 → 2026-10-07 11:00 (+7d) |  |  | 115.34d → 110.34d |  | constraint start no earlier than 2026-09-30 09:00 → start no earlier than 2026-10-07 09:00 |
| 769 | **Насос гидролизата** |  | 2026-09-10 09:05 A |  | 80% → 100% | 135.58d → none |  |  |
| 771 | Доставка контроль сам насос шетсрен | 2026-09-10 09:00 A | 2026-09-10 09:05 A |  | 0% → 100% | 135.58d → none |  |  |
| 772 | **Дражжировка конвейер №1 после печки** |  | 2026-09-30 10:00 A |  | 92% → 100% | 115.47d → none |  |  |
| 773 | Поставить резьбовые клепки на боковой кожух, где кончается лента | 2026-09-30 09:00 A | 2026-09-30 10:00 A |  | 0% → 100% | 115.47d → none |  |  |
| 817 | **сыпит в одну точку барабана, образуя не нужное кольцо** | 2026-09-30 09:00 → 2026-10-05 09:00 (+5d) | 2026-09-30 18:00 → 2026-10-09 10:00 (+9d) | 1d → 4.12d |  | 114.59d → 108.47d |  |  |
| 818 | **перенос дозатора на второй барабан** | 2026-09-30 09:00 → 2026-10-05 09:00 (+5d) | 2026-09-30 18:00 → 2026-10-09 10:00 (+9d) | 1d → 4.12d |  | 114.59d → 108.47d |  |  |
| 820 | изготовить раму - составить чертежи | 2026-09-30 09:00 → 2026-10-07 10:00 (+7d) | 2026-09-30 11:00 → 2026-10-07 12:00 (+7d) |  |  | 114.59d → 108.47d | none → 819FS+2d | constraint start no earlier than 2026-09-30 08:00 → start no earlier than 2026-10-06 09:00 |
| 821 | сборка рама | 2026-09-30 11:00 → 2026-10-07 12:00 (+7d) | 2026-09-30 16:00 → 2026-10-07 17:00 (+7d) |  |  | 114.59d → 108.47d |  | constraint start no earlier than 2026-09-30 08:00 → start no earlier than 2026-10-02 09:00; resources Тимофеев В → Труфанов А |
| 822 | перенос шнека дозатора / переключения | 2026-09-30 16:00 → 2026-10-08 17:00 (+8d) | 2026-09-30 18:00 → 2026-10-09 10:00 (+9d) |  |  | 114.59d → 108.47d | 821 → 821FS+1d |  |
| 847 | **ревизия сливной шланг моечная машинка** |  | 2026-10-02 11:00 → 2026-10-09 11:00 (+7d) | 18.25d → 23.25d |  | 113.34d → 108.34d |  |  |
| 851 | монтаж | 2026-10-02 09:00 → 2026-10-09 09:00 (+7d) | 2026-10-02 11:00 → 2026-10-09 11:00 (+7d) |  |  | 113.34d → 108.34d |  | constraint start no earlier than 2026-10-02 09:00 → start no earlier than 2026-10-09 09:00 |
| 917 | **усиление подогрев приточной вентиляции** |  | 2026-10-02 18:00 → 2026-10-23 18:00 (+21d) | 42d? → 57d? |  | 112.59d → 97.59d |  |  |
| 922 | монтаж | 2026-10-02 09:00 → 2026-10-23 09:00 (+21d) | 2026-10-02 18:00 → 2026-10-23 18:00 (+21d) |  |  | 112.59d → 97.59d |  | constraint start no earlier than 2026-10-02 09:00 → start no earlier than 2026-10-23 09:00 |
| 928 | **утепление стены** |  | 2026-10-02 18:00 → 2026-10-13 18:00 (+11d) | 31d? → 38d? |  | 112.59d → 105.59d |  |  |
| 932 | монтаж утеплитель и листы | 2026-10-02 09:00 → 2026-10-13 09:00 (+11d) | 2026-10-02 18:00 → 2026-10-13 18:00 (+11d) |  |  | 112.59d → 105.59d |  | constraint start no earlier than 2026-10-02 09:00 → start no earlier than 2026-10-13 09:00 |
| 1436 | **установить пульты на регулировку шибиров вентиляции** |  | 2026-10-02 18:00 → 2026-10-23 18:00 (+21d) | 32d? → 47d? |  | 112.59d → 97.59d |  |  |
| 1439 | монтаж | 2026-10-02 09:00 → 2026-10-23 09:00 (+21d) | 2026-10-02 18:00 → 2026-10-23 18:00 (+21d) |  |  | 112.59d → 97.59d |  | constraint start no earlier than 2026-10-02 09:00 → start no earlier than 2026-10-23 09:00 |
| 1465 | **3 цех** |  | 2026-10-06 13:00 → 2026-10-08 10:00 (+2d) | 293.5d? → 295.12d? | 78% → 79% | 111.09d → 109.47d |  |  |
| 1467 | сопряжение круглой входной воронки в экструдер с квадратом выхода прекондиционера как в 2ц | 2026-10-02 09:00 → 2026-09-29 09:00 A (-3d) | 2026-10-02 15:00 → 2026-09-29 15:00 A (-3d) |  | 0% → 100% | 112.97d → none |  | constraint start no earlier than 2026-10-02 09:00 → start no earlier than 2026-09-29 09:00 |
| 1477 | **Дражжировка** |  | 2026-09-30 11:00 A |  | 86% → 100% | 115.34d → none |  |  |
| 1481 | Перенести частотник со стены ближе к барабанам, смонтировать на раму барабанов | 2026-09-30 09:00 A | 2026-09-30 11:00 A |  | 0% → 100% | 115.34d → none |  |  |
| 1492 | **Найти и установить жироуловитель с синего склада на жирах мойка** |  | 2026-10-02 10:00 → 2026-10-01 10:00 (-1d) | 16.12d → 15.12d |  | 113.47d → 114.47d |  |  |
| 1496 | Монтаж | 2026-10-02 09:00 → 2026-10-01 09:00 (-1d) | 2026-10-02 10:00 → 2026-10-01 10:00 (-1d) |  |  | 113.47d → 114.47d |  | constraint start no earlier than 2026-10-02 09:00 → start no earlier than 2026-10-01 09:00 |
| 1502 | **Гранулы выходили из печи со следами смазки** | 2026-10-02 09:00 → 2026-10-01 09:00 A (-1d) | 2026-10-02 13:00 → 2026-10-01 13:00 A (-1d) |  | 0% → 100% | 113.09d → none |  |  |
| 1503 | (сделать направляющие в печи); | 2026-10-02 09:00 → 2026-10-01 09:00 A (-1d) | 2026-10-02 13:00 → 2026-10-01 13:00 A (-1d) |  | 0% → 100% | 113.09d → none |  |  |
| 1514 | **установить ограничитель на дверь что бы попадала под движение рольворот** |  | 2026-09-29 10:15 → 2026-10-08 10:00 (+9d) | 7.16d → 14.12d |  | 116.44d → 109.47d |  |  |
| 1517 | монтаж | 2026-09-29 09:15 → 2026-10-08 09:00 (+9d) | 2026-09-29 10:15 → 2026-10-08 10:00 (+9d) |  |  | 116.44d → 109.47d |  | constraint start no earlier than 2026-09-26 09:00 → start no earlier than 2026-10-08 09:00 |
| 2271 | Разбор полок на стеллаже, наведенеие порядка |  |  |  |  |  |  | resources Некрасов А; Труфанов А → Некрасов; Труфанов А |
| 2288 | **ремонт блоков управления датерами** | 2026-10-02 09:00 → 2026-10-01 09:00 (-1d) | 2026-10-02 11:00 → 2026-10-01 11:00 (-1d) |  |  | 113.34d → 114.34d |  |  |
| 2289 | составить схему подключения - мотор / датчик / тен / -- первые компоненты на плате блока (основной упор на эту задачу) | 2026-10-02 09:00 → 2026-10-01 09:00 (-1d) | 2026-10-02 11:00 → 2026-10-01 11:00 (-1d) |  |  | 113.34d → 114.34d |  | was named составить схему подключения - мотор / датчик / тен / -- первые компоненты на плате блока; constraint start no earlier than 2026-10-02 09:00 → start no earlier than 2026-10-01 09:00 |
| 2543 | **приточная вентиляция** |  | 2026-09-30 10:00 → 2026-10-07 10:00 (+7d) | 157.12d → 162.12d |  | 115.47d → 110.47d |  |  |
| 2547 | Проверка фильтра, по необходимости замена | 2026-09-30 09:00 → 2026-10-07 09:00 (+7d) | 2026-09-30 10:00 → 2026-10-07 10:00 (+7d) |  |  | 115.47d → 110.47d |  | constraint start no earlier than 2026-09-30 09:00 → start no earlier than 2026-10-07 09:00 |
| 2548 | **техническая вода** |  | 2026-09-30 09:10 → 2026-10-07 09:10 (+7d) | 152.02d → 157.02d |  | 115.57d → 110.57d |  |  |
| 2553 | проверка гидроаккумулятора | 2026-09-30 09:00 → 2026-10-07 09:00 (+7d) | 2026-09-30 09:10 → 2026-10-07 09:10 (+7d) |  |  | 115.57d → 110.57d |  | constraint start no earlier than 2026-09-30 09:00 → start no earlier than 2026-10-07 09:00 |
| 2554 | **линия 1** |  | 2026-09-30 09:30 → 2026-10-08 13:00 (+8d) | 147.06d? → 153.5d? | 93% → 76% | 115.53d → 109.09d |  |  |
| 2555 | **питатель экструдера** |  | 2026-09-30 09:30 A |  | 95% → 100% | 115.53d → none |  |  |
| 2562 | Ревизия питателя, контроль состояния подшипников/втулки/шестерен/втулки | 2026-09-30 09:00 A | 2026-09-30 09:30 A |  | 0% → 100% | 115.53d → none |  |  |
| 2563 | **прекондицинер экструдера** |  | 2026-09-30 09:15 → 2026-10-08 13:00 (+8d) | 107.03d → 113.5d | 75% → 11% | 115.56d → 109.09d |  |  |
| 2567 | контроль привода, подшипников/при необходимости замена | 2026-09-30 09:00 A | 2026-09-30 09:15 A |  | 0% → 100% | 115.56d → none |  |  |
| 2570 | **парогенератор** |  | 2026-09-29 10:00 A |  | 92% → 100% | 116.47d → none |  |  |
| 2579 | вскрытие электородов, чистка (при остановке линии на мойку, если не остановилась, передать по смене Тимофееву) | 2026-09-29 09:00 A | 2026-09-29 10:00 A |  | 0% → 100% | 116.47d → none |  |  |
| 2580 | **редуктор экструдера и маслянная станция** | 2024-05-07 09:00 A → 2025-02-17 09:00 A (+286d) | 2026-09-30 10:00 → 2026-10-07 09:20 (+7d) | 633.12d → 434.04d | 72% → 52% | 115.47d → 110.55d |  |  |
| 2588 | Чистка фильтра/тэны и термопары шнеков - протяжка | 2026-09-30 09:00 A | 2026-09-30 09:30 A |  | 0% → 100% | 115.53d → none |  |  |
| 2589 | **шкаф управления экструдером** |  | 2026-09-30 09:15 → 2026-10-07 09:15 (+7d) | 138.03d → 143.03d |  | 115.56d → 110.56d |  |  |
| 2594 | частотные привода экструдера, ножей, питателя - продувка | 2026-09-30 09:00 → 2026-10-07 09:00 (+7d) | 2026-09-30 09:15 → 2026-10-07 09:15 (+7d) |  |  | 115.56d → 110.56d |  | constraint start no earlier than 2026-09-30 09:00 → start no earlier than 2026-10-07 09:00 |
| 2595 | **блок тэнов сушки** |  | 2026-09-30 09:15 → 2026-10-07 09:15 (+7d) | 102.03d → 107.03d |  | 115.56d → 110.56d |  |  |
| 2599 | ревизия/ проверка токов | 2026-09-30 09:00 → 2026-10-07 09:00 (+7d) | 2026-09-30 09:15 → 2026-10-07 09:15 (+7d) |  |  | 115.56d → 110.56d |  | constraint start no earlier than 2026-09-30 09:00 → start no earlier than 2026-10-07 09:00 |
| 2606 | Осмотр, продувка, протяжка контактов | 2026-09-30 09:00 → 2026-10-07 09:00 (+7d) | 2026-09-30 09:20 → 2026-10-07 09:20 (+7d) |  |  | 115.55d → 110.55d |  | constraint start no earlier than 2026-09-30 09:00 → start no earlier than 2026-10-07 09:00 |
| 2607 | **барабан смесительный дрожировка - прорверка подшипнки , реуктор** |  | 2026-09-30 09:15 A |  | 91% → 100% | 115.56d → none |  |  |
| 2611 | Дефектовка - проверить подачу, вибрации, посторонние шумы/проверка фильтров/насосов/фитингов | 2026-09-30 09:00 A | 2026-09-30 09:15 A |  | 0% → 100% | 115.56d → none |  |  |
| 2612 | **печь** | 2026-07-16 09:00 A → 2024-05-07 09:00 A (-800d) | 2026-07-16 11:00 A → 2026-10-07 10:00 (+83d) | 0.25d → 638.12d | 100% → 90% | none → 110.47d |  |  |
| 2625 | Контроль состояния сетки/цепи | 2026-09-30 09:00 → 2026-10-07 09:00 (+7d) | 2026-09-30 10:00 → 2026-10-07 10:00 (+7d) |  |  | 115.47d → 110.47d |  | constraint start no earlier than 2026-09-30 09:00 → start no earlier than 2026-10-07 09:00 |
| 2626 | Проверка масла на приводе/осмотр | 2026-09-30 09:00 → 2026-10-07 09:00 (+7d) | 2026-09-30 09:30 → 2026-10-07 09:30 (+7d) |  |  | 115.53d → 110.53d |  | constraint start no earlier than 2026-09-30 09:00 → start no earlier than 2026-10-07 09:00 |
| 2627 | **линия 2** |  |  |  | 80% → 83% |  |  |  |
| 2628 | **питатель экструдера** |  | 2026-09-30 09:30 → 2026-10-07 09:30 (+7d) | 147.06d → 152.06d |  | 115.53d → 110.53d |  |  |
| 2636 | Ревизия питателя, контроль состояния подшипников/втулки/шестерен | 2026-09-30 09:00 → 2026-10-07 09:00 (+7d) | 2026-09-30 09:30 → 2026-10-07 09:30 (+7d) |  |  | 115.53d → 110.53d |  | constraint start no earlier than 2026-09-30 09:00 → start no earlier than 2026-10-07 09:00 |
| 2637 | **прекондицинер экструдера** |  | 2026-09-30 09:15 → 2026-10-07 09:15 (+7d) | 107.03d → 112.03d |  | 115.56d → 110.56d |  |  |

| ID | Task | Start | Finish | Duration | Complete | Total float | Other |
| --- | --- | --- | --- | --- | --- | --- | --- |
| 2641 | контроль привода, подшипников | 2026-09-30 09:00 → 2026-10-07 09:00 (+7d) | 2026-09-30 09:15 → 2026-10-07 09:15 (+7d) |  |  | 115.56d → 110.56d | constraint start no earlier than 2026-09-30 09:00 → start no earlier than 2026-10-07 09:00 |
| 2648 | вскрытие электородов, чистка (при остановке линии на мойку, если не остановилась, передать по смене Дедову) | 2026-09-29 09:00 A | 2026-09-29 10:00 A |  | 0% → 100% | 116.47d → none |  |
| 2649 | **шкаф управления экструдером** |  | 2026-09-30 09:15 → 2026-10-07 09:15 (+7d) | 152.03d → 157.03d |  | 115.56d → 110.56d |  |
| 2655 | частотные привода экструдера, ножей, питателя - продувка | 2026-09-30 09:00 → 2026-10-07 09:00 (+7d) | 2026-09-30 09:15 → 2026-10-07 09:15 (+7d) |  |  | 115.56d → 110.56d | constraint start no earlier than 2026-09-30 09:00 → start no earlier than 2026-10-07 09:00 |
| 2656 | **редуктор экструдера и маслянная станция** |  | 2026-09-30 09:30 → 2026-10-07 09:30 (+7d) | 102.06d → 107.06d |  | 115.53d → 110.53d |  |
| 2663 | Чистка фильтра/тэны и термопары шнеков - протяжка | 2026-09-30 09:00 → 2026-10-07 09:00 (+7d) | 2026-09-30 09:30 → 2026-10-07 09:30 (+7d) |  |  | 115.53d → 110.53d | constraint start no earlier than 2026-09-30 09:00 → start no earlier than 2026-10-07 09:00 |
| 2664 | **блок тэнов сушки - протяжка** |  | 2026-09-30 09:20 → 2026-10-07 09:20 (+7d) | 102.04d? → 107.04d? |  | 115.55d → 110.55d |  |
| 2668 | Ревизия, проверка жил, проверка токов | 2026-09-30 09:00 → 2026-10-07 09:00 (+7d) | 2026-09-30 09:20 → 2026-10-07 09:20 (+7d) |  |  | 115.55d → 110.55d | constraint start no earlier than 2026-09-30 09:00 → start no earlier than 2026-10-07 09:00 |
| 2679 | ревизия/ проверка токов/протяжка контактов | 2026-09-30 09:00 → 2026-10-07 09:00 (+7d) | 2026-09-30 09:15 → 2026-10-07 09:15 (+7d) |  |  | 115.56d → 110.56d | constraint start no earlier than 2026-09-30 09:00 → start no earlier than 2026-10-07 09:00 |
| 2683 | **Квадропак** |  | 2026-09-30 10:00 A |  | 82% → 100% | 115.47d → none |  |
| 2684 | Установить дополнительные пружины на дозатор | 2026-09-30 09:00 A | 2026-09-30 10:00 A |  | 0% → 100% | 115.47d → none |  |
| 2693 | Закрепить, подровнять, слесарные работы которые требуются | 2026-09-30 09:00 A | 2026-09-30 10:00 A |  | 0% → 100% | 115.47d → none |  |
| 2697 | **Дражжировка** |  | 2026-09-30 09:15 → 2026-10-07 09:15 (+7d) | 31.03d → 36.03d |  | 115.56d → 110.56d |  |
| 2701 | Дефектовка - проверить подачу, вибрации, посторонние шумы/проверка фильтров/насосов/фитингов | 2026-09-30 09:00 → 2026-10-07 09:00 (+7d) | 2026-09-30 09:15 → 2026-10-07 09:15 (+7d) |  |  | 115.56d → 110.56d | constraint start no earlier than 2026-09-30 09:00 → start no earlier than 2026-10-07 09:00 |
| 2706 | **упаковщкики** |  | 2026-09-30 11:00 → 2026-10-07 11:00 (+7d) | 430.25d → 435.25d |  | 115.34d → 110.34d |  |
| 2720 | Осмотр всех упаковщиков/транспортеров/накопительных столов/ всех щитков оборудования | 2026-09-30 09:00 → 2026-10-07 09:00 (+7d) | 2026-09-30 11:00 → 2026-10-07 11:00 (+7d) |  |  | 115.34d → 110.34d | constraint start no earlier than 2026-09-30 09:00 → start no earlier than 2026-10-07 09:00 |
| 2721 | **электрооборудование** |  | 2026-09-30 10:00 → 2026-10-07 10:00 (+7d) | 656.12d? → 661.12d? |  | 115.47d → 110.47d |  |
| 2728 | **Компрессор 1 цех** |  | 2026-09-30 10:00 → 2026-10-07 10:00 (+7d) | 89.12d? → 94.12d? |  | 115.47d → 110.47d |  |
| 2730 | продувка радиаторов осушителя и компрессора, слив конденсата | 2026-09-30 09:00 → 2026-10-07 09:00 (+7d) | 2026-09-30 10:00 → 2026-10-07 10:00 (+7d) |  |  | 115.47d → 110.47d | constraint start no earlier than 2026-09-30 09:00 → start no earlier than 2026-10-07 09:00 |
| 2735 | осушитель 1 цех/слить конденсат | 2026-09-30 09:00 → 2026-10-07 09:00 (+7d) | 2026-09-30 09:20 → 2026-10-07 09:20 (+7d) |  |  | 115.55d → 110.55d | constraint start no earlier than 2026-09-30 09:00 → start no earlier than 2026-10-07 09:00 |
| 2752 | **2 цех** |  |  |  | 68% → 69% |  |  |
| 2754 | **прекондицинер экструдера** |  | 2026-09-29 09:15 A |  | 99% → 100% | 116.56d → none |  |
| 2770 | Ревизия масла редуктора/осмотр подшипников/ смазка при необходимости | 2026-09-29 09:00 A | 2026-09-29 09:15 A |  | 0% → 100% | 116.56d → none |  |
| 2812 | **смеситель СМ-1500** |  | 2026-09-29 09:10 A |  | 98% → 100% | 116.57d → none |  |
| 2821 | Осмотр подшипников/контроль масла | 2026-09-29 09:00 A | 2026-09-29 09:10 A |  | 0% → 100% | 116.57d → none |  |
| 2839 | **питатель экструдера** |  | 2026-09-29 10:00 A |  | 94% → 100% | 116.47d → none |  |
| 2849 | Ревизия шестерен и подшипников | 2026-09-29 09:00 A | 2026-09-29 10:00 A |  | 0% → 100% | 116.47d → none |  |
| 2850 | **привод прекондиционера** |  | 2026-09-29 09:20 A |  | 94% → 100% | 116.55d → none |  |
| 2857 | Осмотр подшипников, муфты, шестерен | 2026-09-29 09:00 A | 2026-09-29 09:20 A |  | 0% → 100% | 116.55d → none |  |
| 2858 | **мотор-редуктор привод шнеков** |  |  |  | 24% → 29% |  |  |
| 2864 | Проверка масла | 2026-09-29 09:00 A | 2026-09-29 09:10 A |  | 0% → 100% | 116.57d → none |  |
| 2865 | **редуктор шнеков экструдера - проверка масла** |  | 2026-09-29 09:15 A |  | 96% → 100% | 116.56d → none |  |
| 2882 | Чистка фильтра | 2026-09-29 09:00 A | 2026-09-29 09:15 A |  | 0% → 100% | 116.56d → none |  |
| 2883 | **шкаф управления экструдером** |  | 2026-09-29 09:10 A |  | 90% → 100% | 116.57d → none |  |
| 2894 | продувка частотного привода | 2026-09-29 09:00 A | 2026-09-29 09:10 A |  | 0% → 100% | 116.57d → none |  |
| 2901 | **печь - валы этажей, подшипники, цепи** |  |  |  | 75% → 83% |  |  |
| 2909 | Контроль редуктора, осмотр, проверка масла | 2026-09-29 09:00 A | 2026-09-29 09:30 A |  | 0% → 100% | 116.53d → none |  |
| 2928 | **шкаф управления тэнами твердотельный** |  | 2026-09-29 09:10 A |  | 95% → 100% | 116.57d → none |  |
| 2937 | Продувка | 2026-09-29 09:00 A | 2026-09-29 09:10 A |  | 0% → 100% | 116.57d → none |  |
| 2947 | **барабан смесительный дрожировка** |  | 2026-09-29 09:15 → 2026-10-08 09:15 (+9d) | 725.03d → 732.03d |  | 116.56d → 109.56d |  |
| 2959 | Осмотр подшипников редукторов | 2026-09-29 09:00 → 2026-10-08 09:00 (+9d) | 2026-09-29 09:15 → 2026-10-08 09:15 (+9d) |  |  | 116.56d → 109.56d | constraint start no earlier than 2026-09-29 08:00 → start no earlier than 2026-10-08 09:00; resources Бундин В → Тимофеев В |
| 2960 | Осмотр соединений фитингов, трехходового крана бежит/не бежит | 2026-09-29 09:00 → 2026-10-08 09:00 (+9d) | 2026-09-29 09:10 → 2026-10-08 09:10 (+9d) |  |  | 116.57d → 109.57d | constraint start no earlier than 2026-09-29 08:00 → start no earlier than 2026-10-08 09:00; resources Бундин В → Тимофеев В |
| 2961 | **Узел подачи гидролизата** |  | 2026-09-29 09:10 → 2026-10-08 09:10 (+9d) | 62.02d → 69.02d |  | 116.57d → 109.57d |  |
| 2967 | Осмотр/ревизия насоса гидролизата, проверка всех соединений | 2026-09-29 09:00 → 2026-10-08 09:00 (+9d) | 2026-09-29 09:10 → 2026-10-08 09:10 (+9d) |  |  | 116.57d → 109.57d | constraint start no earlier than 2026-09-29 08:00 → start no earlier than 2026-10-08 09:00; resources Бундин В → Тимофеев В |
| 2977 | **охладитель сеточный** |  |  |  | 63% → 65% |  |  |
| 2994 | Ремонт уголка на охладителе, позвонить мне, перешлю видео | 2026-09-29 09:00 A | 2026-09-29 09:30 A |  | 0% → 100% | 116.53d → none |  |

## Version 20 (saved 2026-10-02, file 07.09.26.mpp)

Last finish stays 2027-03-10. Complete tasks 2336 → 2342.

Added:

| ID | Task | Duration | Start | Finish | Predecessors | Constraint | Resources |
| --- | --- | --- | --- | --- | --- | --- | --- |
| 2 | Изготовление и установка крышек на бачок гидролизата в 1 цеху | 3h | 2026-10-04 09:00 | 2026-10-04 12:00 |  | start no earlier than 2026-10-04 09:00 | Бундин В |
| 3 | **Вал прекондиционера 1 линия** | 1.88d | 2026-10-05 09:00 | 2026-10-06 17:00 |  |  |  |
| 4 | С 8 утра снимаем вал с прекондиционера 1 линия. | 3h | 2026-10-05 09:00 | 2026-10-05 12:00 |  | start no earlier than 2026-10-05 09:00 | Труфанов А; Некрасов |
| 5 | Образмеривание вала | 1h | 2026-10-05 12:00 | 2026-10-05 13:00 | 4 | start no earlier than 2026-10-02 08:00 | Труфанов А |
| 6 | Передача всей необходимой информации токарю | 30min | 2026-10-05 14:00 | 2026-10-05 14:30 | 5 | start no earlier than 2026-10-05 09:00 | Зорькин В |
| 7 | Контроль | 10min | 2026-10-05 14:30 | 2026-10-05 14:40 | 6 | start no earlier than 2026-10-05 09:00 | Зорькин В |
| 8 | Доставка | 3h | 2026-10-06 09:00 | 2026-10-06 12:00 | 7 | start no earlier than 2026-10-06 09:00 | Логист |
| 9 | Ставим новый вал сразу после прихода | 4h | 2026-10-06 12:00 | 2026-10-06 17:00 | 8 | start no earlier than 2026-10-06 09:00 | Труфанов А; Некрасов |
| 805 | Снять аккумулятор со смесителя во время остановки | 30min | 2026-10-02 09:00 | 2026-10-02 09:30 |  | start no earlier than 2026-10-02 08:00 | Дедов В |
| 806 | Восстановление платы от рециркуляторной лампы, составление списка комплектующих, подбор аналога платы | 3h | 2026-10-02 09:00 | 2026-10-02 12:00 |  | start no earlier than 2026-10-02 08:00 | Дедов В |
| 807 | Ремонт шпингалета на воротох, где навески, получить у мастеров, если нет, звони Зорькину | 1h | 2026-10-03 09:00 | 2026-10-03 10:00 |  | start no earlier than 2026-10-03 09:00 | Бобренок В |
| 808 | Замена дырявой трубы под парогенератором | 1h | 2026-10-08 09:00 | 2026-10-08 10:00 |  | start no earlier than 2026-10-08 09:00 | Некрасов |
| 811 | Изготовить пластину для удобного сбора гранулы лопатой, позвонить зорькину | 2h | 2026-10-03 09:00 | 2026-10-03 11:00 |  | start no earlier than 2026-10-03 09:00 | Бобренок В |
| 816 | Заявка на плату управления лампы | 1h | 2026-10-02 09:00 | 2026-10-02 10:00 |  | start no earlier than 2026-10-02 08:00 | Зорькин В |
| 817 | контроль | 10min | 2026-10-02 09:00 | 2026-10-02 09:10 |  | start no earlier than 2026-10-02 08:00 | Зорькин В |
| 818 | Ремонт | 1d? | 2026-10-08 09:00 | 2026-10-08 18:00 |  | start no earlier than 2026-10-08 09:00 | Дедов В |
| 1482 | Закрыть все входа в производственную зону. Со стороны склада, гидролизата, со стороны фасовки, со стороны пандуса. Ключи взять у нас в кабинете в ящике. Ключи подписать | 2h | 2026-10-03 09:00 | 2026-10-03 11:00 |  | start no earlier than 2026-10-03 09:00 | Бобренок В |
| 1483 | Сделать перила на лестницу между фасовкой и жирами, высота по образцу лестницы, которая на загрузке смесителей в 3 цеху. Делать минимальный габарит, чтоб рука пролазила между стеной и при этом сильно не сужало пространство. Делаем из 40 уголка | 3h | 2026-10-04 09:00 | 2026-10-04 12:00 |  | start no earlier than 2026-10-04 09:00 | Бундин В |
| 1484 | Сделать окно из орг стекла монолитного, на жирах сверху, чтоб было видно печку. Размер примерно 300х200 | 2h | 2026-10-03 09:00 | 2026-10-03 11:00 |  | start no earlier than 2026-10-03 09:00 | Бундин В |
| 2307 | Восстановление платы от пробника, зачистка контактов, где погоревшие пины соединение через внешний клемник | 3h | 2026-10-02 09:00 | 2026-10-02 12:00 |  | start no earlier than 2026-10-02 08:00 | Дедов В |

Removed: 2568 Подготовить металоконструкцию для удобной замены редуктора прекондиционера

Changed:

| ID | Task | Start | Finish | Duration | Complete | Total float | Other |
| --- | --- | --- | --- | --- | --- | --- | --- |
| 10 | **Квадропак** |  | 2026-10-07 18:00 → 2026-10-06 18:00 (-1d) |  |  | 109.59d → 110.59d |  |
| 13 | Контроль доставки | 2026-10-05 09:00 → 2026-10-04 09:00 (-1d) | 2026-10-05 18:00 → 2026-10-04 18:00 (-1d) |  |  | 109.59d → 110.59d |  |
| 14 | Приемка | 2026-10-06 09:00 → 2026-10-05 09:00 (-1d) | 2026-10-06 18:00 → 2026-10-05 18:00 (-1d) |  |  | 109.59d → 110.59d |  |
| 15 | Установка | 2026-10-07 09:00 → 2026-10-06 09:00 (-1d) | 2026-10-07 18:00 → 2026-10-06 18:00 (-1d) |  |  | 109.59d → 110.59d |  |
| 16 | Установить газлифты на раму весов в плоскостях Х и У | 2026-10-02 09:00 A | 2026-10-02 12:00 A |  | 0% → 100% | 113.22d → none |  |
| 17 | **сборка рама для труб приточной вентиляции** |  | 2026-10-22 09:15 → 2026-10-21 09:15 (-1d) |  |  | 99.56d → 100.56d |  |
| 20 | контроль доставка | 2026-10-19 09:00 → 2026-10-16 09:00 (-3d) | 2026-10-19 09:15 → 2026-10-16 09:15 (-3d) |  |  | 99.56d → 100.56d |  |
| 21 | сборка рама на земле | 2026-10-19 09:15 → 2026-10-16 09:15 (-3d) | 2026-10-21 09:15 → 2026-10-20 09:15 (-1d) |  |  | 99.56d → 100.56d |  |
| 22 | монтаж рама на цех краном | 2026-10-21 09:15 → 2026-10-20 09:15 (-1d) | 2026-10-22 09:15 → 2026-10-21 09:15 (-1d) |  |  | 99.56d → 100.56d |  |
| 31 | **замена ленты пролистывателя** |  |  | 21d → 22d |  |  |  |
| 51 | **реконструкция хранения гидролизатов и маршрут подачи навесок** |  | 2026-10-09 10:30 → 2026-10-08 10:30 (-1d) |  |  | 108.41d → 109.41d |  |
| 54 | **монтаж доп плащадки** |  | 2026-10-09 10:30 → 2026-10-08 10:30 (-1d) |  |  | 108.41d → 109.41d |  |
| 57 | контроль доставки | 2026-10-06 10:15 → 2026-10-05 10:15 (-1d) | 2026-10-06 10:30 → 2026-10-05 10:30 (-1d) |  |  | 108.41d → 109.41d |  |
| 58 | монтаж | 2026-10-07 10:30 → 2026-10-06 10:30 (-1d) | 2026-10-09 10:30 → 2026-10-08 10:30 (-1d) |  |  | 108.41d → 109.41d |  |
| 59 | **монтаж перегородка корридор** |  | 2026-10-05 10:30 → 2026-10-04 10:30 (-1d) |  |  | 112.41d → 113.41d |  |
| 63 | монтаж |  | 2026-10-05 10:30 → 2026-10-04 10:30 (-1d) |  |  | 112.41d → 113.41d |  |
| 86 | **квадропак - сделать силиконовый успокоитель между нория и весы 800*250 шаг шторок 60** | 2026-09-25 09:00 A | 2026-10-06 11:00 → 2026-10-09 11:10 (+3d) | 9.25d → 13.27d | 0% → 7% | 111.34d → 108.32d |  |
| 87 | заявка прозрачный силикон | 2026-09-25 09:00 A | 2026-09-25 09:10 A |  | 0% → 100% | 113.3d → none |  |
| 88 | доставка контроль | 2026-10-02 09:10 → 2026-10-09 09:00 (+7d) | 2026-10-02 09:20 → 2026-10-09 09:10 (+7d) |  |  | 113.3d → 108.32d | constraint start no earlier than 2026-09-23 08:00 → start no earlier than 2026-10-09 09:00 |
| 89 | сборка | 2026-10-06 09:00 → 2026-10-09 09:10 (+3d) | 2026-10-06 11:00 → 2026-10-09 11:10 (+3d) |  |  | 111.34d → 108.32d |  |
| 123 | **продумать как сделать герметичную крышку на смесителе сухого гидрализата** |  |  | 35.25d → 36.25d |  |  |  |
| 166 | **палетообмостчик монтаж в 1ц** |  |  | 45.38d → 46.38d |  |  |  |
| 181 | **зависает диспелей на расходомере 2л** |  |  | 48.06d → 49.06d |  |  |  |
| 237 | **сборка дозатор на квадропак** |  |  | 71.25d → 72.25d |  |  |  |
| 338 | **установить резервную трубку/штангу с форсункой на подачу жира** |  | 2026-10-12 18:00 → 2026-10-09 18:00 (-3d) |  |  | 106.59d → 107.59d |  |
| 343 | доставка контроль | 2026-10-08 11:00 → 2026-10-07 11:00 (-1d) | 2026-10-08 11:00 → 2026-10-07 11:00 (-1d) |  |  | 106.59d → 107.59d |  |
| 344 | сборка в мастерской | 2026-10-09 11:00 → 2026-10-08 11:00 (-1d) | 2026-10-09 16:00 → 2026-10-08 16:00 (-1d) |  |  | 106.59d → 107.59d |  |
| 345 | монтаж на линию | 2026-10-12 16:00 → 2026-10-09 16:00 (-3d) | 2026-10-12 18:00 → 2026-10-09 18:00 (-3d) |  |  | 106.59d → 107.59d |  |
| 346 | **установить автоматику запуска шнека + смеситель по датчику уровня сырья в бункере экструдера** | 2026-09-24 09:00 → 2026-10-19 09:00 (+25d) | 2026-10-06 12:10 → 2026-11-02 12:10 (+27d) |  |  | 111.2d → 92.2d |  |
| 347 | разработка схема / компановка | 2026-09-24 09:00 → 2026-10-19 09:00 (+25d) | 2026-09-24 10:00 → 2026-10-19 10:00 (+25d) |  |  | 111.2d → 92.2d | constraint start no earlier than 2026-09-24 09:00 → start no earlier than 2026-10-19 09:00 |
| 348 | заявка датчики / пускатели / эл щит | 2026-09-24 10:00 → 2026-10-19 10:00 (+25d) | 2026-09-24 12:00 → 2026-10-19 12:00 (+25d) |  |  | 111.2d → 92.2d |  |
| 349 | доставка контроль | 2026-10-01 12:00 → 2026-10-28 12:00 (+27d) | 2026-10-01 12:05 → 2026-10-28 12:05 (+27d) |  |  | 111.2d → 92.2d |  |
| 350 | контроль поставки | 2026-10-02 12:05 → 2026-10-29 12:05 (+27d) | 2026-10-02 12:10 → 2026-10-29 12:10 (+27d) |  |  | 111.2d → 92.2d |  |
| 351 | сборка ШУ | 2026-10-02 12:10 → 2026-10-29 12:10 (+27d) | 2026-10-05 12:10 → 2026-10-30 12:10 (+25d) |  |  | 111.2d → 92.2d |  |
| 352 | монтаж в линию | 2026-10-05 12:10 → 2026-10-30 12:10 (+25d) | 2026-10-06 12:10 → 2026-11-02 12:10 (+27d) |  |  | 111.2d → 92.2d |  |
| 476 | **обслуживание инсекьюеров, утлизация отработанных ламп** |  |  | 126.12d → 127.12d |  |  |  |
| 804 | **2 цех** |  |  |  | 88% → 87% |  |  |
| 809 | Плата связи RS485 замена | 2026-10-01 09:00 A | 2026-10-01 10:00 A |  | 0% → 100% | 114.47d → none |  |
| 810 | Подключить кабель датчика пирометра с печи | 2026-10-01 09:00 → 2026-10-08 09:00 (+7d) | 2026-10-01 11:00 → 2026-10-08 11:00 (+7d) |  |  | 114.34d → 109.34d | constraint start no earlier than 2026-10-01 08:00 → start no earlier than 2026-10-08 09:00 |
| 812 | Посмотреть ручки на складе, по возможности замена, если их нет ,сообщить какие закупить. Если ничего нет и ремонт невозможен, фиксируем язычок или убираем его. | 2026-10-02 09:00 → 2026-10-03 09:00 (+1d) | 2026-10-02 10:00 → 2026-10-03 10:00 (+1d) |  |  | 113.47d → none | was named Посмотреть ручки на складе, по возможности замена, если их нет ,сообщить какие закупить; constraint start no earlier than 2026-10-02 09:00 → start no earlier than 2026-10-03 09:00; resources Бундин В; Тимофеев В → Бобренок В |
| 813 | Посмотреть пылесос от второго цеха, должен быть в слесарке, если нет, забрать | 2026-10-02 09:00 → 2026-09-29 09:00 A (-3d) | 2026-10-02 10:00 → 2026-09-29 10:00 A (-3d) |  | 0% → 100% | 113.47d → none | constraint start no earlier than 2026-10-02 09:00 → start no earlier than 2026-09-29 09:00; resources Бундин В; Тимофеев В → Бобренок В |
| 815 | **Ремонт бактерицидной лампы возле компрессора** | 2026-10-01 09:00 → 2026-10-02 09:00 (+1d) | 2026-10-01 11:00 → 2026-10-08 18:00 (+7d) | 2h → 6d? |  | 114.34d → 108.59d | constraint start no earlier than 2026-10-01 08:00 → none; resources Дедов В → none |
| 819 | **пыление при загрузке при высыпании из мешка в бункер дозатора** |  | 2026-10-20 14:45 → 2026-10-19 14:45 (-1d) |  |  | 101d → 102d |  |
| 820 | **изготовить рукав на дозатор для помещения в него мешка из гибкого герметичного матриала** |  | 2026-10-20 14:45 → 2026-10-19 14:45 (-1d) |  |  | 101d → 102d |  |
| 822 | доставка контроль | 2026-10-19 09:30 → 2026-10-16 09:30 (-3d) | 2026-10-19 09:45 → 2026-10-16 09:45 (-3d) |  |  | 101d → 102d |  |
| 823 | изготовление мешка | 2026-10-20 09:45 → 2026-10-19 09:45 (-1d) | 2026-10-20 14:45 → 2026-10-19 14:45 (-1d) |  |  | 101d → 102d |  |
| 824 | **установить аспирационный рукав в зону бункера + фильтр + выход в цех/или общ обменную вент** | 2026-10-02 09:00 → 2026-10-05 09:00 (+3d) | 2026-10-27 09:45 → 2026-10-28 09:45 (+1d) |  |  | 96.5d → 95.5d |  |
| 825 | заявка на аспирацию как в слесарке | 2026-10-02 09:00 → 2026-10-05 09:00 (+3d) | 2026-10-02 09:30 → 2026-10-05 09:30 (+3d) |  |  | 96.5d → 95.5d | constraint start no earlier than 2026-10-02 09:00 → start no earlier than 2026-10-05 09:00 |
| 826 | доставка контроль | 2026-10-23 09:30 → 2026-10-26 09:30 (+3d) | 2026-10-23 09:45 → 2026-10-26 09:45 (+3d) |  |  | 96.5d → 95.5d |  |
| 827 | монтаж аспирационная установка | 2026-10-26 09:45 → 2026-10-27 09:45 (+1d) | 2026-10-27 09:45 → 2026-10-28 09:45 (+1d) |  |  | 96.5d → 95.5d |  |
| 863 | **ревизия сливной шланг моечная машинка** |  |  | 23.25d → 24.25d |  |  |  |
| 911 | **установить сифон ф110 в линию слива жиров** |  |  | 46.31d → 47.31d |  |  |  |
| 933 | **усиление подогрев приточной вентиляции** |  |  | 57d? → 58d? |  |  |  |
| 943 | **обеспечить не менее +15 зимой в зоне хранения навесок** |  | 2026-10-26 11:45 → 2026-10-23 11:45 (-3d) |  |  | 97.25d → 98.25d |  |
| 944 | **утепление стены** |  |  | 38d? → 39d? |  |  |  |
| 953 | **тепловые завесы в 2ц зона подачи навесок** |  | 2026-10-26 11:45 → 2026-10-23 11:45 (-3d) |  |  | 97.25d → 98.25d |  |
| 954 | **монтаж теплокалориферов** |  | 2026-10-26 11:45 → 2026-10-23 11:45 (-3d) |  |  | 97.25d → 98.25d |  |
| 957 | контроль доставки | 2026-10-21 11:15 → 2026-10-20 11:15 (-1d) | 2026-10-21 11:30 → 2026-10-20 11:30 (-1d) |  |  | 97.25d → 98.25d |  |
| 958 | приемка | 2026-10-22 11:30 → 2026-10-21 11:30 (-1d) | 2026-10-22 11:45 → 2026-10-21 11:45 (-1d) |  |  | 97.25d → 98.25d |  |
| 959 | монтаж калориферов | 2026-10-23 11:45 → 2026-10-22 11:45 (-1d) | 2026-10-26 11:45 → 2026-10-23 11:45 (-3d) |  |  | 97.25d → 98.25d |  |
| 960 | **монтаж кабель** |  | 2026-10-07 12:00 → 2026-10-06 12:00 (-1d) |  |  | 110.22d → 111.22d |  |
| 963 | контроль доставка | 2026-10-05 11:00 → 2026-10-04 11:00 (-1d) | 2026-10-05 12:00 → 2026-10-04 12:00 (-1d) |  |  | 110.22d → 111.22d |  |
| 964 | монтаж | 2026-10-06 12:00 → 2026-10-05 12:00 (-1d) | 2026-10-07 12:00 → 2026-10-06 12:00 (-1d) |  |  | 110.22d → 111.22d |  |
| 969 | **пролистыватель с апликтором заказ** |  |  | 48d? → 49d? |  |  |  |
| 988 | **ремонт осушителя компрессора 2ц** |  | 2026-10-05 11:30 → 2026-10-04 11:30 (-1d) |  |  | 112.28d → 113.28d |  |
| 992 | заправить хладогент | 2026-10-05 09:30 → 2026-10-04 09:30 (-1d) | 2026-10-05 11:30 → 2026-10-04 11:30 (-1d) |  |  | 112.28d → 113.28d |  |
| 1236 | **установить водоподготовку на парогенератор** |  |  | 140d? → 141d? |  |  |  |
| 1417 | **установить на охладитель ролики + скольжение трубы** |  |  | 32d? → 33d? |  |  |  |
| 1444 | **схема блокировки роль ворот при открытым шлюзе + авт закрытие + датчик препятствия** |  |  | 24.5d → 25.5d |  |  |  |
| 1452 | **установить пульты на регулировку шибиров вентиляции** |  |  | 47d? → 48d? |  |  |  |

| ID | Task | Start | Finish | Duration | Complete | Total float | Other |
| --- | --- | --- | --- | --- | --- | --- | --- |
| 1465 | **отмена** |  |  | 84.31d? → 85.31d? |  |  |  |
| 1466 | **найти места утечки тепла под потолком- перемерзает труба подачи воды в 3 цех** |  |  | 84.31d? → 85.31d? |  |  |  |
| 1481 | **3 цех** |  | 2026-10-08 10:00 → 2026-10-27 13:00 (+19d) | 295.12d? → 309.5d? |  | 109.47d → 96.09d |  |
| 1485 | Установить насос с ножами в 3 цех под раковину мойки на жирах | 2026-10-02 09:00 → 2026-10-03 09:00 (+1d) | 2026-10-02 13:00 → 2026-10-03 13:00 (+1d) |  |  | 113.09d → none | constraint start no earlier than 2026-10-02 09:00 → start no earlier than 2026-10-03 09:00; resources Тимофеев В; Бундин В → Бобренок В |
| 1505 | **Разобрать регулировку ножевого узла, достать вал на котором установлен штурвал** |  |  | 12.12d → 13.12d |  |  |  |
| 1523 | **С двигателя экструдера выдавило много масла;** |  | 2026-10-02 16:00 → 2026-10-27 13:00 (+25d) | 14.75d → 32.5d |  | 112.84d → none |  |
| 1528 | подключение датчика в схему - блокировка по уровню | 2026-10-02 11:00 → 2026-10-27 09:00 (+25d) | 2026-10-02 16:00 → 2026-10-27 13:00 (+25d) |  |  | 112.84d → 96.09d | constraint start no earlier than 2026-09-18 08:00 → start no earlier than 2026-10-27 09:00 |
| 1533 | **установить ограничитель на дверь что бы попадала под движение рольворот** |  |  | 14.12d → 15.12d |  |  |  |
| 1561 | **сборка квадропака 3 цех** |  |  | 43.5d → 44.5d |  |  |  |
| 1797 | **5 цех** |  |  | 968.25d? → 969.25d? |  |  |  |
| 1798 | сборка полок для стеллажей архив бухгалтерии | 2026-10-02 09:00 → 2026-10-06 09:00 (+4d) | 2026-10-02 18:00 → 2026-10-06 18:00 (+4d) |  |  | 112.59d → 110.59d | constraint start no earlier than 2026-10-02 09:00 → start no earlier than 2026-10-06 09:00 |
| 1805 | **ремонт насос водоснабжения** |  |  | 67.25d → 68.25d |  |  |  |
| 1823 | **проект новая дробилка** |  | 2026-10-07 09:15 → 2026-10-06 09:15 (-1d) |  |  | 110.56d → 111.56d |  |
| 1824 | **кабель для доп мощности** |  | 2026-10-07 09:15 → 2026-10-06 09:15 (-1d) |  |  | 110.56d → 111.56d |  |
| 1828 | монтаж |  | 2026-10-07 09:15 → 2026-10-06 09:15 (-1d) |  |  | 110.56d → 111.56d |  |
| 1859 | **монтаж тепловые пушки подвесные 5 цех** |  |  | 40d → 41d |  |  |  |
| 1891 | **востановить коробку тельфера** |  |  | 180.25d → 181.25d |  |  |  |
| 2092 | **модернизация** |  |  | 982.5d? → 983.5d? |  |  |  |
| 2137 | **качественное нанесение жира тесты** |  |  | 269.5d? → 270.5d? |  |  |  |
| 2247 | **техника** |  |  | 637.03d? → 638.03d? |  |  |  |
| 2249 | **капремонт погрузчика коматсу короткий** |  |  | 50.03d → 51.03d |  |  |  |
| 2289 | **слесарное помещение** |  | 2026-10-02 12:00 → 2026-10-04 12:00 (+2d) | 88.38d? → 89.38d? |  |  |  |
| 2290 | Разбор полок на большом стеллаже, наведенеие порядка | 2026-10-02 09:00 → 2026-10-03 09:00 (+1d) | 2026-10-02 12:00 → 2026-10-03 12:00 (+1d) |  |  | 113.22d → none | was named Разбор полок на стеллаже, наведенеие порядка; constraint start no earlier than 2026-10-02 09:00 → start no earlier than 2026-10-03 09:00; resources Некрасов; Труфанов А → Бундин В |
| 2291 | Ремонт электродов парогенератора | 2026-09-28 09:00 → 2026-10-04 09:00 (+6d) | 2026-09-28 12:00 → 2026-10-04 12:00 (+6d) |  |  | 117.22d → 113.22d | constraint start no earlier than 2026-09-28 08:00 → start no earlier than 2026-10-04 09:00 |
| 2306 | **ЗИП ремонт** |  |  | 642.25d? → 643.25d? |  |  |  |
| 2308 | **ремонт блоков управления датерами** | 2026-10-01 09:00 → 2026-10-02 09:00 (+1d) | 2026-10-01 11:00 → 2026-10-02 12:00 (+1d) | 0.25d → 0.38d |  | 114.34d → 114.22d |  |
| 2309 | составить схему подключения - мотор / датчик / тен / -- первые компоненты на плате блока (основной упор на эту задачу) Продолжаем делать | 2026-10-01 09:00 → 2026-10-02 09:00 (+1d) | 2026-10-01 11:00 → 2026-10-02 12:00 (+1d) | 2h → 3h |  | 114.34d → 114.22d | was named составить схему подключения - мотор / датчик / тен / -- первые компоненты на плате блока (основной упор на эту задачу); constraint start no earlier than 2026-10-01 09:00 → start no earlier than 2026-10-02 09:00 |
| 2311 | **Собрать редуктор питателя, который разобранный на верстаке** |  | 2026-10-08 11:45 → 2026-10-07 11:45 (-1d) |  |  | 109.25d → 110.25d |  |
| 2313 | контроль | 2026-10-05 09:15 → 2026-10-04 09:15 (-1d) | 2026-10-05 09:30 → 2026-10-04 09:30 (-1d) |  |  | 109.25d → 110.25d |  |
| 2314 | орг забрать | 2026-10-07 09:30 → 2026-10-06 09:30 (-1d) | 2026-10-07 09:45 → 2026-10-06 09:45 (-1d) |  |  | 109.25d → 110.25d |  |
| 2315 | сборка | 2026-10-08 09:45 → 2026-10-07 09:45 (-1d) | 2026-10-08 11:45 → 2026-10-07 11:45 (-1d) |  |  | 109.25d → 110.25d |  |
| 2439 | **ремонт датчик расхода пара с линия 3** |  | 2026-10-07 09:20 → 2026-10-06 09:20 (-1d) |  |  | 110.55d → 111.55d |  |
| 2444 | орг забрать сремонта | 2026-10-07 09:00 → 2026-10-06 09:00 (-1d) | 2026-10-07 09:20 → 2026-10-06 09:20 (-1d) |  |  | 110.55d → 111.55d |  |
| 2551 | **ТО** |  | 2026-12-03 11:00 → 2026-12-02 11:00 (-1d) |  |  | 69.34d → 70.34d |  |
| 2552 | **1 цех** |  |  |  | 60% → 62% |  |  |
| 2563 | **приточная вентиляция** |  |  | 162.12d → 163.12d |  |  |  |
| 2568 | **техническая вода** |  |  | 157.02d → 158.02d |  |  |  |
| 2574 | **линия 1** |  | 2026-10-08 13:00 → 2026-09-30 09:30 A (-8d) | 153.5d? → 147.06d? | 76% → 100% | 109.09d → none |  |
| 2583 | **прекондицинер экструдера** |  | 2026-10-08 13:00 → 2026-09-30 09:15 A (-8d) | 113.5d → 107.03d | 11% → 100% | 109.09d → none |  |
| 2598 | **редуктор экструдера и маслянная станция** |  |  | 434.04d → 435.04d |  |  |  |
| 2607 | **шкаф управления экструдером** |  |  | 143.03d → 144.03d |  |  |  |
| 2613 | **блок тэнов сушки** |  |  | 107.03d → 108.03d |  |  |  |
| 2630 | **печь** |  |  | 638.12d → 639.12d |  |  |  |
| 2646 | **питатель экструдера** |  |  | 152.06d → 153.06d |  |  |  |
| 2655 | **прекондицинер экструдера** |  |  | 112.03d → 113.03d |  |  |  |
| 2667 | **шкаф управления экструдером** |  |  | 157.03d → 158.03d |  |  |  |
| 2674 | **редуктор экструдера и маслянная станция** |  |  | 107.06d → 108.06d |  |  |  |
| 2682 | **блок тэнов сушки - протяжка** |  |  | 107.04d? → 108.04d? |  |  |  |
| 2715 | **Дражжировка** |  |  | 36.03d → 37.03d |  |  |  |
| 2724 | **упаковщкики** |  |  | 435.25d → 436.25d |  |  |  |
| 2739 | **электрооборудование** |  |  | 661.12d? → 662.12d? |  |  |  |
| 2746 | **Компрессор 1 цех** |  |  | 94.12d? → 95.12d? |  |  |  |
| 2770 | **2 цех** |  | 2026-12-03 11:00 → 2026-12-02 11:00 (-1d) |  | 69% → 68% | 69.34d → 70.34d |  |
| 2772 | **прекондицинер экструдера** |  | 2026-09-29 09:15 A → 2026-10-08 13:00 (+9d) | 645.03d? → 653.5d? | 100% → 85% | none → 109.09d |  |
| 2809 | **привод сетки ПЕЧИ сушки** |  | 2026-12-03 11:00 → 2026-12-02 11:00 (-1d) |  |  | 69.34d → 70.34d |  |
| 2822 | смазка цепей пищ смазкой по графику 3 мес | 2026-12-03 10:00 → 2026-12-02 10:00 (-1d) | 2026-12-03 11:00 → 2026-12-02 11:00 (-1d) |  |  | 69.34d → 70.34d |  |
| 2966 | **барабан смесительный дрожировка** |  |  | 732.03d → 733.03d |  |  |  |
| 2980 | **Узел подачи гидролизата** |  |  | 69.02d → 70.02d |  |  |  |
| 3216 | **офис** |  |  | 940.25d? → 941.25d? |  |  |  |
| 3218 | Кинуть времянку в серверную | 2026-10-02 09:00 A | 2026-10-02 10:00 A |  | 0% → 100% | 113.47d → none |  |
| 3260 | **склад упаковки** |  |  | 140.5d? → 141.5d? | 97% → 98% |  |  |
| 3261 | Повесить доп светильники 3 шт (спросить у Лехи, где нужны) | 2026-10-02 09:00 A | 2026-10-02 12:00 A |  | 0% → 100% | 113.22d → none |  |
| 3281 | **РЭФ контейнеры** |  |  | 211.59d? → 212.59d? |  |  |  |
| 3352 | **ТБ** |  |  | 927.25d? → 928.25d? |  |  |  |
| 3379 | **территория** |  |  | 430.5d? → 431.5d? |  |  |  |

## Version 21 (saved 2026-10-05, file 07.09.26.mpp)

Last finish stays 2027-03-10. Complete tasks 2342 → 2350.

Added:

| ID | Task | Duration | Start | Finish | Constraint | Resources |
| --- | --- | --- | --- | --- | --- | --- |
| 2 | Устранение течи с вентиляции, предложить варианты, выслушать вариант домоводова | 3h | 2026-10-06 09:00 | 2026-10-06 12:00 | start no earlier than 2026-10-06 09:00 | Труфанов А; Некрасов |
| 806 | Устранить течь в вентялиционной, проверить количество антифриза | 1h | 2026-10-05 09:00 | 2026-10-05 10:00 | start no earlier than 2026-10-05 08:00 | Бобренок В |
| 807 | Перебрать ножевой узел, понять причину люфта/устранить | 2h | 2026-10-05 09:00 | 2026-10-05 11:00 | start no earlier than 2026-10-05 08:00 | Бобренок В |
| 1488 | Заказать необходимые комплектующие, переходники | 1h | 2026-10-06 09:00 | 2026-10-06 10:00 | start no earlier than 2026-10-06 09:00 | Зорькин В |
| 3384 | У охраны не работает тепловая пушка, ревизия/ремонт | 1h | 2026-10-05 09:00 | 2026-10-05 10:00 | start no earlier than 2026-10-05 08:00 | Бобренок В |

Changed:

| ID | Task | Start | Finish | Duration | Complete | Total float | Other |
| --- | --- | --- | --- | --- | --- | --- | --- |
| 4 | **Вал прекондиционера 1 линия** | 2026-10-05 09:00 A |  |  | 0% → 34% |  |  |
| 5 | С 8 утра снимаем вал с прекондиционера 1 линия. | 2026-10-05 09:00 A | 2026-10-05 12:00 A |  | 0% → 100% | 111.14d → none |  |
| 6 | Образмеривание вала | 2026-10-05 12:00 A | 2026-10-05 13:00 A |  | 0% → 100% | 111.14d → none |  |
| 167 | **палетообмостчик монтаж в 1ц** |  | 2026-10-05 12:00 → 2026-10-12 12:00 (+7d) | 46.38d → 51.38d |  | 112.22d → 107.22d |  |
| 174 | монтаж | 2026-10-05 09:00 → 2026-10-12 09:00 (+7d) | 2026-10-05 12:00 → 2026-10-12 12:00 (+7d) |  |  | 112.22d → 107.22d | constraint start no earlier than 2026-10-05 09:00 → start no earlier than 2026-10-12 09:00 |
| 805 | **2 цех** |  |  |  | 87% → 88% |  |  |
| 808 | Снять аккумулятор со смесителя во время остановки, возможно откалибровать. Отчитаться мастеру |  |  |  |  |  | was named Снять аккумулятор со смесителя во время остановки |
| 810 | Ремонт шпингалета на воротох, где навески, получить у мастеров, если нет, звони Зорькину | 2026-10-03 09:00 A | 2026-10-03 10:00 A |  | 0% → 100% |  |  |
| 814 | Изготовить пластину для удобного сбора гранулы лопатой, позвонить зорькину | 2026-10-03 09:00 → 2026-10-06 09:00 (+3d) | 2026-10-03 11:00 → 2026-10-06 11:00 (+3d) |  |  |  | constraint start no earlier than 2026-10-03 09:00 → start no earlier than 2026-10-06 09:00 |
| 815 | Посмотреть ручки на складе, по возможности замена, если их нет ,сообщить какие закупить. Если ничего нет и ремонт невозможен, фиксируем язычок или убираем его. | 2026-10-03 09:00 A | 2026-10-03 10:00 A |  | 0% → 100% |  |  |
| 817 | Включить отопление в лабораторию | 2026-10-02 09:00 A | 2026-10-02 10:00 A |  | 0% → 100% | 114.47d → none |  |
| 844 | Изготовить носик на подаче сухого гидролизата под уклоном ближе к барабану | 2026-09-29 09:00 A | 2026-09-29 12:00 A |  | 0% → 100% | 117.22d → none |  |
| 869 | контроль доставки | 2026-09-25 09:00 → 2026-10-07 09:00 (+12d) | 2026-09-25 09:15 → 2026-10-07 09:15 (+12d) |  |  | 120.31d → 109.31d | constraint start no earlier than 2026-09-25 09:00 → start no earlier than 2026-10-07 09:00 |
| 914 | **установить сифон ф110 в линию слива жиров** |  | 2026-10-06 11:30 → 2026-10-20 11:30 (+14d) | 47.31d → 57.31d |  | 111.28d → 101.28d |  |
| 916 | возможно ли убрать сифоны ф50, достаточно ли заслонки без гидрозатвора? Как сделать гидрозатвор ф100 | 2026-10-05 09:00 → 2026-10-19 09:00 (+14d) | 2026-10-05 09:15 → 2026-10-19 09:15 (+14d) |  |  | 111.28d → 101.28d | constraint start no earlier than 2026-10-05 09:00 → start no earlier than 2026-10-19 09:00 |
| 917 | решение | 2026-10-06 09:15 → 2026-10-20 09:15 (+14d) | 2026-10-06 09:15 → 2026-10-20 09:15 (+14d) |  |  | 111.28d → 101.28d |  |
| 918 | контроль доставка | 2026-10-06 09:15 → 2026-10-20 09:15 (+14d) | 2026-10-06 09:30 → 2026-10-20 09:30 (+14d) |  |  | 111.28d → 101.28d |  |
| 919 | монтаж | 2026-10-06 09:30 → 2026-10-20 09:30 (+14d) | 2026-10-06 11:30 → 2026-10-20 11:30 (+14d) |  |  | 111.28d → 101.28d |  |
| 963 | **монтаж кабель** |  | 2026-10-06 12:00 → 2026-10-19 18:00 (+13d) | 44.38d? → 54d? |  | 111.22d → 101.59d |  |
| 967 | монтаж | 2026-10-05 12:00 → 2026-10-19 09:00 (+14d) | 2026-10-06 12:00 → 2026-10-19 18:00 (+13d) |  |  | 111.22d → 101.59d | constraint start no earlier than 2026-08-10 08:00 → start no earlier than 2026-10-19 09:00 |
| 1184 | **установить кольцо "вентури" в фильеру** |  |  |  | 78% → 100% |  |  |
| 1190 | провести тест | 2026-09-10 09:00 A | 2026-09-10 10:00 A |  | 0% → 100% | 136.47d → none |  |
| 1447 | **схема блокировки роль ворот при открытым шлюзе + авт закрытие + датчик препятствия** |  | 2026-10-05 13:00 → 2026-10-19 13:00 (+14d) | 25.5d → 35.5d |  | 112.09d → 102.09d |  |
| 1449 | монтаж | 2026-10-05 09:00 → 2026-10-19 09:00 (+14d) | 2026-10-05 13:00 → 2026-10-19 13:00 (+14d) |  |  | 112.09d → 102.09d | constraint start no earlier than 2026-10-05 09:00 → start no earlier than 2026-10-19 09:00 |
| 1485 | Закрыть все входа в производственную зону. Со стороны склада, гидролизата, со стороны фасовки, со стороны пандуса. Ключи взять у нас в кабинете в ящике. Ключи подписать | 2026-10-03 09:00 A | 2026-10-03 11:00 A |  | 0% → 100% |  |  |
| 1489 | Установить насос с ножами в 3 цех под раковину мойки на жирах | 2026-10-03 09:00 → 2026-10-19 09:00 (+16d) | 2026-10-03 13:00 → 2026-10-19 13:00 (+16d) |  |  |  | constraint start no earlier than 2026-10-03 09:00 → start no earlier than 2026-10-19 09:00 |
| 1565 | **сборка квадропака 3 цех** |  | 2026-10-05 13:00 → 2026-10-12 13:00 (+7d) | 44.5d → 49.5d |  | 112.09d → 107.09d |  |
| 1573 | тест на пакетах | 2026-10-05 09:00 → 2026-10-12 09:00 (+7d) | 2026-10-05 13:00 → 2026-10-12 13:00 (+7d) |  |  | 112.09d → 107.09d | constraint start no earlier than 2026-10-05 09:00 → start no earlier than 2026-10-12 09:00 |
| 1863 | **монтаж тепловые пушки подвесные 5 цех** |  | 2026-10-06 18:00 → 2026-10-13 18:00 (+7d) | 41d → 46d |  | 110.59d → 105.59d |  |
| 1868 | монтаж | 2026-10-05 09:00 → 2026-10-12 09:00 (+7d) | 2026-10-06 18:00 → 2026-10-13 18:00 (+7d) |  |  | 110.59d → 105.59d | constraint start no earlier than 2026-10-05 09:00 → start no earlier than 2026-10-12 09:00 |
| 2072 | проверка черетежей / подготовка к сборке | 2026-10-06 09:00 → 2026-10-09 09:00 (+3d) | 2026-10-06 10:00 → 2026-10-09 10:00 (+3d) |  |  | 109.47d → 106.47d | constraint start no earlier than 2026-10-06 09:00 → start no earlier than 2026-10-09 09:00 |
| 2073 | сборка | 2026-10-06 10:00 → 2026-10-09 10:00 (+3d) | 2026-10-08 10:00 → 2026-10-13 10:00 (+5d) |  |  | 109.47d → 106.47d |  |
| 2293 | **слесарное помещение** |  | 2026-10-04 12:00 → 2026-10-05 12:00 (+1d) | 89.38d? → 90.38d? |  | 113.22d → 112.22d |  |
| 2295 | Ремонт электродов парогенератора, один из электродов травит, пересобрать | 2026-10-04 09:00 → 2026-10-05 09:00 (+1d) | 2026-10-04 12:00 → 2026-10-05 12:00 (+1d) |  |  | 113.22d → 112.22d | was named Ремонт электродов парогенератора; constraint start no earlier than 2026-10-04 09:00 → start no earlier than 2026-10-05 09:00 |

## Version 22 (saved 2026-10-06, file 07.09.26.mpp)

Last finish stays 2027-03-10. Complete tasks 2350 → 2356.

Added:

| ID | Task | Duration | Start | Finish | Constraint | Resources |
| --- | --- | --- | --- | --- | --- | --- |
| 806 | Сделать штекер поломоечной машинки. Склеить или взять со старого зарядного и приделать в замен нынешнего, проявить смекалку как это можно сделать. Созвониться с зорькиным | 2h | 2026-10-06 09:00 | 2026-10-06 11:00 | start no earlier than 2026-10-06 08:00 | Бобренок В |
| 814 | Ремонт электрики Бестром (в случае если не будет работать) | 4h | 2026-10-07 09:00 | 2026-10-07 13:00 | start no earlier than 2026-10-07 09:00 | Дедов В |

Changed:

| ID | Task | Start | Finish | Duration | Complete | Total float | Other |
| --- | --- | --- | --- | --- | --- | --- | --- |
| 2 | Устранение течи с вентиляции, предложить варианты, выслушать вариант домоводова | 2026-10-06 09:00 A | 2026-10-06 12:00 A |  | 0% → 100% | 111.22d → none |  |
| 3 | Изготовление и установка крышек на бачок гидролизата в 1 цеху | 2026-10-04 09:00 → 2026-10-07 09:00 (+3d) | 2026-10-04 12:00 → 2026-10-07 12:00 (+3d) |  |  | 113.22d → 110.22d | constraint start no earlier than 2026-10-04 09:00 → start no earlier than 2026-10-07 09:00 |
| 4 | **Вал прекондиционера 1 линия** |  | 2026-10-06 17:00 A |  | 34% → 100% | 110.72d → none |  |
| 7 | Передача всей необходимой информации токарю | 2026-10-05 14:00 A | 2026-10-05 14:30 A |  | 0% → 100% | 111.14d → none |  |
| 8 | Контроль | 2026-10-05 14:30 A | 2026-10-05 14:40 A |  | 0% → 100% | 111.14d → none |  |
| 9 | Доставка | 2026-10-06 09:00 A | 2026-10-06 12:00 A |  | 0% → 100% | 110.72d → none |  |
| 10 | Ставим новый вал сразу после прихода | 2026-10-06 12:00 A | 2026-10-06 17:00 A |  | 0% → 100% | 110.72d → none |  |
| 52 | **реконструкция хранения гидролизатов и маршрут подачи навесок** |  |  |  | 1% → 2% |  |  |
| 68 | перенос батареи отопления в гидролизатной | 2026-09-08 09:00 → 2026-10-07 09:00 (+29d) | 2026-09-08 18:00 → 2026-10-07 11:00 (+29d) | 1d? → 2h |  | 137.59d → 110.34d | constraint start no earlier than 2026-09-08 08:00 → start no earlier than 2026-10-07 09:00; resources none → Труфанов А; Некрасов А |
| 182 | **зависает диспелей на расходомере 2л** |  | 2026-10-07 09:30 → 2026-10-20 09:30 (+13d) | 49.06d → 58.06d |  | 110.53d → 101.53d |  |
| 185 | объеденить минус шину контроллера с нулевым проводом оборудования ч/з резистор 10 Ом | 2026-10-07 09:00 → 2026-10-20 09:00 (+13d) | 2026-10-07 09:30 → 2026-10-20 09:30 (+13d) |  |  | 110.53d → 101.53d | constraint start no earlier than 2026-10-07 09:00 → start no earlier than 2026-10-20 09:00 |
| 578 | монтаж 1 линия расходомер / кабель / блок питания | 2026-10-07 09:00 A → 2026-10-12 09:00 A (+5d) | 2026-10-07 12:00 → 2026-10-12 12:00 (+5d) |  |  |  | constraint start no earlier than 2026-10-07 09:00 → start no earlier than 2026-10-12 09:00 |
| 628 | замена | 2026-10-06 09:00 → 2026-10-12 09:00 (+6d) | 2026-10-06 18:00 → 2026-10-12 18:00 (+6d) |  |  | 110.59d → 106.59d | constraint start no earlier than 2026-10-06 09:00 → start no earlier than 2026-10-12 09:00 |
| 805 | **2 цех** |  |  |  | 88% → 87% |  |  |
| 807 | Устранить течь в вентялиционной, проверить количество антифриза | 2026-10-05 09:00 → 2026-10-06 09:00 (+1d) | 2026-10-05 10:00 → 2026-10-06 10:00 (+1d) |  |  | 112.47d → 111.47d | constraint start no earlier than 2026-10-05 08:00 → start no earlier than 2026-10-06 09:00 |
| 808 | Перебрать ножевой узел, понять причину люфта/устранить | 2026-10-05 09:00 → 2026-10-06 09:00 (+1d) | 2026-10-05 11:00 → 2026-10-06 11:00 (+1d) |  |  | 112.34d → 111.34d | constraint start no earlier than 2026-10-05 08:00 → start no earlier than 2026-10-06 09:00 |
| 809 | Снять аккумулятор со смесителя во время остановки, возможно откалибровать. Отчитаться мастеру | 2026-10-02 09:00 → 2026-10-07 09:00 (+5d) | 2026-10-02 09:30 → 2026-10-07 09:30 (+5d) |  |  | 114.53d → 110.53d | constraint start no earlier than 2026-10-02 08:00 → start no earlier than 2026-10-07 09:00 |
| 810 | Восстановление платы от рециркуляторной лампы, составление списка комплектующих, подбор аналога платы | 2026-10-02 09:00 → 2026-10-07 09:00 (+5d) | 2026-10-02 12:00 → 2026-10-07 12:00 (+5d) |  |  | 114.22d → 110.22d | constraint start no earlier than 2026-10-02 08:00 → start no earlier than 2026-10-07 09:00 |
| 815 | Подключить кабель датчика пирометра с печи | 2026-10-08 09:00 → 2026-10-07 09:00 (-1d) | 2026-10-08 11:00 → 2026-10-07 11:00 (-1d) |  |  | 109.34d → 110.34d | constraint start no earlier than 2026-10-08 09:00 → start no earlier than 2026-10-07 09:00 |
| 838 | **сыпит в одну точку барабана, образуя не нужное кольцо** |  | 2026-10-09 10:00 → 2026-10-13 18:00 (+4d) | 4.12d → 7d |  | 108.47d → 105.59d |  |
| 839 | **перенос дозатора на второй барабан** |  | 2026-10-09 10:00 → 2026-10-13 18:00 (+4d) | 4.12d → 7d |  | 108.47d → 105.59d |  |
| 841 | изготовить раму - составить чертежи | 2026-10-07 10:00 → 2026-10-12 09:00 (+5d) | 2026-10-07 12:00 → 2026-10-12 11:00 (+5d) |  |  | 108.47d → 105.59d | constraint start no earlier than 2026-10-06 09:00 → start no earlier than 2026-10-12 09:00 |
| 842 | сборка рама | 2026-10-07 12:00 → 2026-10-12 11:00 (+5d) | 2026-10-07 17:00 → 2026-10-12 16:00 (+5d) |  |  | 108.47d → 105.59d |  |
| 843 | перенос шнека дозатора / переключения | 2026-10-08 17:00 → 2026-10-13 16:00 (+5d) | 2026-10-09 10:00 → 2026-10-13 18:00 (+4d) |  |  | 108.47d → 105.59d |  |
| 2295 | **слесарное помещение** |  |  |  | 76% → 87% |  |  |
| 2297 | Ремонт электродов парогенератора, один из электродов травит, пересобрать | 2026-10-05 09:00 A | 2026-10-05 12:00 A |  | 0% → 100% | 112.22d → none |  |
| 2569 | **приточная вентиляция** |  | 2026-10-07 10:00 → 2026-10-14 10:00 (+7d) | 163.12d → 168.12d |  | 110.47d → 105.47d |  |
| 2573 | Проверка фильтра, по необходимости замена | 2026-10-07 09:00 → 2026-10-14 09:00 (+7d) | 2026-10-07 10:00 → 2026-10-14 10:00 (+7d) |  |  | 110.47d → 105.47d | constraint start no earlier than 2026-10-07 09:00 → start no earlier than 2026-10-14 09:00 |
| 2652 | **питатель экструдера** |  | 2026-10-07 09:30 → 2026-10-14 09:30 (+7d) | 153.06d → 158.06d |  | 110.53d → 105.53d |  |
| 2660 | Ревизия питателя, контроль состояния подшипников/втулки/шестерен | 2026-10-07 09:00 → 2026-10-14 09:00 (+7d) | 2026-10-07 09:30 → 2026-10-14 09:30 (+7d) |  |  | 110.53d → 105.53d | constraint start no earlier than 2026-10-07 09:00 → start no earlier than 2026-10-14 09:00 |
| 2661 | **прекондицинер экструдера** |  | 2026-10-07 09:15 → 2026-10-14 09:15 (+7d) | 113.03d → 118.03d |  | 110.56d → 105.56d |  |
| 2665 | контроль привода, подшипников | 2026-10-07 09:00 → 2026-10-14 09:00 (+7d) | 2026-10-07 09:15 → 2026-10-14 09:15 (+7d) |  |  | 110.56d → 105.56d | constraint start no earlier than 2026-10-07 09:00 → start no earlier than 2026-10-14 09:00 |
| 2673 | **шкаф управления экструдером** |  | 2026-10-07 09:15 → 2026-10-14 09:15 (+7d) | 158.03d → 163.03d |  | 110.56d → 105.56d |  |
| 2679 | частотные привода экструдера, ножей, питателя - продувка | 2026-10-07 09:00 → 2026-10-14 09:00 (+7d) | 2026-10-07 09:15 → 2026-10-14 09:15 (+7d) |  |  | 110.56d → 105.56d | constraint start no earlier than 2026-10-07 09:00 → start no earlier than 2026-10-14 09:00 |
| 2680 | **редуктор экструдера и маслянная станция** |  | 2026-10-07 09:30 → 2026-10-14 09:30 (+7d) | 108.06d → 113.06d |  | 110.53d → 105.53d |  |
| 2687 | Чистка фильтра/тэны и термопары шнеков - протяжка | 2026-10-07 09:00 → 2026-10-14 09:00 (+7d) | 2026-10-07 09:30 → 2026-10-14 09:30 (+7d) |  |  | 110.53d → 105.53d | constraint start no earlier than 2026-10-07 09:00 → start no earlier than 2026-10-14 09:00 |
| 2688 | **блок тэнов сушки - протяжка** |  | 2026-10-07 09:20 → 2026-10-14 09:20 (+7d) | 108.04d? → 113.04d? |  | 110.55d → 105.55d |  |
| 2692 | Ревизия, проверка жил, проверка токов | 2026-10-07 09:00 → 2026-10-14 09:00 (+7d) | 2026-10-07 09:20 → 2026-10-14 09:20 (+7d) |  |  | 110.55d → 105.55d | constraint start no earlier than 2026-10-07 09:00 → start no earlier than 2026-10-14 09:00 |
| 2703 | ревизия/ проверка токов/протяжка контактов | 2026-10-07 09:00 → 2026-10-14 09:00 (+7d) | 2026-10-07 09:15 → 2026-10-14 09:15 (+7d) |  |  | 110.56d → 105.56d | constraint start no earlier than 2026-10-07 09:00 → start no earlier than 2026-10-14 09:00 |
| 2725 | Дефектовка - проверить подачу, вибрации, посторонние шумы/проверка фильтров/насосов/фитингов | 2026-10-07 09:00 → 2026-10-14 09:00 (+7d) | 2026-10-07 09:15 → 2026-10-14 09:15 (+7d) |  |  | 110.56d → 105.56d | constraint start no earlier than 2026-10-07 09:00 → start no earlier than 2026-10-14 09:00 |
| 2730 | **упаковщкики** |  | 2026-10-07 11:00 → 2026-10-14 11:00 (+7d) | 436.25d → 441.25d |  | 110.34d → 105.34d |  |
| 2744 | Осмотр всех упаковщиков/транспортеров/накопительных столов/ всех щитков оборудования | 2026-10-07 09:00 → 2026-10-14 09:00 (+7d) | 2026-10-07 11:00 → 2026-10-14 11:00 (+7d) |  |  | 110.34d → 105.34d | constraint start no earlier than 2026-10-07 09:00 → start no earlier than 2026-10-14 09:00 |
| 2745 | **электрооборудование** |  | 2026-10-07 10:00 → 2026-10-14 10:00 (+7d) | 662.12d? → 667.12d? |  | 110.47d → 105.47d |  |
| 2752 | **Компрессор 1 цех** |  | 2026-10-07 10:00 → 2026-10-14 10:00 (+7d) | 95.12d? → 100.12d? |  | 110.47d → 105.47d |  |
| 2754 | продувка радиаторов осушителя и компрессора, слив конденсата | 2026-10-07 09:00 → 2026-10-14 09:00 (+7d) | 2026-10-07 10:00 → 2026-10-14 10:00 (+7d) |  |  | 110.47d → 105.47d | constraint start no earlier than 2026-10-07 09:00 → start no earlier than 2026-10-14 09:00 |
| 2759 | осушитель 1 цех/слить конденсат | 2026-10-07 09:00 → 2026-10-14 09:00 (+7d) | 2026-10-07 09:20 → 2026-10-14 09:20 (+7d) |  |  | 110.55d → 105.55d | constraint start no earlier than 2026-10-07 09:00 → start no earlier than 2026-10-14 09:00 |
| 3222 | **офис** |  | 2026-10-07 11:00 → 2026-10-12 11:00 (+5d) | 941.25d? → 944.25d? |  | 110.34d → 107.34d |  |
| 3257 | замена регистр отопления нач снабжения | 2026-10-07 09:00 → 2026-10-12 09:00 (+5d) | 2026-10-07 11:00 → 2026-10-12 11:00 (+5d) |  |  | 110.34d → 107.34d | constraint start no earlier than 2026-10-07 09:00 → start no earlier than 2026-10-12 09:00 |
| 3266 | **склад упаковки** |  | 2026-10-06 13:00 → 2026-10-07 13:00 (+1d) | 141.5d? → 142.5d? |  | 111.09d → 110.09d |  |
| 3268 | переделать крепление рамы наруж блока - к МК здания, анкера убрать | 2026-10-06 09:00 → 2026-10-07 09:00 (+1d) | 2026-10-06 13:00 → 2026-10-07 13:00 (+1d) |  |  | 111.09d → 110.09d | was named переделать крепление рамы наруж блока - к МК задния, анкера убрать; constraint start no earlier than 2026-10-06 09:00 → start no earlier than 2026-10-07 09:00; resources Некрасов А → Некрасов А; Труфанов А |
| 3386 | У охраны не работает тепловая пушка, ревизия/ремонт | 2026-10-05 09:00 → 2026-10-06 09:00 (+1d) | 2026-10-05 10:00 → 2026-10-06 10:00 (+1d) |  |  | 112.47d → 111.47d | constraint start no earlier than 2026-10-05 08:00 → start no earlier than 2026-10-06 09:00 |

## Version 23 (saved 2026-10-12, file 07.09.26.mpp)

Last finish stays 2027-03-10. Complete tasks 2356 → 2402.

Added:

| ID | Task | Duration | Start | Finish | Predecessors | Constraint | Resources |
| --- | --- | --- | --- | --- | --- | --- | --- |
| 2 | **Входная дверь 1 цех** | 0d | 2026-10-10 09:00 A | 2026-10-10 10:00 |  |  |  |
| 3 | Посмотреть входные двери в 1 цех, тяжело закрываются, устранить | 1h | 2026-10-10 09:00 A | 2026-10-10 10:00 |  | start no earlier than 2026-10-10 09:00 | Бундин В |
| 4 | Замена петли или всей двери (сильный изность петли) | 1h | 2026-10-10 09:00 | 2026-10-10 10:00 |  | start no earlier than 2026-10-10 09:00 | Бундин В |
| 5 | Увезти бетономешалку и лестницу с пандуса (бетономешалку прикрутить к паллету на перфоленту и сразу поставить на полку | 1d? | 2026-10-12 09:00 A | 2026-10-12 18:00 A |  | start no earlier than 2026-10-12 08:00 |  |
| 6 | Установить вентилятор на пробник (на столе в слесарке?) | 1h | 2026-10-09 09:00 A | 2026-10-09 10:00 A |  | start no earlier than 2026-10-09 09:00 | Дедов В |
| 7 | Убрать пневмотрубу из гидролизатной, видео скинул, муфту взять в кабинете у нас. Остановку согласовать, сделать все за 20 мин максимум | 20min | 2026-10-08 09:00 A | 2026-10-08 09:20 A |  | start no earlier than 2026-10-08 08:00 | Бобренок В |
| 76 | Помощь Олегу пока ставит шпильки | 1h | 2026-10-12 09:00 A | 2026-10-12 10:00 A |  | start no earlier than 2026-10-12 08:00 | Труфанов А; Бобренок В |
| 813 | Сфотать шильдик компрессора (попросить пацанов с фасовки) и скинуть Зорькину | 1h | 2026-10-12 09:00 | 2026-10-12 10:00 |  | start no earlier than 2026-10-12 08:00 | Бундин В |
| 814 | Слить весь антифриз с приточки в вентиляции, перемотать соединения ПП к колориферу и насос | 2h | 2026-10-12 09:00 | 2026-10-12 11:00 |  | start no earlier than 2026-10-12 08:00 | Бундин В |
| 815 | Открыть приточку под потолком, где кабинеты в корридоре (по возможности найти диффузор и установить его, либо подумать, как ограничить поток) | 2h | 2026-10-12 09:00 | 2026-10-12 11:00 |  | start no earlier than 2026-10-12 08:00 | Бундин В |
| 816 | Бежит со стыка в раковине с сифоном, проверить/исправить на жирах | 1h | 2026-10-12 09:00 | 2026-10-12 10:00 |  | start no earlier than 2026-10-12 08:00 | Бундин В |
| 817 | Поставить воздухоотводчик с боковым отводом на котел с которого бежало | 1h | 2026-10-12 09:00 | 2026-10-12 10:00 | 818 |  | Бобренок В |
| 818 | Поставить сливной шланг на поломоечную машинку, должен быть на ней | 30min | 2026-10-10 09:00 A | 2026-10-10 09:30 A |  | start no earlier than 2026-10-10 09:00 | Бундин В |
| 819 | Собрать новый электрод для парогенератора из цельного нерж прутка, конец немного закруглить лепестковым диском | 4h | 2026-10-12 10:00 A | 2026-10-12 15:00 A | 817 |  | Бобренок В; Зорькин В |
| 821 | При запуске отопления приточки, как будет давление в системе проверить антифриз, долить | 1h | 2026-10-28 09:00 | 2026-10-28 10:00 |  | start no earlier than 2026-10-28 09:00 | Тимофеев В |
| 1502 | Подписать на шкафу управления нории обозначения кнопок (на малярный скотч) | 1h | 2026-10-09 09:00 A | 2026-10-09 10:00 A |  | start no earlier than 2026-10-09 08:00 | Дедов В |
| 1506 | Доделать закрепление окна из орг стекла, на жирах на заклепки вытяжные м6 | 1h | 2026-10-10 09:00 A | 2026-10-10 10:00 A |  | start no earlier than 2026-10-10 09:00 | Бундин В |
| 1507 | **насос** | 5.5d | 2026-10-13 09:00 | 2026-10-20 13:00 |  |  |  |
| 1823 | Закрепить табличку с графиком работы цеха, взять в кабинете у мастеров, можно присверлить, но аккуратно, посмотреть варианты крепляния на других цехах | 1h | 2026-10-12 09:00 | 2026-10-12 10:00 |  | start no earlier than 2026-10-12 08:00 | Бундин В |
| 1824 | Выбрать болеменее нормальные балки 2 шт для стеллажей лежат рядом с 5а в углу и закрепить их по аналогу других балок | 2h | 2026-10-13 09:00 | 2026-10-13 11:00 |  | start no earlier than 2026-10-13 09:00 | Макаревич А; Труфанов А |
| 2317 | Доделать электрод | 2h | 2026-10-11 09:00 A | 2026-10-11 11:00 A | 2318 |  | Бобренок В |
| 2837 | Чистка как остановятся, если не получится, передать по смене труфанову | 1h | 2026-10-07 09:00 | 2026-10-07 10:00 |  | start no earlier than 2026-10-07 08:00 | Бундин В |
| 2838 | Устранить травление пара между сбросником (клапан) и краном | 30min | 2026-10-08 09:00 | 2026-10-08 09:30 |  | start no earlier than 2026-10-08 09:00 | Труфанов А; Некрасов А |
| 2839 | Проверить гофротрубу на травление под площадкой, где стоит система из кранов/устранить/заменить | 1h | 2026-10-08 09:00 | 2026-10-08 10:00 |  | start no earlier than 2026-10-08 09:00 | Труфанов А; Некрасов А |
| 2882 | Ревизия ленты, контроль соединения | 30min | 2026-10-08 09:00 | 2026-10-08 09:30 |  | start no earlier than 2026-10-08 09:00 | Труфанов А; Некрасов А |
| 2883 | Проверка мотор редуктора на верху, почему трясет/устранить | 1h | 2026-10-08 09:00 | 2026-10-08 10:00 |  | start no earlier than 2026-10-08 09:00 | Труфанов А; Некрасов А |
| 2891 | Осмотр | 5min | 2026-10-08 09:00 | 2026-10-08 09:05 |  | start no earlier than 2026-10-08 09:00 | Дедов В |
| 2911 | Осмотр подшипников, муфты, шестерен | 10min | 2026-10-08 09:00 | 2026-10-08 09:10 |  | start no earlier than 2026-10-08 09:00 | Труфанов А; Некрасов А |
| 2912 | Поставить защитный кожух | 10min | 2026-10-08 09:00 | 2026-10-08 09:10 |  | start no earlier than 2026-10-08 09:00 | Труфанов А; Некрасов А |
| 2920 | Проверка муфту соединенной цепью, есть сильный люфт, при выявлении откланений сообщить/устранить | 30min | 2026-10-08 09:00 | 2026-10-08 09:30 |  | start no earlier than 2026-10-08 09:00 | Труфанов А; Некрасов А |
| 2921 | Проверка масла | 10min | 2026-10-08 09:00 | 2026-10-08 09:10 |  | start no earlier than 2026-10-08 09:00 | Дедов В |
| 2940 | Проверка масла | 10min | 2026-10-08 09:00 | 2026-10-08 09:10 |  | start no earlier than 2026-10-08 09:00 | Дедов В |
| 2941 | Чистка фильтра | 15min | 2026-10-08 09:00 | 2026-10-08 09:15 |  | start no earlier than 2026-10-08 09:00 | Дедов В |
| 2954 | продувка частотного привода | 10min | 2026-10-08 09:00 | 2026-10-08 09:10 |  | start no earlier than 2026-10-08 09:00 | Дедов В |
| 2970 | Контроль состояния шестерен привода | 10min | 2026-10-08 09:00 | 2026-10-08 09:10 |  | start no earlier than 2026-10-08 09:00 | Дедов В |
| 2971 | Проверка редуктора и выявление причины его шума и шатания/устранить | 1h | 2026-10-08 09:00 | 2026-10-08 10:00 |  | start no earlier than 2026-10-08 09:00 | Дедов В |
| 3096 | Проверка контактов их продувка и их протяжка. Проверка эелектрической части, устранение неисправностей. | 4h | 2026-10-08 09:00 | 2026-10-08 13:00 |  | start no earlier than 2026-10-08 09:00 | Дедов В |
| 3305 | Замена терморегулятора о котором ты мне говорил на болере склада упаковки, новые должны быть на складе, если нет, снять со старого в контейнере | 2h | 2026-10-11 09:00 A | 2026-10-11 11:00 A |  | start no earlier than 2026-10-11 09:00 | Бобренок В |
| 3306 | Установить новый бойлер, старый на ремонт в слесарку | 30min | 2026-10-08 09:00 A | 2026-10-08 09:30 A |  | start no earlier than 2026-10-08 08:00 | Бобренок В |
| 3426 | Обход по цехам по трассе воды в 5 цех (цех 3, цех 4, 5а, 5) Утром и вечером | 1h | 2026-10-10 09:00 A | 2026-10-10 10:00 A |  | start no earlier than 2026-10-10 09:00 | Дедов В |

Changed:

| ID | Task | Start | Finish | Duration | Complete | Total float | Other |
| --- | --- | --- | --- | --- | --- | --- | --- |
| 9 | Изготовление и установка крышек на бачок гидролизата в 1 цеху | 2026-10-07 09:00 A | 2026-10-07 12:00 A |  | 0% → 100% | 110.22d → none |  |
| 58 | **реконструкция хранения гидролизатов и маршрут подачи навесок** |  | 2026-10-08 10:30 → 2026-10-12 11:00 (+4d) | 29.19d? → 31.25d? | 2% → 32% | 109.41d → 107.34d |  |
| 74 | перенос батареи отопления в гидролизатной | 2026-10-07 09:00 → 2026-10-12 09:00 A (+5d) | 2026-10-07 11:00 → 2026-10-12 11:00 A (+5d) |  | 0% → 100% | 110.34d → none | constraint start no earlier than 2026-10-07 09:00 → start no earlier than 2026-10-12 09:00; resources Труфанов А; Некрасов А → Труфанов А; Бобренок В |
| 75 | демонтаж бетонного отлива/отмостка | 2026-09-08 09:00 A | 2026-09-09 18:00 A |  | 0% → 100% | 136.59d → none |  |
| 94 | **квадропак - сделать силиконовый успокоитель между нория и весы 800*250 шаг шторок 60** |  | 2026-10-09 11:10 → 2026-10-19 11:00 (+10d) | 13.27d → 19.25d |  | 108.32d → 102.34d |  |
| 97 | сборка | 2026-10-09 09:10 → 2026-10-19 09:00 (+10d) | 2026-10-09 11:10 → 2026-10-19 11:00 (+10d) |  |  | 108.32d → 102.34d | constraint start no earlier than 2026-10-06 09:00 → start no earlier than 2026-10-19 09:00 |
| 107 | **Не работают роль ставни на жирах, не стопоряться сделать/устранить неисправность** |  | 2026-09-29 09:10 A |  | 98% → 100% | 117.57d → none |  |
| 110 | согласовать с подрядчиком дату ремонта | 2026-09-29 09:00 A | 2026-09-29 09:10 A |  | 0% → 100% | 117.57d → none |  |
| 174 | **палетообмостчик монтаж в 1ц** |  | 2026-10-12 12:00 → 2026-10-16 12:00 (+4d) | 51.38d → 55.38d |  | 107.22d → 103.22d |  |
| 181 | монтаж | 2026-10-12 09:00 → 2026-10-16 09:00 (+4d) | 2026-10-12 12:00 → 2026-10-16 12:00 (+4d) |  |  | 107.22d → 103.22d | constraint start no earlier than 2026-10-12 09:00 → start no earlier than 2026-10-16 09:00 |
| 182 | **замена сетка печи линия 1** |  |  |  | 5% → 8% |  |  |
| 186 | контроль доставки | 2026-09-30 09:00 A | 2026-09-30 09:15 A |  | 0% → 100% | 114.5d → none |  |
| 245 | **сборка дозатор на квадропак** |  |  |  | 93% → 96% |  |  |
| 265 | покупка за нал / найти доп пружины | 2026-09-28 09:00 A | 2026-09-28 10:00 A |  | 0% → 100% | 118.47d → none |  |
| 479 | **заменить фильтры на жиротопка** | 2026-09-14 09:00 A | 2026-10-01 10:00 A |  | 0% → 100% | 115.47d → none |  |
| 480 | выяснить тип фильтров, заказ катриджи | 2026-09-14 09:00 A | 2026-09-14 10:00 A |  | 0% → 100% | 122.31d → none |  |
| 481 | контроль | 2026-09-24 10:00 A | 2026-09-24 10:15 A |  | 0% → 100% | 122.31d → none |  |
| 482 | замена | 2026-10-01 09:00 A | 2026-10-01 10:00 A |  | 0% → 100% | 115.47d → none |  |
| 812 | **2 цех** |  |  |  | 87% → 88% |  |  |
| 820 | Сделать штекер поломоечной машинки. Склеить или взять со старого зарядного и приделать в замен нынешнего, проявить смекалку как это можно сделать. Созвониться с зорькиным | 2026-10-06 09:00 A | 2026-10-06 11:00 A |  | 0% → 100% | 111.34d → none |  |
| 822 | Устранить течь в вентялиционной, проверить количество антифриза | 2026-10-06 09:00 A | 2026-10-06 10:00 A |  | 0% → 100% | 111.47d → none |  |
| 823 | Перебрать ножевой узел, понять причину люфта/устранить | 2026-10-06 09:00 A | 2026-10-06 11:00 A |  | 0% → 100% | 111.34d → none |  |
| 824 | Откалибровать смеситель | 2026-10-07 09:00 → 2026-10-09 09:00 (+2d) | 2026-10-07 09:30 → 2026-10-09 10:00 (+2d) | 30min → 1h |  | 110.53d → 108.47d | was named Снять аккумулятор со смесителя во время остановки, возможно откалибровать. Отчитаться мастеру; constraint start no earlier than 2026-10-07 09:00 → start no earlier than 2026-10-09 09:00 |
| 825 | Восстановление платы от рециркуляторной лампы, составление списка комплектующих, подбор аналога платы | 2026-10-07 09:00 A | 2026-10-07 12:00 A |  | 0% → 100% | 110.22d → none |  |
| 827 | Замена дырявой трубы под парогенератором | 2026-10-08 09:00 A | 2026-10-08 10:00 A |  | 0% → 100% | 109.47d → none |  |
| 829 | Ремонт электрики Бестром (в случае если не будет работать) | 2026-10-07 09:00 A | 2026-10-07 13:00 A |  | 0% → 100% | 110.09d → none |  |
| 830 | Подключить кабель датчика пирометра с печи, разобраться, где что | 2026-10-07 09:00 → 2026-10-09 09:00 (+2d) | 2026-10-07 11:00 → 2026-10-09 11:00 (+2d) |  |  | 110.34d → 108.34d | was named Подключить кабель датчика пирометра с печи; constraint start no earlier than 2026-10-07 09:00 → start no earlier than 2026-10-09 09:00 |
| 831 | Изготовить пластину для удобного сбора гранулы лопатой, позвонить зорькину | 2026-10-06 09:00 A | 2026-10-06 11:00 A |  | 0% → 100% |  |  |
| 835 | **Ремонт бактерицидной лампы возле компрессора** | 2026-10-02 09:00 A | 2026-10-08 18:00 → 2026-10-12 18:00 (+4d) | 6d? → 8d? | 0% → 87% | 108.59d → 106.59d |  |
| 838 | Ремонт | 2026-10-08 09:00 → 2026-10-12 09:00 A (+4d) | 2026-10-08 18:00 → 2026-10-12 18:00 A (+4d) |  | 0% → 100% | 108.59d → none | constraint start no earlier than 2026-10-08 09:00 → start no earlier than 2026-10-12 09:00 |
| 853 | **сыпит в одну точку барабана, образуя не нужное кольцо** |  | 2026-10-13 18:00 → 2026-10-19 18:00 (+6d) | 7d → 11d |  | 105.59d → 101.59d |  |
| 854 | **перенос дозатора на второй барабан** |  | 2026-10-13 18:00 → 2026-10-19 18:00 (+6d) | 7d → 11d |  | 105.59d → 101.59d |  |
| 856 | изготовить раму - составить чертежи | 2026-10-12 09:00 → 2026-10-16 09:00 (+4d) | 2026-10-12 11:00 → 2026-10-16 11:00 (+4d) |  |  | 105.59d → 101.59d | constraint start no earlier than 2026-10-12 09:00 → start no earlier than 2026-10-16 09:00 |
| 857 | сборка рама | 2026-10-12 11:00 → 2026-10-16 11:00 (+4d) | 2026-10-12 16:00 → 2026-10-16 16:00 (+4d) |  |  | 105.59d → 101.59d |  |
| 858 | перенос шнека дозатора / переключения | 2026-10-13 16:00 → 2026-10-19 16:00 (+6d) | 2026-10-13 18:00 → 2026-10-19 18:00 (+6d) |  |  | 105.59d → 101.59d |  |
| 883 | **ревизия сливной шланг моечная машинка** |  | 2026-10-09 11:00 A |  | 36% → 100% | 108.34d → none |  |
| 886 | контроль доставки | 2026-10-07 09:00 A | 2026-10-07 09:15 A |  | 0% → 100% | 109.31d → none |  |
| 887 | монтаж | 2026-10-09 09:00 A | 2026-10-09 11:00 A |  | 0% → 100% | 108.34d → none |  |
| 963 | **обеспечить не менее +15 зимой в зоне хранения навесок** |  | 2026-10-23 11:45 → 2026-11-02 16:00 (+10d) | 66.34d? → 72.75d? | 22% → 23% | 98.25d → 91.84d |  |
| 964 | **утепление стены** |  | 2026-10-13 18:00 → 2026-11-02 16:00 (+20d) | 39d? → 52.75d | 11% → 14% | 105.59d → 91.84d |  |
| 968 | монтаж пеноплекса на стену | 2026-10-13 09:00 → 2026-11-02 09:00 (+20d) | 2026-10-13 18:00 → 2026-11-02 16:00 (+20d) | 1d? → 6h |  | 105.59d → 91.84d | was named монтаж утеплитель и листы; constraint start no earlier than 2026-10-13 09:00 → start no earlier than 2026-11-02 09:00; resources Некрасов А → Бобренок В; Труфанов А |
| 1008 | **ремонт осушителя компрессора 2ц** |  |  |  | 80% → 82% |  |  |
| 1010 | заявка фреон 134а | 2026-09-25 09:00 A | 2026-09-25 09:15 A |  | 0% → 100% | 113.28d → none |  |
| 1098 | **ремонт эл котел №3 охладитель** |  | 2026-09-19 11:00 A |  | 92% → 100% | 121.31d → none |  |
| 1105 | замена блок тенов | 2026-09-19 09:00 A | 2026-09-19 11:00 A |  | 0% → 100% | 121.31d → none |  |
| 1501 | **3 цех** |  |  |  | 79% → 80% |  |  |
| 1504 | Сделать перила на лестницу между фасовкой и жирами, высота по образцу лестницы, которая на загрузке смесителей в 3 цеху. Делать минимальный габарит, чтоб рука пролазила между стеной и при этом сильно не сужало пространство. Делаем из 40 уголка | 2026-10-04 09:00 → 2026-10-09 09:00 A (+5d) | 2026-10-04 12:00 → 2026-10-09 15:00 A (+5d) | 3h → 5h | 0% → 100% |  | constraint start no earlier than 2026-10-04 09:00 → start no earlier than 2026-10-09 09:00 |
| 1505 | Сделать окно из орг стекла монолитного, на жирах сверху, чтоб было видно печку. Размер примерно 300х200 | 2026-10-03 09:00 → 2026-10-07 09:00 A (+4d) | 2026-10-03 11:00 → 2026-10-07 11:00 A (+4d) |  | 0% → 100% |  | constraint start no earlier than 2026-10-03 09:00 → start no earlier than 2026-10-07 09:00 |
| 1509 | Заказать необходимые комплектующие, переходники | 2026-10-06 09:00 → 2026-10-13 09:00 (+7d) | 2026-10-06 10:00 → 2026-10-13 10:00 (+7d) |  |  | 111.47d → 106.47d | constraint start no earlier than 2026-10-06 09:00 → start no earlier than 2026-10-13 09:00 |
| 1510 | Установить насос с ножами в 3 цех под раковину мойки на жирах | 2026-10-19 09:00 → 2026-10-20 09:00 (+1d) | 2026-10-19 13:00 → 2026-10-20 13:00 (+1d) |  |  |  | constraint start no earlier than 2026-10-19 09:00 → start no earlier than 2026-10-20 09:00; resources Бобренок В → Бобренок В; Труфанов А |
| 1530 | **Разобрать регулировку ножевого узла, достать вал на котором установлен штурвал** |  | 2026-10-05 10:00 → 2026-10-11 11:00 A (+6d) | 13.12d → 18d | 40% → 100% | 112.47d → none |  |
| 1532 | Заявка по образцу | 2026-09-21 09:00 A | 2026-09-21 09:20 A |  | 0% → 100% | 117.47d → none |  |
| 1533 | контроль | 2026-09-28 09:00 A | 2026-09-28 09:10 A |  | 0% → 100% | 117.45d → none |  |
| 1534 | установка, получить на складе, лежат 2 вала один новый, другой образец, забрать оба | 2026-10-05 09:00 → 2026-10-11 09:00 A (+6d) | 2026-10-05 10:00 → 2026-10-11 11:00 A (+6d) | 1h → 2h | 0% → 100% | 112.47d → none | was named установка; constraint start no earlier than 2026-10-05 09:00 → start no earlier than 2026-10-11 09:00; resources Тимофеев В → Бобренок В |
| 1558 | **установить ограничитель на дверь что бы попадала под движение рольворот** |  | 2026-10-08 10:00 → 2026-10-16 10:00 (+8d) | 15.12d → 21.12d |  | 109.47d → 103.47d |  |
| 1561 | монтаж | 2026-10-08 09:00 → 2026-10-16 09:00 (+8d) | 2026-10-08 10:00 → 2026-10-16 10:00 (+8d) |  |  | 109.47d → 103.47d | constraint start no earlier than 2026-10-08 09:00 → start no earlier than 2026-10-16 09:00 |
| 1586 | **сборка квадропака 3 цех** |  | 2026-10-12 13:00 → 2026-10-16 13:00 (+4d) | 49.5d → 53.5d | 70% → 85% | 107.09d → 103.09d |  |
| 1591 | зарисовка схема ШУ нория - понять управление бункером | 2026-08-14 09:00 A | 2026-08-14 13:00 A |  | 0% → 100% | 156.09d → none |  |
| 1594 | тест на пакетах | 2026-10-12 09:00 → 2026-10-16 09:00 (+4d) | 2026-10-12 13:00 → 2026-10-16 13:00 (+4d) |  |  | 107.09d → 103.09d | constraint start no earlier than 2026-10-12 09:00 → start no earlier than 2026-10-16 09:00 |
| 1825 | сборка полок для стеллажей архив бухгалтерии | 2026-10-06 09:00 → 2026-10-16 09:00 (+10d) | 2026-10-06 18:00 → 2026-10-16 18:00 (+10d) |  |  | 110.59d → 102.59d | constraint start no earlier than 2026-10-06 09:00 → start no earlier than 2026-10-16 09:00 |
| 1886 | **монтаж тепловые пушки подвесные 5 цех** |  | 2026-10-13 18:00 → 2026-10-20 18:00 (+7d) | 46d → 51d |  | 105.59d → 100.59d |  |
| 1891 | монтаж | 2026-10-12 09:00 → 2026-10-19 09:00 (+7d) | 2026-10-13 18:00 → 2026-10-20 18:00 (+7d) |  |  | 105.59d → 100.59d | constraint start no earlier than 2026-10-12 09:00 → start no earlier than 2026-10-19 09:00 |
| 2095 | проверка черетежей / подготовка к сборке | 2026-10-09 09:00 → 2026-10-12 09:00 (+3d) | 2026-10-09 10:00 → 2026-10-12 10:00 (+3d) |  |  | 106.47d → 105.47d | constraint start no earlier than 2026-10-09 09:00 → start no earlier than 2026-10-12 09:00 |
| 2096 | сборка | 2026-10-09 10:00 → 2026-10-13 09:00 (+4d) | 2026-10-13 10:00 → 2026-10-14 18:00 (+1d) |  |  | 106.47d → none | constraint start no earlier than 2026-10-05 09:00 → start no earlier than 2026-10-13 09:00; resources Некрасов А; Тимофеев В → Макаревич А; Труфанов А |
| 2316 | **слесарное помещение** |  | 2026-10-05 12:00 → 2026-10-11 11:00 (+6d) | 90.38d? → 95d? | 87% → 98% | 112.22d → 107.59d |  |
| 2318 | Разбор полок на большом стеллаже, наведенеие порядка | 2026-10-03 09:00 → 2026-10-10 09:00 A (+7d) | 2026-10-03 12:00 → 2026-10-10 12:00 A (+7d) |  | 0% → 100% |  | constraint start no earlier than 2026-10-03 09:00 → start no earlier than 2026-10-10 09:00 |
| 2334 | **ЗИП ремонт** |  | 2026-10-15 11:00 → 2026-10-29 11:00 (+14d) | 643.25d? → 653.25d? |  | 104.34d → 94.34d |  |
| 2339 | **Собрать редуктор питателя, который разобранный на верстаке** | 2026-09-28 09:00 A | 2026-10-07 11:45 → 2026-10-06 09:45 (-1d) | 8.34d → 7.09d | 0% → 73% | 110.25d → 111.5d |  |
| 2343 | сборка | 2026-10-07 09:45 → 2026-09-29 09:00 A (-8d) | 2026-10-07 11:45 → 2026-09-29 11:00 A (-8d) |  | 0% → 100% | 110.25d → none |  |
| 2491 | **быстрая замена шнеков - кондуктор для хранения и перемещения подготвленного ствола** | 2026-10-12 09:00 → 2026-10-26 09:00 (+14d) | 2026-10-15 11:00 → 2026-10-29 11:00 (+14d) |  |  | 104.34d → 94.34d |  |

| ID | Task | Start | Finish | Duration | Complete | Total float | Other |
| --- | --- | --- | --- | --- | --- | --- | --- |
| 2492 | проект кондуктора и траверсы перемещения ствола штабелером | 2026-10-12 09:00 → 2026-10-26 09:00 (+14d) | 2026-10-12 11:00 → 2026-10-26 11:00 (+14d) |  |  | 104.34d → 94.34d | constraint start no earlier than 2026-10-12 09:00 → start no earlier than 2026-10-26 09:00 |
| 2493 | сборка | 2026-10-13 11:00 → 2026-10-27 11:00 (+14d) | 2026-10-15 11:00 → 2026-10-29 11:00 (+14d) |  |  | 104.34d → 94.34d |  |
| 2798 | **2 цех** |  |  |  | 68% → 66% |  |  |
| 2817 | Замена редуктора прекондиционера |  |  |  |  |  | resources Труфанов А; Тимофеев В; Некрасов А → Труфанов А; Некрасов А |
| 2818 | **парогенератор** |  | 2026-09-29 10:00 → 2026-10-08 10:00 (+9d) | 645d → 653d | 95% → 88% | 117.47d → 109.47d |  |
| 2836 | Чистка | 2026-09-29 09:00 A | 2026-09-29 10:00 A |  | 0% → 100% | 117.47d → none |  |
| 2854 | прорверка масла редуктор / натяжка цепи/ ремень/осмотр сетки | 2026-09-29 09:00 → 2026-10-08 09:00 (+9d) | 2026-09-29 09:30 → 2026-10-08 09:30 (+9d) |  |  | 117.53d → 109.53d | constraint start no earlier than 2026-09-29 08:00 → start no earlier than 2026-10-08 09:00; resources none → Дедов В |
| 2855 | **блок тэнов сушки** |  | 2026-09-29 10:00 → 2026-10-08 10:00 (+9d) | 645.12d → 653.12d |  | 117.47d → 109.47d |  |
| 2861 | ревизия перемычек | 2026-09-29 09:00 → 2026-10-08 09:00 (+9d) | 2026-09-29 10:00 → 2026-10-08 10:00 (+9d) |  |  | 117.47d → 109.47d | constraint start no earlier than 2026-09-29 08:00 → start no earlier than 2026-10-08 09:00; resources none → Дедов В |
| 2872 | **нория 2 выгрузки смесителя** |  | 2026-09-24 13:00 A → 2026-10-08 10:00 (+14d) | 150.5d → 163.12d | 100% → 88% | none → 109.47d |  |
| 2884 | **бункер-накопитель с шнековой разкгрузкой синий** |  | 2026-09-24 10:00 A → 2026-10-08 09:05 (+14d) | 100.12d → 113.01d | 100% → 99% | none → 109.58d |  |
| 2903 | **привод прекондиционера** |  | 2026-09-29 09:20 A → 2026-10-08 09:10 (+9d) | 155.04d → 163.02d | 100% → 95% | none → 109.57d |  |
| 2913 | **мотор-редуктор привод шнеков** |  | 2026-09-29 09:10 → 2026-10-08 09:30 (+9d) | 35.02d → 43.06d | 29% → 24% | 117.57d → 109.53d |  |
| 2922 | **редуктор шнеков экструдера - проверка масла** |  | 2026-09-29 09:15 A → 2026-10-08 09:15 (+9d) | 428.03d → 436.03d | 100% → 93% | none → 109.56d |  |
| 2942 | **шкаф управления экструдером** |  | 2026-09-29 09:10 A → 2026-10-08 09:10 (+9d) | 155.02d → 163.02d | 100% → 91% | none → 109.57d |  |
| 2961 | **печь - валы этажей, подшипники, цепи** |  | 2026-10-01 10:00 → 2026-10-15 10:00 (+14d) | 147.12d → 158.12d | 83% → 70% | 115.47d → 104.47d |  |
| 2968 | Смазка всех цепей (если не смазаны) | 2026-10-01 09:00 → 2026-10-15 09:00 (+14d) | 2026-10-01 10:00 → 2026-10-15 10:00 (+14d) |  |  | 115.47d → 104.47d | constraint start no earlier than 2026-10-01 09:00 → start no earlier than 2026-10-15 09:00 |
| 3080 | **БЕСТРОМ** |  | 2026-09-24 11:00 → 2026-10-08 13:00 (+14d) | 720.25d → 733.5d | 80% → 66% | 122.34d → 109.09d |  |
| 3304 | **склад упаковки** |  | 2026-10-07 13:00 → 2026-10-11 11:00 A (+4d) | 142.5d? → 145d? | 98% → 100% | 110.09d → none |  |
| 3308 | переделать крепление рамы наруж блока - к МК здания, анкера убрать | 2026-10-07 09:00 A | 2026-10-07 13:00 A |  | 0% → 100% | 110.09d → none |  |
| 3309 | установить светильники над столом Веры и перенести светильник над стеллажами | 2026-08-25 09:00 A | 2026-08-25 12:00 A |  | 0% → 100% | 149.22d → none |  |
| 3312 | **установить бойлер** |  | 2026-09-28 10:00 A |  | 89% → 100% | 118.47d → none |  |
| 3313 | Замена тэна на бойлере | 2026-09-28 09:00 A | 2026-09-28 10:00 A |  | 0% → 100% | 118.47d → none |  |
| 3425 | **территория** |  | 2026-10-06 13:00 → 2026-10-10 10:00 (+4d) | 431.5d? → 435d? | 71% → 72% | 111.09d → 107.59d |  |
| 3428 | У охраны не работает тепловая пушка, ревизия/ремонт | 2026-10-06 09:00 A | 2026-10-06 10:00 A |  | 0% → 100% | 111.47d → none |  |

## Version 24 (saved 2026-10-14, file 07.09.26.mpp)

Last finish stays 2027-03-10. Complete tasks 2402 → 2431.

Added:

| ID | Task | Duration | Start | Finish | Predecessors | Constraint | Resources |
| --- | --- | --- | --- | --- | --- | --- | --- |
| 813 | Установка оснастки на бестром, которую привезете. Старую снимаем и вешаем на специальную стойку, ее подготовить | 2h | 2026-10-15 09:00 | 2026-10-15 11:00 |  | start no earlier than 2026-10-15 09:00 | Труфанов А; Некрасов А |
| 814 | Поставить зарядку для поломоечной машинки | 1h | 2026-10-14 09:00 | 2026-10-14 10:00 |  | start no earlier than 2026-10-14 08:00 | Бобренок В |
| 815 | Ремонт светильника на углу здания, со стороны склада упаковки | 1h | 2026-10-16 09:00 | 2026-10-16 10:00 |  | start no earlier than 2026-10-16 09:00 | Труфанов А; Некрасов |
| 816 | **Борьба с вонью** | 5.25d | 2026-10-13 09:00 A | 2026-10-20 11:00 |  |  |  |
| 817 | Заказать пистолет и очиститель для пены | 10min | 2026-10-13 09:00 A | 2026-10-13 09:10 A |  | start no earlier than 2026-10-13 09:00 | Зорькин В |
| 818 | Контроль | 10min | 2026-10-19 09:00 | 2026-10-19 09:10 | 817 | start no earlier than 2026-10-19 09:00 | Зорькин В |
| 819 | Под потолком в корридоре кабинетов дополнительно запенить балку | 2h | 2026-10-20 09:00 | 2026-10-20 11:00 | 818 | start no earlier than 2026-10-20 09:00 | Бобренок В |
| 820 | С 3 цеха притащить плитку армстронг и заменить на целую на втором этаже в корридоре, при необходимости вырезать в размер | 2h | 2026-10-13 09:00 A | 2026-10-13 11:00 A |  | start no earlier than 2026-10-13 08:00 | Бобренок В |
| 1510 | Поставить на зарядку штабелер, который стоит на жирах | 30min | 2026-10-14 09:00 | 2026-10-14 09:30 |  | start no earlier than 2026-10-14 08:00 | Бобренок В |
| 1511 | Закрыть на ключ все двери, ключи взять в кабинете оги | 1h | 2026-10-13 09:00 A | 2026-10-13 10:00 A |  | start no earlier than 2026-10-13 08:00 | Бобренок В |
| 2327 | Дефектовка болера со склада упаковки, выяснить почему не работает с проверкой под водой, болер снят | 2h | 2026-10-14 09:00 | 2026-10-14 11:00 |  | start no earlier than 2026-10-14 08:00 | Бобренок В |
| 2328 | Заварить обруч от сеялки, лежит в слесарке | 1h | 2026-10-13 09:00 A | 2026-10-13 10:00 A |  | start no earlier than 2026-10-13 08:00 | Бобренок В |
| 2329 | Собрать насосы НШГ какие можно и какие есть в слесарке. Сообщить по количеству Б/У насосов, новых и количество ремкомплекта | 2h | 2026-10-14 09:00 | 2026-10-14 11:00 |  | start no earlier than 2026-10-14 08:00 | Бобренок В |
| 2330 | **Ремонт двигателя от поломоечной машинки** | 4.27d | 2026-10-13 09:00 A | 2026-10-19 11:10 |  |  |  |
| 2331 | Заявка на подшипник | 10min | 2026-10-13 09:00 A | 2026-10-13 09:10 A |  | start no earlier than 2026-10-13 09:00 | Зорькин В |
| 2332 | контроль | 10min | 2026-10-19 09:00 | 2026-10-19 09:10 | 2331 | start no earlier than 2026-10-19 09:00 | Зорькин В |
| 2333 | Сборка двигателя обратно | 2h | 2026-10-19 09:10 | 2026-10-19 11:10 | 2332 | start no earlier than 2026-10-14 08:00 | Бобренок В |
| 2334 | Снять прикипевшую часть подшипника с вала насоса поломоечной машинки. | 1h | 2026-10-13 09:00 A | 2026-10-13 10:00 A | 2333 | start no earlier than 2026-10-13 08:00 | Бобренок В |
| 2598 | Замена валов линия 1 гильзы вход и выход | 3h | 2026-10-14 09:00 | 2026-10-14 12:00 |  | start no earlier than 2026-10-14 09:00 | Макаревич А; Труфанов А |
| 2599 | Замена валов линия 2 гильзы вход и выход | 3h | 2026-10-14 09:00 | 2026-10-14 12:00 |  | start no earlier than 2026-10-14 09:00 | Макаревич А; Труфанов А |
| 2646 | Чистка парогенератора после остановки | 1h | 2026-10-13 09:00 | 2026-10-13 10:00 |  | start no earlier than 2026-10-13 08:00 | Бобренок В |
| 2656 | Чистка фильтра | 30min | 2026-10-14 09:00 | 2026-10-14 09:30 |  | start no earlier than 2026-10-14 09:00 | Макаревич А |
| 2695 | Контроль состояния сетки/цепи | 1h | 2026-10-14 09:00 | 2026-10-14 10:00 |  | start no earlier than 2026-10-14 09:00 | Макаревич А |
| 2718 | Чистка парогенератора после остановки | 1h | 2026-10-13 09:00 | 2026-10-13 10:00 |  | start no earlier than 2026-10-13 08:00 | Бобренок В |
| 2734 | Чистка фильтра/тэны и термопары шнеков - протяжка | 30min | 2026-10-14 09:00 | 2026-10-14 09:30 |  | start no earlier than 2026-10-14 09:00 | Труфанов А |
| 2843 | Ревизия масла редуктора/осмотр подшипников/ смазка при необходимости | 15min | 2026-10-15 09:00 | 2026-10-15 09:15 |  | start no earlier than 2026-10-15 09:00 | Труфанов А |
| 2844 | Контроль крепления лопаток | 30min | 2026-10-15 09:00 | 2026-10-15 09:30 |  | start no earlier than 2026-10-15 09:00 | Труфанов А |
| 2882 | Замена шестерен привода | 2h | 2026-10-15 09:00 | 2026-10-15 11:00 |  | start no earlier than 2026-10-15 09:00 | Труфанов А; Некрасов А |
| 2900 | Осмотр подшипников/контроль масла | 10min | 2026-10-15 09:00 | 2026-10-15 09:10 |  | start no earlier than 2026-10-15 09:00 | Некрасов |
| 2913 | Ревизия ленты, контроль соединения | 30min | 2026-10-15 09:00 | 2026-10-15 09:30 |  | start no earlier than 2026-10-15 09:00 | Труфанов А; Некрасов А |
| 2922 | Осмотр | 5min | 2026-10-15 09:00 | 2026-10-15 09:05 |  | start no earlier than 2026-10-15 09:00 | Труфанов А |
| 2934 | Ревизия шестерен и подшипников | 1h | 2026-10-15 09:00 | 2026-10-15 10:00 |  | start no earlier than 2026-10-15 09:00 | Труфанов А |
| 2945 | Осмотр подшипников, муфты, шестерен | 20min | 2026-10-15 09:00 | 2026-10-15 09:20 |  | start no earlier than 2026-10-15 09:00 | Труфанов А |
| 2955 | Проверка масла | 10min | 2026-10-15 09:00 | 2026-10-15 09:10 |  | start no earlier than 2026-10-15 09:00 | Некрасов |
| 2976 | Проверка масла, чистка фильтра | 15min | 2026-10-15 09:00 | 2026-10-15 09:15 |  | start no earlier than 2026-10-15 09:00 | Некрасов |
| 2990 | продувка частотного привода | 10min | 2026-10-15 09:00 | 2026-10-15 09:10 |  | start no earlier than 2026-10-15 09:00 | Дедов В |
| 2997 | Ревизия узлов/масла. Очистка мотора от пыли | 20min | 2026-10-15 09:00 | 2026-10-15 09:20 |  | start no earlier than 2026-10-15 09:00 | Труфанов А |
| 3009 | Замер диаметра шкива двигателя привода редуктора | 15min | 2026-10-15 09:00 | 2026-10-15 09:15 |  | start no earlier than 2026-10-15 09:00 | Труфанов А |
| 3015 | Осмотр, очистка от пыли | 2h | 2026-10-15 09:00 | 2026-10-15 11:00 |  | start no earlier than 2026-10-15 09:00 | Дедов В |
| 3029 | протяжка контактов, продувка шкафа, частотного привода | 10min | 2026-10-15 09:30 | 2026-10-15 09:40 | 3030 |  | Дедов В |
| 3030 | осмотср замена подгоревших кабелей | 30min | 2026-10-15 09:00 | 2026-10-15 09:30 |  | start no earlier than 2026-10-15 09:00 | Дедов В |
| 3041 | Продувка. Замена подогретых жил | 30min | 2026-10-15 09:00 | 2026-10-15 09:30 |  | start no earlier than 2026-10-15 09:00 | Дедов В |
| 3051 | очистка валов и ленты / контроль крепления редуктора / состояния подшипника | 30min | 2026-10-15 09:00 | 2026-10-15 09:30 |  | start no earlier than 2026-10-15 09:00 | Некрасов |
| 3066 | Осмотр соединений фитингов, трехходового крана бежит/не бежит | 15min | 2026-10-15 09:00 | 2026-10-15 09:15 |  | start no earlier than 2026-10-15 09:00 | Дедов В |
| 3074 | Осмотр/ревизия насоса гидролизата, проверка всех соединений | 10min | 2026-10-15 09:00 | 2026-10-15 09:10 |  | start no earlier than 2026-10-15 09:00 | Дедов В |
| 3075 | Вернуть ограничение частоты на 70 герц и заблокировать настройки частотника, чтоб не могли менять | 20min | 2026-10-15 09:00 | 2026-10-15 09:20 |  | start no earlier than 2026-10-15 09:00 | Дедов В |
| 3085 | ревизия люфтов, фиксации смазки подшипников | 30min | 2026-10-15 09:00 | 2026-10-15 09:30 |  | start no earlier than 2026-10-15 09:00 | Дедов В |
| 3104 | ревизия состояния сетки/контроль натяжки цепей, ревизия сетки | 1h | 2026-10-15 09:30 | 2026-10-15 10:30 | 3105 |  | Некрасов |
| 3105 | Смазка подшипников привода при необходимости | 30min | 2026-10-15 09:00 | 2026-10-15 09:30 |  | start no earlier than 2026-10-15 09:00 | Некрасов |
| 3112 | ревизия люфтов, фиксации, смазки подшипников | 15min | 2026-10-15 09:00 | 2026-10-15 09:15 |  | start no earlier than 2026-10-15 09:00 | Некрасов |
| 3130 | Ревизия редуктора транспортной ленты, бежит масло | 1h | 2026-10-15 09:00 | 2026-10-15 10:00 |  | start no earlier than 2026-10-15 09:00 | Некрасов; Бобренок В |
| 3148 | Чистка тенов, проверка тефлона, роликов | 1h | 2026-10-15 09:00 | 2026-10-15 10:00 |  | start no earlier than 2026-10-15 09:00 | Труфанов А |
| 3269 | Найти и подготовить к транспортировке оснастку для бестрома со стойкой для висения и для штабелера удлинитель изготовленный со швелеров | 1h | 2026-10-15 09:00 | 2026-10-15 10:00 |  | start no earlier than 2026-10-15 09:00 | Труфанов А; Некрасов |
| 3479 | Накачать давление в контур склада 4, ключи у кладовщиков, проверить сварной шов, перед проверкой, убрать паллеты с продукцией, чтоб не замочило. | 2h | 2026-10-14 09:00 | 2026-10-14 11:00 |  | start no earlier than 2026-10-14 08:00 | Бобренок В |
| 3480 | Закрепить профлист на углу между крышами возле 1 кпп (при сильном ветре сильно стучит и отрывает | 1d? | 2026-10-16 09:00 | 2026-10-16 18:00 |  | start no earlier than 2026-10-16 09:00 | Олег |

Changed:

| ID | Task | Start | Finish | Duration | Complete | Total float | Other |
| --- | --- | --- | --- | --- | --- | --- | --- |
| 821 | Сфотать шильдик компрессора (попросить пацанов с фасовки) и скинуть Зорькину | 2026-10-12 09:00 A | 2026-10-12 10:00 A |  | 0% → 100% | 107.47d → none |  |
| 822 | Слить весь антифриз с приточки в вентиляции, перемотать соединения ПП к колориферу и насос | 2026-10-12 09:00 A | 2026-10-12 11:00 A |  | 0% → 100% | 107.34d → none |  |
| 823 | Открыть приточку под потолком, где кабинеты в корридоре (по возможности найти диффузор и установить его, либо подумать, как ограничить поток) | 2026-10-12 09:00 A | 2026-10-12 11:00 A |  | 0% → 100% | 107.34d → none |  |
| 824 | Бежит со стыка в раковине с сифоном, проверить/исправить на жирах | 2026-10-12 09:00 A | 2026-10-12 10:00 A |  | 0% → 100% | 107.47d → none |  |
| 838 | Подключить кабель датчика пирометра с печи, разобраться, где что | 2026-10-09 09:00 → 2026-10-15 09:00 (+6d) | 2026-10-09 11:00 → 2026-10-15 11:00 (+6d) |  |  | 108.34d → 104.34d | constraint start no earlier than 2026-10-09 09:00 → start no earlier than 2026-10-15 09:00; resources Дедов В → Дедов В; Домоводов К |
| 1833 | Закрепить табличку с графиком работы цеха, взять в кабинете у мастеров, можно присверлить, но аккуратно, посмотреть варианты крепляния на других цехах | 2026-10-12 09:00 A | 2026-10-12 10:00 A |  | 0% → 100% | 107.47d → none |  |
| 1834 | Выбрать болеменее нормальные балки 2 шт для стеллажей лежат рядом с 5а в углу и закрепить их по аналогу других балок | 2026-10-13 09:00 A | 2026-10-13 11:00 A |  | 0% → 100% | 106.34d → none |  |
| 2106 | сборка | 2026-10-13 09:00 → 2026-10-16 09:00 (+3d) | 2026-10-14 18:00 → 2026-10-19 18:00 (+5d) |  |  |  | constraint start no earlier than 2026-10-13 09:00 → start no earlier than 2026-10-16 09:00 |
| 2326 | **слесарное помещение** |  | 2026-10-11 11:00 → 2026-10-19 11:10 (+8d) | 95d? → 100.27d? | 98% → 82% | 107.59d → 102.32d |  |
| 2600 | **1 цех** |  |  |  | 62% → 61% |  |  |
| 2622 | **линия 1** |  | 2026-09-30 09:30 A → 2026-10-13 10:00 (+13d) | 147.06d? → 157.12d? | 100% → 96% | none → 106.47d |  |
| 2636 | **парогенератор** |  | 2026-09-29 10:00 A → 2026-10-13 10:00 (+14d) | 131.12d → 142.12d | 100% → 93% | none → 106.47d |  |
| 2647 | **редуктор экструдера и маслянная станция** |  | 2026-10-07 09:20 → 2026-10-14 09:30 (+7d) | 435.04d → 440.06d | 52% → 50% | 110.55d → 105.53d |  |
| 2680 | **печь** |  | 2026-10-07 10:00 → 2026-10-14 10:00 (+7d) | 639.12d → 644.12d | 90% → 84% | 110.47d → 105.47d |  |
| 2696 | **линия 2** |  |  |  | 83% → 80% |  |  |
| 2726 | **редуктор экструдера и маслянная станция** |  |  |  | 88% → 78% |  |  |
| 2823 | **2 цех** |  |  |  | 66% → 67% |  |  |
| 2825 | **прекондицинер экструдера** |  | 2026-10-08 13:00 → 2026-10-22 13:00 (+14d) | 653.5d? → 663.5d? | 85% → 83% | 109.09d → 99.09d |  |
| 2842 | Замена редуктора прекондиционера | 2026-10-08 09:00 → 2026-10-22 09:00 (+14d) | 2026-10-08 13:00 → 2026-10-22 13:00 (+14d) |  |  | 109.09d → 99.09d | constraint start no earlier than 2026-10-08 09:00 → start no earlier than 2026-10-22 09:00 |
| 2845 | **парогенератор** |  | 2026-10-08 10:00 → 2026-10-14 10:00 (+6d) | 653d → 657d | 88% → 95% | 109.47d → 105.47d |  |
| 2864 | Чистка как остановятся, если не получится, передать по смене труфанову | 2026-10-07 09:00 → 2026-10-14 09:00 (+7d) | 2026-10-07 10:00 → 2026-10-14 10:00 (+7d) |  |  | 110.47d → 105.47d | constraint start no earlier than 2026-10-07 08:00 → start no earlier than 2026-10-14 09:00; resources Бундин В → Бобренок В |
| 2865 | Устранить травление пара между сбросником (клапан) и краном | 2026-10-08 09:00 A | 2026-10-08 09:30 A |  | 0% → 100% | 109.53d → none |  |
| 2866 | Проверить гофротрубу на травление под площадкой, где стоит система из кранов/устранить/заменить | 2026-10-08 09:00 A | 2026-10-08 10:00 A |  | 0% → 100% | 109.47d → none |  |
| 2867 | **привод сетки ПЕЧИ сушки** |  |  |  | 84% → 74% |  |  |
| 2881 | прорверка масла редуктор / натяжка цепи/ ремень/осмотр сетки | 2026-10-08 09:00 A | 2026-10-08 09:30 A |  | 0% → 100% | 109.53d → none |  |
| 2883 | **блок тэнов сушки** |  | 2026-10-08 10:00 → 2026-10-15 10:00 (+7d) | 653.12d → 658.12d |  | 109.47d → 104.47d |  |
| 2889 | ревизия перемычек | 2026-10-08 09:00 → 2026-10-15 09:00 (+7d) | 2026-10-08 10:00 → 2026-10-15 10:00 (+7d) |  |  | 109.47d → 104.47d | constraint start no earlier than 2026-10-08 09:00 → start no earlier than 2026-10-15 09:00 |
| 2890 | **смеситель СМ-1500** |  | 2026-09-29 09:10 A → 2026-10-15 09:10 (+16d) | 155.02d → 168.02d | 100% → 98% | none → 104.57d |  |
| 2901 | **нория 2 выгрузки смесителя** |  | 2026-10-08 10:00 → 2026-10-15 09:30 (+7d) | 163.12d → 168.06d | 88% → 96% | 109.47d → 104.53d |  |
| 2911 | Ревизия ленты, контроль соединения | 2026-10-08 09:00 A | 2026-10-08 09:30 A |  | 0% → 100% | 109.53d → none |  |
| 2912 | Проверка мотор редуктора на верху, почему трясет/устранить | 2026-10-08 09:00 A | 2026-10-08 10:00 A |  | 0% → 100% | 109.47d → none |  |
| 2914 | **бункер-накопитель с шнековой разкгрузкой синий** |  | 2026-10-08 09:05 → 2026-10-15 09:05 (+7d) | 113.01d → 118.01d | 99% → 98% | 109.58d → 104.58d |  |
| 2923 | **питатель экструдера** |  | 2026-09-29 10:00 A → 2026-10-15 10:00 (+16d) | 140.12d → 153.12d | 100% → 95% | none → 104.47d |  |
| 2935 | **привод прекондиционера** |  | 2026-10-08 09:10 → 2026-10-15 09:20 (+7d) | 163.02d → 168.04d |  | 109.57d → 104.55d |  |
| 2943 | Осмотр подшипников, муфты, шестерен | 2026-10-08 09:00 A | 2026-10-08 09:10 A |  | 0% → 100% | 109.57d → none |  |
| 2944 | Поставить защитный кожух | 2026-10-08 09:00 A | 2026-10-08 09:10 A |  | 0% → 100% | 109.57d → none |  |
| 2946 | **мотор-редуктор привод шнеков** |  | 2026-10-08 09:30 → 2026-10-15 09:10 (+7d) | 43.06d → 48.02d | 24% → 41% | 109.53d → 104.57d |  |
| 2953 | Проверка муфту соединенной цепью, есть сильный люфт, при выявлении откланений сообщить/устранить | 2026-10-08 09:00 A | 2026-10-08 09:30 A |  | 0% → 100% | 109.53d → none |  |
| 2954 | Проверка масла | 2026-10-08 09:00 A | 2026-10-08 09:10 A |  | 0% → 100% | 109.57d → none |  |
| 2956 | **редуктор шнеков экструдера - проверка масла** |  | 2026-10-08 09:15 → 2026-10-15 09:15 (+7d) | 436.03d → 441.03d | 93% → 96% | 109.56d → 104.56d |  |
| 2974 | Проверка масла | 2026-10-08 09:00 A | 2026-10-08 09:10 A |  | 0% → 100% | 109.57d → none |  |
| 2975 | Чистка фильтра | 2026-10-08 09:00 A | 2026-10-08 09:15 A |  | 0% → 100% | 109.56d → none |  |
| 2977 | **шкаф управления экструдером** |  | 2026-10-08 09:10 → 2026-10-15 09:10 (+7d) | 163.02d → 168.02d | 91% → 92% | 109.57d → 104.57d |  |
| 2989 | продувка частотного привода | 2026-10-08 09:00 A | 2026-10-08 09:10 A |  | 0% → 100% | 109.57d → none |  |
| 2991 | **пневотранспорт роторный питатель** |  | 2026-09-24 09:20 → 2026-10-15 09:20 (+21d) | 140.04d → 158.04d | 52% → 48% | 122.55d → 104.55d |  |
| 2998 | **печь - валы этажей, подшипники, цепи** |  |  |  | 70% → 97% |  |  |
| 3005 | Смазка всех цепей (если не смазаны) | 2026-10-15 09:00 A | 2026-10-15 10:00 A |  | 0% → 100% | 104.47d → none |  |
| 3007 | Контроль состояния шестерен привода | 2026-10-08 09:00 A | 2026-10-08 09:10 A |  | 0% → 100% | 109.57d → none |  |
| 3008 | Проверка редуктора и выявление причины его шума и шатания/устранить | 2026-10-08 09:00 A | 2026-10-08 10:00 A |  | 0% → 100% | 109.47d → none |  |
| 3010 | **вентиляторы обдува сушки** |  | 2026-09-24 11:00 → 2026-10-15 11:00 (+21d) | 150.25d? → 168.25d? | 20% → 18% | 122.34d → 104.34d |  |
| 3016 | **шкаф управления тэнами сушки главный** |  | 2026-09-29 09:10 → 2026-10-15 09:40 (+16d) | 155.02d → 168.08d | 90% → 82% | 117.57d → 104.51d |  |
| 3031 | **шкаф управления тэнами твердотельный** |  | 2026-09-29 09:10 A → 2026-10-15 09:30 (+16d) | 155.02d → 168.06d | 100% → 88% | none → 104.53d |  |
| 3042 | **конвейер №1 с печи в дрожировщик** |  | 2026-09-24 09:30 A → 2026-10-15 09:30 (+21d) | 150.06d → 168.06d | 100% → 86% | none → 104.53d |  |
| 3052 | **барабан смесительный дрожировка** |  | 2026-10-08 09:15 → 2026-10-15 09:15 (+7d) | 733.03d → 738.03d | 78% → 76% | 109.56d → 104.56d |  |
| 3067 | **Узел подачи гидролизата** |  | 2026-10-08 09:10 → 2026-10-15 09:20 (+7d) | 70.02d → 75.04d | 96% → 88% | 109.57d → 104.55d |  |
| 3073 | Осмотр/ревизия насоса гидролизата, проверка всех соединений | 2026-10-08 09:00 A | 2026-10-08 09:10 A |  | 0% → 100% | 109.57d → none |  |
| 3076 | **конвейер №2 с дрожировки в охладитель** |  | 2026-09-24 09:30 A → 2026-10-15 09:30 (+21d) | 150.06d → 168.06d | 100% → 86% | none → 104.53d |  |
| 3086 | **охладитель сеточный** |  | 2026-09-29 09:30 → 2026-10-15 10:30 (+16d) | 645.06d? → 658.19d? | 65% → 61% | 117.53d → 104.41d |  |
| 3106 | **конвейер 3 с охладителя в упаковку** |  | 2026-10-01 09:15 → 2026-10-15 09:15 (+14d) | 43.03d → 54.03d | 80% → 67% | 115.56d → 104.56d |  |
| 3121 | **квадропак** |  | 2026-10-01 10:30 → 2026-10-15 10:00 (+14d) | 43.19d → 54.12d | 55% → 46% | 115.41d → 104.47d |  |
| 3131 | **БЕСТРОМ** |  | 2026-10-08 13:00 → 2026-10-15 10:00 (+7d) | 733.5d → 738.12d | 66% → 80% | 109.09d → 104.47d |  |
| 3147 | Проверка контактов их продувка и их протяжка. Проверка эелектрической части, устранение неисправностей. | 2026-10-08 09:00 A | 2026-10-08 13:00 A |  | 0% → 100% | 109.09d → none |  |
| 3268 | **синий склад** |  | 2026-09-30 12:00 → 2026-10-15 10:00 (+15d) | 111.38d → 123.12d | 52% → 50% | 116.22d → 104.47d |  |
| 3478 | **территория** |  | 2026-10-10 10:00 → 2026-10-16 18:00 (+6d) | 435d? → 440d? | 72% → 69% | 107.59d → 102.59d |  |

## Version 25 (saved 2026-10-19, file 07.09.26.mpp)

Note of the change: 17 02 KS

Last finish stays 2027-03-10. Complete tasks 2431 → 2460.

Added:

| ID | Task | Duration | Start | Finish | Predecessors | Constraint | Resources |
| --- | --- | --- | --- | --- | --- | --- | --- |
| 2 | **ремонт 3х ходовой приточная вентиляция** | 1.25d | 2026-10-19 09:00 A | 2026-10-20 11:00 |  |  |  |
| 3 | монтаж + замена серволпривод | 1h | 2026-10-19 09:00 A | 2026-10-19 10:00 A |  | start no earlier than 2026-10-19 08:00 | Тимофеев В; Николаев |
| 4 | монтаж на калорифер /подключить серволпривод | 2h | 2026-10-20 09:00 | 2026-10-20 11:00 |  | start no earlier than 2026-10-20 09:00 | Тимофеев В; Николаев |
| 5 | подклоючить в дренаж доп лотки сбора конденсата | 4h | 2026-10-20 09:00 | 2026-10-20 13:00 |  | start no earlier than 2026-10-20 09:00 | Труфанов А; Некрасов |
| 7 | **монтаж водоподготовка** | 1.25d? | 2026-10-20 09:00 | 2026-10-21 11:00 |  |  |  |
| 8 | купить тройники / краны | 1d? | 2026-10-20 09:00 | 2026-10-20 18:00 |  | start no earlier than 2026-10-20 09:00 | Зорькин В |
| 9 | монтаж трасса раздельная, что можно без отключения | 4h | 2026-10-20 09:00 | 2026-10-20 13:00 |  | start no earlier than 2026-10-20 09:00 | Бундин В |
| 10 | подключение в систему | 2h | 2026-10-21 09:00 | 2026-10-21 11:00 |  | start no earlier than 2026-10-21 09:00 | Тимофеев В |
| 11 | **разделение воды ПГ / экструдер** | 67.31d | 2026-08-07 09:00 | 2026-10-28 11:30 |  |  |  |
| 13 | **воставноить насосы пирльстатические** | 6.31d | 2026-10-20 09:00 | 2026-10-28 11:30 |  |  |  |
| 14 | заявка трубка | 15min | 2026-10-20 09:00 | 2026-10-20 09:15 |  | start no earlier than 2026-10-20 09:00 | Зорькин В |
| 15 | контроль доставка | 15min | 2026-10-27 09:15 | 2026-10-27 09:30 | 14FS+5d | start no earlier than 2026-10-19 08:00 | Зорькин В |
| 16 | сборка | 2h | 2026-10-28 09:30 | 2026-10-28 11:30 | 15FS+1d | start no earlier than 2026-10-19 08:00 | Тимофеев В |
| 40 | Заявка | 10min | 2026-10-14 09:00 | 2026-10-14 09:10 |  | start no earlier than 2026-10-14 09:00 | Зорькин В |
| 41 | контроль | 10min | 2026-10-21 09:00 | 2026-10-21 09:10 |  | start no earlier than 2026-10-21 09:00 | Зорькин В |
| 65 | обновить схему для согласования | 4h | 2026-10-20 09:00 | 2026-10-20 13:00 |  | start no earlier than 2026-10-20 09:00 | Домоводов К |
| 103 | получен счет | 0d | 2026-10-19 08:00 A | 2026-10-19 08:00 A |  | start no earlier than 2026-10-19 08:00 | Домоводов К |
| 219 | прокинуть кабель для подключения обмотчика | 2h | 2026-10-23 09:00 | 2026-10-23 11:00 |  | start no earlier than 2026-10-23 09:00 | Труфанов А; Некрасов А |
| 285 | тест сублиматов №2 | 2h | 2026-10-21 09:00 | 2026-10-21 11:00 |  | start no earlier than 2026-10-21 09:00 | Зорькин В; Труфанов А |
| 831 | закрепить воздушные шланги на упаковке водль стены на подобии как в ГДЗ | 2h | 2026-10-19 09:00 | 2026-10-19 11:00 |  | start no earlier than 2026-10-19 08:00 | Бундин В |
| 832 | установить вентилятор на охладитель который отсутсвует, должен быть снятый с 3ц | 1h | 2026-10-20 09:00 | 2026-10-20 10:00 |  | start no earlier than 2026-10-20 09:00 | Тимофеев В; Николаев |
| 833 | резервный кабель у компрессора убрать в лоток | 20min | 2026-10-19 09:00 | 2026-10-19 09:20 |  | start no earlier than 2026-10-19 08:00 | Бундин В |
| 834 | **замена трубки на насос гидролизат** | 2.25d | 2026-10-20 09:00 | 2026-10-22 11:00 |  |  |  |
| 835 | по очереди установить на насосах трубку 12/10 | 30min | 2026-10-20 09:00 | 2026-10-20 09:30 |  | start no earlier than 2026-10-20 09:00 | Тимофеев В |
| 836 | контроль поставки фитингов под гайку 12/10 | 15min | 2026-10-20 09:00 | 2026-10-20 09:15 |  | start no earlier than 2026-10-20 09:00 | Зорькин В |
| 837 | замена всех трубок на 12/10 | 2h | 2026-10-22 09:00 | 2026-10-22 11:00 |  | start no earlier than 2026-10-22 09:00 | Тимофеев В |
| 839 | **получить образцы пакет мешок на БЕСТРОМ на пленке PE** | 1d | 2026-10-22 09:00 | 2026-10-22 18:00 |  |  |  |
| 841 | замена головы / настройка / тесты | 8h | 2026-10-22 09:00 | 2026-10-22 18:00 |  | start no earlier than 2026-10-22 09:00 | Зорькин В; Тимофеев В; Николаев |
| 890 | изготовить отвод на 3д | 4h | 2026-10-20 09:00 | 2026-10-20 13:00 |  | start no earlier than 2026-10-20 09:00 | Домоводов К |
| 891 | монтаж | 2h | 2026-10-22 09:00 | 2026-10-22 11:00 | 890 | start no earlier than 2026-10-22 09:00 | Тимофеев В |
| 1548 | контроль | 10min | 2026-10-21 09:00 | 2026-10-21 09:10 |  | start no earlier than 2026-10-21 09:00 | Зорькин В |
| 1626 | скрутку силовых кабелей на полу усилить мех защитой - распред коробку или на подобии - что если случайно наступят изолента не выдержит | 1h | 2026-10-19 09:00 | 2026-10-19 10:00 |  | start no earlier than 2026-10-19 08:00 | Бундин В |
| 1627 | уложить проводку в шкафу управления в кабельные лотки, крышки закрыть | 1d? | 2026-10-19 09:00 | 2026-10-19 18:00 |  | start no earlier than 2026-10-19 08:00 |  |
| 1636 | тест с операторами определить производительность | 2h | 2026-10-21 09:00 | 2026-10-21 11:00 |  | start no earlier than 2026-10-21 09:00 | Труфанов А; Зорькин В |
| 1867 | доработка / покрасить уголок | 4h | 2026-10-19 09:00 | 2026-10-19 13:00 |  | start no earlier than 2026-10-19 08:00 | Бундин В |
| 1873 | сборка шибер | 1d? | 2026-10-16 09:00 A | 2026-10-16 18:00 A |  | start no earlier than 2026-10-16 09:00 | Макаревич А |
| 1874 | покраска рама | 1d? | 2026-10-17 09:00 A | 2026-10-17 18:00 A |  | start no earlier than 2026-10-17 09:00 | Бундин В |
| 1875 | сборка крышка с крепеж для магнита | 1d? | 2026-10-19 09:00 A | 2026-10-19 18:00 A |  | start no earlier than 2026-10-19 08:00 | Труфанов А; Некрасов |
| 1876 | доработка / перевоз бункера / монтаж | 4h | 2026-10-20 09:00 | 2026-10-20 13:00 |  | start no earlier than 2026-10-20 09:00 | Труфанов А; Некрасов |
| 1880 | контроль доставка материал | 1d? | 2026-10-20 09:00 | 2026-10-20 18:00 |  | start no earlier than 2026-10-20 09:00 | Зорькин В |
| 1881 | сборка полок для стеллажей архив бухгалтерии | 1d? | 2026-10-22 09:00 | 2026-10-22 18:00 | 1880FS+1d | start no earlier than 2026-10-19 08:00 | Тимофеев В; Николаев |
| 2325 | **KAMATSU #1** | 1d | 2026-10-19 09:00 | 2026-10-20 09:00 |  |  |  |
| 2326 | **заявка 19_10** | 1d | 2026-10-19 09:00 | 2026-10-20 09:00 |  |  |  |
| 2327 | вызов АВТОБЕСТ | 5min | 2026-10-19 09:00 | 2026-10-19 09:05 |  | start no earlier than 2026-10-19 08:00 | Зорькин В |
| 2328 | рвет ремень генератора | 0d | 2026-10-20 09:00 | 2026-10-20 09:00 | 2327 | start no earlier than 2026-10-20 09:00 | Автобест |
| 2329 | течь "всех" патрубков - комплексная замена | 0d | 2026-10-20 09:00 | 2026-10-20 09:00 | 2328 | start no earlier than 2026-10-19 08:00 | Автобест |
| 2330 | течь с масл наоса гидравлики - 1р/нет подливка уровень | 0d | 2026-10-20 09:00 | 2026-10-20 09:00 | 2329 | start no earlier than 2026-10-19 08:00 | Автобест |
| 2640 | втулка на шланг РВД для датчика давления | 15min | 2026-10-20 09:00 | 2026-10-20 09:15 |  | start no earlier than 2026-10-20 09:00 | Зорькин В |
| 3316 | **ЗАМЕНА СВЕТИЛЬНИКОВ** | 9.56d? | 2026-10-20 09:00 | 2026-11-02 14:30 |  |  |  |
| 3317 | сборка леса по наряд допуску / перенос от офиса | 3h | 2026-10-20 09:00 | 2026-10-20 12:00 |  | start no earlier than 2026-10-20 09:00 | Труфанов А; Некрасов |
| 3318 | определить тип лампы | 1h | 2026-10-20 12:00 | 2026-10-20 13:00 | 3317 | start no earlier than 2026-10-19 08:00 | Труфанов А; Некрасов |
| 3319 | заявка на лампы | 15min | 2026-10-20 14:00 | 2026-10-20 14:15 | 3318 | start no earlier than 2026-10-19 08:00 | Зорькин В |
| 3320 | контроль доставка | 15min | 2026-10-29 14:15 | 2026-10-29 14:30 | 3319FS+7d | start no earlier than 2026-10-19 08:00 | Зорькин В |
| 3321 | замена | 1d? | 2026-10-30 14:30 | 2026-11-02 14:30 | 3320FS+1d | start no earlier than 2026-10-19 08:00 | Труфанов А; Некрасов |
| 3532 | Завести проводку в туалет и сделать там розетку на КПП №1 | 2h | 2026-10-20 09:00 | 2026-10-20 11:00 |  |  | Бундин В |

Removed: 67 составить чертеж площадки; 68 заявка; 1491 разделить воду на ПГ и экструдер

Changed:

| ID | Task | Start | Finish | Duration | Complete | Total float | Predecessors | Other |
| --- | --- | --- | --- | --- | --- | --- | --- | --- |
| 6 | **монтаж водоподготовка // разделить воду в экструдер и парогенераторы** |  | 2026-09-02 12:30 → 2026-10-28 11:30 (+56d) | 119.44d → 168.31d? | 90% → 89% | 143.16d → 95.28d |  | was named разделить воду в экструдер и парогенераторы |
| 33 | тестирование работы при обновленном SSID | 2026-08-19 09:00 A → 2026-08-07 09:00 A (-12d) | 2026-08-19 10:00 A → 2026-09-02 12:30 A (+14d) | 1h → 147.5h |  |  |  | constraint start no earlier than 2026-08-19 09:00 → none |
| 38 | **Входная дверь 1 цех - замена шарниров** |  | 2026-10-10 10:00 → 2026-10-23 10:00 (+13d) | 0d → 10.12d? | 0% → 43% | 0d → 98.47d |  | was named Входная дверь 1 цех |
| 39 | Посмотреть входные двери в 1 цех, тяжело закрываются, устранить |  | 2026-10-10 10:00 A |  | 0% → 100% |  |  |  |
| 42 | Замена петли | 2026-10-10 09:00 → 2026-10-23 09:00 (+13d) | 2026-10-10 10:00 → 2026-10-23 10:00 (+13d) |  |  |  |  | was named Замена петли или всей двери (сильный изность петли); constraint start no earlier than 2026-10-10 09:00 → start no earlier than 2026-10-23 09:00 |
| 55 | **ремонт шарнир подачи пакетов квадропак** |  |  |  |  | 110.59d → 111.59d |  | was named Квадропак |
| 62 | **сборка рама для труб приточной вентиляции** | 2026-10-02 09:00 → 2026-10-15 09:00 A (+13d) | 2026-10-21 09:15 → 2026-11-03 09:15 (+13d) |  | 0% → 22% | 100.56d → 91.56d |  |  |
| 63 | составить проект рамы | 2026-10-02 09:00 → 2026-10-15 09:00 A (+13d) | 2026-10-02 13:00 → 2026-10-15 13:00 A (+13d) |  | 0% → 100% | 100.56d → none |  | constraint start no earlier than 2026-10-02 09:00 → start no earlier than 2026-10-15 09:00 |
| 64 | заявка металл | 2026-10-02 14:00 → 2026-10-15 14:00 A (+13d) | 2026-10-02 18:00 → 2026-10-15 18:00 A (+13d) |  | 0% → 100% | 100.56d → none |  |  |
| 66 | контроль доставка | 2026-10-16 09:00 → 2026-10-29 09:00 (+13d) | 2026-10-16 09:15 → 2026-10-29 09:15 (+13d) |  |  | 100.56d → 91.56d |  |  |
| 67 | сборка рама на земле | 2026-10-16 09:15 → 2026-10-29 09:15 (+13d) | 2026-10-20 09:15 → 2026-11-02 09:15 (+13d) |  |  | 100.56d → 91.56d |  |  |
| 68 | монтаж рама на цех краном | 2026-10-20 09:15 → 2026-11-02 09:15 (+13d) | 2026-10-21 09:15 → 2026-11-03 09:15 (+13d) |  |  | 100.56d → 91.56d |  |  |
| 97 | **реконструкция хранения гидролизатов и маршрут подачи навесок** |  | 2026-10-12 11:00 → 2026-10-29 09:30 (+17d) | 31.25d? → 45.06d | 32% → 37% | 107.34d → 94.53d |  |  |
| 100 | **монтаж доп плащадки** | 2026-09-28 09:00 A | 2026-10-08 10:30 → 2026-10-29 09:15 (+21d) | 9.19d → 25.03d | 0% → 7% | 109.41d → 94.56d |  |  |
| 101 | составить чертеж площадки | 2026-09-28 09:00 A | 2026-09-28 10:00 A |  | 0% → 100% | 109.41d → none |  |  |
| 102 | заявка | 2026-09-29 10:00 → 2026-10-13 09:00 A (+14d) | 2026-09-29 10:15 → 2026-10-13 09:15 A (+14d) |  | 0% → 100% | 109.41d → none |  | constraint start no earlier than 2026-09-10 09:00 → start no earlier than 2026-10-13 09:00; resources Зорькин В → Домоводов К |
| 104 | контроль доставки | 2026-10-05 10:15 → 2026-10-26 09:00 (+21d) | 2026-10-05 10:30 → 2026-10-26 09:15 (+21d) |  |  | 109.41d → 94.53d | 102FS+5d → 102FS+5d, 103FS+5d |  |
| 105 | монтаж | 2026-10-06 10:30 → 2026-10-27 09:15 (+21d) | 2026-10-08 10:30 → 2026-10-29 09:15 (+21d) |  |  | 109.41d → 94.56d |  |  |
| 106 | **монтаж перегородка корридор** | 2026-09-25 09:00 → 2026-10-26 09:15 (+31d) | 2026-10-04 10:30 → 2026-10-29 09:30 (+25d) | 8.19d → 3.03d |  | 113.41d → 94.53d |  |  |
| 107 | контроль доставки | 2026-09-30 10:15 → 2026-10-26 09:15 (+26d) | 2026-09-30 10:30 → 2026-10-26 09:30 (+26d) |  |  | 113.41d → 94.53d | заявкаFS+5d → 104 |  |
| 108 | монтаж | 2026-10-01 10:30 → 2026-10-27 09:30 (+26d) | 2026-10-04 10:30 → 2026-10-29 09:30 (+25d) |  |  | 113.41d → 94.53d |  |  |
| 111 | востановить уплотнения двери в гидролизатной, все резинки, примыкания | 2026-09-08 09:00 → 2026-10-20 09:00 (+42d) | 2026-09-08 18:00 → 2026-10-20 12:00 (+42d) | 1d? → 3h |  | 137.59d → 101.22d |  | was named замена двери в гидролизатную -; constraint start no earlier than 2026-09-08 08:00 → start no earlier than 2026-10-20 09:00; resources none → Тимофеев В; Николаев |
| 132 | **квадропак - сделать силиконовый успокоитель между нория и весы 800*250 шаг шторок 60** |  | 2026-10-19 11:00 → 2026-10-21 11:00 (+2d) | 19.25d → 22.25d |  | 102.34d → 100.34d |  |  |
| 135 | сборка | 2026-10-19 09:00 → 2026-10-21 09:00 (+2d) | 2026-10-19 11:00 → 2026-10-21 11:00 (+2d) |  |  | 102.34d → 100.34d |  | constraint start no earlier than 2026-10-19 09:00 → start no earlier than 2026-10-21 09:00 |
| 212 | **палетообмостчик монтаж в 1ц** |  | 2026-10-16 12:00 → 2026-10-23 12:00 (+7d) | 55.38d → 61.38d | 29% → 20% | 103.22d → 98.22d |  |  |
| 220 | монтаж | 2026-10-16 09:00 → 2026-10-23 09:00 (+7d) | 2026-10-16 12:00 → 2026-10-23 12:00 (+7d) |  |  | 103.22d → 98.22d |  | constraint start no earlier than 2026-10-16 09:00 → start no earlier than 2026-10-23 09:00 |
| 228 | **зависает диспелей на расходомере 2л** |  |  | 58.06d → 59.06d |  |  |  |  |
| 284 | **сборка дозатор на квадропак** |  | 2026-10-07 11:00 → 2026-10-21 11:00 (+14d) | 72.25d → 83.25d |  | 110.34d → 100.34d |  |  |
| 308 | закрыть металлом пустые места между площадками квадропак и дозатор | 2026-10-07 09:00 A | 2026-10-07 11:00 A |  | 0% → 100% | 110.34d → none |  |  |
| 335 | **сборка раковина нерж для мойки конвейер** | 2026-10-12 09:00 → 2026-11-09 09:00 (+28d) | 2026-10-21 11:00 → 2026-11-18 11:00 (+28d) |  |  | 100.34d → 80.34d |  |  |
| 336 | подготовить данные, оформить как проект / инициировать совещание | 2026-10-12 09:00 → 2026-11-09 09:00 (+28d) | 2026-10-12 11:00 → 2026-11-09 11:00 (+28d) |  |  | 100.34d → 80.34d |  | constraint start no earlier than 2026-10-12 09:00 → start no earlier than 2026-11-09 09:00 |
| 337 | совещание с руководителями / фиксация решения | 2026-10-13 11:00 → 2026-11-10 11:00 (+28d) | 2026-10-14 11:00 → 2026-11-11 11:00 (+28d) |  |  | 100.34d → 80.34d |  |  |
| 338 | подготовить чертеж раковины, проверить материал | 2026-10-15 11:00 → 2026-11-12 11:00 (+28d) | 2026-10-16 11:00 → 2026-11-13 11:00 (+28d) |  |  | 100.34d → 80.34d |  |  |
| 339 | сборка | 2026-10-19 11:00 → 2026-11-16 11:00 (+28d) | 2026-10-21 11:00 → 2026-11-18 11:00 (+28d) |  |  | 100.34d → 80.34d |  |  |
| 367 | модернизация опроры пневмоцилиндра встряживателя №1 квадропак | 2026-10-19 09:00 → 2026-10-21 09:00 (+2d) | 2026-10-19 13:00 → 2026-10-21 13:00 (+2d) |  |  | 102.09d → 100.09d |  | constraint start no earlier than 2026-10-19 09:00 → start no earlier than 2026-10-21 09:00 |
| 394 | **установить автоматику запуска шнека + смеситель по датчику уровня сырья в бункере экструдера** | 2026-10-19 09:00 → 2026-10-22 09:00 (+3d) | 2026-11-02 12:10 → 2026-11-05 12:10 (+3d) |  |  | 92.2d → 89.2d |  |  |
| 395 | разработка схема / компановка | 2026-10-19 09:00 → 2026-10-22 09:00 (+3d) | 2026-10-19 10:00 → 2026-10-22 10:00 (+3d) |  |  | 92.2d → 89.2d |  | constraint start no earlier than 2026-10-19 09:00 → start no earlier than 2026-10-22 09:00 |
| 396 | заявка датчики / пускатели / эл щит | 2026-10-19 10:00 → 2026-10-22 10:00 (+3d) | 2026-10-19 12:00 → 2026-10-22 12:00 (+3d) |  |  | 92.2d → 89.2d |  |  |
| 397 | доставка контроль | 2026-10-28 12:00 → 2026-11-02 12:00 (+5d) | 2026-10-28 12:05 → 2026-11-02 12:05 (+5d) |  |  | 92.2d → 89.2d |  |  |
| 398 | контроль поставки | 2026-10-29 12:05 → 2026-11-03 12:05 (+5d) | 2026-10-29 12:10 → 2026-11-03 12:10 (+5d) |  |  | 92.2d → 89.2d |  |  |
| 399 | сборка ШУ | 2026-10-29 12:10 → 2026-11-03 12:10 (+5d) | 2026-10-30 12:10 → 2026-11-04 12:10 (+5d) |  |  | 92.2d → 89.2d |  |  |
| 400 | монтаж в линию | 2026-10-30 12:10 → 2026-11-04 12:10 (+5d) | 2026-11-02 12:10 → 2026-11-05 12:10 (+3d) |  |  | 92.2d → 89.2d |  |  |
| 840 | Установка оснастки на бестром, которую привезете. Старую снимаем и вешаем на специальную стойку, ее подготовить | 2026-10-15 09:00 → 2026-10-22 09:00 (+7d) | 2026-10-15 11:00 → 2026-10-22 11:00 (+7d) |  |  | 104.34d → 99.34d |  | constraint start no earlier than 2026-10-15 09:00 → start no earlier than 2026-10-22 09:00 |
| 842 | Поставить зарядку для поломоечной машинки | 2026-10-14 09:00 A | 2026-10-14 10:00 A |  | 0% → 100% | 105.47d → none |  |  |
| 843 | Ремонт светильника на углу здания, со стороны склада упаковки | 2026-10-16 09:00 → 2026-10-20 09:00 (+4d) | 2026-10-16 10:00 → 2026-10-20 10:00 (+4d) |  |  | 103.47d → 101.47d |  | constraint start no earlier than 2026-10-16 09:00 → start no earlier than 2026-10-20 09:00; resources Труфанов А; Некрасов → Тимофеев В; Николаев |
| 844 | **Борьба с запахом корма на антрисоли офисы** |  | 2026-10-20 11:00 → 2026-10-20 11:10 | 5.25d → 6.27d |  | 101.34d → 101.32d |  | was named Борьба с вонью |
| 846 | Контроль | 2026-10-19 09:00 → 2026-10-20 09:00 (+1d) | 2026-10-19 09:10 → 2026-10-20 09:10 (+1d) |  |  | 102.32d → 101.32d |  | constraint start no earlier than 2026-10-19 09:00 → start no earlier than 2026-10-20 09:00 |
| 847 | Под потолком в корридоре кабинетов дополнительно запенить балку | 2026-10-20 09:00 → 2026-10-20 09:10 | 2026-10-20 11:00 → 2026-10-20 11:10 |  |  | 101.34d → 101.32d |  |  |
| 853 | Поставить воздухоотводчик с боковым отводом на котел с которого бежало | 2026-10-12 09:00 A | 2026-10-12 10:00 A |  | 0% → 100% |  |  |  |
| 866 | Подключить кабель датчика пирометра с печи, разобраться, где что | 2026-10-15 09:00 → 2026-10-23 09:00 (+8d) | 2026-10-15 11:00 → 2026-10-23 11:00 (+8d) |  |  | 104.34d → 98.34d |  | constraint start no earlier than 2026-10-15 09:00 → start no earlier than 2026-10-23 09:00 |
| 875 | **пыление при загрузке при высыпании из мешка в бункер дозатора** |  | 2026-10-19 14:45 → 2026-10-21 14:15 (+2d) | 13.59d → 16.53d |  | 102d → 100.06d |  |  |
| 876 | **изготовить рукав на дозатор для помещения в него мешка из гибкого герметичного матриала** |  | 2026-10-19 14:45 → 2026-10-21 14:15 (+2d) | 13.59d → 16.53d |  | 102d → 100.06d |  |  |
| 878 | доставка контроль | 2026-10-16 09:30 → 2026-10-20 09:00 (+4d) | 2026-10-16 09:45 → 2026-10-20 09:15 (+4d) |  |  | 102d → 100.06d |  | constraint start no earlier than 2026-09-30 08:00 → start no earlier than 2026-10-20 09:00 |
| 879 | изготовление мешка | 2026-10-19 09:45 → 2026-10-21 09:15 (+2d) | 2026-10-19 14:45 → 2026-10-21 14:15 (+2d) |  |  | 102d → 100.06d |  |  |
| 880 | **установить аспирационный рукав в зону бункера + фильтр + выход в цех/или общ обменную вент** |  | 2026-10-28 09:45 → 2026-10-27 09:45 (-1d) |  |  | 95.5d → 96.5d |  |  |
| 882 | доставка контроль | 2026-10-26 09:30 → 2026-10-23 09:30 (-3d) | 2026-10-26 09:45 → 2026-10-23 09:45 (-3d) |  |  | 95.5d → 96.5d |  |  |
| 883 | монтаж аспирационная установка | 2026-10-27 09:45 → 2026-10-26 09:45 (-1d) | 2026-10-28 09:45 → 2026-10-27 09:45 (-1d) |  |  | 95.5d → 96.5d |  |  |
| 889 | **сыпит в одну точку барабана, образуя не нужное кольцо** |  | 2026-10-19 18:00 → 2026-10-22 18:00 (+3d) | 11d → 15d |  | 101.59d → 98.59d |  |  |
| 892 | **перенос дозатора на второй барабан** |  | 2026-10-19 18:00 → 2026-10-22 18:00 (+3d) | 11d → 15d |  | 101.59d → 98.59d |  |  |
| 894 | изготовить раму - составить чертежи | 2026-10-16 09:00 → 2026-10-21 09:00 (+5d) | 2026-10-16 11:00 → 2026-10-21 11:00 (+5d) |  |  | 101.59d → 98.59d |  | constraint start no earlier than 2026-10-16 09:00 → start no earlier than 2026-10-21 09:00 |
| 895 | сборка рама | 2026-10-16 11:00 → 2026-10-21 11:00 (+5d) | 2026-10-16 16:00 → 2026-10-21 16:00 (+5d) |  |  | 101.59d → 98.59d |  |  |
| 896 | перенос шнека дозатора / переключения | 2026-10-19 16:00 → 2026-10-22 16:00 (+3d) | 2026-10-19 18:00 → 2026-10-22 18:00 (+3d) |  |  | 101.59d → 98.59d |  |  |
| 969 | **установить сифон ф110 в линию слива жиров** |  | 2026-10-20 11:30 → 2026-10-22 11:30 (+2d) | 57.31d → 60.31d |  | 101.28d → 99.28d |  |  |
| 971 | возможно ли убрать сифоны ф50, достаточно ли заслонки без гидрозатвора? Как сделать гидрозатвор ф100 | 2026-10-19 09:00 → 2026-10-21 09:00 (+2d) | 2026-10-19 09:15 → 2026-10-21 09:15 (+2d) |  |  | 101.28d → 99.28d |  | constraint start no earlier than 2026-10-19 09:00 → start no earlier than 2026-10-21 09:00 |
| 972 | решение | 2026-10-20 09:15 → 2026-10-22 09:15 (+2d) | 2026-10-20 09:15 → 2026-10-22 09:15 (+2d) |  |  | 101.28d → 99.28d |  |  |
| 973 | контроль доставка | 2026-10-20 09:15 → 2026-10-22 09:15 (+2d) | 2026-10-20 09:30 → 2026-10-22 09:30 (+2d) |  |  | 101.28d → 99.28d |  |  |
| 974 | монтаж | 2026-10-20 09:30 → 2026-10-22 09:30 (+2d) | 2026-10-20 11:30 → 2026-10-22 11:30 (+2d) |  |  | 101.28d → 99.28d |  |  |
| 991 | **усиление подогрев приточной вентиляции** |  |  | 58d? → 59d? |  |  |  |  |
| 1001 | **обеспечить не менее +15 зимой в зоне хранения навесок** |  |  | 72.75d? → 73.75d? | 23% → 30% |  |  |  |
| 1002 | **утепление стены** |  |  | 52.75d → 53.75d |  |  |  |  |

| ID | Task | Start | Finish | Duration | Complete | Total float | Other |
| --- | --- | --- | --- | --- | --- | --- | --- |
| 1011 | **тепловые завесы в 2ц зона подачи навесок** |  | 2026-10-23 11:45 → 2026-10-29 12:00 (+6d) | 57.34d? → 62.38d? | 8% → 20% | 98.25d → 94.22d |  |
| 1012 | **монтаж теплокалориферов** | 2026-09-28 09:00 A | 2026-10-23 11:45 → 2026-10-27 18:00 (+4d) | 20.34d? → 24d? | 0% → 26% | 98.25d → 95.59d |  |
| 1013 | заявка | 2026-09-28 09:00 A | 2026-09-28 11:00 A |  | 0% → 100% | 98.25d → none |  |
| 1014 | контроль оплаты\ | 2026-09-30 11:00 A | 2026-09-30 11:15 A |  | 0% → 100% | 98.25d → none |  |
| 1015 | контроль доставки | 2026-10-20 11:15 → 2026-10-19 11:15 A (-1d) | 2026-10-20 11:30 → 2026-10-19 11:30 A (-1d) |  | 0% → 100% | 98.25d → none |  |
| 1016 | приемка | 2026-10-21 11:30 → 2026-10-20 11:30 A (-1d) | 2026-10-21 11:45 → 2026-10-20 11:45 A (-1d) |  | 0% → 100% | 98.25d → none |  |
| 1017 | монтаж калориферов | 2026-10-22 11:45 → 2026-10-27 09:00 (+5d) | 2026-10-23 11:45 → 2026-10-27 18:00 (+4d) |  |  | 98.25d → 95.59d | constraint start no earlier than 2026-08-10 08:00 → start no earlier than 2026-10-27 09:00 |
| 1018 | **монтаж кабель** |  | 2026-10-19 18:00 → 2026-10-29 12:00 (+10d) | 54d? → 62.38d? |  | 101.59d → 94.22d |  |
| 1020 | заявка кабель /щиток | 2026-09-28 09:00 → 2026-10-20 09:00 (+22d) | 2026-09-28 11:00 → 2026-10-20 11:00 (+22d) |  |  | 111.22d → 94.22d | constraint start no earlier than 2026-09-28 09:00 → start no earlier than 2026-10-20 09:00; resources Домоводов К → Зорькин В |
| 1021 | контроль доставка | 2026-10-04 11:00 → 2026-10-27 11:00 (+23d) | 2026-10-04 12:00 → 2026-10-27 12:00 (+23d) |  |  | 111.22d → 94.22d |  |
| 1022 | монтаж | 2026-10-19 09:00 → 2026-10-28 12:00 (+9d) | 2026-10-19 18:00 → 2026-10-29 12:00 (+10d) |  |  | 101.59d → 94.22d |  |
| 1502 | **схема блокировки роль ворот при открытым шлюзе + авт закрытие + датчик препятствия** | 2026-09-09 09:00 → 2026-10-20 09:00 (+41d) | 2026-10-19 13:00 → 2026-10-21 18:00 (+2d) | 35.5d → 2d |  | 102.09d → 99.59d |  |
| 1503 | разработка схемы | 2026-09-09 09:00 → 2026-10-20 09:00 (+41d) | 2026-09-09 13:00 → 2026-10-20 13:00 (+41d) |  |  | 135.59d → 99.59d | constraint start no earlier than 2026-09-09 09:00 → start no earlier than 2026-10-20 09:00 |
| 1504 | монтаж | 2026-10-19 09:00 → 2026-10-21 14:00 (+2d) | 2026-10-19 13:00 → 2026-10-21 18:00 (+2d) |  |  | 102.09d → 99.59d |  |
| 1510 | **установить пульты на регулировку шибиров вентиляции** |  |  | 48d? → 49d? |  |  |  |
| 1521 | **отмена** |  |  | 85.31d? → 86.31d? |  |  |  |
| 1522 | **найти места утечки тепла под потолком- перемерзает труба подачи воды в 3 цех** |  |  | 85.31d? → 86.31d? |  |  |  |
| 1537 | **3 цех** |  |  | 309.5d? → 310.5d? |  |  |  |
| 1538 | Поставить на зарядку штабелер, который стоит на жирах | 2026-10-14 09:00 A | 2026-10-14 09:30 A |  | 0% → 100% | 105.53d → none |  |
| 1545 | **Установить насос с ножами в 3 цех под раковину мойки на жирах** | 2026-10-13 09:00 A | 2026-10-20 13:00 → 2026-10-23 13:00 (+3d) | 5.5d → 9.5d? | 0% → 19% | 5d → 98.09d | was named насос |
| 1547 | Заказать необходимые комплектующие, переходники | 2026-10-13 09:00 A | 2026-10-13 10:00 A |  | 0% → 100% | 106.47d → none |  |
| 1549 | Установить насос с ножами в 3 цех под раковину мойки на жирах | 2026-10-20 09:00 → 2026-10-23 09:00 (+3d) | 2026-10-20 13:00 → 2026-10-23 13:00 (+3d) |  |  |  | constraint start no earlier than 2026-10-20 09:00 → start no earlier than 2026-10-23 09:00 |
| 1575 | **Найти и установить жироуловитель с синего склада на жирах мойка** |  | 2026-10-01 10:00 A |  | 54% → 100% | 115.47d → none |  |
| 1578 | Контроль | 2026-09-24 09:00 A | 2026-09-24 09:05 A |  | 0% → 100% | 122.46d → none |  |
| 1579 | Монтаж | 2026-10-01 09:00 A | 2026-10-01 10:00 A |  | 0% → 100% | 115.47d → none |  |
| 1587 | **С двигателя экструдера выдавило много масла;** |  |  | 32.5d → 33.5d |  |  |  |
| 1597 | **установить ограничитель на дверь что бы попадала под движение рольворот** |  | 2026-10-16 10:00 → 2026-10-20 10:00 (+4d) | 21.12d → 24.12d |  | 103.47d → 101.47d |  |
| 1600 | монтаж | 2026-10-16 09:00 → 2026-10-20 09:00 (+4d) | 2026-10-16 10:00 → 2026-10-20 10:00 (+4d) |  |  | 103.47d → 101.47d | constraint start no earlier than 2026-10-16 09:00 → start no earlier than 2026-10-20 09:00; resources Бундин В → Тимофеев В; Николаев |
| 1625 | **сборка квадропака 3 цех** |  | 2026-10-16 13:00 → 2026-10-21 13:00 (+5d) | 53.5d → 57.5d? | 85% → 61% | 103.09d → 100.09d |  |
| 1635 | тест на пакетах | 2026-10-16 09:00 → 2026-10-21 09:00 (+5d) | 2026-10-16 13:00 → 2026-10-21 13:00 (+5d) |  |  | 103.09d → 100.09d | constraint start no earlier than 2026-10-16 09:00 → start no earlier than 2026-10-21 09:00 |
| 1731 | **сборка квадропак с системой дозации** |  | 2026-09-04 13:00 A |  | 86% → 100% | 141.09d → none |  |
| 1734 | монтаж весы | 2026-07-20 14:00 A | 2026-07-20 18:00 A |  | 0% → 100% | 174.59d → none |  |
| 1820 | **приточная вентиляция** |  | 2026-09-29 11:00 A |  | 85% → 100% | 117.34d → none |  |
| 1827 | проверить все подключения / тест | 2026-09-29 09:00 A | 2026-09-29 11:00 A |  | 0% → 100% | 117.34d → none |  |
| 1864 | **5 цех** |  |  | 969.25d? → 970.25d? | 62% → 64% |  |  |
| 1866 | **изготовить бункер нерж** |  |  |  | 83% → 94% |  |  |
| 1871 | проверка черетежей / подготовка к сборке | 2026-10-12 09:00 A | 2026-10-12 10:00 A |  | 0% → 100% | 105.47d → none |  |
| 1872 | сборка | 2026-10-16 09:00 A | 2026-10-19 18:00 → 2026-10-17 18:00 A (-2d) |  | 0% → 100% |  |  |
| 1879 | **сборка полок для стеллажей архив бухгалтерии** | 2026-10-16 09:00 → 2026-10-20 09:00 (+4d) | 2026-10-16 18:00 → 2026-10-22 18:00 (+6d) | 1d? → 3d? |  | 102.59d → 98.59d | constraint start no earlier than 2026-10-16 09:00 → none; resources Тимофеев В; Бундин В → none |
| 1882 | **монтаж тепловые пушки подвесные 5 цех** |  | 2026-10-20 18:00 → 2026-10-28 18:00 (+8d) | 51d → 58d |  | 100.59d → 94.59d |  |
| 1887 | монтаж | 2026-10-19 09:00 → 2026-10-27 09:00 (+8d) | 2026-10-20 18:00 → 2026-10-28 18:00 (+8d) |  |  | 100.59d → 94.59d | constraint start no earlier than 2026-10-19 09:00 → start no earlier than 2026-10-27 09:00 |
| 1890 | **установить зажим троса на тельфер** |  | 2026-10-01 18:00 → 2026-10-28 18:00 (+27d) | 28d? → 49d? |  | 114.59d → 94.59d |  |
| 1892 | контроль доставки | 2026-09-24 11:00 → 2026-10-20 09:00 (+26d) | 2026-09-24 11:15 → 2026-10-20 09:15 (+26d) |  |  | 121.31d → 100.56d | constraint start no earlier than 2026-09-11 09:00 → start no earlier than 2026-10-20 09:00 |
| 1893 | монтаж | 2026-10-01 09:00 → 2026-10-28 09:00 (+27d) | 2026-10-01 18:00 → 2026-10-28 18:00 (+27d) |  |  | 114.59d → 94.59d | constraint start no earlier than 2026-10-01 09:00 → start no earlier than 2026-10-28 09:00 |
| 1894 | **ремонт насос водоснабжения** |  |  | 68.25d → 69.25d |  |  |  |
| 1918 | **монтаж вода в 5ц** |  | 2026-09-22 16:00 → 2026-10-20 09:05 (+28d) | 36.75d → 60.01d | 80% → 94% | 123.84d → 101.58d |  |
| 1933 | **монтаж труба в земле между 3 и 4ц** |  | 2026-09-16 16:00 → 2026-10-20 09:05 (+34d) | 30.75d → 60.01d |  | 129.84d → 101.58d |  |
| 1937 | контоль доставка | 2026-08-31 09:00 → 2026-10-20 09:00 (+50d) | 2026-08-31 09:05 → 2026-10-20 09:05 (+50d) |  |  | 145.58d → 101.58d | constraint start no earlier than 2026-08-31 09:00 → start no earlier than 2026-10-20 09:00 |
| 1940 | **монтаж трассы по воздуху м/д 4 и 5А** |  | 2026-08-24 13:00 A |  | 24% → 100% | 150.09d → none |  |
| 1943 | монтаж | 2026-08-24 09:00 A | 2026-08-24 13:00 A |  | 0% → 100% | 150.09d → none |  |
| 1947 | монтаж трассы по 5ц | 2026-08-24 09:00 A | 2026-08-24 16:00 A |  | 0% → 100% | 149.84d → none |  |
| 1974 | **востановить коробку тельфера** |  |  | 181.25d → 182.25d |  |  |  |
| 2143 | **установить калорифер на 4 котел** |  | 2026-10-27 10:00 → 2026-10-26 10:00 (-1d) |  |  | 96.47d → 97.47d |  |
| 2145 | доставка |  | 2026-10-26 10:00 → 2026-10-23 10:00 (-3d) |  |  | 96.47d → 97.47d |  |
| 2146 | монтаж | 2026-10-26 10:00 → 2026-10-23 10:00 (-3d) | 2026-10-27 10:00 → 2026-10-26 10:00 (-1d) |  |  | 96.47d → 97.47d |  |
| 2169 | **модернизация** |  |  | 983.5d? → 984.5d? |  |  |  |
| 2214 | **качественное нанесение жира тесты** |  |  | 270.5d? → 271.5d? |  |  |  |
| 2324 | **техника** |  | 2026-10-13 09:15 → 2026-10-20 09:00 (+7d) | 638.03d? → 644d? |  | 106.56d → 101.59d |  |
| 2372 | **слесарное помещение** |  | 2026-10-19 11:10 → 2026-10-20 11:10 (+1d) | 100.27d? → 102.27d? | 82% → 88% | 102.32d → 101.32d |  |
| 2373 | Дефектовка болера со склада упаковки, выяснить почему не работает с проверкой под водой, болер снят | 2026-10-14 09:00 → 2026-10-20 09:00 (+6d) | 2026-10-14 11:00 → 2026-10-20 11:00 (+6d) |  |  | 105.34d → 101.34d | constraint start no earlier than 2026-10-14 08:00 → start no earlier than 2026-10-20 09:00 |
| 2375 | Собрать насосы НШГ какие можно и какие есть в слесарке. Сообщить по количеству Б/У насосов, новых и количество ремкомплекта | 2026-10-14 09:00 A | 2026-10-14 11:00 A |  | 0% → 100% | 105.34d → none |  |
| 2376 | **Ремонт двигателя от поломоечной машинки** |  | 2026-10-19 11:10 → 2026-10-20 11:10 (+1d) | 4.27d → 6.27d |  | 102.32d → 101.32d |  |
| 2378 | контроль | 2026-10-19 09:00 → 2026-10-20 09:00 (+1d) | 2026-10-19 09:10 → 2026-10-20 09:10 (+1d) |  |  | 102.32d → 101.32d | constraint start no earlier than 2026-10-19 09:00 → start no earlier than 2026-10-20 09:00 |
| 2379 | Сборка двигателя обратно | 2026-10-19 09:10 → 2026-10-20 09:10 (+1d) | 2026-10-19 11:10 → 2026-10-20 11:10 (+1d) |  |  | 102.32d → 101.32d | constraint start no earlier than 2026-10-14 08:00 → start no earlier than 2026-10-20 09:00 |
| 2398 | **ЗИП ремонт** |  |  | 653.25d? → 654.25d? |  |  |  |
| 2639 | **ЗИП заказ (заявки)** |  | 2026-09-09 09:10 → 2026-10-20 09:15 (+41d) | 4.02d → 41.03d | 71% → 50% | 137.57d → 101.56d |  |
| 2644 | **ТО** |  | 2026-12-02 11:00 → 2026-12-01 11:00 (-1d) |  |  | 70.34d → 71.34d |  |
| 2870 | **2 цех** |  | 2026-12-02 11:00 → 2026-12-01 11:00 (-1d) |  |  | 70.34d → 71.34d |  |
| 2872 | **прекондицинер экструдера** |  |  | 663.5d? → 664.5d? |  |  |  |
| 2914 | **привод сетки ПЕЧИ сушки** |  | 2026-12-02 11:00 → 2026-12-01 11:00 (-1d) |  |  | 70.34d → 71.34d |  |

| ID | Task | Start | Finish | Duration | Complete | Total float | Other |
| --- | --- | --- | --- | --- | --- | --- | --- |
| 2927 | смазка цепей пищ смазкой по графику 3 мес | 2026-12-02 10:00 → 2026-12-01 10:00 (-1d) | 2026-12-02 11:00 → 2026-12-01 11:00 (-1d) |  |  | 70.34d → 71.34d |  |
| 3315 | **синий склад** |  | 2026-10-15 10:00 → 2026-11-02 14:30 (+18d) | 123.12d → 136.56d? | 50% → 36% | 104.47d → 92.03d |  |
| 3322 | Найти и подготовить к транспортировке оснастку для бестрома со стойкой для висения и для штабелера удлинитель изготовленный со швелеров | 2026-10-15 09:00 A | 2026-10-15 10:00 A |  | 0% → 100% | 104.47d → none |  |
| 3433 | **РЭФ контейнеры** |  |  | 212.59d? → 213.59d? |  |  |  |
| 3504 | **ТБ** |  |  | 928.25d? → 929.25d? |  |  |  |
| 3531 | **территория** |  | 2026-10-16 18:00 → 2026-10-20 11:00 (+4d) | 440d? → 442.25d? | 69% → 68% | 102.59d → 101.34d |  |
| 3533 | Накачать давление в контур склада 4, ключи у кладовщиков, проверить сварной шов, перед проверкой, убрать паллеты с продукцией, чтоб не замочило. | 2026-10-14 09:00 → 2026-10-20 09:00 (+6d) | 2026-10-14 11:00 → 2026-10-20 11:00 (+6d) |  |  | 105.34d → 101.34d | constraint start no earlier than 2026-10-14 08:00 → start no earlier than 2026-10-20 09:00 |

## Version 26 (saved 2026-10-21, file 07.09.26.mpp)

Last finish stays 2027-03-10. Complete tasks 2460 → 2477.

Added:

| ID | Task | Duration | Start | Finish | Constraint | Resources |
| --- | --- | --- | --- | --- | --- | --- |
| 2 | Собрать крышку на дозатор которая в слесарке, вторую часть снять с 3дпринтера | 1h | 2026-10-20 09:00 A | 2026-10-20 10:00 A | start no earlier than 2026-10-20 08:00 | Бундин В |
| 3 | Изготовление резинки для поломоечной машинки и установка. Резину получить на складе | 30min | 2026-10-20 09:00 A | 2026-10-20 09:30 A | start no earlier than 2026-10-20 08:00 | Бундин В |
| 114 | монтаж трассы к батарее (позвонить труфанову) приоритетная задача | 3h | 2026-10-21 09:00 | 2026-10-21 12:00 | start no earlier than 2026-10-21 09:00 | Бундин В; Труфанов А |
| 2672 | проверка гидроаккумулятора | 10min | 2026-10-21 09:00 | 2026-10-21 09:10 | start no earlier than 2026-10-21 09:00 | Тимофеев В; Николаев |
| 2682 | Ревизия питателя, контроль состояния подшипников/втулки/шестерен/втулки | 30min | 2026-10-21 09:00 | 2026-10-21 09:30 | start no earlier than 2026-10-21 09:00 | Тимофеев В; Николаев |
| 2688 | контроль привода, подшипников/при необходимости замена | 15min | 2026-10-21 09:00 | 2026-10-21 09:15 | start no earlier than 2026-10-21 09:00 | Николаев; Тимофеев В |
| 2700 | Чистка парогенератора | 1h | 2026-10-21 09:00 | 2026-10-21 10:00 | start no earlier than 2026-10-21 09:00 | Тимофеев В; Николаев |
| 2711 | Чистка фильтра/тэны и термопары шнеков - протяжка | 30min | 2026-10-21 09:00 | 2026-10-21 09:30 | start no earlier than 2026-10-21 09:00 | Тимофеев В; Николаев |
| 2718 | частотные привода экструдера, ножей, питателя - продувка | 15min | 2026-10-21 09:00 | 2026-10-21 09:15 | start no earlier than 2026-10-21 09:00 | Тимофеев В; Николаев |
| 2724 | ревизия/ проверка токов | 15min | 2026-10-21 09:00 | 2026-10-21 09:15 | start no earlier than 2026-10-21 09:00 | Тимофеев В; Николаев |
| 2737 | Дефектовка - проверить подачу, вибрации, посторонние шумы/проверка фильтров/насосов/фитингов | 15min | 2026-10-21 09:00 | 2026-10-21 09:15 | start no earlier than 2026-10-21 09:00 | Тимофеев В; Николаев |
| 2754 | Контроль состояния сетки/цепи | 1h | 2026-10-21 09:00 | 2026-10-21 10:00 | start no earlier than 2026-10-21 09:00 | Тимофеев В; Николаев |
| 2765 | Ревизия питателя, контроль состояния подшипников/втулки/шестерен | 30min | 2026-10-21 09:00 | 2026-10-21 09:30 | start no earlier than 2026-10-21 09:00 | Некрасов; Макаревич А |
| 2771 | контроль привода, подшипников | 15min | 2026-10-21 09:00 | 2026-10-21 09:15 | start no earlier than 2026-10-21 09:00 | Некрасов; Макаревич А |
| 2780 | Чистка парогенератора после остановки | 1h | 2026-10-21 09:00 | 2026-10-21 10:00 | start no earlier than 2026-10-21 09:00 | Некрасов; Макаревич А |
| 2788 | частотные привода экструдера, ножей, питателя - продувка | 15min | 2026-10-21 09:00 | 2026-10-21 09:15 | start no earlier than 2026-10-21 09:00 | Некрасов; Макаревич А |
| 2798 | Чистка фильтра/тэны и термопары шнеков - протяжка/ проверка масла | 30min | 2026-10-21 09:00 | 2026-10-21 09:30 | start no earlier than 2026-10-21 09:00 | Некрасов; Макаревич А |
| 2804 | Ревизия, проверка жил, проверка токов | 20min | 2026-10-21 09:00 | 2026-10-21 09:20 | start no earlier than 2026-10-21 09:00 | Некрасов; Макаревич А |
| 2816 | ревизия/ проверка токов/протяжка контактов | 15min | 2026-10-21 09:00 | 2026-10-21 09:15 | start no earlier than 2026-10-21 09:00 | Некрасов; Макаревич А |
| 2831 | Осмотр, дефектовка, устранение неисправностей ,смазка по необходимости, протяжка болтов | 1h | 2026-10-21 09:00 | 2026-10-21 10:00 | start no earlier than 2026-10-21 09:00 | Некрасов; Макаревич А |
| 2837 | Дефектовка - проверить подачу, вибрации, посторонние шумы/проверка фильтров/насосов/фитингов | 15min | 2026-10-21 09:00 | 2026-10-21 09:15 | start no earlier than 2026-10-21 09:00 | Некрасов; Макаревич А |
| 2838 | Ремон конвейера изготовление и установка полосы, чтоб не сыпало | 2h | 2026-10-21 09:00 | 2026-10-21 11:00 | start no earlier than 2026-10-21 09:00 | Тимофеев В; Николаев |
| 2843 | насос, фильтр - осмотр, чистка | 15min | 2026-10-21 09:00 | 2026-10-21 09:15 | start no earlier than 2026-10-21 09:00 | Некрасов; Макаревич А |
| 2859 | Осмотр всех упаковщиков/транспортеров/накопительных столов/ всех щитков оборудования/редукторов | 2h | 2026-10-21 09:00 | 2026-10-21 11:00 | start no earlier than 2026-10-21 09:00 | Некрасов; Макаревич А |

Removed: 2812 Парогенератор; 2813 читска парогенератора, если нужно замена электродов; 2814 читска парогенератора, если нужно замена электродов

Changed:

| ID | Task | Start | Finish | Duration | Complete | Total float | Other |
| --- | --- | --- | --- | --- | --- | --- | --- |
| 7 | подклоючить в дренаж доп лотки сбора конденсата | 2026-10-20 09:00 A | 2026-10-20 13:00 A |  | 0% → 100% | 101.09d → none |  |
| 9 | **монтаж водоподготовка** |  | 2026-10-21 11:00 → 2026-10-26 13:00 (+5d) | 1.25d? → 4.5d? |  | 100.34d → 97.09d |  |
| 11 | монтаж трасса раздельная, что можно без отключения | 2026-10-20 09:00 → 2026-10-26 09:00 (+6d) | 2026-10-20 13:00 → 2026-10-26 13:00 (+6d) |  |  | 101.09d → 97.09d | constraint start no earlier than 2026-10-20 09:00 → start no earlier than 2026-10-26 09:00 |
| 12 | подключение в систему | 2026-10-21 09:00 → 2026-10-23 09:00 (+2d) | 2026-10-21 11:00 → 2026-10-23 11:00 (+2d) |  |  | 100.34d → 98.34d | constraint start no earlier than 2026-10-21 09:00 → start no earlier than 2026-10-23 09:00 |
| 99 | **реконструкция хранения гидролизатов и маршрут подачи навесок** |  |  |  | 37% → 32% |  |  |
| 115 | перенос батареи отопления в гидролизатной | 2026-10-12 09:00 A → 2026-10-12 09:00 | 2026-10-12 11:00 A → 2026-10-12 11:00 |  | 100% → 0% | none → 108.34d | resources Труфанов А; Бобренок В → Труфанов А; Некрасов А |
| 135 | **квадропак - сделать силиконовый успокоитель между нория и весы 800*250 шаг шторок 60** |  | 2026-10-21 11:00 → 2026-10-23 11:00 (+2d) | 22.25d → 24.25d |  | 100.34d → 98.34d |  |
| 138 | сборка | 2026-10-21 09:00 → 2026-10-23 09:00 (+2d) | 2026-10-21 11:00 → 2026-10-23 11:00 (+2d) |  |  | 100.34d → 98.34d | constraint start no earlier than 2026-10-21 09:00 → start no earlier than 2026-10-23 09:00 |
| 834 | закрепить воздушные шланги на упаковке водль стены на подобии как в ГДЗ | 2026-10-19 09:00 → 2026-10-20 09:00 A (+1d) | 2026-10-19 11:00 → 2026-10-20 11:00 A (+1d) |  | 0% → 100% | 102.34d → none | constraint start no earlier than 2026-10-19 08:00 → start no earlier than 2026-10-20 09:00 |
| 835 | установить вентилятор на охладитель который отсутсвует, должен быть снятый с 3ц | 2026-10-20 09:00 A | 2026-10-20 10:00 A |  | 0% → 100% | 101.47d → none |  |
| 836 | резервный кабель у компрессора убрать в лоток | 2026-10-19 09:00 → 2026-10-20 09:00 A (+1d) | 2026-10-19 09:20 → 2026-10-20 09:20 A (+1d) |  | 0% → 100% | 102.55d → none | constraint start no earlier than 2026-10-19 08:00 → start no earlier than 2026-10-20 09:00 |
| 837 | **замена трубки на насос гидролизат** | 2026-10-20 09:00 A |  |  | 0% → 18% |  |  |
| 838 | по очереди установить на насосах трубку 12/10 | 2026-10-20 09:00 A | 2026-10-20 09:30 A |  | 0% → 100% | 101.53d → none |  |
| 846 | Ремонт светильника на углу здания, со стороны склада упаковки | 2026-10-20 09:00 A | 2026-10-20 10:00 A |  | 0% → 100% | 101.47d → none |  |
| 847 | **Борьба с запахом корма на антрисоли офисы** |  | 2026-10-20 11:10 → 2026-10-23 11:00 (+3d) | 6.27d → 9.25d |  | 101.32d → 98.34d |  |
| 850 | Под потолком в корридоре кабинетов дополнительно запенить балку | 2026-10-20 09:10 → 2026-10-23 09:00 (+3d) | 2026-10-20 11:10 → 2026-10-23 11:00 (+3d) |  |  | 101.32d → 98.34d | constraint start no earlier than 2026-10-20 09:00 → start no earlier than 2026-10-23 09:00 |
| 878 | **пыление при загрузке при высыпании из мешка в бункер дозатора** |  | 2026-10-21 14:15 → 2026-10-23 13:00 (+2d) | 16.53d → 18.5d |  | 100.06d → 98.09d |  |
| 879 | **изготовить рукав на дозатор для помещения в него мешка из гибкого герметичного матриала** |  | 2026-10-21 14:15 → 2026-10-23 13:00 (+2d) | 16.53d → 18.5d |  | 100.06d → 98.09d |  |
| 882 | изготовление мешка | 2026-10-21 09:15 → 2026-10-23 09:00 (+2d) | 2026-10-21 14:15 → 2026-10-23 13:00 (+2d) |  |  | 100.06d → 98.09d | constraint start no earlier than 2026-09-30 08:00 → start no earlier than 2026-10-23 09:00 |
| 1600 | **установить ограничитель на дверь что бы попадала под движение рольворот** | 2026-09-22 09:00 A |  |  | 0% → 67% |  |  |
| 1603 | монтаж | 2026-10-20 09:00 A | 2026-10-20 10:00 A |  | 0% → 100% | 101.47d → none |  |
| 1628 | **сборка квадропака 3 цех** |  |  |  | 61% → 63% |  |  |
| 1629 | скрутку силовых кабелей на полу усилить мех защитой - распред коробку или на подобии - что если случайно наступят изолента не выдержит | 2026-10-19 09:00 → 2026-10-20 09:00 A (+1d) | 2026-10-19 10:00 → 2026-10-20 10:00 A (+1d) |  | 0% → 100% | 102.47d → none | constraint start no earlier than 2026-10-19 08:00 → start no earlier than 2026-10-20 09:00 |
| 1869 | **изготовить бункер нерж** |  |  |  | 94% → 97% |  |  |
| 1879 | доработка / перевоз бункера / монтаж | 2026-10-20 09:00 A | 2026-10-20 13:00 A |  | 0% → 100% | 101.09d → none |  |
| 2375 | **слесарное помещение** |  | 2026-10-20 11:10 → 2026-10-26 11:00 (+6d) | 102.27d? → 106.25d? | 88% → 93% | 101.32d → 97.34d |  |
| 2376 | Дефектовка болера со склада упаковки, выяснить почему не работает с проверкой под водой, болер снят | 2026-10-20 09:00 A | 2026-10-20 11:00 A |  | 0% → 100% | 101.34d → none |  |
| 2379 | **Ремонт двигателя от поломоечной машинки** |  | 2026-10-20 11:10 → 2026-10-26 11:00 (+6d) | 6.27d → 10.25d |  | 101.32d → 97.34d |  |
| 2382 | Сборка двигателя обратно | 2026-10-20 09:10 → 2026-10-26 09:00 (+6d) | 2026-10-20 11:10 → 2026-10-26 11:00 (+6d) |  |  | 101.32d → 97.34d | constraint start no earlier than 2026-10-20 09:00 → start no earlier than 2026-10-26 09:00 |
| 2648 | Замена валов линия 1 гильзы вход и выход | 2026-10-14 09:00 A | 2026-10-14 12:00 A |  | 0% → 100% | 106.22d → none |  |
| 2649 | Замена валов линия 2 гильзы вход и выход | 2026-10-14 09:00 A | 2026-10-14 12:00 A |  | 0% → 100% | 106.22d → none |  |
| 2650 | **1 цех** |  |  |  | 61% → 84% |  |  |
| 2666 | **техническая вода** |  | 2026-10-07 09:10 → 2026-10-21 09:10 (+14d) | 158.02d → 169.02d | 89% → 80% | 111.57d → 100.57d |  |
| 2673 | **линия 1** |  | 2026-10-13 10:00 → 2026-10-21 10:00 (+8d) | 157.12d? → 164.12d? | 96% → 94% | 107.47d → 100.47d |  |
| 2674 | **питатель экструдера** |  | 2026-09-30 09:30 A → 2026-10-21 09:30 (+21d) | 147.06d? → 164.06d? | 100% → 96% | none → 100.53d |  |
| 2683 | **прекондицинер экструдера** |  | 2026-09-30 09:15 A → 2026-10-21 09:15 (+21d) | 107.03d → 124.03d | 100% → 80% | none → 100.56d |  |
| 2689 | **парогенератор** |  | 2026-10-13 10:00 → 2026-10-21 10:00 (+8d) | 142.12d → 149.12d |  | 107.47d → 100.47d |  |
| 2699 | Чистка парогенератора после остановки | 2026-10-13 09:00 A | 2026-10-13 10:00 A |  | 0% → 100% | 107.47d → none |  |
| 2701 | **редуктор экструдера и маслянная станция** |  | 2026-10-14 09:30 → 2026-10-21 09:30 (+7d) | 440.06d → 446.06d | 50% → 47% | 106.53d → 100.53d |  |
| 2712 | **шкаф управления экструдером** |  | 2026-10-07 09:15 → 2026-10-21 09:15 (+14d) | 144.03d → 155.03d | 86% → 75% | 111.56d → 100.56d |  |
| 2719 | **блок тэнов сушки** |  | 2026-10-07 09:15 → 2026-10-21 09:15 (+14d) | 108.03d → 119.03d | 71% → 63% | 111.56d → 100.56d |  |
| 2731 | Осмотр, продувка, протяжка контактов | 2026-10-07 09:00 → 2026-10-21 09:00 (+14d) | 2026-10-07 09:20 → 2026-10-21 09:20 (+14d) |  |  | 111.55d → 100.55d | constraint start no earlier than 2026-10-07 09:00 → start no earlier than 2026-10-21 09:00; resources Тимофеев В → Тимофеев В; Николаев |
| 2732 | **барабан смесительный дрожировка - прорверка подшипнки , реуктор** |  | 2026-09-30 09:15 A → 2026-10-21 09:15 (+21d) | 157.03d → 174.03d | 100% → 92% | none → 100.56d |  |
| 2738 | **печь** |  | 2026-10-14 10:00 → 2026-10-21 10:00 (+7d) | 644.12d → 650.12d | 84% → 88% | 106.47d → 100.47d |  |
| 2751 | Контроль состояния сетки/цепи | 2026-10-07 09:00 A | 2026-10-07 10:00 A |  | 0% → 100% | 111.47d → none |  |
| 2752 | Проверка масла на приводе/осмотр | 2026-10-07 09:00 A | 2026-10-07 09:30 A |  | 0% → 100% | 111.53d → none |  |
| 2755 | **линия 2** |  |  |  | 80% → 41% |  |  |
| 2756 | **питатель экструдера** |  | 2026-10-14 09:30 → 2026-10-21 09:30 (+7d) | 158.06d → 164.06d | 91% → 83% | 106.53d → 100.53d |  |
| 2766 | **прекондицинер экструдера** |  | 2026-10-14 09:15 → 2026-10-21 09:15 (+7d) | 118.03d → 124.03d | 75% → 60% | 106.56d → 100.56d |  |
| 2772 | **парогенератор** | 2026-05-13 09:00 A → 2024-04-10 09:00 A (-763d) | 2026-08-12 10:00 A → 2026-10-21 10:00 (+70d) | 65.12d → 669.12d | 100% → 76% | none → 100.47d |  |
| 2779 | Чистка парогенератора после остановки | 2026-10-13 09:00 A | 2026-10-13 10:00 A |  | 0% → 100% | 107.47d → none |  |
| 2781 | **шкаф управления экструдером** |  | 2026-10-14 09:15 → 2026-10-21 09:15 (+7d) | 163.03d → 169.03d | 88% → 78% | 106.56d → 100.56d |  |
| 2789 | **редуктор экструдера и маслянная станция** |  | 2026-10-14 09:30 → 2026-10-21 09:30 (+7d) | 113.06d → 119.06d | 78% → 70% | 106.53d → 100.53d |  |
| 2799 | **блок тэнов сушки - протяжка** |  | 2026-10-14 09:20 → 2026-10-21 09:20 (+7d) | 113.04d? → 119.04d? | 65% → 66% | 106.55d → 100.55d |  |
| 2803 | Ревизия, проверка жил, проверка токов | 2026-10-14 09:00 A | 2026-10-14 09:20 A |  | 0% → 100% | 106.55d → none |  |
| 2805 | **шкаф управления тэнами сушки** | 2026-05-20 09:00 A → 2024-06-14 09:00 A (-705d) | 2026-08-19 09:15 → 2026-10-21 09:15 (+63d) | 65.03d → 622.03d | 83% → 92% | 154.56d → 100.56d |  |
| 2820 | **Квадропак** |  | 2026-09-30 10:00 A → 2026-10-21 10:00 (+21d) | 122.12d → 139.12d | 100% → 92% | none → 100.47d |  |
| 2839 | **жиротопка и насос перекачки жира** |  | 2026-07-29 09:15 → 2026-10-21 09:15 (+84d) | 600.03d → 669.03d | 25% → 20% | 169.56d → 100.56d |  |
| 2844 | **упаковщкики** |  | 2026-10-14 11:00 → 2026-10-21 11:00 (+7d) | 441.25d → 447.25d | 14% → 13% | 106.34d → 100.34d |  |
| 2860 | **электрооборудование** | 2024-04-04 09:00 A → 2023-12-29 09:00 A (-97d) |  | 667.12d? → 736.12d? |  |  |  |
| 2872 | осушитель 1 цех | 2024-04-04 09:00 → 2023-12-29 09:00 (-97d) | 2024-04-04 11:00 → 2023-12-29 11:00 (-97d) |  |  | 773.34d → 842.34d |  |
| 2875 | бойлер 1 1 цех раковина | 2024-04-04 09:00 → 2023-12-29 09:00 (-97d) | 2024-04-04 11:00 → 2023-12-29 11:00 (-97d) |  |  | 773.34d → 842.34d |  |
| 2876 | бойлер 2 1 цех раковина | 2024-04-04 09:00 → 2023-12-29 09:00 (-97d) | 2024-04-04 11:00 → 2023-12-29 11:00 (-97d) |  |  | 773.34d → 842.34d |  |
| 2877 | бойлер 3 1 цех душ | 2024-04-04 09:00 → 2023-12-29 09:00 (-97d) | 2024-04-04 11:00 → 2023-12-29 11:00 (-97d) |  |  | 773.34d → 842.34d |  |
| 2878 | насосная станция 1 цех | 2024-04-04 09:00 → 2023-12-29 09:00 (-97d) | 2024-04-04 11:00 → 2023-12-29 11:00 (-97d) |  |  | 773.34d → 842.34d |  |
| 2879 | фильтр приточной вентиляции | 2024-04-04 09:00 → 2023-12-29 09:00 (-97d) | 2024-04-04 11:00 → 2023-12-29 11:00 (-97d) |  |  | 773.34d → 842.34d |  |
| 2880 | пульт управления вентиляцией, частототные приводы | 2024-04-04 09:00 → 2023-12-29 09:00 (-97d) | 2024-04-04 11:00 → 2023-12-29 11:00 (-97d) |  |  | 773.34d → 842.34d |  |
| 3336 | **синий склад** |  | 2026-11-02 14:30 → 2026-11-05 14:30 (+3d) | 136.56d? → 139.56d? |  | 92.03d → 89.03d |  |
| 3337 | **ЗАМЕНА СВЕТИЛЬНИКОВ** | 2026-10-20 09:00 → 2026-10-23 09:00 (+3d) | 2026-11-02 14:30 → 2026-11-05 14:30 (+3d) |  |  | 92.03d → 89.03d |  |
| 3338 | сборка леса по наряд допуску / перенос от офиса | 2026-10-20 09:00 → 2026-10-23 09:00 (+3d) | 2026-10-20 12:00 → 2026-10-23 12:00 (+3d) |  |  | 92.03d → 89.03d | constraint start no earlier than 2026-10-20 09:00 → start no earlier than 2026-10-23 09:00 |

| ID | Task | Start | Finish | Duration | Complete | Total float | Other |
| --- | --- | --- | --- | --- | --- | --- | --- |
| 3339 | определить тип лампы | 2026-10-20 12:00 → 2026-10-23 12:00 (+3d) | 2026-10-20 13:00 → 2026-10-23 13:00 (+3d) |  |  | 92.03d → 89.03d |  |
| 3340 | заявка на лампы | 2026-10-20 14:00 → 2026-10-23 14:00 (+3d) | 2026-10-20 14:15 → 2026-10-23 14:15 (+3d) |  |  | 92.03d → 89.03d |  |
| 3341 | контроль доставка | 2026-10-29 14:15 → 2026-11-03 14:15 (+5d) | 2026-10-29 14:30 → 2026-11-03 14:30 (+5d) |  |  | 92.03d → 89.03d |  |
| 3342 | замена | 2026-10-30 14:30 → 2026-11-04 14:30 (+5d) | 2026-11-02 14:30 → 2026-11-05 14:30 (+3d) |  |  | 92.03d → 89.03d |  |
| 3552 | **территория** |  | 2026-10-20 11:00 → 2026-10-21 11:00 (+1d) | 442.25d? → 443.25d? | 68% → 69% | 101.34d → 100.34d |  |
| 3553 | Завести проводку в туалет и сделать там розетку на КПП №1 | 2026-10-20 09:00 → 2026-10-21 09:00 (+1d) | 2026-10-20 11:00 → 2026-10-21 11:00 (+1d) |  |  |  | resources Бундин В → Бобренок В |
| 3554 | Накачать давление в контур склада 4, ключи у кладовщиков, проверить сварной шов, перед проверкой, убрать паллеты с продукцией, чтоб не замочило. | 2026-10-20 09:00 A | 2026-10-20 11:00 A |  | 0% → 100% | 101.34d → none |  |

## Version 27 (saved 2026-10-22, file 07.09.26.mpp)

Last finish stays 2027-03-10. Complete tasks 2477 → 2487.

Added:

| ID | Task | Duration | Start | Finish | Constraint | Resources |
| --- | --- | --- | --- | --- | --- | --- |
| 7 | контроль работы / отлака | 1h | 2026-10-22 09:00 | 2026-10-22 10:00 | start no earlier than 2026-10-22 09:00 | Труфанов А |
| 69 | проект подготовить заказ на пластины | 4h | 2026-10-22 09:00 | 2026-10-22 13:00 | start no earlier than 2026-10-22 08:00 | Домоводов К |
| 291 | тест сублиматов №2 0,4 | 2h | 2026-10-22 09:00 | 2026-10-22 11:00 | start no earlier than 2026-10-22 08:00 | Зорькин В; Труфанов А |
| 847 | транспортировка штабелер | 1h | 2026-10-22 09:00 A | 2026-10-22 10:00 A | start no earlier than 2026-10-22 09:00 | Труфанов А |
| 868 | **востановить работу пирометра печи** | 2.25d | 2026-10-21 09:00 | 2026-10-23 11:00 |  |  |
| 869 | монтаж кабель сигнальный RS485 от пирометра к регистратору на экструдере. Паралельно витой паре - по ней останется питание датчика. | 4h | 2026-10-21 09:00 | 2026-10-21 13:00 | start no earlier than 2026-10-21 08:00 | Бобренок В |
| 1877 | печать фланец | 2h | 2026-10-22 09:00 | 2026-10-22 11:00 | start no earlier than 2026-10-22 09:00 | Домоводов К |
| 1878 | установить фильтр воздушный на крышку | 2h | 2026-10-22 09:00 | 2026-10-22 11:00 | start no earlier than 2026-10-22 09:00 | Бобренок В |
| 2651 | ножевой узел LT85 | 20min | 2026-10-22 09:00 | 2026-10-22 09:20 | start no earlier than 2026-10-22 09:00 | Зорькин В |
| 3563 | Завести проводку в туалет и сделать там розетку на КПП №1 - согласовать отключение/ переключить | 1h | 2026-10-23 09:00 | 2026-10-23 10:00 | start no earlier than 2026-10-23 09:00 | Тимофеев В |

Changed:

| ID | Task | Start | Finish | Duration | Complete | Total float | Predecessors | Other |
| --- | --- | --- | --- | --- | --- | --- | --- | --- |
| 4 | **ремонт 3х ходовой приточная вентиляция** |  | 2026-10-20 11:00 → 2026-10-22 10:00 (+2d) | 1.25d → 3.12d | 33% → 25% | 101.34d → 99.47d |  |  |
| 8 | подклоючить в дренаж доп лотки сбора конденсата |  |  |  |  |  |  | resources Труфанов А; Некрасов → Труфанов А |
| 41 | **Входная дверь 1 цех - замена шарниров** |  |  | 10.12d? → 10.12d | 43% → 50% |  |  |  |
| 43 | Заявка | 2026-10-14 09:00 A | 2026-10-14 09:10 A |  | 0% → 100% | 106.57d → none |  |  |
| 49 | Устранение течи с вентиляции, предложить варианты, выслушать вариант домоводова |  |  |  |  |  |  | resources Труфанов А; Некрасов → Труфанов А |
| 52 | С 8 утра снимаем вал с прекондиционера 1 линия. |  |  |  |  |  |  | resources Труфанов А; Некрасов → Труфанов А |
| 57 | Ставим новый вал сразу после прихода |  |  |  |  |  |  | resources Труфанов А; Некрасов → Труфанов А |
| 65 | **сборка рама для труб приточной вентиляции** |  |  |  | 22% → 30% |  |  |  |
| 68 | обновить схему для согласования | 2026-10-20 09:00 A | 2026-10-20 13:00 A |  | 0% → 100% | 101.09d → none |  |  |
| 289 | **сборка дозатор на квадропак** |  | 2026-10-21 11:00 → 2026-10-22 11:00 (+1d) | 83.25d → 84.25d |  | 100.34d → 99.34d |  |  |
| 290 | тест сублиматов №2 1,5 | 2026-10-21 09:00 A | 2026-10-21 11:00 → 2026-10-21 16:00 A | 2h → 6h | 0% → 100% | 100.34d → none |  | was named тест сублиматов №2 |
| 840 | **замена трубки на насос гидролизат** |  |  |  | 18% → 27% |  |  |  |
| 842 | контроль поставки фитингов под гайку 12/10 | 2026-10-20 09:00 A | 2026-10-20 09:15 A |  | 0% → 100% | 101.56d → none |  |  |
| 845 | **получить образцы пакет мешок на БЕСТРОМ на пленке PE** | 2026-10-22 09:00 A |  |  | 0% → 9% |  |  |  |
| 848 | замена головы / настройка / тесты |  |  |  |  |  |  | resources Зорькин В; Тимофеев В; Николаев → Зорькин В; Труфанов А |
| 851 | **Борьба с запахом корма на антрисоли офисы** |  | 2026-10-23 11:00 → 2026-10-21 11:00 (-2d) | 9.25d → 7.25d |  | 98.34d → 100.34d |  |  |
| 854 | Под потолком в корридоре кабинетов дополнительно запенить балку | 2026-10-23 09:00 → 2026-10-21 09:00 (-2d) | 2026-10-23 11:00 → 2026-10-21 11:00 (-2d) |  |  | 98.34d → 100.34d |  | constraint start no earlier than 2026-10-23 09:00 → start no earlier than 2026-10-21 09:00 |
| 873 | Замена дырявой трубы под парогенератором |  |  |  |  |  |  | resources Некрасов → none |
| 879 | Включить отопление в лабораторию |  |  |  |  |  |  | resources Некрасов → none |
| 880 | **Ремонт бактерицидной лампы возле компрессора** |  | 2026-10-12 18:00 → 2026-10-23 13:00 (+11d) | 8d? → 17.5d | 87% → 23% | 107.59d → 98.09d |  |  |
| 881 | Заявка на плату управления лампы | 2026-10-02 09:00 A | 2026-10-02 10:00 A |  | 0% → 100% | 115.47d → none |  |  |
| 882 | контроль | 2026-10-02 09:00 → 2026-10-22 09:00 A (+20d) | 2026-10-02 09:10 → 2026-10-22 09:10 A (+20d) |  | 0% → 100% | 115.57d → none |  | constraint start no earlier than 2026-10-02 08:00 → start no earlier than 2026-10-22 09:00 |
| 883 | Ремонт | 2026-10-12 09:00 A → 2026-10-23 09:00 (+11d) | 2026-10-12 18:00 A → 2026-10-23 13:00 (+11d) | 1d? → 4h | 100% → 0% | none → 98.09d | none → 882 | constraint start no earlier than 2026-10-12 09:00 → start no earlier than 2026-10-23 09:00 |
| 884 | **пыление при загрузке при высыпании из мешка в бункер дозатора** | 2026-10-01 09:00 A | 2026-10-23 13:00 → 2026-10-29 14:15 (+6d) | 18.5d → 22.53d | 0% → 11% | 98.09d → 94.06d |  |  |
| 885 | **изготовить рукав на дозатор для помещения в него мешка из гибкого герметичного матриала** | 2026-10-01 09:00 A | 2026-10-23 13:00 → 2026-10-29 14:15 (+6d) | 18.5d → 22.53d | 0% → 11% | 98.09d → 94.06d |  |  |
| 886 | заявка на силикон/брезент полотно | 2026-10-01 09:00 A | 2026-10-01 09:30 A |  | 0% → 100% | 103d → none |  |  |
| 887 | доставка контроль | 2026-10-20 09:00 → 2026-10-28 09:00 (+8d) | 2026-10-20 09:15 → 2026-10-28 09:15 (+8d) |  |  | 100.06d → 94.06d |  | constraint start no earlier than 2026-10-20 09:00 → start no earlier than 2026-10-28 09:00 |
| 888 | изготовление мешка | 2026-10-23 09:00 → 2026-10-29 09:15 (+6d) | 2026-10-23 13:00 → 2026-10-29 14:15 (+6d) |  |  | 98.09d → 94.06d |  |  |
| 889 | **установить аспирационный рукав в зону бункера + фильтр + выход в цех/или общ обменную вент** | 2026-10-05 09:00 → 2026-11-04 09:00 (+30d) | 2026-10-27 09:45 → 2026-11-27 09:45 (+31d) |  |  | 96.5d → 73.5d |  |  |
| 890 | заявка на аспирацию как в слесарке | 2026-10-05 09:00 → 2026-11-04 09:00 (+30d) | 2026-10-05 09:30 → 2026-11-04 09:30 (+30d) |  |  | 96.5d → 73.5d |  | constraint start no earlier than 2026-10-05 09:00 → start no earlier than 2026-11-04 09:00 |
| 891 | доставка контроль | 2026-10-23 09:30 → 2026-11-25 09:30 (+33d) | 2026-10-23 09:45 → 2026-11-25 09:45 (+33d) |  |  | 96.5d → 73.5d |  |  |
| 892 | монтаж аспирационная установка | 2026-10-26 09:45 → 2026-11-26 09:45 (+31d) | 2026-10-27 09:45 → 2026-11-27 09:45 (+31d) |  |  | 96.5d → 73.5d |  |  |
| 898 | **сыпит в одну точку барабана, образуя не нужное кольцо** | 2026-10-05 09:00 → 2026-10-20 09:00 (+15d) | 2026-10-22 18:00 → 2026-10-30 10:00 (+8d) | 15d → 8.12d |  | 98.59d → 93.47d |  |  |
| 900 | монтаж |  | 2026-10-22 11:00 → 2026-10-22 10:00 | 2h → 1h |  | 99.34d → 99.47d |  |  |
| 901 | **перенос дозатора на второй барабан** | 2026-10-05 09:00 → 2026-10-26 09:00 (+21d) | 2026-10-22 18:00 → 2026-10-30 10:00 (+8d) | 15d → 4.12d |  | 98.59d → 93.47d |  |  |
| 902 | согласовоать с производством технологами старт переноса | 2026-10-05 09:00 → 2026-10-26 09:00 (+21d) | 2026-10-05 10:00 → 2026-10-26 10:00 (+21d) |  |  | 109.47d → 93.47d |  | constraint start no earlier than 2026-10-05 09:00 → start no earlier than 2026-10-26 09:00 |
| 903 | изготовить раму - составить чертежи | 2026-10-21 09:00 → 2026-10-28 10:00 (+7d) | 2026-10-21 11:00 → 2026-10-28 12:00 (+7d) |  |  | 98.59d → 93.47d |  |  |
| 904 | сборка рама | 2026-10-21 11:00 → 2026-10-28 12:00 (+7d) | 2026-10-21 16:00 → 2026-10-28 17:00 (+7d) |  |  | 98.59d → 93.47d |  |  |
| 905 | перенос шнека дозатора / переключения | 2026-10-22 16:00 → 2026-10-29 17:00 (+7d) | 2026-10-22 18:00 → 2026-10-30 10:00 (+8d) |  |  | 98.59d → 93.47d |  |  |
| 1554 | **Установить насос с ножами в 3 цех под раковину мойки на жирах** |  |  | 9.5d? → 9.5d |  |  |  |  |
| 1557 | контроль | 2026-10-21 09:00 → 2026-10-22 09:00 (+1d) | 2026-10-21 09:10 → 2026-10-22 09:10 (+1d) |  |  | 100.57d → 99.57d |  | constraint start no earlier than 2026-10-21 09:00 → start no earlier than 2026-10-22 09:00 |
| 1634 | **сборка квадропака 3 цех** |  | 2026-10-21 13:00 → 2026-10-22 11:00 (+1d) | 57.5d? → 58.25d? | 63% → 74% | 100.09d → 99.34d |  |  |
| 1644 | тест на пакетах | 2026-10-21 09:00 A | 2026-10-21 13:00 A |  | 0% → 100% | 100.09d → none |  |  |
| 1645 | тест с операторами определить производительность | 2026-10-21 09:00 → 2026-10-22 09:00 (+1d) | 2026-10-21 11:00 → 2026-10-22 11:00 (+1d) |  |  | 100.34d → 99.34d |  | constraint start no earlier than 2026-10-21 09:00 → start no earlier than 2026-10-22 09:00 |
| 1876 | доработка / покрасить уголок | 2026-10-19 09:00 A | 2026-10-19 13:00 A |  | 0% → 100% | 102.09d → none |  |  |
| 1886 | сборка крышка с крепеж для магнита |  |  |  |  |  |  | resources Труфанов А; Некрасов → Труфанов А |
| 1887 | доработка / перевоз бункера / монтаж |  |  |  |  |  |  | resources Труфанов А; Некрасов → Труфанов А |
| 1890 | **сборка полок для стеллажей архив бухгалтерии** | 2026-10-20 09:00 → 2026-10-22 09:00 (+2d) | 2026-10-22 18:00 → 2026-10-26 18:00 (+4d) |  |  | 98.59d → 96.59d |  |  |
| 1891 | контроль доставка материал | 2026-10-20 09:00 → 2026-10-22 09:00 (+2d) | 2026-10-20 18:00 → 2026-10-22 18:00 (+2d) |  |  | 98.59d → 96.59d |  | constraint start no earlier than 2026-10-20 09:00 → start no earlier than 2026-10-22 09:00 |
| 1892 | сборка полок для стеллажей архив бухгалтерии | 2026-10-22 09:00 → 2026-10-26 09:00 (+4d) | 2026-10-22 18:00 → 2026-10-26 18:00 (+4d) |  |  | 98.59d → 96.59d |  |  |
| 1929 | **монтаж вода в 5ц** |  | 2026-10-20 09:05 → 2026-10-23 09:05 (+3d) | 60.01d → 63.01d |  | 101.58d → 98.58d |  |  |
| 1944 | **монтаж труба в земле между 3 и 4ц- УЗО на грей кабель** |  | 2026-10-20 09:05 → 2026-10-23 09:05 (+3d) | 60.01d → 63.01d |  | 101.58d → 98.58d |  | was named монтаж труба в земле между 3 и 4ц |
| 1948 | контоль доставка | 2026-10-20 09:00 → 2026-10-23 09:00 (+3d) | 2026-10-20 09:05 → 2026-10-23 09:05 (+3d) |  |  | 101.58d → 98.58d |  | constraint start no earlier than 2026-10-20 09:00 → start no earlier than 2026-10-23 09:00 |
| 2231 | **монтаж форсунки в линию** |  |  | 262.5d? → 264.5d? |  |  |  |  |
| 2650 | **ЗИП заказ (заявки)** |  | 2026-10-20 09:15 → 2026-10-22 09:20 (+2d) | 41.03d → 43.04d | 50% → 36% | 101.56d → 99.55d |  |  |
| 2774 | Ревизия питателя, контроль состояния подшипников/втулки/шестерен |  |  |  |  |  |  | resources Некрасов; Макаревич А → Макаревич А |
| 2780 | контроль привода, подшипников |  |  |  |  |  |  | resources Некрасов; Макаревич А → Макаревич А |
| 2789 | Чистка парогенератора после остановки |  |  |  |  |  |  | resources Некрасов; Макаревич А → Макаревич А |
| 2797 | частотные привода экструдера, ножей, питателя - продувка |  |  |  |  |  |  | resources Некрасов; Макаревич А → Макаревич А |
| 2807 | Чистка фильтра/тэны и термопары шнеков - протяжка/ проверка масла |  |  |  |  |  |  | resources Некрасов; Макаревич А → Макаревич А |
| 2813 | Ревизия, проверка жил, проверка токов |  |  |  |  |  |  | resources Некрасов; Макаревич А → Макаревич А |
| 2825 | ревизия/ проверка токов/протяжка контактов |  |  |  |  |  |  | resources Некрасов; Макаревич А → Макаревич А |
| 2840 | Осмотр, дефектовка, устранение неисправностей ,смазка по необходимости, протяжка болтов |  |  |  |  |  |  | resources Некрасов; Макаревич А → Макаревич А |
| 2846 | Дефектовка - проверить подачу, вибрации, посторонние шумы/проверка фильтров/насосов/фитингов |  |  |  |  |  |  | resources Некрасов; Макаревич А → Макаревич А |
| 2852 | насос, фильтр - осмотр, чистка |  |  |  |  |  |  | resources Некрасов; Макаревич А → Макаревич А |
| 2868 | Осмотр всех упаковщиков/транспортеров/накопительных столов/ всех щитков оборудования/редукторов |  |  |  |  |  |  | resources Некрасов; Макаревич А → Макаревич А |
| 2977 | Осмотр подшипников/контроль масла |  |  |  |  |  |  | resources Некрасов → none |
| 3032 | Проверка масла |  |  |  |  |  |  | resources Некрасов → none |
| 3053 | Проверка масла, чистка фильтра |  |  |  |  |  |  | resources Некрасов → none |
| 3128 | очистка валов и ленты / контроль крепления редуктора / состояния подшипника |  |  |  |  |  |  | resources Некрасов → none |

| ID | Task | Start | Finish | Duration | Complete | Total float | Other |
| --- | --- | --- | --- | --- | --- | --- | --- |
| 3181 | ревизия состояния сетки/контроль натяжки цепей, ревизия сетки |  |  |  |  |  | resources Некрасов → none |
| 3182 | Смазка подшипников привода при необходимости |  |  |  |  |  | resources Некрасов → none |
| 3189 | ревизия люфтов, фиксации, смазки подшипников |  |  |  |  |  | resources Некрасов → none |
| 3207 | Ревизия редуктора транспортной ленты, бежит масло |  |  |  |  |  | resources Некрасов; Бобренок В → Бобренок В |
| 3347 | сборка леса по наряд допуску / перенос от офиса |  |  |  |  |  | resources Труфанов А; Некрасов → Труфанов А |
| 3348 | определить тип лампы |  |  |  |  |  | resources Труфанов А; Некрасов → Труфанов А |
| 3351 | замена |  |  |  |  |  | resources Труфанов А; Некрасов → Труфанов А |
| 3352 | Найти и подготовить к транспортировке оснастку для бестрома со стойкой для висения и для штабелера удлинитель изготовленный со швелеров |  |  |  |  |  | resources Труфанов А; Некрасов → Труфанов А |
| 3561 | **территория** |  | 2026-10-21 11:00 → 2026-10-23 10:00 (+2d) | 443.25d? → 445.12d? | 69% → 70% | 100.34d → 98.47d |  |
| 3562 | Завести проводку в туалет и сделать там розетку на КПП №1 | 2026-10-21 09:00 A | 2026-10-21 11:00 A |  | 0% → 100% |  |  |

## Version 28 (saved 2026-10-23, file 07.09.26.mpp)

Last finish stays 2027-03-10. Complete tasks 2487 → 2495.

Added:

| ID | Task | Duration | Start | Finish | Constraint | Resources |
| --- | --- | --- | --- | --- | --- | --- |
| 2 | Установить тепловую пушкув гидролизатной для обогрева помещения, чтоб не разморозило трубы. Подключить от шкафа ВРУ, пушка на 380, кабель подобрать по мощности | 2h | 2026-10-23 09:00 | 2026-10-23 11:00 | start no earlier than 2026-10-23 08:00 | Макаревич А |
| 2385 | Доработка кронштейна для оснастки Бестрома по ТЗ труфанова | 3h | 2026-10-23 09:00 | 2026-10-23 12:00 | start no earlier than 2026-10-23 08:00 | Макаревич А |
| 2386 | Ремонт насоса для гидролизата 2 цех, который снимали в четверг 22.10.26 | 2h | 2026-10-23 09:00 | 2026-10-23 11:00 | start no earlier than 2026-10-23 08:00 | Макаревич А |

Changed:

| ID | Task | Start | Finish | Duration | Complete | Total float | Other |
| --- | --- | --- | --- | --- | --- | --- | --- |
| 5 | **ремонт 3х ходовой приточная вентиляция** |  | 2026-10-22 10:00 → 2026-10-23 10:00 (+1d) | 3.12d → 4.12d |  | 99.47d → 98.47d |  |
| 8 | контроль работы / отлака | 2026-10-22 09:00 → 2026-10-23 09:00 (+1d) | 2026-10-22 10:00 → 2026-10-23 10:00 (+1d) |  |  | 99.47d → 98.47d | constraint start no earlier than 2026-10-22 09:00 → start no earlier than 2026-10-23 09:00; resources Труфанов А → Дедов В |
| 11 | **монтаж водоподготовка** | 2026-10-20 09:00 → 2026-10-23 09:00 (+3d) | 2026-10-26 13:00 → 2026-10-28 11:00 (+2d) | 4.5d? → 3.25d? |  | 97.09d → 95.34d |  |
| 12 | купить тройники / краны | 2026-10-20 09:00 → 2026-10-23 09:00 (+3d) | 2026-10-20 18:00 → 2026-10-23 18:00 (+3d) |  |  | 100.59d → 97.59d | constraint start no earlier than 2026-10-20 09:00 → start no earlier than 2026-10-23 09:00 |
| 13 | монтаж трасса раздельная, что можно без отключения | 2026-10-26 09:00 → 2026-10-23 09:00 (-3d) | 2026-10-26 13:00 → 2026-10-23 13:00 (-3d) |  |  | 97.09d → 98.09d | constraint start no earlier than 2026-10-26 09:00 → start no earlier than 2026-10-23 09:00; resources Бундин В → Труфанов А; Некрасов А |
| 14 | подключение в систему | 2026-10-23 09:00 → 2026-10-28 09:00 (+5d) | 2026-10-23 11:00 → 2026-10-28 11:00 (+5d) |  |  | 98.34d → 95.34d | constraint start no earlier than 2026-10-23 09:00 → start no earlier than 2026-10-28 09:00 |
| 42 | **Входная дверь 1 цех - замена шарниров** |  |  |  | 50% → 57% | 98.47d → 0d |  |
| 45 | контроль | 2026-10-21 09:00 A | 2026-10-21 09:10 A |  | 0% → 100% | 100.57d → none |  |
| 95 | **Дополнительное освещение на Рампе** |  |  |  | 85% → 86% |  |  |
| 99 | контроль | 2026-09-25 09:00 A | 2026-09-25 09:05 A |  | 0% → 100% | 121.46d → none |  |
| 102 | **реконструкция хранения гидролизатов и маршрут подачи навесок** |  |  |  | 32% → 35% |  |  |
| 118 | перенос батареи отопления в гидролизатной | 2026-10-12 09:00 A | 2026-10-12 11:00 A |  | 0% → 100% | 108.34d → none |  |
| 290 | **сборка дозатор на квадропак** |  | 2026-10-22 11:00 A |  | 96% → 100% | 99.34d → none |  |
| 292 | тест сублиматов №2 0,4 | 2026-10-22 09:00 A | 2026-10-22 11:00 A |  | 0% → 100% | 99.34d → none |  |
| 841 | **замена трубки на насос гидролизат** |  | 2026-10-22 11:00 → 2026-10-29 11:00 (+7d) | 2.25d → 7.25d |  | 99.34d → 94.34d |  |
| 844 | замена всех трубок на 12/10 | 2026-10-22 09:00 → 2026-10-29 09:00 (+7d) | 2026-10-22 11:00 → 2026-10-29 11:00 (+7d) |  |  | 99.34d → 94.34d | constraint start no earlier than 2026-10-22 09:00 → start no earlier than 2026-10-29 09:00 |
| 846 | **получить образцы пакет мешок на БЕСТРОМ на пленке PE** |  | 2026-10-22 18:00 A |  | 9% → 100% | 98.59d → none |  |
| 847 | Установка оснастки на бестром, которую привезете. Старую снимаем и вешаем на специальную стойку, ее подготовить | 2026-10-22 09:00 A | 2026-10-22 11:00 A |  | 0% → 100% | 99.34d → none |  |
| 849 | замена головы / настройка / тесты | 2026-10-22 09:00 A | 2026-10-22 18:00 A |  | 0% → 100% | 98.59d → none |  |
| 852 | **Борьба с запахом корма на антрисоли офисы** |  |  |  | 7% → 93% |  |  |
| 855 | Под потолком в корридоре кабинетов дополнительно запенить балку | 2026-10-21 09:00 A | 2026-10-21 11:00 A |  | 0% → 100% | 100.34d → none |  |
| 869 | **востановить работу пирометра печи** | 2026-10-21 09:00 A |  |  | 0% → 67% |  |  |
| 870 | монтаж кабель сигнальный RS485 от пирометра к регистратору на экструдере. Паралельно витой паре - по ней останется питание датчика. | 2026-10-21 09:00 A | 2026-10-21 13:00 A |  | 0% → 100% | 100.09d → none |  |
| 1635 | **сборка квадропака 3 цех** |  | 2026-10-22 11:00 → 2026-10-23 11:00 (+1d) | 58.25d? → 59.25d? |  | 99.34d → 98.34d |  |
| 1646 | тест с операторами определить производительность | 2026-10-22 09:00 → 2026-10-23 09:00 (+1d) | 2026-10-22 11:00 → 2026-10-23 11:00 (+1d) |  |  | 99.34d → 98.34d | constraint start no earlier than 2026-10-22 09:00 → start no earlier than 2026-10-23 09:00 |
| 2384 | **слесарное помещение** |  |  |  | 93% → 82% |  |  |
| 2905 | **прекондицинер экструдера** |  | 2026-10-22 13:00 → 2026-10-29 13:00 (+7d) | 664.5d? → 669.5d? |  | 99.09d → 94.09d |  |
| 2922 | Замена редуктора прекондиционера | 2026-10-22 09:00 → 2026-10-29 09:00 (+7d) | 2026-10-22 13:00 → 2026-10-29 13:00 (+7d) |  |  | 99.09d → 94.09d | constraint start no earlier than 2026-10-22 09:00 → start no earlier than 2026-10-29 09:00 |

## Version 29 (saved 2026-10-26, file 07.09.26.mpp)

Last finish stays 2027-03-10. Complete tasks 2495 → 2500.

Changed:

| ID | Task | Start | Finish | Duration | Complete | Total float | Predecessors | Other |
| --- | --- | --- | --- | --- | --- | --- | --- | --- |
| 2 | Установить тепловую пушкув гидролизатной для обогрева помещения, чтоб не разморозило трубы. Подключить от шкафа ВРУ, пушка на 380, кабель подобрать по мощности | 2026-10-23 09:00 A | 2026-10-23 11:00 A |  | 0% → 100% | 98.34d → none |  |  |
| 5 | **ремонт 3х ходовой приточная вентиляция** |  |  |  | 25% → 50% |  |  |  |
| 8 | контроль работы / отлака | 2026-10-23 09:00 A | 2026-10-23 10:00 A |  | 0% → 100% | 98.47d → none |  |  |
| 11 | **монтаж водоподготовка** | 2026-10-23 09:00 → 2026-10-26 09:00 (+3d) |  | 3.25d? → 2.25d? |  |  |  |  |
| 12 | купить тройники / краны | 2026-10-23 09:00 → 2026-10-26 09:00 (+3d) | 2026-10-23 18:00 → 2026-10-26 18:00 (+3d) |  |  | 97.59d → 96.59d |  | constraint start no earlier than 2026-10-23 09:00 → start no earlier than 2026-10-26 09:00 |
| 13 | монтаж трасса раздельная, что можно без отключения | 2026-10-23 09:00 → 2026-10-27 09:00 (+4d) | 2026-10-23 13:00 → 2026-10-27 13:00 (+4d) |  |  | 98.09d → 96.09d |  | constraint start no earlier than 2026-10-23 09:00 → start no earlier than 2026-10-27 09:00 |
| 42 | **Входная дверь 1 цех - замена шарниров** |  | 2026-10-23 10:00 A |  | 57% → 100% | 0d → none |  |  |
| 46 | Замена петли | 2026-10-23 09:00 A | 2026-10-23 10:00 A |  | 0% → 100% |  |  |  |
| 138 | **квадропак - сделать силиконовый успокоитель между нория и весы 800*250 шаг шторок 60** |  | 2026-10-23 11:00 → 2026-10-27 11:00 (+4d) | 24.25d → 26.25d |  | 98.34d → 96.34d |  |  |
| 140 | доставка контроль | 2026-10-09 09:00 → 2026-10-26 09:00 (+17d) | 2026-10-09 09:10 → 2026-10-26 09:10 (+17d) |  |  | 109.32d → 97.32d | 139FS+7d → 139FS+1d | constraint start no earlier than 2026-10-09 09:00 → start no earlier than 2026-10-26 09:00 |
| 141 | сборка | 2026-10-23 09:00 → 2026-10-27 09:00 (+4d) | 2026-10-23 11:00 → 2026-10-27 11:00 (+4d) |  |  | 98.34d → 96.34d |  | constraint start no earlier than 2026-10-23 09:00 → start no earlier than 2026-10-27 09:00 |
| 218 | **палетообмостчик монтаж в 1ц** |  | 2026-10-23 12:00 → 2026-10-26 15:00 (+3d) | 61.38d → 62.62d |  | 98.22d → 96.97d |  |  |
| 225 | прокинуть кабель для подключения обмотчика | 2026-10-23 09:00 → 2026-10-26 09:00 (+3d) | 2026-10-23 11:00 → 2026-10-26 11:00 (+3d) |  |  | 98.34d → 96.97d |  | constraint start no earlier than 2026-10-23 09:00 → start no earlier than 2026-10-26 09:00; resources Труфанов А; Некрасов А → Тимофеев В; Николаев; Бундин В |
| 226 | монтаж | 2026-10-23 09:00 → 2026-10-26 11:00 (+3d) | 2026-10-23 12:00 → 2026-10-26 15:00 (+3d) |  |  | 98.22d → 96.97d | none → 225 | resources Некрасов А; Труфанов А → Тимофеев В; Николаев; Бундин В |
| 869 | **востановить работу пирометра печи** |  | 2026-10-23 11:00 → 2026-10-29 11:00 (+6d) | 2.25d → 6.25d |  | 98.34d → 94.34d |  |  |
| 871 | Подключить кабель датчика пирометра с печи, разобраться, где что | 2026-10-23 09:00 → 2026-10-29 09:00 (+6d) | 2026-10-23 11:00 → 2026-10-29 11:00 (+6d) |  |  | 98.34d → 94.34d |  | constraint start no earlier than 2026-10-23 09:00 → start no earlier than 2026-10-29 09:00 |
| 881 | **Ремонт бактерицидной лампы возле компрессора** |  | 2026-10-23 13:00 → 2026-10-26 13:00 (+3d) | 17.5d → 18.5d |  | 98.09d → 97.09d |  |  |
| 884 | Ремонт | 2026-10-23 09:00 → 2026-10-26 09:00 (+3d) | 2026-10-23 13:00 → 2026-10-26 13:00 (+3d) |  |  | 98.09d → 97.09d |  | constraint start no earlier than 2026-10-23 09:00 → start no earlier than 2026-10-26 09:00 |
| 1001 | **усиление подогрев приточной вентиляции** |  | 2026-10-23 18:00 → 2026-11-24 14:15 (+32d) | 59d? → 80.53d? |  | 97.59d → 76.06d |  |  |
| 1004 | заявка доп котлы + автоматика | 2026-09-16 09:00 → 2026-11-09 09:00 (+54d) | 2026-09-16 13:00 → 2026-11-09 13:00 (+54d) |  |  | 120.06d → 76.06d |  | constraint start no earlier than 2026-09-16 09:00 → start no earlier than 2026-11-09 09:00 |
| 1005 | контроль поствки | 2026-09-26 14:00 → 2026-11-23 14:00 (+58d) | 2026-09-26 14:15 → 2026-11-23 14:15 (+58d) |  |  | 120.06d → 76.06d |  |  |
| 1006 | монтаж | 2026-10-23 09:00 → 2026-11-23 14:15 (+31d) | 2026-10-23 18:00 → 2026-11-24 14:15 (+32d) |  |  | 97.59d → 76.06d |  |  |
| 1555 | **Установить насос с ножами в 3 цех под раковину мойки на жирах** |  | 2026-10-23 13:00 → 2026-10-26 13:00 (+3d) | 9.5d → 10.5d |  | 98.09d → 97.09d |  |  |
| 1559 | Установить насос с ножами в 3 цех под раковину мойки на жирах | 2026-10-23 09:00 → 2026-10-26 09:00 (+3d) | 2026-10-23 13:00 → 2026-10-26 13:00 (+3d) |  |  |  |  | constraint start no earlier than 2026-10-23 09:00 → start no earlier than 2026-10-26 09:00; resources Бобренок В; Труфанов А → Труфанов А; Некрасов А |
| 1635 | **сборка квадропака 3 цех** |  | 2026-10-23 11:00 → 2026-10-26 11:00 (+3d) | 59.25d? → 60.25d? |  | 98.34d → 97.34d |  |  |
| 1646 | тест с операторами определить производительность | 2026-10-23 09:00 → 2026-10-26 09:00 (+3d) | 2026-10-23 11:00 → 2026-10-26 11:00 (+3d) |  |  | 98.34d → 97.34d |  | constraint start no earlier than 2026-10-23 09:00 → start no earlier than 2026-10-26 09:00; resources Труфанов А; Зорькин В → Труфанов А; Зорькин В; Некрасов А |
| 1891 | **сборка полок для стеллажей архив бухгалтерии** |  | 2026-10-26 18:00 → 2026-10-27 18:00 (+1d) | 3d? → 4d? |  | 96.59d → 95.59d |  |  |
| 1893 | сборка полок для стеллажей архив бухгалтерии | 2026-10-26 09:00 → 2026-10-27 09:00 (+1d) | 2026-10-26 18:00 → 2026-10-27 18:00 (+1d) |  |  | 96.59d → 95.59d |  | constraint start no earlier than 2026-10-19 08:00 → start no earlier than 2026-10-27 09:00 |
| 1930 | **монтаж вода в 5ц** |  | 2026-10-23 09:05 → 2026-10-26 09:05 (+3d) | 63.01d → 64.01d |  | 98.58d → 97.58d |  |  |
| 1945 | **монтаж труба в земле между 3 и 4ц- УЗО на грей кабель** |  | 2026-10-23 09:05 → 2026-10-26 09:05 (+3d) | 63.01d → 64.01d |  | 98.58d → 97.58d |  |  |
| 1949 | контоль доставка | 2026-10-23 09:00 → 2026-10-26 09:00 (+3d) | 2026-10-23 09:05 → 2026-10-26 09:05 (+3d) |  |  | 98.58d → 97.58d |  | constraint start no earlier than 2026-10-23 09:00 → start no earlier than 2026-10-26 09:00 |
| 2155 | **установить калорифер на 4 котел** |  | 2026-10-26 10:00 → 2026-10-27 18:00 (+1d) | 11.12d? → 13d? |  | 97.47d → 95.59d |  |  |
| 2158 | монтаж | 2026-10-23 10:00 → 2026-10-27 09:00 (+4d) | 2026-10-26 10:00 → 2026-10-27 18:00 (+1d) |  |  | 97.47d → 95.59d |  | constraint start no earlier than 2026-02-27 08:00 → start no earlier than 2026-10-27 09:00 |
| 2384 | **слесарное помещение** |  | 2026-10-26 11:00 → 2026-10-27 11:00 (+1d) | 106.25d? → 107.25d? | 82% → 94% | 97.34d → 96.34d |  |  |
| 2385 | Доработка кронштейна для оснастки Бестрома по ТЗ труфанова | 2026-10-23 09:00 A | 2026-10-23 12:00 A |  | 0% → 100% | 98.22d → none |  |  |
| 2386 | Ремонт насоса для гидролизата 2 цех, который снимали в четверг 22.10.26 | 2026-10-23 09:00 A | 2026-10-23 11:00 A |  | 0% → 100% | 98.34d → none |  |  |
| 2390 | **Ремонт двигателя от поломоечной машинки** |  | 2026-10-26 11:00 → 2026-10-27 11:00 (+1d) | 10.25d → 11.25d |  | 97.34d → 96.34d |  |  |
| 2393 | Сборка двигателя обратно | 2026-10-26 09:00 → 2026-10-27 09:00 (+1d) | 2026-10-26 11:00 → 2026-10-27 11:00 (+1d) |  |  | 97.34d → 96.34d |  | constraint start no earlier than 2026-10-26 09:00 → start no earlier than 2026-10-27 09:00 |
| 2412 | **ЗИП ремонт** |  | 2026-10-29 11:00 → 2026-11-05 11:00 (+7d) | 654.25d? → 659.25d? |  | 94.34d → 89.34d |  |  |
| 2569 | **быстрая замена шнеков - кондуктор для хранения и перемещения подготвленного ствола** | 2026-10-26 09:00 → 2026-11-02 09:00 (+7d) | 2026-10-29 11:00 → 2026-11-05 11:00 (+7d) |  |  | 94.34d → 89.34d |  |  |
| 2570 | проект кондуктора и траверсы перемещения ствола штабелером | 2026-10-26 09:00 → 2026-11-02 09:00 (+7d) | 2026-10-26 11:00 → 2026-11-02 11:00 (+7d) |  |  | 94.34d → 89.34d |  | constraint start no earlier than 2026-10-26 09:00 → start no earlier than 2026-11-02 09:00 |
| 2571 | сборка | 2026-10-27 11:00 → 2026-11-03 11:00 (+7d) | 2026-10-29 11:00 → 2026-11-05 11:00 (+7d) |  |  | 94.34d → 89.34d |  |  |
| 3348 | **синий склад** |  | 2026-11-05 14:30 → 2026-11-06 14:30 (+1d) | 139.56d? → 140.56d? |  | 89.03d → 88.03d |  |  |
| 3349 | **ЗАМЕНА СВЕТИЛЬНИКОВ** | 2026-10-23 09:00 → 2026-10-26 09:00 (+3d) | 2026-11-05 14:30 → 2026-11-06 14:30 (+1d) |  |  | 89.03d → 88.03d |  |  |
| 3350 | сборка леса по наряд допуску / перенос от офиса | 2026-10-23 09:00 → 2026-10-26 09:00 (+3d) | 2026-10-23 12:00 → 2026-10-26 12:00 (+3d) |  |  | 89.03d → 88.03d |  | constraint start no earlier than 2026-10-23 09:00 → start no earlier than 2026-10-26 09:00; resources Труфанов А → Труфанов А; Некрасов А |
| 3351 | определить тип лампы | 2026-10-23 12:00 → 2026-10-26 12:00 (+3d) | 2026-10-23 13:00 → 2026-10-26 13:00 (+3d) |  |  | 89.03d → 88.03d |  |  |
| 3352 | заявка на лампы | 2026-10-23 14:00 → 2026-10-26 14:00 (+3d) | 2026-10-23 14:15 → 2026-10-26 14:15 (+3d) |  |  | 89.03d → 88.03d |  |  |
| 3353 | контроль доставка | 2026-11-03 14:15 → 2026-11-04 14:15 (+1d) | 2026-11-03 14:30 → 2026-11-04 14:30 (+1d) |  |  | 89.03d → 88.03d |  |  |
| 3354 | замена | 2026-11-04 14:30 → 2026-11-05 14:30 (+1d) | 2026-11-05 14:30 → 2026-11-06 14:30 (+1d) |  |  | 89.03d → 88.03d |  |  |
| 3564 | **территория** |  | 2026-10-23 10:00 → 2026-10-26 10:00 (+3d) | 445.12d? → 446.12d? |  | 98.47d → 97.47d |  |  |
| 3566 | Завести проводку в туалет и сделать там розетку на КПП №1 - согласовать отключение/ переключить | 2026-10-23 09:00 → 2026-10-26 09:00 (+3d) | 2026-10-23 10:00 → 2026-10-26 10:00 (+3d) |  |  | 98.47d → 97.47d |  | constraint start no earlier than 2026-10-23 09:00 → start no earlier than 2026-10-26 09:00; resources Тимофеев В → Бундин В |

## Version 30 (saved 2026-10-27, file 07.09.26.mpp)

Last finish stays 2027-03-10. Complete tasks 2500 → 2527.

Added:

| ID | Task | Duration | Start | Finish | Predecessors | Constraint | Resources |
| --- | --- | --- | --- | --- | --- | --- | --- |
| 2 | Дополнительный свет в зоне экструдера над нож узелом - линия 2 | 2h | 2026-10-28 09:00 | 2026-10-28 11:00 |  | start no earlier than 2026-10-28 09:00 | Бобренок В; Николаев |
| 3 | монтаж светильник в зону между печь 2 и стенка профлист. Темно уборщице | 2h | 2026-10-27 09:00 | 2026-10-27 11:00 |  | start no earlier than 2026-10-27 08:00 | Бундин В |
| 5 | Изготовить уши на конвейере №1 по аналогу 1 линии | 2h | 2026-10-29 09:00 | 2026-10-29 11:00 |  | start no earlier than 2026-10-29 09:00 | Тимофеев В |
| 6 | Загерметизировать щель битумной лентой между мезонином и стеной на экструдере, герметизируем сверху | 2h | 2026-10-27 09:00 | 2026-10-27 11:00 |  | start no earlier than 2026-10-27 09:00 | Бобренок В |
| 77 | **покраска металл** | 6.53d | 2026-10-27 09:00 | 2026-11-04 14:15 |  |  |  |
| 78 | заявка грунт ПФ116 | 15min | 2026-10-27 09:00 | 2026-10-27 09:15 |  | start no earlier than 2026-10-27 08:00 | Домоводов К |
| 79 | контроль доставка | 15min | 2026-11-04 09:00 | 2026-11-04 09:15 | 78 | start no earlier than 2026-11-04 09:00 | Домоводов К |
| 80 | покраска | 4h | 2026-11-04 09:15 | 2026-11-04 14:15 | 79 | start no earlier than 2026-10-27 08:00 | Некрасов А |
| 81 | **изг кронштейнов** | 3.03d | 2026-10-27 09:00 A | 2026-10-30 09:15 |  |  |  |
| 82 | заявка оплата ТВР | 15min | 2026-10-27 09:00 A | 2026-10-27 09:15 A |  | start no earlier than 2026-10-27 09:00 | Зорькин В |
| 83 | контроль орг забрать | 15min | 2026-10-30 09:00 | 2026-10-30 09:15 |  | start no earlier than 2026-10-30 09:00 | Зорькин В |
| 84 | **бурение свай** | 1d? | 2026-10-27 09:00 | 2026-10-27 18:00 |  |  |  |
| 85 | получить счет /договор | 1h | 2026-10-27 09:00 | 2026-10-27 10:00 |  | start no earlier than 2026-10-27 08:00 | Домоводов К |
| 86 | перекладка труб 500 соседких краном | 1d? | 2026-10-27 09:00 | 2026-10-27 18:00 |  | start no earlier than 2026-10-27 08:00 |  |
| 186 | контроль доставка резинка упл | 5min | 2026-10-28 09:00 | 2026-10-28 09:05 |  | start no earlier than 2026-10-28 09:00 | Зорькин В |
| 756 | **карантин и потом удалить** | 187.25d? | 2026-03-13 09:00 A | 2026-11-18 11:00 |  |  |  |
| 855 | замена ножек на полибоксах | 4h | 2026-10-27 09:00 | 2026-10-27 13:00 |  | start no earlier than 2026-10-27 08:00 | Бундин В |
| 856 | переключить сигнализацию ПГ на независимое питание, что бы не отключалась при откл ПГ | 2h | 2026-10-28 09:00 | 2026-10-28 11:00 |  | start no earlier than 2026-10-28 09:00 | Бобренок В |
| 857 | Запустить отопление на экструдере | 1h | 2026-10-26 09:00 A | 2026-10-26 10:00 A |  | start no earlier than 2026-10-26 08:00 | Дедов В |
| 1895 | ремонт хомут с сито | 2h | 2026-10-27 09:00 | 2026-10-27 11:00 |  | start no earlier than 2026-10-27 08:00 | Бундин В |
| 1896 | изготовить ящик-крышку 5гран для щитка с контакторами на растариватель | 2h | 2026-10-29 09:00 | 2026-10-29 11:00 |  | start no earlier than 2026-10-29 09:00 | Бобренок В |
| 1897 | Ремонт дробилки | 3h | 2026-10-27 09:00 A | 2026-10-27 12:00 A |  | start no earlier than 2026-10-27 08:00 | Тимофеев В; Бобренок В; Николаев |

Changed:

| ID | Task | Start | Finish | Duration | Complete | Total float | Predecessors | Other |
| --- | --- | --- | --- | --- | --- | --- | --- | --- |
| 10 | **ремонт 3х ходовой приточная вентиляция** |  | 2026-10-23 10:00 A |  | 50% → 100% | 98.47d → none |  |  |
| 12 | монтаж на калорифер /подключить серволпривод | 2026-10-20 09:00 A | 2026-10-20 11:00 A |  | 0% → 100% | 101.34d → none |  |  |
| 15 | **монтаж водоподготовка // разделить воду в экструдер и парогенераторы** |  | 2026-10-28 11:30 → 2026-10-28 13:00 | 168.31d? → 168.5d? |  | 95.28d → 95.09d |  |  |
| 16 | **монтаж водоподготовка** |  | 2026-10-28 11:00 → 2026-10-28 13:00 | 2.25d? → 2.5d? |  | 95.34d → 95.09d |  |  |
| 18 | монтаж трасса раздельная, что можно без отключения |  |  |  |  |  |  | resources Труфанов А; Некрасов А → Бобренок В; Николаев |
| 19 | подключение в систему / подключение питание |  | 2026-10-28 11:00 → 2026-10-28 13:00 | 2h → 4h |  | 95.34d → 95.09d |  | was named подключение в систему; resources Тимофеев В → Бобренок В; Николаев |
| 71 | **сборка рама для труб приточной вентиляции** |  | 2026-11-03 09:15 → 2026-11-05 18:00 (+2d) | 14.03d? → 17d? |  | 91.56d → 88.59d |  |  |
| 75 | проект подготовить заказ на пластины | 2026-10-22 09:00 A | 2026-10-22 13:00 A |  | 0% → 100% | 99.09d → none |  |  |
| 87 | сборка рама на земле | 2026-10-29 09:15 → 2026-11-03 09:00 (+5d) | 2026-11-02 09:15 → 2026-11-04 18:00 (+2d) |  |  | 91.56d → 88.59d |  | constraint start no earlier than 2026-09-30 08:00 → start no earlier than 2026-11-03 09:00; resources Труфанов А → Труфанов А; Некрасов А |
| 88 | монтаж рама на цех краном | 2026-11-02 09:15 → 2026-11-05 09:00 (+3d) | 2026-11-03 09:15 → 2026-11-05 18:00 (+2d) |  |  | 91.56d → 88.59d |  |  |
| 104 | **Дополнительное освещение на Рампе** |  | 2026-09-26 10:05 → 2026-10-28 10:00 (+32d) | 15.14d → 41.12d |  | 121.46d → 95.47d |  |  |
| 109 | пожключение выключателя | 2026-09-26 09:05 → 2026-10-28 09:00 (+32d) | 2026-09-26 10:05 → 2026-10-28 10:00 (+32d) |  |  | 121.46d → 95.47d |  | constraint start no earlier than 2026-09-26 09:00 → start no earlier than 2026-10-28 09:00 |
| 111 | **реконструкция хранения гидролизатов и маршрут подачи навесок** |  | 2026-10-29 09:30 → 2026-11-02 18:00 (+4d) | 45.06d → 48d |  | 94.53d → 91.59d |  |  |
| 114 | **монтаж доп плащадки** |  | 2026-10-29 09:15 → 2026-11-02 18:00 (+4d) | 25.03d → 28d |  | 94.56d → 91.59d |  |  |
| 119 | монтаж | 2026-10-27 09:15 → 2026-10-30 09:00 (+3d) | 2026-10-29 09:15 → 2026-11-02 18:00 (+4d) |  |  | 94.56d → 91.59d |  | constraint start no earlier than 2026-09-28 09:00 → start no earlier than 2026-10-30 09:00 |
| 120 | **монтаж перегородка корридор** |  | 2026-10-29 09:30 → 2026-11-02 18:00 (+4d) | 3.03d → 5.97d |  | 94.53d → 91.59d |  |  |
| 122 | монтаж | 2026-10-27 09:30 → 2026-10-30 09:00 (+3d) | 2026-10-29 09:30 → 2026-11-02 18:00 (+4d) |  |  | 94.53d → 91.59d |  | constraint start no earlier than 2026-09-28 09:00 → start no earlier than 2026-10-30 09:00 |
| 147 | **квадропак - сделать силиконовый успокоитель между нория и весы 800*250 шаг шторок 60** |  | 2026-10-27 11:00 → 2026-10-28 10:00 (+1d) | 26.25d → 27.12d | 7% → 25% | 96.34d → 95.47d |  |  |
| 149 | доставка контроль | 2026-10-26 09:00 A | 2026-10-26 09:10 A |  | 0% → 100% | 97.32d → none |  |  |
| 150 | сборка | 2026-10-27 09:00 → 2026-10-28 09:00 (+1d) | 2026-10-27 11:00 → 2026-10-28 10:00 (+1d) | 2h → 1h |  | 96.34d → 95.47d |  | constraint start no earlier than 2026-10-27 09:00 → start no earlier than 2026-10-28 09:00 |
| 184 | **продумать как сделать герметичную крышку на смесителе сухого гидрализата** |  | 2026-10-06 11:00 → 2026-10-29 11:00 (+23d) | 36.25d → 54.25d |  | 112.34d → 94.34d |  |  |
| 189 | установка на струбцинах с уплотнителями | 2026-10-06 09:00 → 2026-10-29 09:00 (+23d) | 2026-10-06 11:00 → 2026-10-29 11:00 (+23d) |  |  | 112.34d → 94.34d | 185 → 185, 186 | constraint start no earlier than 2026-10-06 09:00 → start no earlier than 2026-10-29 09:00; resources Тимофеев В; Домоводов К → Тимофеев В |
| 228 | **палетообмостчик монтаж в 1ц** |  | 2026-10-26 15:00 A |  | 20% → 100% | 96.97d → none |  |  |
| 235 | прокинуть кабель для подключения обмотчика | 2026-10-26 09:00 A | 2026-10-26 11:00 A |  | 0% → 100% | 96.97d → none |  |  |
| 236 | монтаж | 2026-10-26 11:00 A | 2026-10-26 15:00 A |  | 0% → 100% | 96.97d → none |  |  |
| 737 | **режет кабель ЛУКАС силовой в лотке эстакада у КПП** | 2024-08-02 09:00 A | 2026-04-16 13:00 A |  | 0% → 100% | 243.09d → none |  |  |
| 738 | решение о переговорах ГП | 2024-08-02 09:00 A | 2024-08-02 09:30 A |  | 0% → 100% | 687.53d → none |  |  |
| 739 | перекладка кабель | 2026-04-16 09:00 A | 2026-04-16 13:00 A |  | 0% → 100% | 243.09d → none |  |  |
| 872 | **Борьба с запахом корма на антрисоли офисы** |  | 2026-10-21 11:00 A |  | 93% → 100% | 100.34d → none |  |  |
| 874 | Контроль | 2026-10-20 09:00 A | 2026-10-20 09:10 A |  | 0% → 100% | 101.57d → none |  |  |
| 885 | При запуске отопления приточки, как будет давление в системе проверить антифриз, долить |  |  |  |  |  |  | resources Тимофеев В → Труфанов А |
| 901 | **Ремонт бактерицидной лампы возле компрессора** |  | 2026-10-26 13:00 → 2026-10-26 11:00 A | 18.5d → 18.25d | 23% → 100% | 97.09d → none |  |  |
| 904 | Ремонт | 2026-10-26 09:00 A | 2026-10-26 13:00 → 2026-10-26 11:00 A | 4h → 2h | 0% → 100% | 97.09d → none |  |  |
| 919 | **сыпит в одну точку барабана, образуя не нужное кольцо** |  | 2026-10-30 10:00 → 2026-11-05 18:00 (+6d) | 8.12d → 13d |  | 93.47d → 88.59d |  |  |
| 922 | **перенос дозатора на второй барабан** |  | 2026-10-30 10:00 → 2026-11-05 18:00 (+6d) | 4.12d → 9d |  | 93.47d → 88.59d |  |  |
| 924 | изготовить раму - составить чертежи | 2026-10-28 10:00 → 2026-11-04 09:00 (+7d) | 2026-10-28 12:00 → 2026-11-04 11:00 (+7d) |  |  | 93.47d → 88.59d |  | constraint start no earlier than 2026-10-21 09:00 → start no earlier than 2026-11-04 09:00 |
| 925 | сборка рама | 2026-10-28 12:00 → 2026-11-04 11:00 (+7d) | 2026-10-28 17:00 → 2026-11-04 16:00 (+7d) |  |  | 93.47d → 88.59d |  |  |
| 926 | перенос шнека дозатора / переключения | 2026-10-29 17:00 → 2026-11-05 16:00 (+7d) | 2026-10-30 10:00 → 2026-11-05 18:00 (+6d) |  |  | 93.47d → 88.59d |  |  |
| 1031 | **обеспечить не менее +15 зимой в зоне хранения навесок** |  | 2026-11-02 16:00 → 2026-10-30 18:00 (-3d) | 73.75d? → 73d? | 30% → 31% | 91.84d → 92.59d |  |  |
| 1032 | **утепление стены** |  | 2026-11-02 16:00 → 2026-10-28 16:00 (-5d) | 53.75d → 50.75d | 14% → 17% | 91.84d → 94.84d |  |  |
| 1035 | контроль даты доставки | 2026-09-14 10:00 A | 2026-09-14 10:15 A |  | 0% → 100% | 131.69d → none |  |  |
| 1036 | монтаж пеноплекса на стену | 2026-11-02 09:00 → 2026-10-28 09:00 (-5d) | 2026-11-02 16:00 → 2026-10-28 16:00 (-5d) |  |  | 91.84d → 94.84d |  | constraint start no earlier than 2026-11-02 09:00 → start no earlier than 2026-10-28 09:00 |
| 1041 | **тепловые завесы в 2ц зона подачи навесок** |  | 2026-10-29 12:00 → 2026-10-30 18:00 (+1d) | 62.38d? → 64d? |  | 94.22d → 92.59d |  |  |
| 1042 | **монтаж теплокалориферов** |  | 2026-10-27 18:00 → 2026-10-30 18:00 (+3d) | 24d? → 27d? |  | 95.59d → 92.59d |  |  |
| 1047 | монтаж калориферов | 2026-10-27 09:00 → 2026-10-30 09:00 (+3d) | 2026-10-27 18:00 → 2026-10-30 18:00 (+3d) |  |  | 95.59d → 92.59d |  | constraint start no earlier than 2026-10-27 09:00 → start no earlier than 2026-10-30 09:00 |
| 1048 | **монтаж кабель** |  | 2026-10-29 12:00 → 2026-10-19 18:00 (-10d) | 62.38d? → 55d? |  | 94.22d → 101.59d |  |  |
| 1050 | заявка кабель /щиток | 2026-10-20 09:00 → 2026-10-05 09:00 (-15d) | 2026-10-20 11:00 → 2026-10-05 11:00 (-15d) |  |  | 94.22d → 106.22d |  | constraint start no earlier than 2026-10-20 09:00 → start no earlier than 2026-10-05 09:00 |
| 1051 | контроль доставка | 2026-10-27 11:00 → 2026-10-12 11:00 (-15d) | 2026-10-27 12:00 → 2026-10-12 12:00 (-15d) |  |  | 94.22d → 106.22d |  |  |
| 1052 | монтаж | 2026-10-28 12:00 → 2026-10-19 09:00 (-9d) | 2026-10-29 12:00 → 2026-10-19 18:00 (-10d) |  |  | 94.22d → 101.59d |  |  |
| 1567 | **3 цех** |  |  |  | 80% → 81% |  |  |  |
| 1575 | **Установить насос с ножами в 3 цех под раковину мойки на жирах** |  | 2026-10-26 13:00 → 2026-10-27 13:00 (+1d) | 10.5d → 11.5d | 19% → 23% | 97.09d → 0d |  |  |
| 1578 | контроль | 2026-10-22 09:00 A | 2026-10-22 09:10 A |  | 0% → 100% | 99.57d → none |  |  |
| 1579 | Установить насос с ножами в 3 цех под раковину мойки на жирах | 2026-10-26 09:00 → 2026-10-27 09:00 (+1d) | 2026-10-26 13:00 → 2026-10-27 13:00 (+1d) |  |  |  |  | constraint start no earlier than 2026-10-26 09:00 → start no earlier than 2026-10-27 09:00 |
| 1617 | **С двигателя экструдера выдавило много масла;** |  |  |  | 36% → 44% |  |  |  |
| 1619 | заявка на датчики | 2026-09-18 14:00 A | 2026-09-18 15:00 A |  | 0% → 100% | 119.19d → none |  |  |
| 1655 | **сборка квадропака 3 цех** |  |  |  | 74% → 79% |  |  |  |
| 1666 | тест с операторами определить производительность | 2026-10-26 09:00 A | 2026-10-26 11:00 A |  | 0% → 100% | 97.34d → none |  |  |
| 1914 | **сборка полок для стеллажей архив бухгалтерии** |  | 2026-10-27 18:00 → 2026-10-30 18:00 (+3d) | 4d? → 7d? |  | 95.59d → 92.59d |  |  |
| 1916 | сборка полок для стеллажей архив бухгалтерии | 2026-10-27 09:00 → 2026-10-30 09:00 (+3d) | 2026-10-27 18:00 → 2026-10-30 18:00 (+3d) |  |  | 95.59d → 92.59d |  | constraint start no earlier than 2026-10-27 09:00 → start no earlier than 2026-10-30 09:00 |
| 1917 | **монтаж тепловые пушки подвесные 5 цех** |  | 2026-10-28 18:00 → 2026-11-11 18:00 (+14d) | 58d → 68d |  | 94.59d → 84.59d |  |  |
| 1922 | монтаж | 2026-10-27 09:00 → 2026-11-10 09:00 (+14d) | 2026-10-28 18:00 → 2026-11-11 18:00 (+14d) |  |  | 94.59d → 84.59d |  | constraint start no earlier than 2026-10-27 09:00 → start no earlier than 2026-11-10 09:00 |
| 1925 | **установить зажим троса на тельфер** |  | 2026-10-28 18:00 → 2026-10-30 09:15 (+2d) | 49d? → 50.03d? |  | 94.59d → 93.56d |  |  |
| 1927 | контроль доставки | 2026-10-20 09:00 → 2026-10-28 09:00 (+8d) | 2026-10-20 09:15 → 2026-10-28 09:15 (+8d) |  |  | 100.56d → 93.56d |  | constraint start no earlier than 2026-10-20 09:00 → start no earlier than 2026-10-28 09:00 |
| 1928 | монтаж | 2026-10-28 09:00 → 2026-10-29 09:15 (+1d) | 2026-10-28 18:00 → 2026-10-30 09:15 (+2d) |  |  | 94.59d → 93.56d | 1174FS+1d, 1927 → 1174FS+1d, 1927FS+1d |  |
| 2178 | **установить калорифер на 4 котел** |  | 2026-10-27 18:00 → 2026-10-30 18:00 (+3d) | 13d? → 16d? |  | 95.59d → 92.59d |  |  |
| 2181 | монтаж | 2026-10-27 09:00 → 2026-10-30 09:00 (+3d) | 2026-10-27 18:00 → 2026-10-30 18:00 (+3d) |  |  | 95.59d → 92.59d |  | constraint start no earlier than 2026-10-27 09:00 → start no earlier than 2026-10-30 09:00 |
| 2193 | **Замена насосной станции** |  | 2026-09-11 11:00 A |  | 92% → 100% | 136.34d → none |  |  |
| 2195 | Заявка на станцию | 2026-09-02 09:00 A | 2026-09-02 09:15 A |  | 0% → 100% | 144.56d → none |  |  |
| 2196 | контроль доставки | 2026-09-11 09:00 A | 2026-09-11 09:05 A |  | 0% → 100% | 136.58d → none |  |  |
| 2360 | **KAMATSU #1** | 2026-10-19 09:00 A |  |  | 0% → 99% |  |  |  |

| ID | Task | Start | Finish | Complete | Total float | Other |
| --- | --- | --- | --- | --- | --- | --- |
| 2361 | **заявка 19_10** | 2026-10-19 09:00 A |  | 0% → 99% |  |  |
| 2362 | вызов АВТОБЕСТ | 2026-10-19 09:00 A | 2026-10-19 09:05 A | 0% → 100% | 102.58d → none |  |
| 2416 | Сборка двигателя обратно (привезут новый) |  |  |  |  | was named Сборка двигателя обратно |
| 2440 | **Собрать редуктор питателя, который разобранный на верстаке** |  |  | 73% → 82% |  |  |
| 2441 | отпраитвь на перемонтку | 2026-09-28 09:00 A | 2026-09-28 09:15 A | 0% → 100% | 112.5d → none |  |
| 3371 | **синий склад** |  |  | 36% → 47% |  |  |
| 3372 | **ЗАМЕНА СВЕТИЛЬНИКОВ** | 2026-10-26 09:00 A |  | 0% → 32% |  |  |
| 3373 | сборка леса по наряд допуску / перенос от офиса | 2026-10-26 09:00 A | 2026-10-26 12:00 A | 0% → 100% | 88.03d → none |  |
| 3374 | определить тип лампы | 2026-10-26 12:00 A | 2026-10-26 13:00 A | 0% → 100% | 88.03d → none |  |
| 3510 | **обучение** |  |  | 42% → 48% |  |  |
| 3526 | **формирование шаблона настройки оборудования** |  | 2024-09-11 18:00 A | 67% → 100% | 658.59d → none |  |
| 3537 | **ТЕКО 0,4** | 2024-09-11 10:00 A | 2024-09-11 18:00 A | 0% → 100% | 658.59d → none |  |
| 3538 | определить базовые точки относительно которых будет проводится замер в 3х плоскостях - флажки верх, флажки низ, смыкание ножа, центр трубы | 2024-09-11 10:00 A | 2024-09-11 11:00 A | 0% → 100% | 658.59d → none |  |
| 3539 | обвести в PAINT фото методику измерений, присвоить \имя каждому размеру | 2024-09-11 11:00 A | 2024-09-11 13:00 A | 0% → 100% | 658.59d → none |  |
| 3540 | создать карту / таблицу настройки. Размер-дата-фио | 2024-09-11 14:00 A | 2024-09-11 16:00 A | 0% → 100% | 658.59d → none |  |
| 3541 | оформить ведение карты в журнал | 2024-09-11 16:00 A | 2024-09-11 18:00 A | 0% → 100% | 658.59d → none |  |
| 3589 | Завести проводку в туалет и сделать там розетку на КПП №1 - согласовать отключение/ переключить | 2026-10-26 09:00 A | 2026-10-26 10:00 A | 0% → 100% | 97.47d → none |  |

## Version 31 (saved 2026-10-29, file 07.09.26.mpp)

Last finish stays 2027-03-10. Complete tasks 2527 → 2548.

Added:

| ID | Task | Duration | Start | Finish | Predecessors | Constraint | Resources |
| --- | --- | --- | --- | --- | --- | --- | --- |
| 2 | замена ножек на полибоксах под которые не заезжает рохля | 3h | 2026-10-29 09:00 | 2026-10-29 12:00 |  | start no earlier than 2026-10-29 08:00 | Бобренок В |
| 3 | Перенос конструкции с фильтрами на раму барабанов (каждую мойку их двигают, мучаются со вторым краном, что не открывается) | 2h | 2026-10-29 09:00 A | 2026-10-29 11:00 A |  | start no earlier than 2026-10-29 08:00 | Тимофеев В |
| 4 | Поставить насос 12В через расходомер линия 2 | 1h | 2026-10-29 09:00 | 2026-10-29 10:00 |  | start no earlier than 2026-10-29 08:00 | Тимофеев В |
| 5 | Сделать врезки по водоподготовке в основную магистраль, курьер привез необходимое | 2h | 2026-10-28 09:00 | 2026-10-28 11:00 |  | start no earlier than 2026-10-28 08:00 | Труфанов А; Некрасов А |
| 7 | **Собрать канистру для подачи воды в экструдер, по аналогу 3 цех. Промежуточный бак 2 шт** | 6.12d | 2026-10-29 09:00 | 2026-11-06 10:00 |  |  | Бундин В |
| 8 | Заказать поплавковый клапан с боковой подачей | 15min | 2026-10-29 09:00 | 2026-10-29 09:15 |  | start no earlier than 2026-10-29 08:00 | Зорькин В |
| 9 | Контроль | 10min | 2026-11-05 09:00 | 2026-11-05 09:10 |  | start no earlier than 2026-11-05 09:00 | Зорькин В |
| 10 | монтаж | 1h | 2026-11-06 09:00 | 2026-11-06 10:00 |  | start no earlier than 2026-11-06 09:00 | Бундин В |
| 11 | Поставить лампу на 1 линии, по аналогу 2 линии, повешать на зонтик, такую же длинную, запитаться от соседней, посмотреть токи, что все хватает | 2h | 2026-10-28 09:00 A | 2026-10-28 11:00 A |  | start no earlier than 2026-10-28 08:00 | Бундин В |
| 12 | Ремонт палетообмотчика | 2h | 2026-10-28 09:00 A | 2026-10-28 11:00 A |  | start no earlier than 2026-10-28 09:00 | Тимофеев В |
| 34 | Подать информацию (список), что необходимо заказать для восстановления насосов | 30min | 2026-10-28 09:00 A | 2026-10-28 09:30 A |  | start no earlier than 2026-10-28 09:00 | Тимофеев В |
| 867 | На КПП №2 сделать штуцер для набора кубов | 1h | 2026-10-30 09:00 | 2026-10-30 10:00 |  | start no earlier than 2026-10-30 09:00 | Труфанов А; Некрасов А |
| 868 | Перекрыть на складе воду питающую 2 цех, переключить бочку в реверс во 2 цеху, вода должна течь в обратку, запитать экструдер через байпас | 1h | 2026-10-30 09:00 | 2026-10-30 10:00 |  | start no earlier than 2026-10-30 09:00 | Труфанов А; Некрасов А |
| 869 | Скомплектовать что нужно для безопасного отвода пара на парогенераторе | 1h | 2026-10-30 09:00 | 2026-10-30 10:00 |  | start no earlier than 2026-10-30 09:00 | Труфанов А |
| 870 | поменять лампу на этаже кабинетов в коридоре | 1h | 2026-10-28 09:00 | 2026-10-28 10:00 |  | start no earlier than 2026-10-28 08:00 | Бундин В |
| 1911 | Подготовка к монтажу доп отопления 5 цех. Собрать список материала, чего не хватает. Что расстаскали | 1h | 2026-11-03 09:00 | 2026-11-03 10:00 | 2195 |  | Труфанов А; Некрасов А |
| 2425 | Модернизация люльки | 1d? | 2026-10-29 09:00 | 2026-10-29 18:00 |  | start no earlier than 2026-10-29 08:00 |  |
| 2426 | Сделать в ставку в люльку со ступенькой и перилами, для возможности подниматься выше. Высота ступеньки по нижнюю перилину, высота перила нужно определить | 4h | 2026-11-02 09:00 | 2026-11-02 13:00 |  | start no earlier than 2026-11-02 09:00 | Макаревич А |
| 2715 | очистка моторов шлюз питателей циклонов от пыли | 30min | 2026-10-29 09:00 | 2026-10-29 09:30 |  | start no earlier than 2026-10-29 08:00 | Макаревич А; Николаев |
| 2738 | Ревизия питателя, контроль состояния подшипников/втулки/шестерен/втулки | 30min | 2026-10-29 09:00 | 2026-10-29 09:30 |  | start no earlier than 2026-10-29 08:00 | Макаревич А; Николаев |
| 2745 | контроль привода, подшипников/при необходимости замена | 15min | 2026-10-29 09:00 | 2026-10-29 09:15 |  | start no earlier than 2026-10-29 08:00 | Макаревич А; Николаев |
| 2758 | Чистка парогенератора | 1h | 2026-10-29 09:00 | 2026-10-29 10:00 |  | start no earlier than 2026-10-29 08:00 | Макаревич А; Николаев |
| 2770 | Чистка фильтра | 30min | 2026-10-29 09:00 | 2026-10-29 09:30 |  | start no earlier than 2026-10-29 08:00 | Макаревич А; Николаев |
| 2778 | частотные привода экструдера, ножей, питателя - продувка | 15min | 2026-10-29 09:00 | 2026-10-29 09:15 |  | start no earlier than 2026-10-29 08:00 | Макаревич А; Николаев |
| 2785 | ревизия/ проверка токов | 15min | 2026-10-29 09:00 | 2026-10-29 09:15 |  | start no earlier than 2026-10-29 08:00 | Макаревич А; Николаев |
| 2793 | Осмотр, продувка, протяжка контактов | 20min | 2026-10-29 09:00 | 2026-10-29 09:20 |  | start no earlier than 2026-10-29 08:00 | Макаревич А; Николаев |
| 2800 | Дефектовка - проверить подачу, вибрации, посторонние шумы/проверка фильтров/насосов/фитингов | 15min | 2026-10-29 09:00 | 2026-10-29 09:15 |  | start no earlier than 2026-10-29 08:00 | Макаревич А; Николаев |
| 2818 | Контроль состояния сетки/цепи | 1h | 2026-10-29 09:00 | 2026-10-29 10:00 |  | start no earlier than 2026-10-29 08:00 | Макаревич А; Николаев |
| 2830 | Ревизия питателя, контроль состояния подшипников/втулки/шестерен | 30min | 2026-10-29 09:00 | 2026-10-29 09:30 |  | start no earlier than 2026-10-29 08:00 | Труфанов А; Некрасов А |
| 2837 | контроль привода, подшипников | 15min | 2026-10-29 09:00 | 2026-10-29 09:15 |  | start no earlier than 2026-10-29 08:00 | Труфанов А; Некрасов А |
| 2847 | Чистка парогенератора | 1h | 2026-10-29 09:00 | 2026-10-29 10:00 |  | start no earlier than 2026-10-29 08:00 | Макаревич А; Николаев |
| 2856 | частотные привода экструдера, ножей, питателя - продувка | 15min | 2026-10-29 09:00 | 2026-10-29 09:15 |  | start no earlier than 2026-10-29 08:00 | Труфанов А; Некрасов А |
| 2867 | Чистка фильтра/тэны и термопары шнеков - протяжка/ проверка масла | 30min | 2026-10-29 09:00 | 2026-10-29 09:30 |  | start no earlier than 2026-10-29 08:00 | Труфанов А; Некрасов А |
| 2874 | Ревизия, проверка жил, проверка токов | 20min | 2026-10-29 09:00 | 2026-10-29 09:20 |  | start no earlier than 2026-10-29 08:00 | Труфанов А; Некрасов А |
| 2887 | ревизия/ проверка токов/протяжка контактов | 15min | 2026-10-29 09:00 | 2026-10-29 09:15 |  | start no earlier than 2026-10-29 08:00 | Труфанов А; Некрасов А |
| 2903 | Осмотр, дефектовка, устранение неисправностей ,смазка по необходимости, протяжка болтов | 1h | 2026-10-29 09:00 | 2026-10-29 10:00 |  | start no earlier than 2026-10-29 08:00 | Труфанов А; Некрасов А |
| 2911 | Дефектовка - проверить подачу, вибрации, посторонние шумы/проверка фильтров/насосов/фитингов | 15min | 2026-10-29 09:00 | 2026-10-29 09:15 |  | start no earlier than 2026-10-29 08:00 | Труфанов А; Некрасов А |
| 2917 | насос, фильтр - осмотр, чистка | 15min | 2026-10-29 09:00 | 2026-10-29 09:15 |  | start no earlier than 2026-10-29 08:00 | Макаревич А; Николаев |
| 2934 | Осмотр всех упаковщиков/транспортеров/накопительных столов/ всех щитков оборудования/редукторов | 1h | 2026-10-29 09:00 | 2026-10-29 10:00 |  | start no earlier than 2026-10-29 08:00 | Макаревич А; Николаев |
| 2964 | продувка радиаторов осушителя и компрессора, слив конденсата | 1h | 2026-10-29 09:00 | 2026-10-29 10:00 |  | start no earlier than 2026-10-29 08:00 | Макаревич А; Николаев |
| 2989 | Осмотр подшипников | 15min | 2026-10-30 09:00 | 2026-10-30 09:15 |  | start no earlier than 2026-10-30 09:00 | Труфанов А; Некрасов А |
| 3012 | Чистка | 1h | 2026-11-05 09:00 | 2026-11-05 10:00 |  | start no earlier than 2026-11-05 09:00 | Николаев; Макаревич А |
| 3013 | Смонтировать переключатель на сирену парогенератора вкл, выкл | 1h | 2026-10-30 09:00 | 2026-10-30 10:00 |  | start no earlier than 2026-10-30 09:00 | Макаревич А; Николаев |
| 3030 | Замена шкива на моторе привода печи (шкив на складе) | 1h | 2026-10-30 09:00 | 2026-10-30 10:00 |  | start no earlier than 2026-10-30 09:00 | Макаревич А; Николаев |
| 3038 | ревизия / замена критичных | 1h | 2026-10-30 09:00 | 2026-10-30 10:00 |  | start no earlier than 2026-10-30 09:00 | Николаев; Макаревич А |
| 3063 | Ревизия ленты, контроль соединения | 30min | 2026-10-30 09:00 | 2026-10-30 09:30 |  | start no earlier than 2026-10-30 09:00 | Макаревич А; Николаев |
| 3073 | Осмотр | 5min | 2026-10-30 09:00 | 2026-10-30 09:05 |  | start no earlier than 2026-10-30 09:00 | Макаревич А; Николаев |
| 3086 | Ревизия шестерен и подшипников | 1h | 2026-10-30 09:00 | 2026-10-30 10:00 |  | start no earlier than 2026-10-30 09:00 | Труфанов А; Некрасов А |
| 3098 | Осмотр подшипников, муфты, шестерен | 10min | 2026-10-30 09:00 | 2026-10-30 09:10 |  | start no earlier than 2026-10-30 09:00 | Труфанов А; Некрасов А |
| 3144 | продувка частотного привода | 10min | 2026-10-30 09:00 | 2026-10-30 09:10 |  | start no earlier than 2026-10-30 09:00 | Макаревич А; Николаев |
| 3152 | Ревизия узлов/масла. Очистка мотора от пыли | 10min | 2026-10-30 09:00 | 2026-10-30 09:10 |  | start no earlier than 2026-10-30 09:00 | Макаревич А; Николаев |
| 3171 | Осмотр, очистка от пыли | 1h | 2026-10-30 09:00 | 2026-10-30 10:00 |  | start no earlier than 2026-10-30 09:00 | Тимофеев В |
| 3187 | осмотср замена подгоревших кабелей | 20min | 2026-10-30 09:00 | 2026-10-30 09:20 |  | start no earlier than 2026-10-30 09:00 | Макаревич А; Николаев |
| 3199 | Продувка. Замена подогретых жил | 20min | 2026-10-30 09:00 | 2026-10-30 09:20 |  | start no earlier than 2026-10-30 09:00 | Макаревич А; Николаев |
| 3225 | Осмотр соединений фитингов, трехходового крана бежит/не бежит | 10min | 2026-10-30 09:00 | 2026-10-30 09:10 |  | start no earlier than 2026-10-30 09:00 | Тимофеев В |
| 3226 | Замена фитингов на новые под новый шланг | 2h | 2026-10-30 09:00 | 2026-10-30 11:00 |  | start no earlier than 2026-10-30 09:00 | Тимофеев В |
| 3236 | Осмотр/ревизия насоса гидролизата, проверка всех соединений | 10min | 2026-10-30 09:00 | 2026-10-30 09:10 |  | start no earlier than 2026-10-30 09:00 | Тимофеев В |
| 3274 | ревизия люфтов, фиксации, смазки подшипников | 15min | 2026-10-30 09:00 | 2026-10-30 09:15 |  | start no earlier than 2026-10-30 09:00 | Тимофеев В |
| 3293 | Проверка редуктора транспортерной ленты | 10min | 2026-10-29 09:00 | 2026-10-29 09:10 |  | start no earlier than 2026-10-29 08:00 | Макаревич А; Николаев |
| 3312 | Чистка тенов, проверка тефлона, роликов | 1h | 2026-10-30 09:00 | 2026-10-30 10:00 |  | start no earlier than 2026-10-30 09:00 | Макаревич А; Николаев |
| 3358 | чистка фильтров | 20min | 2026-10-30 09:00 | 2026-10-30 09:20 |  | start no earlier than 2026-10-30 09:00 | Тимофеев В |
| 3369 | чистка фильтров | 20min | 2026-10-30 09:00 | 2026-10-30 09:20 |  | start no earlier than 2026-10-30 09:00 | Тимофеев В |
| 3378 | чистка фильтров | 20min | 2026-10-30 09:00 | 2026-10-30 09:20 |  | start no earlier than 2026-10-30 09:00 | Тимофеев В |
| 3436 | Замерить ширину запаечных губок на теко 1,5, написать информацию в мах | 30min | 2026-10-30 09:00 | 2026-10-30 09:30 |  | start no earlier than 2026-10-30 09:00 | Тимофеев В |
| 3437 | Перевезти лист металла на пандус 1 цех через карщика сразу на входе, запинаются | 1h | 2026-10-27 09:00 A | 2026-10-27 10:00 A |  | start no earlier than 2026-10-27 08:00 | Бундин В |
| 3614 | Контроль монтажа по водоподготовке в 1 цеху, проверить материалы | 1h | 2026-10-28 09:00 A | 2026-10-28 10:00 A |  | start no earlier than 2026-10-28 09:00 | Труфанов А; Некрасов А |
| 3655 | Выполнить работу по розетке для электрокара, по видео, которое скинет Домоводов | 2h | 2026-10-29 09:00 | 2026-10-29 11:00 |  | start no earlier than 2026-10-29 08:00 | Бобренок В |

Changed:

| ID | Task | Start | Finish | Duration | Complete | Total float | Predecessors | Other |
| --- | --- | --- | --- | --- | --- | --- | --- | --- |
| 13 | Дополнительный свет в зоне экструдера над нож узелом - линия 2 | 2026-10-28 09:00 A | 2026-10-28 11:00 A |  | 0% → 100% | 95.34d → none |  |  |
| 14 | монтаж светильник в зону между печь 2 и стенка профлист. Темно уборщице | 2026-10-27 09:00 A | 2026-10-27 11:00 A |  | 0% → 100% | 96.34d → none |  |  |
| 16 | Изготовить уши на конвейере №1 по аналогу 1 линии | 2026-10-29 09:00 A | 2026-10-29 11:00 A |  | 0% → 100% | 94.34d → none |  |  |
| 17 | Загерметизировать щель битумной лентой между мезонином и стеной на экструдере, герметизируем сверху | 2026-10-27 09:00 A | 2026-10-27 11:00 A |  | 0% → 100% | 96.34d → none |  |  |
| 26 | **монтаж водоподготовка // разделить воду в экструдер и парогенераторы** |  | 2026-10-28 13:00 → 2026-10-29 13:00 (+1d) | 168.5d? → 169.5d? | 89% → 92% | 95.09d → 94.09d |  |  |
| 27 | **монтаж водоподготовка** | 2026-10-26 09:00 A | 2026-10-28 13:00 → 2026-10-29 13:00 (+1d) | 2.5d? → 3.5d? | 0% → 50% | 95.09d → 94.09d |  |  |
| 29 | монтаж трасса раздельная, что можно без отключения | 2026-10-27 09:00 A | 2026-10-27 13:00 A |  | 0% → 100% | 96.09d → none |  |  |
| 30 | подключение в систему / подключение питание | 2026-10-28 09:00 → 2026-10-29 09:00 A (+1d) | 2026-10-28 13:00 → 2026-10-29 13:00 A (+1d) |  | 0% → 100% | 95.09d → none |  | constraint start no earlier than 2026-10-28 09:00 → start no earlier than 2026-10-29 09:00; resources Бобренок В; Николаев → Труфанов А; Некрасов А |
| 31 | **разделение воды ПГ / экструдер** | 2026-08-07 09:00 A |  |  | 0% → 15% | 49d → 95.28d |  |  |
| 33 | **воставноить насосы пирльстатические** | 2026-10-20 09:00 A |  |  | 0% → 83% |  |  |  |
| 37 | сборка | 2026-10-28 09:30 A | 2026-10-28 11:30 A |  | 0% → 100% | 95.28d → none |  |  |
| 123 | **реконструкция хранения гидролизатов и маршрут подачи навесок** |  | 2026-11-02 18:00 → 2026-11-03 18:00 (+1d) | 48d → 49d |  | 91.59d → 90.59d |  |  |
| 126 | **монтаж доп плащадки** |  | 2026-11-02 18:00 → 2026-11-03 18:00 (+1d) | 28d → 29d |  | 91.59d → 90.59d |  |  |
| 131 | монтаж | 2026-10-30 09:00 → 2026-11-02 09:00 (+3d) | 2026-11-02 18:00 → 2026-11-03 18:00 (+1d) |  |  | 91.59d → 90.59d |  | constraint start no earlier than 2026-10-30 09:00 → start no earlier than 2026-11-02 09:00 |
| 132 | **монтаж перегородка корридор** |  | 2026-11-02 18:00 → 2026-11-03 18:00 (+1d) | 5.97d → 6.97d |  | 91.59d → 90.59d |  |  |
| 134 | монтаж | 2026-10-30 09:00 → 2026-11-02 09:00 (+3d) | 2026-11-02 18:00 → 2026-11-03 18:00 (+1d) |  |  | 91.59d → 90.59d |  | constraint start no earlier than 2026-10-30 09:00 → start no earlier than 2026-11-02 09:00 |
| 159 | **квадропак - сделать силиконовый успокоитель между нория и весы 800*250 шаг шторок 60** |  | 2026-10-28 10:00 → 2026-11-02 10:00 (+5d) | 27.12d → 30.12d |  | 95.47d → 92.47d |  |  |
| 162 | сборка | 2026-10-28 09:00 → 2026-11-02 09:00 (+5d) | 2026-10-28 10:00 → 2026-11-02 10:00 (+5d) |  |  | 95.47d → 92.47d |  | constraint start no earlier than 2026-10-28 09:00 → start no earlier than 2026-11-02 09:00 |
| 196 | **продумать как сделать герметичную крышку на смесителе сухого гидрализата** |  | 2026-10-29 11:00 → 2026-11-02 11:00 (+4d) | 54.25d → 56.25d |  | 94.34d → 92.34d |  |  |
| 201 | установка на струбцинах с уплотнителями | 2026-10-29 09:00 → 2026-11-02 09:00 (+4d) | 2026-10-29 11:00 → 2026-11-02 11:00 (+4d) |  |  | 94.34d → 92.34d |  | constraint start no earlier than 2026-10-29 09:00 → start no earlier than 2026-11-02 09:00 |
| 871 | замена ножек на полибоксах под которые не заезжает рохля | 2026-10-27 09:00 → 2026-10-29 09:00 (+2d) | 2026-10-27 13:00 → 2026-10-29 12:00 (+2d) | 4h → 3h |  | 96.09d → 94.22d |  | was named замена ножек на полибоксах; constraint start no earlier than 2026-10-27 08:00 → start no earlier than 2026-10-29 09:00; resources Бундин В → Бобренок В |
| 877 | **замена трубки на насос гидролизат** |  | 2026-10-29 11:00 → 2026-10-30 11:00 (+1d) | 7.25d → 8.25d |  | 94.34d → 93.34d |  |  |
| 880 | замена всех трубок на 12/10 | 2026-10-29 09:00 → 2026-10-30 09:00 (+1d) | 2026-10-29 11:00 → 2026-10-30 11:00 (+1d) |  |  | 94.34d → 93.34d |  | constraint start no earlier than 2026-10-29 09:00 → start no earlier than 2026-10-30 09:00 |
| 901 | При запуске отопления приточки, как будет давление в системе проверить антифриз, долить | 2026-10-28 09:00 → 2026-11-03 09:00 (+6d) | 2026-10-28 10:00 → 2026-11-03 10:00 (+6d) |  |  | 95.47d → 91.47d | none → 1047 | constraint start no earlier than 2026-10-28 09:00 → none |
| 921 | **пыление при загрузке при высыпании из мешка в бункер дозатора** |  | 2026-10-29 14:15 → 2026-10-30 13:00 (+1d) | 22.53d → 23.5d |  | 94.06d → 93.09d |  |  |
| 922 | **изготовить рукав на дозатор для помещения в него мешка из гибкого герметичного матриала** |  | 2026-10-29 14:15 → 2026-10-30 13:00 (+1d) | 22.53d → 23.5d |  | 94.06d → 93.09d |  |  |
| 925 | изготовление мешка | 2026-10-29 09:15 → 2026-10-30 09:00 (+1d) | 2026-10-29 14:15 → 2026-10-30 13:00 (+1d) |  |  | 94.06d → 93.09d |  | constraint start no earlier than 2026-10-23 09:00 → start no earlier than 2026-10-30 09:00 |
| 1047 | **обеспечить не менее +15 зимой в зоне хранения навесок** |  | 2026-10-30 18:00 → 2026-11-02 18:00 (+3d) | 73d? → 74d? |  | 92.59d → 91.47d |  |  |
| 1048 | **утепление стены** |  | 2026-10-28 16:00 → 2026-11-02 16:00 (+5d) | 50.75d → 53.75d |  | 94.84d → 91.72d |  |  |
| 1052 | монтаж пеноплекса на стену | 2026-10-28 09:00 → 2026-11-02 09:00 (+5d) | 2026-10-28 16:00 → 2026-11-02 16:00 (+5d) |  |  | 94.84d → 91.72d |  | constraint start no earlier than 2026-10-28 09:00 → start no earlier than 2026-11-02 09:00 |
| 1057 | **тепловые завесы в 2ц зона подачи навесок** |  | 2026-10-30 18:00 → 2026-11-02 18:00 (+3d) | 64d? → 65d? |  | 92.59d → 91.47d |  |  |
| 1058 | **монтаж теплокалориферов** |  | 2026-10-30 18:00 → 2026-11-02 18:00 (+3d) | 27d? → 28d? |  | 92.59d → 91.47d |  |  |
| 1063 | монтаж калориферов | 2026-10-30 09:00 → 2026-11-02 09:00 (+3d) | 2026-10-30 18:00 → 2026-11-02 18:00 (+3d) |  |  | 92.59d → 91.47d |  | constraint start no earlier than 2026-10-30 09:00 → start no earlier than 2026-11-02 09:00 |
| 1591 | **Установить насос с ножами в 3 цех под раковину мойки на жирах** |  | 2026-10-27 13:00 A |  | 23% → 100% | 0d → none |  |  |
| 1595 | Установить насос с ножами в 3 цех под раковину мойки на жирах | 2026-10-27 09:00 A | 2026-10-27 13:00 A |  | 0% → 100% |  |  |  |
| 1912 | ремонт хомут с сито | 2026-10-27 09:00 A | 2026-10-27 11:00 A |  | 0% → 100% | 96.34d → none |  |  |
| 1931 | **сборка полок для стеллажей архив бухгалтерии** |  | 2026-10-30 18:00 → 2026-11-02 18:00 (+3d) | 7d? → 8d? |  | 92.59d → 91.59d |  |  |
| 1933 | сборка полок для стеллажей архив бухгалтерии | 2026-10-30 09:00 → 2026-11-02 09:00 (+3d) | 2026-10-30 18:00 → 2026-11-02 18:00 (+3d) |  |  | 92.59d → 91.59d |  | constraint start no earlier than 2026-10-30 09:00 → start no earlier than 2026-11-02 09:00 |
| 1942 | **установить зажим троса на тельфер** |  | 2026-10-30 09:15 → 2026-11-02 18:00 (+3d) | 50.03d? → 52d? |  | 93.56d → 91.59d |  |  |
| 1945 | монтаж | 2026-10-29 09:15 → 2026-11-02 09:00 (+4d) | 2026-10-30 09:15 → 2026-11-02 18:00 (+3d) |  |  | 93.56d → 91.59d |  | constraint start no earlier than 2026-10-28 09:00 → start no earlier than 2026-11-02 09:00 |
| 2195 | **установить калорифер на 4 котел** |  | 2026-10-30 18:00 → 2026-11-02 18:00 (+3d) | 16d? → 17d? |  | 92.59d → 91.47d |  |  |
| 2198 | монтаж | 2026-10-30 09:00 → 2026-11-02 09:00 (+3d) | 2026-10-30 18:00 → 2026-11-02 18:00 (+3d) |  |  | 92.59d → 91.47d |  | constraint start no earlier than 2026-10-30 09:00 → start no earlier than 2026-11-02 09:00 |
| 2424 | **слесарное помещение** |  | 2026-10-27 11:00 → 2026-11-02 13:00 (+6d) | 107.25d? → 111.5d? | 94% → 73% | 96.34d → 92.09d |  |  |
| 2432 | **Ремонт двигателя от поломоечной машинки** |  | 2026-10-27 11:00 → 2026-10-29 11:00 (+2d) | 11.25d → 13.25d |  | 96.34d → 94.34d |  |  |
| 2435 | Сборка двигателя обратно | 2026-10-27 09:00 → 2026-10-29 09:00 (+2d) | 2026-10-27 11:00 → 2026-10-29 11:00 (+2d) |  |  | 96.34d → 94.34d |  | was named Сборка двигателя обратно (привезут новый); constraint start no earlier than 2026-10-27 09:00 → start no earlier than 2026-10-29 09:00 |
| 2701 | **ТО** |  |  |  | 45% → 44% |  |  |  |
| 2704 | **1 цех** |  |  |  | 84% → 80% |  |  |  |
| 2728 | **линия 1** |  | 2026-10-21 10:00 → 2026-10-29 10:00 (+8d) | 164.12d? → 170.12d? | 94% → 88% | 100.47d → 94.47d |  |  |
| 2729 | **питатель экструдера** |  | 2026-10-21 09:30 → 2026-10-29 09:30 (+8d) | 164.06d? → 170.06d? | 96% → 92% | 100.53d → 94.53d |  |  |
| 2739 | **прекондицинер экструдера** |  | 2026-10-21 09:15 → 2026-10-29 09:15 (+8d) | 124.03d → 130.03d | 80% → 67% | 100.56d → 94.56d |  |  |
| 2746 | **парогенератор** |  | 2026-10-21 10:00 → 2026-10-29 10:00 (+8d) | 149.12d → 155.12d | 93% → 88% | 100.47d → 94.47d |  |  |
| 2759 | **редуктор экструдера и маслянная станция** |  | 2026-10-21 09:30 → 2026-10-29 09:30 (+8d) | 446.06d → 452.06d | 47% → 43% | 100.53d → 94.53d |  |  |
| 2771 | **шкаф управления экструдером** |  | 2026-10-21 09:15 → 2026-10-29 09:15 (+8d) | 155.03d → 161.03d | 75% → 67% | 100.56d → 94.56d |  |  |
| 2779 | **блок тэнов сушки** |  | 2026-10-21 09:15 → 2026-10-29 09:15 (+8d) | 119.03d → 125.03d | 63% → 56% | 100.56d → 94.56d |  |  |
| 2794 | **барабан смесительный дрожировка - прорверка подшипнки , реуктор** |  | 2026-10-21 09:15 → 2026-10-29 09:15 (+8d) | 174.03d → 180.03d | 92% → 85% | 100.56d → 94.56d |  |  |
| 2801 | **печь** |  | 2026-10-21 10:00 → 2026-10-29 10:00 (+8d) | 650.12d → 656.12d | 88% → 83% | 100.47d → 94.47d |  |  |
| 2819 | **линия 2** |  |  |  | 41% → 39% |  |  |  |
| 2820 | **питатель экструдера** |  | 2026-10-21 09:30 → 2026-10-29 09:30 (+8d) | 164.06d → 170.06d | 83% → 77% | 100.53d → 94.53d |  |  |
| 2831 | **прекондицинер экструдера** |  | 2026-10-21 09:15 → 2026-10-29 09:15 (+8d) | 124.03d → 130.03d | 60% → 50% | 100.56d → 94.56d |  |  |
| 2838 | **парогенератор** |  | 2026-10-21 10:00 → 2026-10-29 10:00 (+8d) | 669.12d → 675.12d | 76% → 68% | 100.47d → 94.47d |  |  |
| 2848 | **шкаф управления экструдером** |  | 2026-10-21 09:15 → 2026-10-29 09:15 (+8d) | 169.03d → 175.03d | 78% → 70% | 100.56d → 94.56d |  |  |
| 2857 | **редуктор экструдера и маслянная станция** |  | 2026-10-21 09:30 → 2026-10-29 09:30 (+8d) | 119.06d → 125.06d | 70% → 64% | 100.53d → 94.53d |  |  |
| 2868 | **блок тэнов сушки - протяжка** |  | 2026-10-21 09:20 → 2026-10-29 09:20 (+8d) | 119.04d? → 125.04d? | 66% → 64% | 100.55d → 94.55d |  |  |
| 2875 | **шкаф управления тэнами сушки** |  | 2026-10-21 09:15 → 2026-10-29 09:15 (+8d) | 622.03d → 628.03d | 92% → 90% | 100.56d → 94.56d |  |  |
| 2891 | **Квадропак** |  | 2026-10-21 10:00 → 2026-10-29 10:00 (+8d) | 139.12d → 145.12d | 92% → 85% | 100.47d → 94.47d |  |  |
| 2912 | **жиротопка и насос перекачки жира** |  | 2026-10-21 09:15 → 2026-10-29 09:15 (+8d) | 669.03d → 675.03d | 20% → 17% | 100.56d → 94.56d |  |  |
| 2918 | **упаковщкики** |  | 2026-10-21 11:00 → 2026-10-29 10:00 (+8d) | 447.25d → 453.12d |  | 100.34d → 94.47d |  |  |
| 2967 | **2 цех** |  |  |  | 67% → 65% |  |  |  |
| 2969 | **прекондицинер экструдера** |  | 2026-10-29 13:00 → 2026-10-30 13:00 (+1d) | 669.5d? → 670.5d? | 83% → 82% | 94.09d → 93.09d |  |  |
| 2986 | Замена редуктора прекондиционера | 2026-10-29 09:00 → 2026-10-30 09:00 (+1d) | 2026-10-29 13:00 → 2026-10-30 13:00 (+1d) |  |  | 94.09d → 93.09d |  | constraint start no earlier than 2026-10-29 09:00 → start no earlier than 2026-10-30 09:00 |

| ID | Task | Start | Finish | Duration | Complete | Total float | Predecessors | Other |
| --- | --- | --- | --- | --- | --- | --- | --- | --- |
| 2990 | **парогенератор** |  | 2026-10-14 10:00 → 2026-11-05 10:00 (+22d) | 657d → 674d | 95% → 87% | 106.47d → 89.47d |  |  |
| 3014 | **привод сетки ПЕЧИ сушки** |  |  |  | 74% → 68% |  |  |  |
| 3031 | **блок тэнов сушки** |  | 2026-10-15 10:00 → 2026-10-30 10:00 (+15d) | 658.12d → 670.12d | 89% → 80% | 105.47d → 93.47d |  |  |
| 3039 | **смеситель СМ-1500** |  | 2026-10-15 09:10 → 2026-10-30 09:10 (+15d) | 168.02d → 180.02d |  | 105.57d → 93.57d |  |  |
| 3049 | Осмотр подшипников/контроль масла | 2026-10-15 09:00 → 2026-10-30 09:00 (+15d) | 2026-10-15 09:10 → 2026-10-30 09:10 (+15d) |  |  | 105.57d → 93.57d |  | constraint start no earlier than 2026-10-15 09:00 → start no earlier than 2026-10-30 09:00; resources none → Макаревич А; Николаев |
| 3050 | **нория 2 выгрузки смесителя** |  | 2026-10-15 09:30 → 2026-10-30 09:30 (+15d) | 168.06d → 180.06d | 96% → 92% | 105.53d → 93.53d |  |  |
| 3064 | **бункер-накопитель с шнековой разкгрузкой синий** |  | 2026-10-15 09:05 → 2026-10-30 09:05 (+15d) | 118.01d → 130.01d |  | 105.58d → 93.58d |  |  |
| 3074 | **питатель экструдера** |  | 2026-10-15 10:00 → 2026-10-30 10:00 (+15d) | 153.12d → 165.12d | 95% → 90% | 105.47d → 93.47d |  |  |
| 3087 | **привод прекондиционера** |  | 2026-10-15 09:20 → 2026-10-30 09:10 (+15d) | 168.04d → 180.02d | 95% → 93% | 105.55d → 93.57d |  |  |
| 3099 | **мотор-редуктор привод шнеков** |  | 2026-10-15 09:10 → 2026-10-30 09:10 (+15d) | 48.02d → 60.02d |  | 105.57d → 93.57d |  |  |
| 3108 | Проверка масла | 2026-10-15 09:00 → 2026-10-30 09:00 (+15d) | 2026-10-15 09:10 → 2026-10-30 09:10 (+15d) |  |  | 105.57d → 93.57d |  | constraint start no earlier than 2026-10-15 09:00 → start no earlier than 2026-10-30 09:00; resources none → Макаревич А; Николаев |
| 3109 | **редуктор шнеков экструдера - проверка масла** |  | 2026-10-15 09:15 → 2026-10-30 09:15 (+15d) | 441.03d → 453.03d |  | 105.56d → 93.56d |  |  |
| 3129 | Проверка масла, чистка фильтра | 2026-10-15 09:00 → 2026-10-30 09:00 (+15d) | 2026-10-15 09:15 → 2026-10-30 09:15 (+15d) |  |  | 105.56d → 93.56d |  | constraint start no earlier than 2026-10-15 09:00 → start no earlier than 2026-10-30 09:00; resources none → Макаревич А; Николаев |
| 3130 | **шкаф управления экструдером** |  | 2026-10-15 09:10 → 2026-10-30 09:10 (+15d) | 168.02d → 180.02d | 92% → 85% | 105.57d → 93.57d |  |  |
| 3145 | **пневотранспорт роторный питатель** |  | 2026-10-15 09:20 → 2026-10-30 09:10 (+15d) | 158.04d → 170.02d | 48% → 46% | 105.55d → 93.57d |  |  |
| 3153 | **печь - валы этажей, подшипники, цепи** |  | 2026-10-15 10:00 A |  | 97% → 100% | 105.47d → none |  |  |
| 3164 | Замер диаметра шкива двигателя привода редуктора | 2026-10-15 09:00 A | 2026-10-15 09:15 A |  | 0% → 100% | 105.56d → none |  |  |
| 3165 | **вентиляторы обдува сушки** |  | 2026-10-15 11:00 → 2026-10-30 10:00 (+15d) | 168.25d? → 180.12d? | 18% → 17% | 105.34d → 93.47d |  |  |
| 3172 | **шкаф управления тэнами сушки главный** |  | 2026-10-15 09:40 → 2026-10-30 09:20 (+15d) | 168.08d → 180.04d | 82% → 87% | 105.51d → 93.55d |  |  |
| 3184 | протяжка контактов, продувка шкафа, частотного привода | 2026-09-29 09:00 → 2026-10-30 09:00 (+31d) | 2026-09-29 09:10 → 2026-10-30 09:10 (+31d) |  |  | 118.57d → 93.57d |  | constraint start no earlier than 2026-09-29 08:00 → start no earlier than 2026-10-30 09:00 |
| 3185 | протяжка контактов, продувка шкафа, частотного привода | 2026-10-15 09:30 A | 2026-10-15 09:40 A |  | 0% → 100% | 105.51d → none |  |  |
| 3186 | осмотср замена подгоревших кабелей | 2026-10-15 09:00 A | 2026-10-15 09:30 A |  | 0% → 100% | 105.51d → none |  |  |
| 3188 | **шкаф управления тэнами твердотельный** |  | 2026-10-15 09:30 → 2026-10-30 09:20 (+15d) | 168.06d → 180.04d | 88% → 93% | 105.53d → 93.55d |  |  |
| 3198 | Продувка. Замена подогретых жил | 2026-10-15 09:00 A | 2026-10-15 09:30 A |  | 0% → 100% | 105.53d → none |  |  |
| 3200 | **конвейер №1 с печи в дрожировщик** |  | 2026-10-15 09:30 → 2026-10-30 09:30 (+15d) | 168.06d → 180.06d |  | 105.53d → 93.53d |  |  |
| 3209 | очистка валов и ленты / контроль крепления редуктора / состояния подшипника | 2026-10-15 09:00 → 2026-10-30 09:00 (+15d) | 2026-10-15 09:30 → 2026-10-30 09:30 (+15d) |  |  | 105.53d → 93.53d |  | constraint start no earlier than 2026-10-15 09:00 → start no earlier than 2026-10-30 09:00; resources none → Тимофеев В |
| 3210 | **барабан смесительный дрожировка** |  | 2026-10-15 09:15 → 2026-10-30 11:00 (+15d) | 738.03d → 750.25d | 76% → 65% | 105.56d → 93.34d |  |  |
| 3227 | **Узел подачи гидролизата** |  | 2026-10-15 09:20 → 2026-10-30 09:10 (+15d) | 75.04d → 87.02d | 88% → 85% | 105.55d → 93.57d |  |  |
| 3237 | **конвейер №2 с дрожировки в охладитель** |  | 2026-10-15 09:30 → 2026-10-30 09:30 (+15d) | 168.06d → 180.06d |  | 105.53d → 93.53d |  |  |
| 3246 | ревизия люфтов, фиксации смазки подшипников | 2026-10-15 09:00 → 2026-10-30 09:00 (+15d) | 2026-10-15 09:30 → 2026-10-30 09:30 (+15d) |  |  | 105.53d → 93.53d |  | constraint start no earlier than 2026-10-15 09:00 → start no earlier than 2026-10-30 09:00; resources Дедов В → Тимофеев В |
| 3247 | **охладитель сеточный** |  | 2026-10-15 10:30 → 2026-10-30 10:00 (+15d) | 658.19d? → 670.12d? |  | 105.41d → 93.47d |  |  |
| 3265 | ревизия состояния сетки/контроль натяжки цепей, ревизия сетки | 2026-10-15 09:30 → 2026-10-30 09:00 (+15d) | 2026-10-15 10:30 → 2026-10-30 10:00 (+15d) |  |  | 105.41d → 93.47d | 3266 → none | constraint none → start no earlier than 2026-10-30 09:00; resources none → Тимофеев В |
| 3266 | Смазка подшипников привода при необходимости | 2026-10-15 09:00 → 2026-10-30 09:00 (+15d) | 2026-10-15 09:30 → 2026-10-30 09:30 (+15d) |  |  | 105.41d → 93.53d |  | constraint start no earlier than 2026-10-15 09:00 → start no earlier than 2026-10-30 09:00; resources none → Тимофеев В |
| 3267 | **конвейер 3 с охладителя в упаковку** |  | 2026-10-15 09:15 → 2026-10-30 09:15 (+15d) | 54.03d → 66.03d | 67% → 57% | 105.56d → 93.56d |  |  |
| 3283 | **квадропак** |  | 2026-10-15 10:00 → 2026-10-29 09:10 (+14d) | 54.12d → 65.02d | 46% → 60% | 105.47d → 94.57d |  |  |
| 3292 | Ревизия редуктора транспортной ленты, бежит масло | 2026-10-15 09:00 A | 2026-10-15 10:00 A |  | 0% → 100% | 105.47d → none |  |  |
| 3294 | **БЕСТРОМ** |  | 2026-10-15 10:00 → 2026-10-30 10:00 (+15d) | 738.12d → 750.12d |  | 105.47d → 93.47d |  |  |
| 3311 | Чистка тенов, проверка тефлона, роликов | 2026-10-15 09:00 A | 2026-10-15 10:00 A |  | 0% → 100% | 105.47d → none |  |  |
| 3349 | **кондиционер 1** |  | 2026-09-24 09:20 → 2026-10-30 09:20 (+36d) | 640.04d? → 670.04d? | 99% → 97% | 0d → 93.55d |  |  |
| 3359 | **кондиционер 2** |  | 2026-09-24 09:20 → 2026-10-30 09:20 (+36d) | 640.04d? → 670.04d? | 99% → 97% | 0d → 93.55d |  |  |
| 3370 | **кондиционер 3** |  | 2026-09-24 09:20 A → 2026-10-30 09:20 (+36d) | 150.04d → 180.04d | 100% → 88% | none → 93.55d |  |  |
| 3613 | **администрантивные** |  | 2026-09-15 11:00 → 2026-10-28 10:00 (+43d) | 131.25d → 168.12d |  | 132.34d → 95.47d |  |  |
| 3654 | **территория** |  | 2026-10-26 10:00 → 2026-10-29 11:00 (+3d) | 446.12d? → 449.25d? | 70% → 69% | 97.47d → 94.34d |  |  |

## Version 32 (saved 2026-10-30, file 07.09.26.mpp)

Last finish stays 2027-03-10. Complete tasks 2548 → 2560.

Added:

| ID | Task | Duration | Start | Finish | Constraint | Resources |
| --- | --- | --- | --- | --- | --- | --- |
| 2696 | шкив для привода печи LT85 | 30min | 2026-10-30 09:00 | 2026-10-30 09:30 | start no earlier than 2026-10-30 08:00 | Зорькин В |
| 3015 | подписать сирена вкл/выкл | 15min | 2026-10-30 09:00 | 2026-10-30 09:15 | start no earlier than 2026-10-30 08:00 | Зорькин В |
| 3269 | заявка на тавотницы 90 | 20min | 2026-10-30 09:00 | 2026-10-30 09:20 | start no earlier than 2026-10-30 08:00 | Зорькин В |
| 3270 | замена тавотниц которые требуют ослабление сетки для доступа | 3h | 2026-11-05 09:00 | 2026-11-05 12:00 | start no earlier than 2026-11-05 09:00 | Тимофеев В |

Changed:

| ID | Task | Start | Finish | Duration | Complete | Total float |
| --- | --- | --- | --- | --- | --- | --- |
| 2 | замена ножек на полибоксах под которые не заезжает рохля | 2026-10-29 09:00 A | 2026-10-29 12:00 A |  | 0% → 100% | 94.22d → none |
| 7 | **Собрать канистру для подачи воды в экструдер, по аналогу 3 цех. Промежуточный бак 2 шт** | 2026-10-29 09:00 A |  |  | 0% → 18% |  |
| 8 | Заказать поплавковый клапан с боковой подачей | 2026-10-29 09:00 A | 2026-10-29 09:15 A |  | 0% → 100% | 94.56d → none |
| 31 | **разделение воды ПГ / экструдер** |  |  |  | 15% → 18% |  |
| 33 | **воставноить насосы пирльстатические** |  | 2026-10-28 11:30 A |  | 83% → 100% | 95.28d → none |
| 35 | заявка трубка | 2026-10-20 09:00 A | 2026-10-20 09:15 A |  | 0% → 100% | 96.53d → none |
| 36 | контроль доставка | 2026-10-27 09:15 A | 2026-10-27 09:30 A |  | 0% → 100% | 96.53d → none |
| 88 | контроль доставка | 2026-10-29 09:00 A | 2026-10-29 09:15 A |  | 0% → 100% | 91.56d → none |
| 123 | **реконструкция хранения гидролизатов и маршрут подачи навесок** |  |  |  | 35% → 36% |  |
| 126 | **монтаж доп плащадки** |  |  |  | 7% → 9% |  |
| 130 | контроль доставки | 2026-10-26 09:00 A | 2026-10-26 09:15 A |  | 0% → 100% | 94.53d → none |
| 554 | **замена ленты пролистывателя** |  |  |  | 30% → 32% |  |
| 557 | контроль доставки | 2026-09-25 12:30 A | 2026-09-25 12:45 A |  | 0% → 100% | 119.12d → none |
| 867 | На КПП №2 сделать штуцер для набора кубов | 2026-10-30 09:00 A | 2026-10-30 10:00 A |  | 0% → 100% | 93.47d → none |
| 1913 | изготовить ящик-крышку 5гран для щитка с контакторами на растариватель | 2026-10-29 09:00 A | 2026-10-29 11:00 A |  | 0% → 100% | 94.34d → none |
| 2424 | **слесарное помещение** |  |  |  | 73% → 77% |  |
| 2432 | **Ремонт двигателя от поломоечной машинки** |  |  |  | 35% → 95% |  |
| 2435 | Сборка двигателя обратно | 2026-10-29 09:00 A | 2026-10-29 11:00 A |  | 0% → 100% | 94.34d → none |
| 2695 | **ЗИП заказ (заявки)** |  | 2026-10-22 09:20 → 2026-10-30 09:30 (+8d) | 43.04d → 49.06d | 36% → 25% | 99.55d → 93.53d |
| 2991 | **парогенератор** |  |  |  | 87% → 90% |  |
| 3014 | Смонтировать переключатель на сирену парогенератора вкл, выкл | 2026-10-30 09:00 A | 2026-10-30 10:00 A |  | 0% → 100% | 93.47d → none |
| 3249 | **охладитель сеточный** |  | 2026-10-30 10:00 → 2026-11-05 12:00 (+6d) | 670.12d? → 674.38d? | 61% → 54% | 93.47d → 89.22d |
| 3658 | **территория** |  |  |  | 69% → 70% |  |
| 3659 | Выполнить работу по розетке для электрокара, по видео, которое скинет Домоводов | 2026-10-29 09:00 A | 2026-10-29 11:00 A |  | 0% → 100% | 94.34d → none |

## Version 33 (saved 2026-11-06, file 07.09.26.mpp)

Last finish stays 2027-03-10. Complete tasks 2560 → 2604.

Added:

| ID | Task | Duration | Start | Finish | Predecessors | Constraint | Resources |
| --- | --- | --- | --- | --- | --- | --- | --- |
| 2 | Засыпать пескобетон в сваи | 1d? | 2026-11-05 09:00 | 2026-11-05 18:00 |  | start no earlier than 2026-11-05 08:00 |  |
| 3 | Вывезти землю трактором возле септика | 1d? | 2026-11-05 09:00 | 2026-11-05 18:00 |  | start no earlier than 2026-11-05 09:00 |  |
| 4 | Приделать уголок к верхнему краю битумной ленты, к стене, алюминиевым уголком. Крепеж дюбель гвоздь или предложить другой вариант крепления | 4h | 2026-11-04 09:00 A | 2026-11-04 13:00 A |  | start no earlier than 2026-11-04 09:00 | Бобренок В |
| 5 | Расширить отверстие по видео | 30min | 2026-11-03 09:00 A | 2026-11-03 09:30 A |  | start no earlier than 2026-11-03 08:00 | Дедов В |
| 6 | Изготовление трубок (удочек, для подачи жира) 1 и 2 лини, на каждую линию по 2. | 4h | 2026-11-03 09:00 | 2026-11-03 13:00 |  | start no earlier than 2026-11-03 09:00 | Тимофеев В |
| 7 | Разметить место бурения под раму за 1 цехом, чертеж у Константина | 1h | 2026-11-03 09:00 A | 2026-11-03 10:00 A |  | start no earlier than 2026-11-03 09:00 | Труфанов А; Некрасов А |
| 8 | установить датчики температуры для прекондиционера (механический, со стрелкой) | 1h | 2026-11-03 09:00 | 2026-11-03 10:00 |  | start no earlier than 2026-11-03 09:00 | Дедов В |
| 9 | Приклеить удлинетель к носику для гидролизата, которую обломили, приклепать на пластины. Все тестить и собирать можно в 3 цехе по месту, что бы она в итоге была готова в любой момент быть поставлена | 2h | 2026-10-31 09:00 A | 2026-10-31 11:00 A |  | start no earlier than 2026-10-31 09:00 | Макаревич А |
| 10 | Поставить выключатель на рампе | 30min | 2026-10-30 09:00 A | 2026-10-30 09:30 A |  | start no earlier than 2026-10-30 08:00 | Бобренок В |
| 11 | Убрать лист над печкой | 30min | 2026-10-30 09:00 A | 2026-10-30 09:30 A |  | start no earlier than 2026-10-30 08:00 | Бобренок В |
| 12 | Посмотреть/заменить термопару на 1 линии на бачке с жиром, определить, какой перегревает | 1h | 2026-10-30 09:00 A | 2026-10-30 10:00 A |  | start no earlier than 2026-10-30 08:00 | Бобренок В |
| 102 | Продолжить покраску металла на пандусе | 4h | 2026-11-05 09:00 A | 2026-11-05 13:00 A |  | start no earlier than 2026-11-05 09:00 | Труфанов А; Некрасов А; Тимофеев В; Бобренок В |
| 103 | Организовать перевозку металла в 3 цех | 2h | 2026-11-06 09:00 | 2026-11-06 11:00 |  | start no earlier than 2026-11-06 09:00 | Труфанов А; Некрасов А; Тимофеев В; Макаревич А; Николаев |
| 878 | Замена и ремонт инсектицидных ламп 7 шт | 3h | 2026-11-05 09:00 | 2026-11-05 12:00 |  | start no earlier than 2026-11-05 08:00 | Дедов В |
| 879 | Замена подшипника на прекондиционере передний на остановке | 2h | 2026-11-05 09:00 | 2026-11-05 11:00 |  | start no earlier than 2026-11-05 08:00 | Дедов В |
| 880 | Проверить приточку, проконтролировать работу и теплового узла | 1h | 2026-11-03 09:00 | 2026-11-03 10:00 |  | start no earlier than 2026-11-03 08:00 | Дедов В |
| 881 | Заземление пролистывателя/кусается/устранить, найти где пробивает на корпус | 2h | 2026-11-03 09:00 | 2026-11-03 11:00 |  | start no earlier than 2026-11-03 08:00 | Дедов В |
| 882 | Подключить частотник приточной вентиляции к калориферу | 1h | 2026-11-03 09:00 | 2026-11-03 10:00 |  | start no earlier than 2026-11-03 08:00 | Дедов В |
| 883 | Ремонт дегистра в лаборатории | 2h | 2026-11-03 09:00 | 2026-11-03 11:00 |  | start no earlier than 2026-11-03 09:00 | Тимофеев В |
| 884 | Установка и пусконаладка пролистывателя и апликатора | 4h | 2026-11-02 09:00 | 2026-11-02 13:00 |  | start no earlier than 2026-11-02 09:00 | Дедов В |
| 885 | повесить светильник в корридоре по пути на экструдер, установить на высоте с которой можно достать со стремянки | 2h | 2026-10-30 09:00 A | 2026-10-30 11:00 A |  | start no earlier than 2026-10-30 08:00 | Бобренок В |
| 886 | Ремонт звонка зона навесок, разобраться, почему не звенит/устранить | 1h | 2026-10-30 09:00 A | 2026-10-30 10:00 A |  | start no earlier than 2026-10-30 08:00 | Бобренок В |
| 887 | Ремонт доводчика 2 цех, зона навесок | 1h | 2026-10-30 09:00 A | 2026-10-30 10:00 A |  | start no earlier than 2026-10-30 08:00 | Бобренок В |
| 888 | Замена бактерицидных ламп. (косте ты платы не отдавал, ищи разъемы) | 30min | 2026-10-31 09:00 A | 2026-10-31 09:30 A |  | start no earlier than 2026-10-31 09:00 | Дедов В |
| 1604 | Тест маслонасосной станции с открытой крышкой редуктора | 1h | 2026-11-06 09:00 | 2026-11-06 10:00 |  | start no earlier than 2026-11-06 09:00 | Тимофеев В |
| 1605 | Тест печей (на просадку температур) | 2h | 2026-11-06 10:00 | 2026-11-06 12:00 | 1604 |  | Тимофеев В |
| 1606 | Пусконаладка подогрева приточной вентиляции | 4h | 2026-11-06 09:00 | 2026-11-06 13:00 |  | start no earlier than 2026-11-06 09:00 | Труфанов А; Некрасов А |
| 1607 | Отвод пара трубой ближе к всасывающему отверстию зонтика на прекондиционере | 1h | 2026-11-07 09:00 | 2026-11-07 10:00 |  | start no earlier than 2026-11-07 09:00 | Макаревич А; Николаев |
| 1608 | Наклеить надписи на шкафу управления смесителями | 1h | 2026-11-06 09:00 | 2026-11-06 10:00 |  | start no earlier than 2026-11-06 09:00 | Зорькин В; Тимофеев В |
| 1609 | Тест парогенератора | 1h | 2026-11-06 09:00 | 2026-11-06 10:00 |  | start no earlier than 2026-11-06 09:00 | Тимофеев В |
| 1610 | Ревизия редуктора шнека, проверить масло, шнек подачи сырья в прекондиционер | 30min | 2026-11-06 09:00 | 2026-11-06 09:30 |  | start no earlier than 2026-11-06 09:00 | Бобренок В |
| 1611 | Поставить вибратор на приемную воронку после смесителя, шнек подачи сырья в прекондиционер | 2h | 2026-11-06 09:00 | 2026-11-06 11:00 |  | start no earlier than 2026-11-06 09:00 | Тимофеев В |
| 1612 | Поставить розетку рядом с мойкой на жирах для насоса | 1h | 2026-11-05 09:00 A | 2026-11-05 10:00 A |  | start no earlier than 2026-11-05 08:00 | Бобренок В |
| 1613 | Изготовить козырек на выходе эктрудера (доработать откидную лопатку) | 4h | 2026-11-07 09:00 | 2026-11-07 13:00 |  | start no earlier than 2026-11-07 09:00 | Макаревич А; Николаев |
| 1614 | Установка 2-х бойлеров по 100л, на женскую раздевалку и мужскую, определить контуры магистрали воды, определить где находится закладная | 5h | 2026-11-06 09:00 | 2026-11-06 15:00 |  | start no earlier than 2026-11-06 09:00 | Бобренок В |
| 1615 | В зоне фасовке, ВРУ куда подключен квадропак и нории, автомат QF4 при включении искрит - устранить | 1h | 2026-10-31 09:00 A | 2026-10-31 10:00 A |  | start no earlier than 2026-10-31 09:00 | Дедов В |
| 1936 | Замена резинок на дробилке, осмотре всех уплотнений/замена при необходимости | 1h | 2026-11-06 09:00 | 2026-11-06 10:00 |  | start no earlier than 2026-11-06 08:00 | Макаревич А |
| 1937 | Поставить крышку, которую изготовил бобренок, для тельфера | 1h | 2026-11-06 09:00 | 2026-11-06 10:00 |  | start no earlier than 2026-11-06 08:00 | Макаревич А; Николаев |
| 1938 | ТО в пятом цеху, осмотр, дефектовка, протяжка на всем оборудовании | 6h | 2026-11-06 09:00 | 2026-11-06 16:00 |  | start no earlier than 2026-11-06 09:00 | Макаревич А; Николаев |
| 1939 | Запенить отверстие от кабеля в углу | 30min | 2026-11-05 09:00 | 2026-11-05 09:30 |  | start no earlier than 2026-11-05 09:00 | Дедов В |
| 1940 | 5а подключить автоматику ворот | 2h | 2026-11-06 09:00 | 2026-11-06 11:00 |  | start no earlier than 2026-11-06 09:00 | Труфанов А; Некрасов А |
| 2454 | Доделать 3 треугольника | 3h | 2026-11-08 09:00 | 2026-11-08 12:00 |  | start no earlier than 2026-11-08 09:00 | Макаревич А; Николаев |
| 2455 | Сделать перемычки для треугольников | 2h | 2026-11-08 09:00 | 2026-11-08 11:00 |  | start no earlier than 2026-11-08 09:00 | Макаревич А; Николаев |
| 2456 | Пересобрать редуктор привода печи, привезли 02.11.26, собран только что бы проверить венец. Обязательно смазать вручную подшипник на валу солидолом или синькой. | 2h | 2026-11-04 09:00 A | 2026-11-04 11:00 A |  | start no earlier than 2026-11-04 09:00 | Макаревич А |
| 2457 | Изучение инструкции по водоподготовке воды 1 цех/ предложения по запуску и реализации | 3h | 2026-11-03 09:00 | 2026-11-03 12:00 |  | start no earlier than 2026-11-03 09:00 | Николаев |
| 3434 | Осмотр | 10min | 2026-11-06 09:00 | 2026-11-06 09:10 |  | start no earlier than 2026-11-06 08:00 | Макаревич А; Николаев |
| 3613 | Оперативные работы/ принятие заявок на производстве | 1d? | 2026-11-03 09:00 | 2026-11-03 18:00 |  | start no earlier than 2026-11-03 09:00 | Николаев |
| 3692 | Из арматуры наделать треугольников для колодцев, по диаметру основания, высота 180см. | 4h | 2026-11-04 09:00 A | 2026-11-04 13:00 A |  | start no earlier than 2026-11-04 09:00 | Макаревич А |

Removed: 1664 доп мощности для приточной вентиляции; 1665 проект автоматика ограничения мощности в автомате; 1666 составить ТЗ на монтаж кабеля; 1667 получить КП / счет договор; 1668 предоплата; 1669 монтаж

Changed:

| ID | Task | Start | Finish | Duration | Complete | Total float | Predecessors | Other |
| --- | --- | --- | --- | --- | --- | --- | --- | --- |
| 15 | Поставить насос 12В через расходомер линия 2 | 2026-10-29 09:00 → 2026-11-04 09:00 (+6d) | 2026-10-29 10:00 → 2026-11-04 10:00 (+6d) |  |  | 94.47d → 91.47d |  | constraint start no earlier than 2026-10-29 08:00 → start no earlier than 2026-11-04 09:00 |
| 16 | Сделать врезки по водоподготовке в основную магистраль, курьер привез необходимое | 2026-10-28 09:00 A | 2026-10-28 11:00 A |  | 0% → 100% | 95.34d → none |  |  |
| 35 | **монтаж водоподготовка // разделить воду в экструдер и парогенераторы** |  |  |  | 92% → 95% | 94.09d → 95.09d |  |  |
| 36 | **монтаж водоподготовка** |  | 2026-10-29 13:00 A |  | 50% → 100% | 94.09d → none |  |  |
| 37 | купить тройники / краны | 2026-10-26 09:00 A | 2026-10-26 18:00 A |  | 0% → 100% | 96.59d → none |  |  |
| 92 | **сборка рама для труб приточной вентиляции** |  | 2026-11-05 18:00 → 2026-11-12 18:00 (+7d) | 17d? → 23d? | 30% → 41% | 88.59d → 83.59d |  |  |
| 98 | **покраска металл** | 2026-10-27 09:00 A | 2026-11-04 14:15 → 2026-11-06 11:00 (+2d) | 6.53d → 8.25d | 0% → 76% | 90.06d → 89.34d |  |  |
| 101 | покраска металл на рампе 1 цех по верху, то что лежит, перекидывать не нужно | 2026-11-04 09:15 A | 2026-11-04 14:15 A |  | 0% → 100% | 90.06d → none |  | was named покраска; resources Некрасов А → Бобренок В |
| 110 | сборка рама на земле | 2026-11-03 09:00 → 2026-11-10 09:00 (+7d) | 2026-11-04 18:00 → 2026-11-11 18:00 (+7d) |  |  | 88.59d → 83.59d |  | constraint start no earlier than 2026-11-03 09:00 → start no earlier than 2026-11-10 09:00 |
| 111 | монтаж рама на цех краном | 2026-11-05 09:00 → 2026-11-12 09:00 (+7d) | 2026-11-05 18:00 → 2026-11-12 18:00 (+7d) |  |  | 88.59d → 83.59d |  |  |
| 127 | **Дополнительное освещение на Рампе** |  | 2026-10-28 10:00 A |  | 86% → 100% | 95.47d → none |  |  |
| 132 | пожключение выключателя | 2026-10-28 09:00 A | 2026-10-28 10:00 A |  | 0% → 100% | 95.47d → none |  |  |
| 134 | **реконструкция хранения гидролизатов и маршрут подачи навесок** |  | 2026-11-03 18:00 → 2026-11-10 18:00 (+7d) | 49d → 55d |  | 90.59d → 85.59d |  |  |
| 137 | **монтаж доп плащадки** |  | 2026-11-03 18:00 → 2026-11-10 18:00 (+7d) | 29d → 35d |  | 90.59d → 85.59d |  |  |
| 142 | монтаж | 2026-11-02 09:00 → 2026-11-09 09:00 (+7d) | 2026-11-03 18:00 → 2026-11-10 18:00 (+7d) |  |  | 90.59d → 85.59d |  | constraint start no earlier than 2026-11-02 09:00 → start no earlier than 2026-11-09 09:00 |
| 143 | **монтаж перегородка корридор** |  | 2026-11-03 18:00 → 2026-11-10 18:00 (+7d) | 6.97d → 12.97d |  | 90.59d → 85.59d |  |  |
| 145 | монтаж | 2026-11-02 09:00 → 2026-11-09 09:00 (+7d) | 2026-11-03 18:00 → 2026-11-10 18:00 (+7d) |  |  | 90.59d → 85.59d |  | constraint start no earlier than 2026-11-02 09:00 → start no earlier than 2026-11-09 09:00 |
| 173 | сборка |  |  |  |  | 92.47d → 93.47d |  | resources Тимофеев В → Некрасов А |
| 207 | **продумать как сделать герметичную крышку на смесителе сухого гидрализата** |  | 2026-11-02 11:00 → 2026-11-11 11:00 (+9d) | 56.25d → 64.25d |  | 92.34d → 85.34d |  |  |
| 212 | установка на струбцинах с уплотнителями | 2026-11-02 09:00 → 2026-11-11 09:00 (+9d) | 2026-11-02 11:00 → 2026-11-11 11:00 (+9d) |  |  | 92.34d → 85.34d |  | constraint start no earlier than 2026-11-02 09:00 → start no earlier than 2026-11-11 09:00 |
| 403 | **установить автоматику запуска шнека + смеситель по датчику уровня сырья в бункере экструдера** | 2026-10-22 09:00 → 2026-11-02 09:00 (+11d) | 2026-11-05 12:10 → 2026-12-01 18:00 (+26d) | 10.4d? → 23d? |  | 89.2d → 70.59d |  |  |
| 404 | разработка схема / компановка (составить список материалов) | 2026-10-22 09:00 → 2026-11-02 09:00 (+11d) | 2026-10-22 10:00 → 2026-11-02 10:00 (+11d) |  |  | 89.2d → 83.2d |  | was named разработка схема / компановка; constraint start no earlier than 2026-10-22 09:00 → start no earlier than 2026-11-02 09:00; resources Домоводов К → Дедов В |
| 405 | заявка датчики / пускатели / эл щит | 2026-10-22 10:00 → 2026-11-02 10:00 (+11d) | 2026-10-22 12:00 → 2026-11-02 12:00 (+11d) |  |  | 89.2d → 83.2d |  |  |
| 406 | доставка контроль | 2026-11-02 12:00 → 2026-11-10 12:00 (+8d) | 2026-11-02 12:05 → 2026-11-10 12:05 (+8d) |  |  | 89.2d → 83.2d |  |  |
| 407 | контроль поставки | 2026-11-03 12:05 → 2026-11-11 12:05 (+8d) | 2026-11-03 12:10 → 2026-11-11 12:10 (+8d) |  |  | 89.2d → 83.2d |  |  |
| 408 | сборка ШУ | 2026-11-03 12:10 → 2026-11-30 09:00 (+27d) | 2026-11-04 12:10 → 2026-11-30 18:00 (+26d) |  |  | 89.2d → 70.59d |  | constraint start no earlier than 2026-06-24 09:00 → start no earlier than 2026-11-30 09:00 |
| 409 | монтаж в линию | 2026-11-04 12:10 → 2026-12-01 09:00 (+27d) | 2026-11-05 12:10 → 2026-12-01 18:00 (+26d) |  |  | 89.2d → 70.59d |  |  |
| 565 | **замена ленты пролистывателя** |  | 2026-10-12 18:00 → 2026-10-27 18:00 (+15d) | 22d → 34d |  | 107.59d → 96.59d |  |  |
| 569 | склеить ремень | 2026-10-09 09:00 → 2026-10-26 09:00 (+17d) | 2026-10-09 13:00 → 2026-10-26 13:00 (+17d) |  |  | 107.59d → 96.59d |  | constraint start no earlier than 2026-10-09 09:00 → start no earlier than 2026-10-26 09:00 |
| 570 | замена лент | 2026-10-12 14:00 → 2026-10-27 14:00 (+15d) | 2026-10-12 18:00 → 2026-10-27 18:00 (+15d) |  |  | 107.59d → 96.59d |  | constraint start no earlier than 2026-09-18 08:00 → start no earlier than 2026-10-26 09:00 |
| 779 | **карантин и потом удалить** |  |  | 187.25d? → 188.25d? |  |  |  |  |
| 877 | **2 цех** |  |  |  | 88% → 89% |  |  |  |
| 890 | Перекрыть на складе воду питающую 2 цех, переключить бочку в реверс во 2 цеху, вода должна течь в обратку, запитать экструдер через байпас | 2026-10-30 09:00 A | 2026-10-30 10:00 A |  | 0% → 100% | 93.47d → none |  |  |
| 891 | Скомплектовать что нужно для безопасного отвода пара на парогенераторе на подрывном клапане | 2026-10-30 09:00 → 2026-11-03 09:00 (+4d) | 2026-10-30 10:00 → 2026-11-03 10:00 (+4d) |  |  | 93.47d → 92.47d |  | was named Скомплектовать что нужно для безопасного отвода пара на парогенераторе; constraint start no earlier than 2026-10-30 09:00 → start no earlier than 2026-11-03 09:00; resources Труфанов А → Труфанов А; Некрасов А |
| 892 | поменять лампу на этаже кабинетов в коридоре | 2026-10-28 09:00 A | 2026-10-28 10:00 A |  | 0% → 100% | 95.47d → none |  |  |
| 893 | замена ножек на полибоксах под которые не заезжает рохля | 2026-10-29 09:00 → 2026-10-30 09:00 A (+1d) | 2026-10-29 12:00 → 2026-10-30 11:00 A (+1d) | 3h → 2h | 0% → 100% | 94.22d → none |  | constraint start no earlier than 2026-10-29 09:00 → start no earlier than 2026-10-30 09:00 |
| 894 | переключить сигнализацию ПГ на независимое питание, что бы не отключалась при откл ПГ | 2026-10-28 09:00 A | 2026-10-28 11:00 A |  | 0% → 100% | 95.34d → none |  |  |
| 922 | При запуске отопления приточки, как будет давление в системе проверить антифриз, долить |  |  |  |  | 91.47d → 92.47d | 1067 → none | constraint none → start no earlier than 2026-11-03 09:00; resources Труфанов А → Труфанов А; Некрасов А |
| 926 | **востановить работу пирометра печи** |  | 2026-10-29 11:00 → 2026-10-30 11:00 (+1d) | 6.25d → 7.25d |  |  |  |  |
| 928 | Подключить кабель датчика пирометра с печи, разобраться, где что | 2026-10-29 09:00 → 2026-10-30 09:00 (+1d) | 2026-10-29 11:00 → 2026-10-30 11:00 (+1d) |  |  |  |  | constraint start no earlier than 2026-10-29 09:00 → start no earlier than 2026-10-30 09:00 |
| 947 | **установить аспирационный рукав в зону бункера + фильтр + выход в цех/или общ обменную вент** |  | 2026-11-27 09:45 → 2026-11-26 09:45 (-1d) |  |  | 73.5d → 74.5d |  |  |
| 949 | доставка контроль | 2026-11-25 09:30 → 2026-11-24 09:30 (-1d) | 2026-11-25 09:45 → 2026-11-24 09:45 (-1d) |  |  | 73.5d → 74.5d |  |  |
| 950 | монтаж аспирационная установка | 2026-11-26 09:45 → 2026-11-25 09:45 (-1d) | 2026-11-27 09:45 → 2026-11-26 09:45 (-1d) |  |  | 73.5d → 74.5d |  |  |
| 951 | **пыление при дозации из шнека на продукт** | 2026-10-01 09:00 A |  |  | 0% → 40% | 116.22d → 117.22d |  |  |
| 952 | установить пластину НЕРЖ на выход шнека для отклонения порошка ближе к барабану | 2026-10-01 09:00 A | 2026-10-01 11:00 A |  | 0% → 100% | 116.34d → none |  |  |
| 1022 | **бетонирование крыльцо вход в 2ц** | 2026-08-31 09:00 A | 2026-08-31 09:10 A |  | 0% → 100% | 146.57d → none |  |  |
| 1023 | заявка Олегу | 2026-08-31 09:00 A | 2026-08-31 09:10 A |  | 0% → 100% | 146.57d → none |  |  |
| 1057 | **усиление подогрев приточной вентиляции** |  |  | 80.53d? → 81.53d? |  |  |  |  |
| 1093 | **пролистыватель с апликтором заказ** |  | 2026-10-05 18:00 A |  | 12% → 100% | 112.59d → none |  |  |
| 1099 | доставка конетроль | 2026-09-18 09:00 A | 2026-09-18 09:15 A |  | 0% → 100% | 127.56d → none |  |  |
| 1100 | монтаж | 2026-10-05 09:00 A | 2026-10-05 18:00 A |  | 0% → 100% | 112.59d → none |  |  |
| 1112 | **ремонт осушителя компрессора 2ц** |  | 2026-10-04 11:30 A |  | 82% → 100% | 114.28d → none |  |  |
| 1115 | доставка контроль | 2026-10-02 09:15 A | 2026-10-02 09:30 A |  | 0% → 100% | 114.28d → none |  |  |
| 1116 | заправить хладогент | 2026-10-04 09:30 A | 2026-10-04 11:30 A |  | 0% → 100% | 114.28d → none |  |  |
| 1568 | **схема блокировки роль ворот при открытым шлюзе + авт закрытие + датчик препятствия** | 2026-10-20 09:00 → 2026-11-02 09:00 (+13d) | 2026-10-21 18:00 → 2026-11-30 13:00 (+40d) | 2d → 21.5d |  | 99.59d → 72.09d |  |  |
| 1569 | разработка схемы | 2026-10-20 09:00 → 2026-11-02 09:00 (+13d) | 2026-10-20 13:00 → 2026-11-02 13:00 (+13d) |  |  | 99.59d → 91.59d |  | constraint start no earlier than 2026-10-20 09:00 → start no earlier than 2026-11-02 09:00; resources Домоводов К → Домоводов К; Дедов В |
| 1570 | монтаж | 2026-10-21 14:00 → 2026-11-30 09:00 (+40d) | 2026-10-21 18:00 → 2026-11-30 13:00 (+40d) |  |  | 99.59d → 72.09d |  | constraint start no earlier than 2026-10-19 09:00 → start no earlier than 2026-11-30 09:00 |
| 1587 | **отмена** |  |  | 86.31d? → 87.31d? | 2% → 5% |  |  |  |
| 1588 | **найти места утечки тепла под потолком- перемерзает труба подачи воды в 3 цех** |  |  | 86.31d? → 87.31d? | 2% → 5% |  |  |  |
| 1590 | подать олегу заявку | 2026-08-31 09:00 A | 2026-08-31 09:15 A |  | 0% → 100% | 146.56d → none |  |  |
| 1603 | **3 цех** |  | 2026-10-27 13:00 → 2026-11-07 13:00 (+11d) | 310.5d? → 319.5d? | 81% → 91% | 96.09d → 88.09d |  |  |
| 1664 | **С двигателя экструдера выдавило много масла;** |  |  |  | 44% → 47% |  |  |  |
| 1667 | контроль достачки | 2026-09-25 15:00 A | 2026-09-25 15:15 A |  | 0% → 100% | 119.19d → none |  |  |
| 1668 | монтаж датчик в редуктор | 2026-10-01 09:00 → 2026-11-05 09:00 (+35d) | 2026-10-01 11:00 → 2026-11-05 11:00 (+35d) |  |  | 114.84d → 88.84d |  | constraint start no earlier than 2026-10-01 09:00 → start no earlier than 2026-11-05 09:00; resources Бобренок В → Дедов В |
| 1669 | подключение датчика в схему - блокировка по уровню | 2026-10-27 09:00 → 2026-11-06 11:00 (+10d) | 2026-10-27 13:00 → 2026-11-06 16:00 (+10d) |  |  | 96.09d → 88.84d |  | constraint start no earlier than 2026-10-27 09:00 → start no earlier than 2026-11-05 09:00; resources Дедов В → Тимофеев В |
| 1674 | **установить ограничитель на дверь что бы попадала под движение рольворот** |  | 2026-10-20 10:00 A |  | 67% → 100% | 101.47d → none |  |  |
| 1675 | заявка | 2026-09-22 09:00 A | 2026-09-22 09:15 A |  | 0% → 100% | 120.53d → none |  |  |
| 1676 | контроль доставки | 2026-09-28 09:00 A | 2026-09-28 09:15 A |  | 0% → 100% | 119.56d → none |  |  |
| 1696 | **сборка квадропака 3 цех** |  | 2026-10-26 11:00 → 2026-11-06 10:00 (+11d) | 60.25d? → 69.12d | 79% → 97% | 97.34d → 89.47d |  |  |
| 1698 | уложить проводку в шкафу управления в кабельные лотки, крышки закрыть | 2026-10-19 09:00 → 2026-11-06 09:00 (+18d) | 2026-10-19 18:00 → 2026-11-06 10:00 (+18d) | 1d? → 1h |  | 101.59d → 89.47d |  | constraint start no earlier than 2026-10-19 08:00 → start no earlier than 2026-11-06 09:00; resources none → Бобренок В |

| ID | Task | Start | Finish | Duration | Complete | Total float | Predecessors | Other |
| --- | --- | --- | --- | --- | --- | --- | --- | --- |
| 1935 | **5 цех** |  |  | 970.25d? → 971.25d? |  |  |  |  |
| 1941 | Подготовка к монтажу доп отопления 5 цех. Собрать список материала, чего не хватает. Что расстаскали | 2026-11-03 09:00 → 2026-11-30 09:00 (+27d) | 2026-11-03 10:00 → 2026-11-30 10:00 (+27d) |  |  | 91.47d → 72.47d |  | constraint none → start no earlier than 2026-11-30 09:00 |
| 1963 | **монтаж тепловые пушки подвесные 5 цех** |  |  | 68d → 69d |  |  |  |  |
| 1971 | **установить зажим троса на тельфер** |  | 2026-11-02 18:00 → 2026-11-06 18:00 (+4d) | 52d? → 56d? |  | 91.59d → 88.59d |  |  |
| 1974 | монтаж (узнать у Артема) | 2026-11-02 09:00 → 2026-11-06 09:00 (+4d) | 2026-11-02 18:00 → 2026-11-06 18:00 (+4d) |  |  | 91.59d → 88.59d |  | was named монтаж; constraint start no earlier than 2026-11-02 09:00 → start no earlier than 2026-11-06 09:00; resources Тимофеев В → Макаревич А; Николаев |
| 1975 | **ремонт насос водоснабжения** |  |  | 69.25d → 70.25d |  |  |  |  |
| 1999 | **монтаж вода в 5ц** |  |  |  | 94% → 96% | 97.58d → 98.58d |  |  |
| 2014 | **монтаж труба в земле между 3 и 4ц- УЗО на грей кабель** |  |  |  | 66% → 75% | 97.58d → 98.58d |  |  |
| 2017 | заявка защита УЗО | 2026-08-24 09:00 A | 2026-08-24 10:00 A |  | 0% → 100% | 151.46d → none |  |  |
| 2018 | контоль доставка | 2026-10-26 09:00 A | 2026-10-26 09:05 A |  | 0% → 100% | 97.58d → none |  |  |
| 2055 | **востановить коробку тельфера** |  |  | 182.25d → 183.25d |  |  |  |  |
| 2170 | **ремонт растаривателя №3 - клинит заслонку** |  | 2026-09-02 16:30 A |  | 87% → 100% | 143.78d → none |  |  |
| 2174 | контроль поставки | 2026-08-31 09:15 A | 2026-08-31 09:30 A |  | 0% → 100% | 146.53d → none |  |  |
| 2179 | настройка тепловое реле, настройка концевиков | 2026-09-02 14:30 A | 2026-09-02 16:30 A |  | 0% → 100% | 143.78d → none |  |  |
| 2250 | **модернизация** |  |  | 984.5d? → 985.5d? |  |  |  |  |
| 2295 | **качественное нанесение жира тесты** |  |  | 271.5d? → 272.5d? |  |  |  |  |
| 2413 | **капремонт погрузчика коматсу короткий** |  | 2026-10-13 09:15 A |  | 91% → 100% | 107.56d → none |  |  |
| 2419 | контроль сроков ремонта | 2026-10-13 09:00 A | 2026-10-13 09:15 A |  | 0% → 100% | 107.56d → none |  |  |
| 2453 | **слесарное помещение** |  | 2026-11-02 13:00 → 2026-11-08 12:00 (+6d) | 111.5d? → 117d? | 77% → 88% | 92.09d → 87.59d |  |  |
| 2458 | **Модернизация люльки** | 2026-10-29 09:00 → 2026-10-31 09:00 A (+2d) | 2026-10-29 18:00 → 2026-11-02 18:00 A (+4d) | 1d? → 1d | 0% → 100% | 93.59d → none |  | constraint start no earlier than 2026-10-29 08:00 → none |
| 2459 | сделать вставку в люльку со ступенькой и перилами, для возможности подниматься выше. Высота ступеньки по нижнюю перилину, высота перила нужно определить внутреннюю часть скреплять на болты | 2026-11-02 09:00 → 2026-10-31 09:00 A (-2d) | 2026-11-02 13:00 → 2026-11-02 18:00 A | 4h → 2d | 0% → 100% | 92.09d → none |  | was named Сделать в ставку в люльку со ступенькой и перилами, для возможности подниматься выше. Высота ступеньки по нижнюю перилину, высота перила нужно определить; constraint start no earlier than 2026-11-02 09:00 → start no earlier than 2026-10-31 09:00 |
| 2465 | **Ремонт двигателя от поломоечной машинки** |  | 2026-10-29 11:00 A |  | 95% → 100% | 94.34d → none |  |  |
| 2467 | контроль | 2026-10-20 09:00 A | 2026-10-20 09:10 A |  | 0% → 100% | 101.57d → none |  |  |
| 2487 | **ЗИП ремонт** |  | 2026-11-05 11:00 → 2026-11-12 11:00 (+7d) | 659.25d? → 665.25d? | 53% → 54% | 89.34d → 84.34d |  |  |
| 2488 | Восстановление платы от пробника, зачистка контактов, где погоревшие пины соединение через внешний клемник (отметить статус задачи) | 2026-10-02 09:00 → 2026-11-03 09:00 (+32d) | 2026-10-02 12:00 → 2026-11-03 11:00 (+32d) | 3h → 2h |  | 115.22d → none |  | was named Восстановление платы от пробника, зачистка контактов, где погоревшие пины соединение через внешний клемник; constraint start no earlier than 2026-10-02 08:00 → start no earlier than 2026-11-03 09:00 |
| 2496 | **Дефектовка двигателя от питателя прекондиционера/ прозвонить (возможно подготовить для сдачи на перемотку)** |  | 2026-09-13 11:00 A |  | 50% → 100% | 134.34d → none |  |  |
| 2499 | разборка ревизия | 2026-09-13 09:00 A | 2026-09-13 11:00 A |  | 0% → 100% | 134.34d → none |  |  |
| 2508 | ремонт оборотные сетки-поддоны от печи от 2ц | 2026-09-13 09:00 A | 2026-09-13 11:00 A |  | 0% → 100% | 134.34d → none |  |  |
| 2643 | **быстрая замена шнеков - кондуктор для хранения и перемещения подготвленного ствола** | 2026-11-02 09:00 → 2026-11-09 09:00 (+7d) | 2026-11-05 11:00 → 2026-11-12 11:00 (+7d) |  |  | 89.34d → 84.34d |  |  |
| 2644 | проект кондуктора и траверсы перемещения ствола штабелером | 2026-11-02 09:00 → 2026-11-09 09:00 (+7d) | 2026-11-02 11:00 → 2026-11-09 11:00 (+7d) |  |  | 89.34d → 84.34d |  | constraint start no earlier than 2026-11-02 09:00 → start no earlier than 2026-11-09 09:00 |
| 2645 | сборка | 2026-11-03 11:00 → 2026-11-10 11:00 (+7d) | 2026-11-05 11:00 → 2026-11-12 11:00 (+7d) |  |  | 89.34d → 84.34d |  |  |
| 2734 | **ТО** |  | 2026-12-01 11:00 → 2026-11-30 11:00 (-1d) |  | 44% → 45% | 71.34d → 72.34d |  |  |
| 3000 | **2 цех** |  | 2026-12-01 11:00 → 2026-11-30 11:00 (-1d) |  |  | 71.34d → 72.34d |  |  |
| 3048 | **привод сетки ПЕЧИ сушки** |  | 2026-12-01 11:00 → 2026-11-30 11:00 (-1d) |  |  | 71.34d → 72.34d |  |  |
| 3061 | смазка цепей пищ смазкой по графику 3 мес | 2026-12-01 10:00 → 2026-11-30 10:00 (-1d) | 2026-12-01 11:00 → 2026-11-30 11:00 (-1d) |  |  | 71.34d → 72.34d |  |  |
| 3432 | **5 цех** |  | 2026-07-03 11:00 → 2026-11-06 09:10 (+126d) | 656.25d? → 755.02d? |  | 187.34d → 89.57d |  |  |
| 3433 | **насосная станция 5 цех** | 2023-12-28 09:00 → 2026-11-06 09:00 (+1044d) | 2023-12-28 18:00 → 2026-11-06 09:10 (+1044d) | 1d? → 0.02d |  | 842.59d → 89.57d |  | constraint start no earlier than 2023-12-28 09:00 → none |
| 3472 | **синий склад** |  | 2026-11-06 14:30 → 2026-11-04 14:30 (-2d) | 140.56d? → 138.56d | 47% → 54% | 88.03d → 91.03d |  |  |
| 3475 | **ЗАМЕНА СВЕТИЛЬНИКОВ** |  | 2026-11-06 14:30 → 2026-11-04 14:30 (-2d) | 9.56d? → 7.56d | 32% → 53% | 88.03d → 91.03d |  |  |
| 3478 | заявка на лампы | 2026-10-26 14:00 A | 2026-10-26 14:15 A |  | 0% → 100% | 88.03d → none |  |  |
| 3479 | контроль доставка | 2026-11-04 14:15 A | 2026-11-04 14:30 A |  | 0% → 100% | 88.03d → none |  |  |
| 3480 | замена | 2026-11-05 14:30 → 2026-11-03 09:00 (-2d) | 2026-11-06 14:30 → 2026-11-03 13:00 (-3d) | 1d? → 4h |  | 88.03d → 92.09d | 3479FS+1d → none | constraint start no earlier than 2026-10-19 08:00 → start no earlier than 2026-11-03 09:00; resources Труфанов А → Труфанов А; Некрасов А |
| 3591 | **РЭФ контейнеры** |  |  | 213.59d? → 214.59d? |  |  |  |  |
| 3612 | **обучение** |  | 2026-09-10 13:00 → 2026-11-03 18:00 (+54d) | 608.5d? → 655d? | 48% → 45% | 137.09d → 91.59d |  |  |
| 3664 | **ТБ** |  |  | 929.25d? → 930.25d? |  |  |  |  |
| 3691 | **территория** |  | 2026-10-29 11:00 → 2026-11-04 13:00 (+6d) | 449.25d? → 453.5d? | 70% → 71% | 94.34d → 91.09d |  |  |

## Version 34 (saved 2026-11-09, file 07.09.26.mpp)

Last finish stays 2027-03-10. Complete tasks 2604 → 2619.

Added:

| ID | Task | Duration | Start | Finish | Predecessors | Constraint | Resources |
| --- | --- | --- | --- | --- | --- | --- | --- |
| 2 | **изготовить лоток м/д GRLW и экструдером с переключателем на сброс и крышкой очиски/быстросъемный** | 2d? | 2026-11-10 09:00 | 2026-11-11 18:00 |  |  |  |
| 3 | составить чертежи | 1d? | 2026-11-10 09:00 | 2026-11-10 18:00 |  | start no earlier than 2026-11-10 09:00 | Зорькин В; Домоводов К |
| 4 | раскрой металл / сборка | 1d? | 2026-11-11 09:00 | 2026-11-11 18:00 | 3 | start no earlier than 2026-11-09 08:00 | Макаревич А |
| 5 | калибровка пид регулятор печи 2 | 1h | 2026-11-09 09:00 | 2026-11-09 10:00 |  | start no earlier than 2026-11-09 08:00 | Николаев |
| 6 | ремонт силиконовой резинки выход из печи 1 | 1h | 2026-11-11 09:00 | 2026-11-11 10:00 |  | start no earlier than 2026-11-11 09:00 | Тимофеев В |
| 7 | 2 линия ремонт сквозной ржавчины прекондиционера возле горла | 2h | 2026-11-11 09:00 | 2026-11-11 11:00 |  | start no earlier than 2026-11-11 09:00 | Некрасов А |
| 8 | диагностика кондиционера | 2h | 2026-11-10 09:00 | 2026-11-10 11:00 |  | start no earlier than 2026-11-10 09:00 | Труфанов А; Некрасов А |
| 9 | ПУН поломоечная машинка | 2h | 2026-11-09 09:00 | 2026-11-09 11:00 |  | start no earlier than 2026-11-09 08:00 | Макаревич А; Николаев |
| 107 | Докрасить металл на рампе | 3h | 2026-11-10 09:00 | 2026-11-10 12:00 |  | start no earlier than 2026-11-10 09:00 | Макаревич А; Николаев |
| 119 | примерка пластины с отверстием на сваю | 15min | 2026-11-11 09:00 | 2026-11-11 09:15 |  | start no earlier than 2026-11-11 09:00 | Некрасов А |
| 121 | распаковка настройка станка для резки проката | 1h | 2026-11-10 09:00 | 2026-11-10 10:00 |  | start no earlier than 2026-11-10 09:00 | Труфанов А; Некрасов А |
| 122 | разработка инструкции по ТБ на данный станок | 4h | 2026-11-09 09:00 | 2026-11-09 13:00 |  | start no earlier than 2026-11-09 08:00 | Зорькин В |
| 890 | течь редуктор смесителя с стороны эл мотора - разборка /замена сальник\ | 4h | 2026-11-12 09:00 | 2026-11-12 13:00 |  | start no earlier than 2026-11-12 09:00 | Тимофеев В |
| 1617 | отключить кабель нории, убрать с пола / консервация | 1h | 2026-11-10 09:00 | 2026-11-10 10:00 |  | start no earlier than 2026-11-10 09:00 | Бундин В |
| 1618 | перемещение нории | 1h | 2026-11-10 09:00 | 2026-11-10 10:00 |  | start no earlier than 2026-11-10 09:00 | Некрасов А; Тимофеев В; Труфанов А |
| 1619 | закрыть 2 щели из 3х на шнеке сухой гидролизат | 1h | 2026-11-10 09:00 | 2026-11-10 10:00 |  | start no earlier than 2026-11-10 09:00 | Тимофеев В |
| 1620 | уборка железо на пандусе. Весь мсор / зип с цеха. Перемещение по складам | 2h | 2026-11-10 09:00 | 2026-11-10 11:00 |  | start no earlier than 2026-11-10 09:00 | Некрасов А; Труфанов А |
| 1621 | Собрать кухонный гарнитур | 4h | 2026-11-08 09:00 A | 2026-11-08 13:00 A |  | start no earlier than 2026-11-08 09:00 | Макаревич А; Николаев |
| 1622 | монтаж раковина покупка за нал всесь комплект с курьером | 5h | 2026-11-09 09:00 A | 2026-11-09 15:00 A |  | start no earlier than 2026-11-09 08:00 | Тимофеев В |
| 1623 | переложить шланг слива давления масла, что бы был хороший поток (Дедов обнаружил плохой слив) | 2h | 2026-11-09 09:00 | 2026-11-09 11:00 |  | start no earlier than 2026-11-09 08:00 | Макаревич А |
| 1625 | Разработка и установка схемы сигнализации маслонасосной станции экструдера | 2h | 2026-11-10 09:00 | 2026-11-10 11:00 |  | start no earlier than 2026-11-10 09:00 | Дедов В |
| 1628 | устанговить датчик температуры от котла ZOTA. Тест | 2h | 2026-11-09 09:00 A | 2026-11-09 11:00 A |  | start no earlier than 2026-11-09 08:00 | Труфанов А |
| 1632 | **парогенератор скидывает давление до 0 на продувке** | 1.12d | 2026-11-09 09:00 A | 2026-11-10 10:00 |  |  |  |
| 1633 | настройка продувки парогенератора что бы не сдувался до 0 | 2h | 2026-11-09 09:00 A | 2026-11-09 11:00 A |  | start no earlier than 2026-11-09 08:00 | Дедов В; Зорькин В |
| 1634 | запрос программы | 15min | 2026-11-09 09:00 | 2026-11-09 09:15 |  | start no earlier than 2026-11-09 08:00 | Зорькин В |
| 1635 | тест работы ПГ с откл краном сброса давления / продувки | 1h | 2026-11-10 09:00 | 2026-11-10 10:00 |  | start no earlier than 2026-11-10 09:00 | Дедов В |
| 1962 | Сделать защелку для прижима сетки на дробилку | 1h | 2026-11-09 09:00 A | 2026-11-09 10:00 A |  | start no earlier than 2026-11-09 08:00 | Некрасов А |
| 1963 | монтаж защелки на дробилку | 1h | 2026-11-09 09:00 | 2026-11-09 10:00 |  | start no earlier than 2026-11-09 09:00 | Макаревич А |
| 2434 | ремонт генератора - замена реле / покупка с курьером | 2h | 2026-11-10 09:00 | 2026-11-10 11:00 |  | start no earlier than 2026-11-10 09:00 | Некрасов А; Труфанов А |
| 2483 | Собрать вакуумный насос от поломоечной машинки | 2h | 2026-11-10 09:00 | 2026-11-10 11:00 |  | start no earlier than 2026-11-10 09:00 | Макаревич А; Николаев |
| 3502 | уборка зона металла / склад ЗИП | 4h | 2026-11-10 09:00 | 2026-11-10 13:00 |  | start no earlier than 2026-11-10 09:00 | Бундин В; Тимофеев В |
| 3599 | **ремонт роль ворот** | 8.19d | 2026-11-10 09:00 | 2026-11-20 10:30 |  |  |  |
| 3600 | заявка ролик | 15min | 2026-11-10 09:00 | 2026-11-10 09:15 |  | start no earlier than 2026-11-10 09:00 | Зорькин В |
| 3601 | контроль доставка | 15min | 2026-11-19 09:15 | 2026-11-19 09:30 | 3600FS+7d | start no earlier than 2026-11-09 08:00 | Зорькин В |
| 3602 | замена | 1h | 2026-11-20 09:30 | 2026-11-20 10:30 | 3601FS+1d | start no earlier than 2026-11-09 08:00 | Тимофеев В |

Removed: 2455 Сделать перемычки для треугольников

Changed:

| ID | Task | Start | Finish | Duration | Complete | Total float | Predecessors | Other |
| --- | --- | --- | --- | --- | --- | --- | --- | --- |
| 10 | Засыпать пескобетон в сваи |  | 2026-11-05 18:00 → 2026-11-05 11:00 | 1d? → 2h |  | 89.59d → 91.34d |  | resources none → Некрасов А |
| 100 | **сборка рама для труб приточной вентиляции** |  | 2026-11-12 18:00 → 2026-11-16 18:00 (+4d) | 23d? → 26d? | 41% → 69% | 83.59d → 81.59d |  |  |
| 106 | **покраска металл** |  | 2026-11-06 11:00 → 2026-11-10 12:00 (+4d) | 8.25d → 12.38d | 76% → 78% | 89.34d → 86.22d |  |  |
| 108 | заявка грунт ПФ116 | 2026-10-27 09:00 A | 2026-10-27 09:15 A |  | 0% → 100% | 97.53d → none |  |  |
| 109 | контроль доставка | 2026-11-04 09:00 A | 2026-11-04 09:15 A |  | 0% → 100% | 91.56d → none |  |  |
| 112 | Организовать перевозку металла в 3 цех | 2026-11-06 09:00 A | 2026-11-06 11:00 A |  | 0% → 100% | 89.34d → none |  |  |
| 116 | **бурение свай** | 2026-10-27 09:00 A | 2026-10-27 18:00 → 2026-11-11 09:15 (+15d) | 1d? → 13.03d? | 0% → 97% | 96.59d → 85.56d |  |  |
| 117 | получить счет /договор | 2026-10-27 09:00 A | 2026-10-27 10:00 A |  | 0% → 100% | 97.47d → none |  |  |
| 118 | перекладка труб 500 соседких краном | 2026-10-27 09:00 A | 2026-10-27 18:00 A |  | 0% → 100% | 96.59d → none |  | resources none → Труфанов А; Некрасов А |
| 120 | **сборка рама в цехе** | 2026-11-10 09:00 → 2026-11-09 09:00 (-1d) | 2026-11-11 18:00 → 2026-11-10 10:00 (-1d) | 2d → 1.12d |  | 83.59d → 85.47d |  | was named сборка рама на земле; constraint start no earlier than 2026-11-10 09:00 → none; resources Труфанов А; Некрасов А → none |
| 123 | монтаж рама на цех краном | 2026-11-12 09:00 → 2026-11-16 09:00 (+4d) | 2026-11-12 18:00 → 2026-11-16 18:00 (+4d) |  |  | 83.59d → 81.59d |  | constraint start no earlier than 2026-09-30 08:00 → start no earlier than 2026-11-16 09:00 |
| 146 | **реконструкция хранения гидролизатов и маршрут подачи навесок** |  | 2026-11-10 18:00 → 2026-11-13 18:00 (+3d) | 55d → 59d |  | 85.59d → 82.59d |  |  |
| 149 | **монтаж доп плащадки** |  | 2026-11-10 18:00 → 2026-11-13 18:00 (+3d) | 35d → 39d |  | 85.59d → 82.59d |  |  |
| 154 | монтаж | 2026-11-09 09:00 → 2026-11-12 09:00 (+3d) | 2026-11-10 18:00 → 2026-11-13 18:00 (+3d) |  |  | 85.59d → 82.59d |  | constraint start no earlier than 2026-11-09 09:00 → start no earlier than 2026-11-12 09:00 |
| 155 | **монтаж перегородка корридор** |  | 2026-11-10 18:00 → 2026-11-13 18:00 (+3d) | 12.97d → 16.97d |  | 85.59d → 82.59d |  |  |
| 157 | монтаж | 2026-11-09 09:00 → 2026-11-12 09:00 (+3d) | 2026-11-10 18:00 → 2026-11-13 18:00 (+3d) |  |  | 85.59d → 82.59d |  | constraint start no earlier than 2026-11-09 09:00 → start no earlier than 2026-11-12 09:00 |
| 219 | **продумать как сделать герметичную крышку на смесителе сухого гидрализата** |  |  | 64.25d → 65.25d |  |  |  |  |
| 415 | **установить автоматику запуска шнека + смеситель по датчику уровня сырья в бункере экструдера** |  |  | 23d? → 24d? |  |  |  |  |
| 418 | доставка контроль | 2026-11-10 12:00 → 2026-11-09 12:00 (-1d) | 2026-11-10 12:05 → 2026-11-09 12:05 (-1d) |  |  | 83.2d → 84.2d |  |  |
| 419 | контроль поставки | 2026-11-11 12:05 → 2026-11-10 12:05 (-1d) | 2026-11-11 12:10 → 2026-11-10 12:10 (-1d) |  |  | 83.2d → 84.2d |  |  |
| 791 | **карантин и потом удалить** |  |  | 188.25d? → 189.25d? |  |  |  |  |
| 889 | **2 цех** |  |  |  | 89% → 88% |  |  |  |
| 960 | **установить аспирационный рукав в зону бункера + фильтр + выход в цех/или общ обменную вент** |  | 2026-11-26 09:45 → 2026-11-25 09:45 (-1d) |  |  | 74.5d → 75.5d |  |  |
| 962 | доставка контроль | 2026-11-24 09:30 → 2026-11-23 09:30 (-1d) | 2026-11-24 09:45 → 2026-11-23 09:45 (-1d) |  |  | 74.5d → 75.5d |  |  |
| 963 | монтаж аспирационная установка | 2026-11-25 09:45 → 2026-11-24 09:45 (-1d) | 2026-11-26 09:45 → 2026-11-25 09:45 (-1d) |  |  | 74.5d → 75.5d |  |  |
| 1070 | **усиление подогрев приточной вентиляции** |  |  | 81.53d? → 82.53d? |  |  |  |  |
| 1581 | **схема блокировки роль ворот при открытым шлюзе + авт закрытие + датчик препятствия** |  |  | 21.5d → 22.5d |  |  |  |  |
| 1600 | **отмена** |  |  | 87.31d? → 88.31d? |  |  |  |  |
| 1601 | **найти места утечки тепла под потолком- перемерзает труба подачи воды в 3 цех** |  |  | 87.31d? → 88.31d? |  |  |  |  |
| 1616 | **3 цех** |  | 2026-11-07 13:00 → 2026-11-10 11:00 (+3d) | 319.5d? → 322.25d? |  | 88.09d → 86.34d |  |  |
| 1624 | Тест маслонасосной станции с открытой крышкой редуктора . Доделать схему, решение о гистерезисе на реле времени | 2026-11-06 09:00 → 2026-11-09 09:00 A (+3d) | 2026-11-06 10:00 → 2026-11-09 13:00 A (+3d) | 1h → 4h | 0% → 100% | 89.22d → none |  | was named Тест маслонасосной станции с открытой крышкой редуктора; constraint start no earlier than 2026-11-06 09:00 → start no earlier than 2026-11-09 09:00; resources Тимофеев В → Дедов В |
| 1626 | Тест печей (на просадку температур) 3 и 4 зона, сначало нагреть, потом отключить первые контуры постоянного нагрева | 2026-11-06 10:00 → 2026-11-08 09:00 A (+2d) | 2026-11-06 12:00 → 2026-11-08 11:00 A (+2d) |  | 0% → 100% | 89.22d → none |  | was named Тест печей (на просадку температур); constraint none → start no earlier than 2026-11-08 09:00; resources Тимофеев В → Тимофеев В; Дедов В |
| 1629 | Отвод пара трубой ближе к всасывающему отверстию зонтика на прекондиционере | 2026-11-07 09:00 → 2026-11-09 09:00 A (+2d) | 2026-11-07 10:00 → 2026-11-09 11:00 A (+2d) | 1h → 2h | 0% → 100% |  |  | constraint start no earlier than 2026-11-07 09:00 → start no earlier than 2026-11-09 09:00; resources Макаревич А; Николаев → Некрасов А; Труфанов А |
| 1630 | Наклеить надписи на шкафу управления смесителями | 2026-11-06 09:00 → 2026-11-10 09:00 (+4d) | 2026-11-06 10:00 → 2026-11-10 10:00 (+4d) |  |  | 89.47d → 86.47d |  | constraint start no earlier than 2026-11-06 09:00 → start no earlier than 2026-11-10 09:00 |
| 1631 | Тест парогенератора (слить воду с бачка, зафиксировать уровень в нем, погонять несколько часов, проверить бачок, если вода увеличилась, скорее всего вырубался) | 2026-11-06 09:00 → 2026-11-08 09:00 A (+2d) | 2026-11-06 10:00 → 2026-11-08 12:00 A (+2d) | 1h → 3h | 0% → 100% | 89.47d → none |  | was named Тест парогенератора; constraint start no earlier than 2026-11-06 09:00 → start no earlier than 2026-11-08 09:00; resources Тимофеев В → Дедов В |
| 1636 | Ревизия редуктора шнека, проверить масло, шнек подачи сырья в прекондиционер | 2026-11-06 09:00 → 2026-11-10 09:00 (+4d) | 2026-11-06 09:30 → 2026-11-10 09:30 (+4d) |  |  | 89.53d → 86.53d |  | constraint start no earlier than 2026-11-06 09:00 → start no earlier than 2026-11-10 09:00; resources Бобренок В → Труфанов А |
| 1637 | Поставить вибратор на приемную воронку после смесителя, шнек подачи сырья в прекондиционер | 2026-11-06 09:00 → 2026-11-10 09:00 (+4d) | 2026-11-06 11:00 → 2026-11-10 11:00 (+4d) |  |  | 89.34d → 86.34d |  | constraint start no earlier than 2026-11-06 09:00 → start no earlier than 2026-11-10 09:00; resources Тимофеев В → Бундин В |
| 1639 | Изготовить козырек на выходе эктрудера (доработать откидную лопатку) | 2026-11-07 09:00 A | 2026-11-07 13:00 A |  | 0% → 100% | 88.09d → none |  |  |
| 1640 | Установка 2-х бойлеров по 100л, на женскую раздевалку и мужскую, определить контуры магистрали воды, определить где находится закладная |  | 2026-11-06 15:00 → 2026-11-06 12:00 | 5h → 3h |  | 88.97d → 90.22d |  |  |
| 1961 | **5 цех** |  |  | 971.25d? → 972.25d? |  |  |  |  |
| 1964 | Замена резинок на дробилке, осмотре всех уплотнений/замена при необходимости | 2026-11-06 09:00 → 2026-11-09 09:00 (+3d) | 2026-11-06 10:00 → 2026-11-09 10:00 (+3d) |  |  | 89.47d → none |  | constraint start no earlier than 2026-11-06 08:00 → start no earlier than 2026-11-09 09:00 |
| 1967 | Запенить отверстие от кабеля в углу | 2026-11-05 09:00 → 2026-11-08 09:00 (+3d) | 2026-11-05 09:30 → 2026-11-08 09:30 (+3d) |  |  | 90.53d → none |  | constraint start no earlier than 2026-11-05 09:00 → start no earlier than 2026-11-08 09:00 |
| 1968 | 5а подключить автоматику ворот | 2026-11-06 09:00 → 2026-11-10 09:00 (+4d) | 2026-11-06 11:00 → 2026-11-10 10:00 (+4d) | 2h → 1h |  | 89.34d → 86.47d | none → 1999 | constraint start no earlier than 2026-11-06 09:00 → start no earlier than 2026-11-10 09:00; resources Труфанов А; Некрасов А → Некрасов А |
| 1991 | **монтаж тепловые пушки подвесные 5 цех** |  | 2026-11-11 18:00 → 2026-11-18 18:00 (+7d) | 69d → 75d |  | 84.59d → 79.59d |  |  |
| 1996 | монтаж | 2026-11-10 09:00 → 2026-11-17 09:00 (+7d) | 2026-11-11 18:00 → 2026-11-18 18:00 (+7d) |  |  | 84.59d → 79.59d |  | constraint start no earlier than 2026-11-10 09:00 → start no earlier than 2026-11-17 09:00 |
| 2003 | **ремонт насос водоснабжения** |  |  | 70.25d → 71.25d |  |  |  |  |
| 2083 | **востановить коробку тельфера** |  |  | 183.25d → 184.25d |  |  |  |  |
| 2278 | **модернизация** |  |  | 985.5d? → 986.5d? |  |  |  |  |
| 2323 | **качественное нанесение жира тесты** |  |  | 272.5d? → 273.5d? |  |  |  |  |
| 2329 | **монтаж форсунки в линию** |  |  | 264.5d? → 266.5d? |  |  |  |  |
| 2433 | **техника** |  | 2026-10-20 09:00 → 2026-11-10 11:00 (+21d) | 644d? → 661.25d? | 98% → 95% | 102.59d → 86.34d |  |  |
| 2482 | **слесарное помещение** |  | 2026-11-08 12:00 → 2026-11-10 12:00 (+2d) | 117d? → 119.38d? |  | 87.59d → 86.22d |  |  |
| 2484 | Доделать 3 треугольника - покрасить / расставить | 2026-11-08 09:00 → 2026-11-10 09:00 (+2d) | 2026-11-08 12:00 → 2026-11-10 12:00 (+2d) |  |  |  |  | was named Доделать 3 треугольника; constraint start no earlier than 2026-11-08 09:00 → start no earlier than 2026-11-10 09:00 |
| 2516 | **ЗИП ремонт** |  | 2026-11-12 11:00 → 2026-11-19 11:00 (+7d) | 665.25d? → 671.25d? |  | 84.34d → 79.34d |  |  |
| 2672 | **быстрая замена шнеков - кондуктор для хранения и перемещения подготвленного ствола** | 2026-11-09 09:00 → 2026-11-16 09:00 (+7d) | 2026-11-12 11:00 → 2026-11-19 11:00 (+7d) |  |  | 84.34d → 79.34d |  |  |
| 2673 | проект кондуктора и траверсы перемещения ствола штабелером | 2026-11-09 09:00 → 2026-11-16 09:00 (+7d) | 2026-11-09 11:00 → 2026-11-16 11:00 (+7d) |  |  | 84.34d → 79.34d |  | constraint start no earlier than 2026-11-09 09:00 → start no earlier than 2026-11-16 09:00 |
| 2674 | сборка | 2026-11-10 11:00 → 2026-11-17 11:00 (+7d) | 2026-11-12 11:00 → 2026-11-19 11:00 (+7d) |  |  | 84.34d → 79.34d |  |  |
| 2763 | **ТО** |  | 2026-11-30 11:00 → 2026-11-27 11:00 (-3d) |  |  | 72.34d → 73.34d |  |  |
| 3029 | **2 цех** |  | 2026-11-30 11:00 → 2026-11-27 11:00 (-3d) |  |  | 72.34d → 73.34d |  |  |
| 3077 | **привод сетки ПЕЧИ сушки** |  | 2026-11-30 11:00 → 2026-11-27 11:00 (-3d) |  |  | 72.34d → 73.34d |  |  |
| 3090 | смазка цепей пищ смазкой по графику 3 мес | 2026-11-30 10:00 → 2026-11-27 10:00 (-3d) | 2026-11-30 11:00 → 2026-11-27 11:00 (-3d) |  |  | 72.34d → 73.34d |  |  |
| 3501 | **синий склад** |  | 2026-11-04 14:30 → 2026-11-10 13:00 (+6d) | 138.56d → 144.5d | 54% → 49% | 91.03d → 86.09d |  |  |
| 3598 | **склад упаковки** |  | 2026-10-11 11:00 A → 2026-11-20 10:30 (+40d) | 145d? → 177.19d? | 100% → 99% | none → 78.41d |  |  |
| 3625 | **РЭФ контейнеры** |  |  | 214.59d? → 215.59d? |  |  |  |  |
| 3698 | **ТБ** |  |  | 930.25d? → 931.25d? |  |  |  |  |

## Version 35 (saved 2026-11-10, file 07.09.26.mpp)

Last finish stays 2027-03-10. Complete tasks 2619 → 2651.

Added:

| ID | Task | Duration | Start | Finish | Constraint | Resources |
| --- | --- | --- | --- | --- | --- | --- |
| 1617 | Поставить продувку на парогенераторе каждые 2ч интервал продувки 2 секунды. | 30min | 2026-11-10 09:00 | 2026-11-10 09:30 | start no earlier than 2026-11-10 08:00 | Дедов В |
| 1618 | Изготовить площадку для засыпки сухого гидролизата, за основу взять раму у 5 цеха | 4h | 2026-11-11 09:00 | 2026-11-11 13:00 | start no earlier than 2026-11-11 09:00 | Труфанов А; Некрасов А |
| 1619 | Поставить 2 светильника в туалеты 2 этаж | 1h | 2026-11-11 09:00 | 2026-11-11 10:00 | start no earlier than 2026-11-11 09:00 | Труфанов А; Некрасов А |
| 1620 | Сделать колесики на площадку для чистки прикондера | 2h | 2026-11-11 09:00 | 2026-11-11 11:00 | start no earlier than 2026-11-11 09:00 | Труфанов А; Некрасов А |
| 1621 | Поставить запайщики, подключить педаль, по местам, проверить работоспособность | 1h | 2026-11-10 09:00 | 2026-11-10 10:00 | start no earlier than 2026-11-10 08:00 | Дедов В |
| 1622 | Проверить нотисы, восстановить разъемы, восстановить снабжение сжатого воздуха | 1h | 2026-11-10 09:00 | 2026-11-10 10:00 | start no earlier than 2026-11-10 08:00 | Дедов В |
| 1631 | **Маслонасосная станция** | 1.25d | 2026-11-09 09:00 A | 2026-11-10 11:00 |  |  |
| 1633 | Поменять геркон на маслонасосной станции и запускать контактор через промежуточное реле (от катушки пускателя геркон сгорел) | 2h | 2026-11-10 09:00 | 2026-11-10 11:00 | start no earlier than 2026-11-10 09:00 | Дедов В |
| 2800 | **шнек подачи в питатель экструдера** | 0.12d | 2026-11-11 09:00 | 2026-11-11 10:00 |  |  |
| 2801 | Замена подшипников | 1h | 2026-11-11 09:00 | 2026-11-11 10:00 | start no earlier than 2026-11-11 09:00 | Тимофеев В |
| 2812 | Ревизия питателя, контроль состояния подшипников/втулки/шестерен/втулки | 30min | 2026-11-11 09:00 | 2026-11-11 09:30 | start no earlier than 2026-11-11 09:00 | Тимофеев В |
| 2820 | контроль привода, подшипников/при необходимости замена | 15min | 2026-11-11 09:00 | 2026-11-11 09:15 | start no earlier than 2026-11-11 09:00 | Тимофеев В |
| 2834 | Чистка парогенератора (начать как встанут) | 1h | 2026-11-10 09:00 | 2026-11-10 10:00 | start no earlier than 2026-11-10 08:00 | Дедов В; Тимофеев В |
| 2847 | Чистка фильтра | 15min | 2026-11-11 09:00 | 2026-11-11 09:15 | start no earlier than 2026-11-11 09:00 | Тимофеев В |
| 2856 | частотные привода экструдера, ножей, питателя - продувка | 15min | 2026-11-11 09:00 | 2026-11-11 09:15 | start no earlier than 2026-11-11 09:00 | Тимофеев В |
| 2864 | ревизия/ проверка токов | 15min | 2026-11-11 09:00 | 2026-11-11 09:15 | start no earlier than 2026-11-11 09:00 | Тимофеев В |
| 2873 | Осмотр, продувка, протяжка контактов | 20min | 2026-11-11 09:00 | 2026-11-11 09:20 | start no earlier than 2026-11-11 09:00 | Тимофеев В |
| 2881 | Дефектовка - проверить подачу, вибрации, посторонние шумы/проверка фильтров/насосов/фитингов | 15min | 2026-11-11 09:00 | 2026-11-11 09:15 | start no earlier than 2026-11-11 09:00 | Тимофеев В |
| 2900 | Контроль состояния сетки/цепи | 1h | 2026-11-11 09:00 | 2026-11-11 10:00 | start no earlier than 2026-11-11 09:00 | Тимофеев В |
| 2902 | **шнек подачи в питатель экструдера** | 0.12d | 2026-11-11 09:00 | 2026-11-11 10:00 |  |  |
| 2903 | Замена подшипников | 1h | 2026-11-11 09:00 | 2026-11-11 10:00 | start no earlier than 2026-11-11 09:00 | Бундин В |
| 2915 | Ревизия питателя, контроль состояния подшипников/втулки/шестерен | 30min | 2026-11-11 09:00 | 2026-11-11 09:30 | start no earlier than 2026-11-11 09:00 | Бундин В |
| 2923 | контроль привода, подшипников | 15min | 2026-11-11 09:00 | 2026-11-11 09:15 | start no earlier than 2026-11-11 09:00 | Бундин В |
| 2934 | Чистка парогенератора | 1h | 2026-11-11 09:00 | 2026-11-11 10:00 | start no earlier than 2026-11-11 09:00 | Бундин В |
| 2944 | частотные привода экструдера, ножей, питателя - продувка | 15min | 2026-11-11 09:00 | 2026-11-11 09:15 | start no earlier than 2026-11-11 09:00 | Бундин В |
| 2956 | Чистка фильтра/тэны и термопары шнеков - протяжка/ проверка масла | 30min | 2026-11-11 09:00 | 2026-11-11 09:30 | start no earlier than 2026-11-11 09:00 | Бундин В |
| 2964 | Ревизия, проверка жил, проверка токов | 20min | 2026-11-11 09:00 | 2026-11-11 09:20 | start no earlier than 2026-11-11 09:00 | Бундин В |
| 2978 | ревизия/ проверка токов/протяжка контактов | 15min | 2026-11-11 09:00 | 2026-11-11 09:15 | start no earlier than 2026-11-11 09:00 | Бундин В |
| 2982 | Дефектовка - проверить подачу, вибрации, посторонние шумы. | 30min | 2026-11-11 09:00 | 2026-11-11 09:30 | start no earlier than 2026-11-11 09:00 | Бундин В |
| 2996 | Осмотр, дефектовка, устранение неисправностей ,смазка по необходимости, протяжка болтов | 1h | 2026-11-11 09:00 | 2026-11-11 10:00 | start no earlier than 2026-11-11 09:00 | Бундин В |
| 3005 | Дефектовка - проверить подачу, вибрации, посторонние шумы/проверка фильтров/насосов/фитингов | 15min | 2026-11-11 09:00 | 2026-11-11 09:15 | start no earlier than 2026-11-11 09:00 | Бундин В |
| 3012 | насос, фильтр - осмотр, чистка | 15min | 2026-11-11 09:00 | 2026-11-11 09:15 | start no earlier than 2026-11-11 09:00 | Бундин В |
| 3030 | Осмотр всех упаковщиков/транспортеров/накопительных столов/ всех щитков оборудования/редукторов | 1h | 2026-11-11 09:00 | 2026-11-11 10:00 | start no earlier than 2026-11-11 09:00 | Бундин В; Тимофеев В |

Changed:

| ID | Task | Start | Finish | Duration | Complete | Total float | Predecessors | Other |
| --- | --- | --- | --- | --- | --- | --- | --- | --- |
| 7 | 2 линия ремонт сквозной ржавчины прекондиционера возле горла |  |  |  |  |  |  | resources Некрасов А → Бундин В |
| 9 | ПУН поломоечная машинка | 2026-11-09 09:00 A | 2026-11-09 11:00 A |  | 0% → 100% | 87.34d → none |  |  |
| 25 | **Собрать канистру для подачи воды в экструдер, по аналогу 3 цех. Промежуточный бак 2 шт** |  | 2026-11-06 10:00 → 2026-11-11 10:00 (+5d) | 6.12d → 11.12d | 18% → 29% | 90.47d → 85.47d |  |  |
| 27 | Контроль | 2026-11-05 09:00 A | 2026-11-05 09:10 A |  | 0% → 100% | 91.57d → none |  |  |
| 28 | монтаж | 2026-11-06 09:00 → 2026-11-11 09:00 (+5d) | 2026-11-06 10:00 → 2026-11-11 10:00 (+5d) |  |  | 90.47d → 85.47d |  | constraint start no earlier than 2026-11-06 09:00 → start no earlier than 2026-11-11 09:00 |
| 116 | **бурение свай** |  | 2026-11-11 09:15 → 2026-11-13 09:15 (+2d) | 13.03d? → 15.03d? |  | 85.56d → 83.56d |  |  |
| 119 | примерка пластины с отверстием на сваю | 2026-11-11 09:00 → 2026-11-13 09:00 (+2d) | 2026-11-11 09:15 → 2026-11-13 09:15 (+2d) |  |  | 85.56d → 83.56d |  | constraint start no earlier than 2026-11-11 09:00 → start no earlier than 2026-11-13 09:00 |
| 219 | **продумать как сделать герметичную крышку на смесителе сухого гидрализата** |  | 2026-11-11 11:00 → 2026-11-13 11:00 (+2d) | 65.25d → 67.25d |  | 85.34d → 83.34d |  |  |
| 224 | установка на струбцинах с уплотнителями | 2026-11-11 09:00 → 2026-11-13 09:00 (+2d) | 2026-11-11 11:00 → 2026-11-13 11:00 (+2d) |  |  | 85.34d → 83.34d |  | constraint start no earlier than 2026-11-11 09:00 → start no earlier than 2026-11-13 09:00 |
| 415 | **установить автоматику запуска шнека + смеситель по датчику уровня сырья в бункере экструдера** | 2026-11-02 09:00 A |  |  |  |  |  |  |
| 418 | доставка контроль | 2026-11-09 12:00 A | 2026-11-09 12:05 A |  | 0% → 100% | 84.2d → none |  |  |
| 889 | **2 цех** |  |  |  | 88% → 89% |  |  |  |
| 891 | Замена и ремонт инсектицидных ламп 7 шт (сделана 1шт) |  |  |  |  |  |  | was named Замена и ремонт инсектицидных ламп 7 шт |
| 892 | Замена подшипника на прекондиционере передний на остановке | 2026-11-05 09:00 A | 2026-11-05 11:00 A |  | 0% → 100% | 91.34d → none |  |  |
| 893 | Проверить приточку, проконтролировать работу и теплового узла | 2026-11-03 09:00 A | 2026-11-03 10:00 A |  | 0% → 100% | 93.47d → none |  |  |
| 894 | Заземление пролистывателя/кусается/устранить, найти где пробивает на корпус | 2026-11-03 09:00 A | 2026-11-03 11:00 A |  | 0% → 100% | 93.34d → none |  |  |
| 895 | Подключить частотник приточной вентиляции к калориферу | 2026-11-03 09:00 A | 2026-11-03 10:00 A |  | 0% → 100% | 93.47d → none |  |  |
| 896 | Ремонт дегистра в лаборатории | 2026-11-03 09:00 A | 2026-11-03 11:00 A |  | 0% → 100% | 93.34d → none |  |  |
| 897 | Установка и пусконаладка пролистывателя и апликатора | 2026-11-02 09:00 A | 2026-11-02 13:00 A |  | 0% → 100% |  |  |  |
| 935 | При запуске отопления приточки, как будет давление в системе проверить антифриз, долить | 2026-11-03 09:00 A | 2026-11-03 10:00 A |  | 0% → 100% | 93.47d → none |  |  |
| 1600 | **отмена** |  | 2026-11-26 11:30 → 2026-11-30 11:30 (+4d) | 88.31d? → 90.31d? |  | 74.28d → 72.28d |  |  |
| 1601 | **найти места утечки тепла под потолком- перемерзает труба подачи воды в 3 цех** |  | 2026-11-26 11:30 → 2026-11-30 11:30 (+4d) | 88.31d? → 90.31d? |  | 74.28d → 72.28d |  |  |
| 1604 | проверка пирометром / тепловизором | 2026-11-11 09:00 → 2026-11-13 09:00 (+2d) | 2026-11-11 11:00 → 2026-11-13 11:00 (+2d) |  |  | 74.28d → 72.28d |  | constraint start no earlier than 2026-11-11 09:00 → start no earlier than 2026-11-13 09:00 |
| 1605 | заявка (подумать материал) | 2026-11-11 11:00 → 2026-11-13 11:00 (+2d) | 2026-11-11 11:15 → 2026-11-13 11:15 (+2d) |  |  | 74.28d → 72.28d |  |  |
| 1606 | доставка- контроль | 2026-11-25 11:15 → 2026-11-27 11:15 (+2d) | 2026-11-25 11:30 → 2026-11-27 11:30 (+2d) |  |  | 74.28d → 72.28d |  |  |
| 1607 | монтаж | 2026-11-25 11:30 → 2026-11-27 11:30 (+2d) | 2026-11-26 11:30 → 2026-11-30 11:30 (+4d) |  |  | 74.28d → 72.28d |  |  |
| 1616 | **3 цех** |  | 2026-11-10 11:00 → 2026-11-11 13:00 (+1d) | 322.25d? → 323.5d? |  | 86.34d → 85.09d |  |  |
| 1624 | перемещение нории | 2026-11-10 09:00 A | 2026-11-10 10:00 A |  | 0% → 100% | 86.47d → none |  |  |
| 1630 | переложить шланг слива давления масла, что бы был хороший поток (Дедов обнаружил плохой слив) | 2026-11-09 09:00 A | 2026-11-09 11:00 A |  | 0% → 100% | 87.34d → none |  |  |
| 1636 | Пусконаладка подогрева приточной вентиляции | 2026-11-06 09:00 A | 2026-11-06 13:00 A |  | 0% → 100% | 90.09d → none |  |  |
| 1639 | Наклеить надписи на шкафу управления смесителями | 2026-11-10 09:00 A | 2026-11-10 10:00 A |  | 0% → 100% | 86.47d → none |  |  |
| 1641 | **парогенератор скидывает давление до 0 на продувке** |  | 2026-11-10 10:00 → 2026-11-09 11:00 (-1d) | 1.12d → 0.25d | 62% → 92% | 86.47d → 87.34d |  |  |
| 1644 | тест работы ПГ с откл краном сброса давления / продувки | 2026-11-10 09:00 → 2026-11-09 09:00 A (-1d) | 2026-11-10 10:00 → 2026-11-09 10:00 A (-1d) |  | 0% → 100% | 86.47d → none |  |  |
| 1699 | **С двигателя экструдера выдавило много масла;** |  |  |  | 47% → 64% |  |  |  |
| 1703 | монтаж датчик в редуктор | 2026-11-05 09:00 A | 2026-11-05 11:00 A |  | 0% → 100% | 89.84d → none |  |  |
| 1972 | монтаж защелки на дробилку | 2026-11-09 09:00 A | 2026-11-09 10:00 A |  | 0% → 100% | 87.47d → none |  |  |
| 1973 | Замена резинок на дробилке, осмотре всех уплотнений/замена при необходимости | 2026-11-09 09:00 A | 2026-11-09 10:00 A |  | 0% → 100% |  |  |  |
| 1976 | Запенить отверстие от кабеля в углу | 2026-11-08 09:00 A | 2026-11-08 09:30 A |  | 0% → 100% |  |  |  |
| 1977 | 5а подключить автоматику ворот |  |  |  |  |  | 2008 → none |  |
| 2775 | **1 цех** |  |  |  | 80% → 79% |  |  |  |
| 2799 | **линия 1** |  | 2026-10-29 10:00 → 2026-11-11 10:00 (+13d) | 170.12d? → 181.12d? | 88% → 81% | 96.47d → 85.47d |  |  |
| 2802 | **питатель экструдера** |  | 2026-10-29 09:30 → 2026-11-11 09:30 (+13d) | 170.06d? → 181.06d? | 92% → 88% | 96.53d → 85.53d |  |  |
| 2813 | **прекондицинер экструдера** |  | 2026-10-29 09:15 → 2026-11-11 09:15 (+13d) | 130.03d → 141.03d | 67% → 57% | 96.56d → 85.56d |  |  |
| 2821 | **парогенератор** |  | 2026-10-29 10:00 → 2026-11-10 10:00 (+12d) | 155.12d → 165.12d | 88% → 82% | 96.47d → 86.47d |  |  |
| 2835 | **редуктор экструдера и маслянная станция** |  | 2026-10-29 09:30 → 2026-11-11 09:20 (+13d) | 452.06d → 463.04d | 43% → 54% | 96.53d → 85.55d |  |  |
| 2848 | **шкаф управления экструдером** |  | 2026-10-29 09:15 → 2026-11-11 09:15 (+13d) | 161.03d → 172.03d | 67% → 90% | 96.56d → 85.56d |  |  |
| 2853 | частотные привода экструдера, ножей, питателя - продувка | 2026-10-07 09:00 A | 2026-10-07 09:15 A |  | 0% → 100% | 113.56d → none |  |  |
| 2854 | частотные привода экструдера, ножей, питателя - продувка | 2026-10-21 09:00 A | 2026-10-21 09:15 A |  | 0% → 100% | 102.56d → none |  |  |
| 2855 | частотные привода экструдера, ножей, питателя - продувка | 2026-10-29 09:00 A | 2026-10-29 09:15 A |  | 0% → 100% | 96.56d → none |  |  |
| 2857 | **блок тэнов сушки** |  | 2026-10-29 09:15 → 2026-11-11 09:15 (+13d) | 125.03d → 136.03d | 56% → 90% | 96.56d → 85.56d |  |  |
| 2859 | ревизия/ проверка токов | 2026-08-26 09:00 A | 2026-08-26 09:15 A |  | 0% → 100% | 151.56d → none |  |  |
| 2861 | ревизия/ проверка токов | 2026-10-07 09:00 A | 2026-10-07 09:15 A |  | 0% → 100% | 113.56d → none |  |  |
| 2862 | ревизия/ проверка токов | 2026-10-21 09:00 A | 2026-10-21 09:15 A |  | 0% → 100% | 102.56d → none |  |  |
| 2863 | ревизия/ проверка токов | 2026-10-29 09:00 A | 2026-10-29 09:15 A |  | 0% → 100% | 96.56d → none |  |  |
| 2871 | Осмотр, продувка, протяжка контактов | 2026-10-21 09:00 A | 2026-10-21 09:20 A |  | 0% → 100% | 102.55d → none |  |  |
| 2872 | Осмотр, продувка, протяжка контактов | 2026-10-29 09:00 A | 2026-10-29 09:20 A |  | 0% → 100% | 96.55d → none |  |  |
| 2874 | **барабан смесительный дрожировка - прорверка подшипнки , реуктор** |  | 2026-10-29 09:15 → 2026-11-11 09:15 (+13d) | 180.03d → 191.03d | 85% → 93% | 96.56d → 85.56d |  |  |
| 2879 | Дефектовка - проверить подачу, вибрации, посторонние шумы/проверка фильтров/насосов/фитингов | 2026-10-21 09:00 A | 2026-10-21 09:15 A |  | 0% → 100% | 102.56d → none |  |  |
| 2880 | Дефектовка - проверить подачу, вибрации, посторонние шумы/проверка фильтров/насосов/фитингов | 2026-10-29 09:00 A | 2026-10-29 09:15 A |  | 0% → 100% | 96.56d → none |  |  |
| 2882 | **печь** |  | 2026-10-29 10:00 → 2026-11-11 10:00 (+13d) | 656.12d → 667.12d | 83% → 79% | 96.47d → 85.47d |  |  |
| 2901 | **линия 2** | 2023-12-29 09:00 A |  | 0.25d? → 0.25d |  |  |  |  |
| 2904 | **питатель экструдера** |  | 2026-10-29 09:30 → 2026-11-11 09:30 (+13d) | 170.06d → 181.06d | 77% → 71% | 96.53d → 85.53d |  |  |
| 2916 | **прекондицинер экструдера** |  | 2026-10-29 09:15 → 2026-11-11 09:15 (+13d) | 130.03d → 141.03d | 50% → 43% | 96.56d → 85.56d |  |  |
| 2924 | **парогенератор** |  | 2026-10-29 10:00 → 2026-11-11 10:00 (+13d) | 675.12d → 686.12d | 68% → 63% | 96.47d → 85.47d |  |  |
| 2935 | **шкаф управления экструдером** |  | 2026-10-29 09:15 → 2026-11-11 09:15 (+13d) | 175.03d → 186.03d | 70% → 64% | 96.56d → 85.56d |  |  |
| 2945 | **редуктор экструдера и маслянная станция** |  | 2026-10-29 09:30 → 2026-11-11 09:30 (+13d) | 125.06d → 136.06d | 64% → 58% | 96.53d → 85.53d |  |  |
| 2957 | **блок тэнов сушки - протяжка** |  | 2026-10-29 09:20 → 2026-11-11 09:20 (+13d) | 125.04d? → 136.04d? | 64% → 63% | 96.55d → 85.55d |  |  |
| 2965 | **шкаф управления тэнами сушки** |  | 2026-10-29 09:15 → 2026-11-11 09:15 (+13d) | 628.03d → 639.03d | 90% → 86% | 96.56d → 85.56d |  |  |
| 2979 | **Насос гидролизата** |  | 2026-07-29 09:30 A → 2026-11-11 09:30 (+105d) | 85.06d → 171.06d | 100% → 67% | none → 85.53d |  |  |
| 2983 | **Квадропак** |  | 2026-10-29 10:00 → 2026-11-11 10:00 (+13d) | 145.12d → 156.12d | 85% → 93% | 96.47d → 85.47d |  |  |

| ID | Task | Start | Finish | Duration | Complete | Total float |
| --- | --- | --- | --- | --- | --- | --- |
| 2994 | Осмотр, дефектовка, устранение неисправностей ,смазка по необходимости, протяжка болтов | 2026-10-21 09:00 A | 2026-10-21 10:00 A |  | 0% → 100% | 102.47d → none |
| 2995 | Осмотр, дефектовка, устранение неисправностей ,смазка по необходимости, протяжка болтов | 2026-10-29 09:00 A | 2026-10-29 10:00 A |  | 0% → 100% | 96.47d → none |
| 3006 | **жиротопка и насос перекачки жира** |  | 2026-10-29 09:15 → 2026-11-11 09:15 (+13d) | 675.03d → 686.03d | 17% → 14% | 96.56d → 85.56d |
| 3013 | **упаковщкики** |  | 2026-10-29 10:00 → 2026-11-11 10:00 (+13d) | 453.12d → 464.12d |  | 96.47d → 85.47d |
| 3031 | **электрооборудование** | 2023-12-29 09:00 A → 2026-05-20 09:00 (+873d) | 2026-10-14 10:00 → 2026-05-20 10:00 (-147d) | 736.12d? → 0.12d | 11% → 0% | 108.47d → 0d |
| 3038 | **Компрессор 1 цех** | 2026-06-07 09:00 A → 2023-12-29 09:00 A (-891d) | 2026-10-14 10:00 → 2026-10-29 10:00 (+15d) | 100.12d? → 748.12d? | 18% → 10% | 108.47d → 96.47d |
| 3058 | электроштабелер упаковка | 2023-12-28 09:00 → 2023-12-29 09:00 (+1d) | 2023-12-28 11:00 → 2023-12-29 11:00 (+1d) |  |  | 845.34d → 844.34d |
| 3059 | электроштабелер навески | 2023-12-28 09:00 → 2023-12-29 09:00 (+1d) | 2023-12-28 11:00 → 2023-12-29 11:00 (+1d) |  |  | 845.34d → 844.34d |

## Version 36 (saved 2026-11-12, file 07.09.26.mpp)

Last finish stays 2027-03-10. Complete tasks 2651 → 2673.

Added:

| ID | Task | Duration | Start | Finish | Constraint | Resources |
| --- | --- | --- | --- | --- | --- | --- |
| 890 | Найти на синем складе лопатки от прекондиционера LT 85 | 1h | 2026-11-13 09:00 | 2026-11-13 10:00 | start no earlier than 2026-11-13 09:00 | Тимофеев В |
| 891 | Повешать болер, горизонтальный, на мойке, где экструдер. Попросить помощи пацанов на экструдере | 1h | 2026-11-12 09:00 | 2026-11-12 10:00 | start no earlier than 2026-11-12 08:00 | Бундин В |
| 892 | Повесить на кухне информационный стенд | 1h | 2026-11-11 09:00 A | 2026-11-11 10:00 A | start no earlier than 2026-11-11 08:00 | Дедов В |
| 1620 | Найти кабель от щитка вентиляции 2 этаж бытовой комплекс (позвонить косте) распред щиток 1 этаж 3 колонна справа | 1h | 2026-11-12 09:00 | 2026-11-12 10:00 | start no earlier than 2026-11-12 08:00 | Бундин В |
| 1621 | Герметизация слива в душах (герметиком санитарным) | 2h | 2026-11-13 09:00 | 2026-11-13 11:00 | start no earlier than 2026-11-13 09:00 | Труфанов А; Некрасов А |
| 1622 | Врезать вентилятор в курилку и подключить | 3h | 2026-11-13 09:00 | 2026-11-13 12:00 | start no earlier than 2026-11-13 09:00 | Тимофеев В |
| 1623 | Срезать перемычки на загрузке сырья, мешают паллетам | 1h | 2026-11-12 09:00 | 2026-11-12 10:00 | start no earlier than 2026-11-12 08:00 | Бундин В |
| 1624 | Посмотреть работу нотиса возле стены, который долго запускался, сыпит без остановки, не срабатывает по весу (буду звонить производителям потом если не справимся сами) | 1h | 2026-11-12 09:00 | 2026-11-12 10:00 | start no earlier than 2026-11-12 08:00 | Бундин В |
| 1625 | Доработать конвейер на нотисах, много сыпит мимо | 2h | 2026-11-12 09:00 | 2026-11-12 11:00 | start no earlier than 2026-11-12 08:00 | Бундин В |
| 1626 | Сделать свет на выходе из охладителя, над полибоксом | 2h | 2026-11-12 09:00 | 2026-11-12 11:00 | start no earlier than 2026-11-12 08:00 | Бундин В |
| 1627 | Сделать доп свет на экструдере, повешать на козырек центральный, между печкой и прекондером, повесить на край ближе к стене | 2h | 2026-11-12 09:00 | 2026-11-12 11:00 | start no earlier than 2026-11-12 08:00 | Бундин В |
| 1628 | Ремонт насоса гидролизата, выяснить причину отсутствия вращения шнека/восстановить. Вслучае отсутствия возможности восстановить, получить на складе и установить насос НШГ, подключить его к канистре | 4h | 2026-11-11 09:00 A | 2026-11-11 13:00 A | start no earlier than 2026-11-11 08:00 | Дедов В |
| 1629 | **Освещение дражжировки** | 0.38d | 2026-11-11 09:00 A | 2026-11-11 12:00 A |  |  |
| 1630 | Повесить светильники на зонтики, взять любые длинные | 3h | 2026-11-11 09:00 A | 2026-11-11 12:00 A | start no earlier than 2026-11-11 08:00 | Дедов В |
| 1631 | Повесить светильник со стороны входа в барабан (не видно, как льется жир) | 1h | 2026-11-11 09:00 A | 2026-11-11 10:00 A | start no earlier than 2026-11-11 08:00 | Бундин В |
| 3734 | Установить ящики желаний (узнавать места размещений у Кости) | 2h | 2026-11-13 09:00 | 2026-11-13 11:00 | start no earlier than 2026-11-13 09:00 | Труфанов А; Некрасов А |

Changed:

| ID | Task | Start | Finish | Duration | Complete | Total float | Other |
| --- | --- | --- | --- | --- | --- | --- | --- |
| 10 | Засыпать пескобетон в сваи | 2026-11-05 09:00 → 2026-11-13 09:00 (+8d) | 2026-11-05 11:00 → 2026-11-13 11:00 (+8d) |  |  | 91.34d → 83.34d | constraint start no earlier than 2026-11-05 08:00 → start no earlier than 2026-11-13 09:00; resources Некрасов А → Некрасов А; Труфанов А |
| 116 | **бурение свай** |  | 2026-11-13 09:15 → 2026-11-16 09:15 (+3d) | 15.03d? → 16.03d? |  | 83.56d → 82.56d |  |
| 119 | примерка пластины с отверстием на сваю | 2026-11-13 09:00 → 2026-11-16 09:00 (+3d) | 2026-11-13 09:15 → 2026-11-16 09:15 (+3d) |  |  | 83.56d → 82.56d | constraint start no earlier than 2026-11-13 09:00 → start no earlier than 2026-11-16 09:00 |
| 146 | **реконструкция хранения гидролизатов и маршрут подачи навесок** |  | 2026-11-13 18:00 → 2026-11-17 18:00 (+4d) | 59d → 61d |  | 82.59d → 80.59d |  |
| 149 | **монтаж доп плащадки** |  | 2026-11-13 18:00 → 2026-11-17 18:00 (+4d) | 39d → 41d |  | 82.59d → 80.59d |  |
| 154 | монтаж | 2026-11-12 09:00 → 2026-11-16 09:00 (+4d) | 2026-11-13 18:00 → 2026-11-17 18:00 (+4d) |  |  | 82.59d → 80.59d | constraint start no earlier than 2026-11-12 09:00 → start no earlier than 2026-11-16 09:00 |
| 155 | **монтаж перегородка корридор** |  | 2026-11-13 18:00 → 2026-11-17 18:00 (+4d) | 16.97d → 18.97d |  | 82.59d → 80.59d |  |
| 157 | монтаж | 2026-11-12 09:00 → 2026-11-16 09:00 (+4d) | 2026-11-13 18:00 → 2026-11-17 18:00 (+4d) |  |  | 82.59d → 80.59d | constraint start no earlier than 2026-11-12 09:00 → start no earlier than 2026-11-16 09:00 |
| 893 | течь редуктор смесителя с стороны эл мотора - разборка /замена сальник\ | 2026-11-12 09:00 A | 2026-11-12 13:00 A |  | 0% → 100% | 84.09d → none |  |
| 1603 | **отмена** |  | 2026-11-30 11:30 → 2026-12-01 11:30 (+1d) | 90.31d? → 91.31d? |  | 72.28d → 71.28d |  |
| 1604 | **найти места утечки тепла под потолком- перемерзает труба подачи воды в 3 цех** |  | 2026-11-30 11:30 → 2026-12-01 11:30 (+1d) | 90.31d? → 91.31d? |  | 72.28d → 71.28d |  |
| 1607 | проверка пирометром / тепловизором | 2026-11-13 09:00 → 2026-11-16 09:00 (+3d) | 2026-11-13 11:00 → 2026-11-16 11:00 (+3d) |  |  | 72.28d → 71.28d | constraint start no earlier than 2026-11-13 09:00 → start no earlier than 2026-11-16 09:00 |
| 1608 | заявка (подумать материал) | 2026-11-13 11:00 → 2026-11-16 11:00 (+3d) | 2026-11-13 11:15 → 2026-11-16 11:15 (+3d) |  |  | 72.28d → 71.28d |  |
| 1609 | доставка- контроль | 2026-11-27 11:15 → 2026-11-30 11:15 (+3d) | 2026-11-27 11:30 → 2026-11-30 11:30 (+3d) |  |  | 72.28d → 71.28d |  |
| 1610 | монтаж | 2026-11-27 11:30 → 2026-11-30 11:30 (+3d) | 2026-11-30 11:30 → 2026-12-01 11:30 (+1d) |  |  | 72.28d → 71.28d |  |
| 1619 | **3 цех** |  | 2026-11-11 13:00 → 2026-11-13 12:00 (+2d) | 323.5d? → 325.38d? | 91% → 94% | 85.09d → 83.22d |  |
| 1632 | Поставить продувку на парогенераторе каждые 2ч интервал продувки 2 секунды. | 2026-11-10 09:00 A | 2026-11-10 09:30 A |  | 0% → 100% | 86.53d → none |  |
| 1634 | Поставить 2 светильника в туалеты 2 этаж | 2026-11-11 09:00 → 2026-11-13 09:00 (+2d) | 2026-11-11 10:00 → 2026-11-13 10:00 (+2d) |  |  | 85.47d → 83.47d | constraint start no earlier than 2026-11-11 09:00 → start no earlier than 2026-11-13 09:00 |
| 1635 | Сделать колесики на площадку для чистки прикондера | 2026-11-11 09:00 A | 2026-11-11 11:00 A |  | 0% → 100% | 85.34d → none |  |
| 1636 | Поставить запайщики, подключить педаль, по местам, проверить работоспособность | 2026-11-10 09:00 A | 2026-11-10 10:00 A |  | 0% → 100% | 86.47d → none |  |
| 1637 | Проверить нотисы, восстановить разъемы, восстановить снабжение сжатого воздуха | 2026-11-10 09:00 A | 2026-11-10 10:00 A |  | 0% → 100% | 86.47d → none |  |
| 1638 | отключить кабель нории, убрать с пола / консервация | 2026-11-10 09:00 A | 2026-11-10 10:00 A |  | 0% → 100% | 86.47d → none |  |
| 1640 | закрыть 2 щели из 3х на шнеке сухой гидролизат | 2026-11-10 09:00 A | 2026-11-10 10:00 A |  | 0% → 100% | 86.47d → none |  |
| 1641 | уборка железо на пандусе. Весь мсор / зип с цеха. Перемещение по складам | 2026-11-10 09:00 A | 2026-11-10 11:00 A |  | 0% → 100% | 86.34d → none |  |
| 1646 | **Маслонасосная станция** |  | 2026-11-10 11:00 A |  | 50% → 100% | 86.34d → none |  |
| 1648 | Поменять геркон на маслонасосной станции и запускать контактор через промежуточное реле (от катушки пускателя геркон сгорел) | 2026-11-10 09:00 A | 2026-11-10 11:00 A |  | 0% → 100% | 86.34d → none |  |
| 1649 | Разработка и установка схемы сигнализации маслонасосной станции экструдера | 2026-11-10 09:00 A | 2026-11-10 11:00 A |  | 0% → 100% | 86.34d → none |  |
| 1664 | Установка 2-х бойлеров по 100л, на женскую раздевалку и мужскую, определить контуры магистрали воды, определить где находится закладная | 2026-11-06 09:00 A | 2026-11-06 12:00 A |  | 0% → 100% | 90.22d → none |  |
| 1714 | **С двигателя экструдера выдавило много масла;** |  |  |  | 64% → 100% |  |  |
| 1719 | подключение датчика в схему - блокировка по уровню | 2026-11-06 11:00 A | 2026-11-06 16:00 A |  | 0% → 100% | 89.84d → none |  |
| 1764 | **карусель добавить перемычку снизу, чтобы не выпал мешок** |  | 2026-09-22 11:00 A |  | 93% → 100% | 127.34d → none |  |
| 1766 | контроль доставки | 2026-08-31 09:00 A | 2026-08-31 09:10 A |  | 0% → 100% | 148.57d → none |  |
| 1894 | **автоматика управления смесителями** |  | 2026-08-24 12:00 A |  | 91% → 100% | 153.22d → none |  |
| 1898 | уложить красиво все провода в шкафу управления смесителями | 2026-08-24 09:00 A | 2026-08-24 12:00 A |  | 0% → 100% | 153.22d → none |  |
| 1950 | тест герметичности. жиропровод нерж оборудовать греющим кабелем + утеплитель. | 2026-06-01 09:00 A | 2026-06-01 11:00 A |  | 0% → 100% | 213.34d → none |  |
| 1957 | труба выход пара греет шнек - переместить | 2026-06-19 09:00 A | 2026-06-19 18:00 A |  | 0% → 100% | 198.59d → none |  |
| 1962 | Переделка входа пневмотрассы с печи на жиры, сделать плавный переход из двух углов по 45 | 2026-07-24 09:00 A | 2026-07-24 13:00 A |  | 0% → 100% | 174.09d → none |  |
| 2790 | **1 цех** |  |  |  | 79% → 80% |  |  |
| 2814 | **линия 1** |  |  |  | 81% → 84% |  |  |
| 2836 | **парогенератор** |  |  |  | 82% → 88% |  |  |
| 2849 | Чистка парогенератора (начать как встанут) | 2026-11-10 09:00 A | 2026-11-10 10:00 A |  | 0% → 100% | 86.47d → none |  |
| 3733 | **администрантивные** |  | 2026-10-28 10:00 → 2026-11-13 11:00 (+16d) | 168.12d → 182.25d | 89% → 87% | 97.47d → 83.34d |  |

## Version 37 (saved 2026-11-13, file 07.09.26.mpp)

Last finish stays 2027-03-10. Complete tasks 2673 → 2676.

Added:

| ID | Task | Duration | Start | Finish | Predecessors | Constraint | Resources |
| --- | --- | --- | --- | --- | --- | --- | --- |
| 890 | состаивть инструкцию по эксплуатации на пролистыватель | 4h | 2026-11-17 09:00 | 2026-11-17 13:00 |  | start no earlier than 2026-11-17 09:00 | Зорькин В |
| 891 | заменаить лопатки на прекондиционере | 4h | 2026-11-19 09:00 | 2026-11-19 13:00 |  | start no earlier than 2026-11-19 09:00 | Некрасов А; Тимофеев В |
| 892 | ремонт ручка двери заявка битрикс | 1h | 2026-11-13 09:00 | 2026-11-13 10:00 |  | start no earlier than 2026-11-13 08:00 | Тимофеев В |
| 1623 | доработаь рукоятку переключения брака после ножейчто бы фиксировалась в закрытом положении. Времянку убрать | 1h | 2026-11-14 09:00 | 2026-11-14 10:00 |  | start no earlier than 2026-11-14 09:00 | Макаревич А |
| 1624 | удалить смазку с цепи сетки печи. Спирт получить на складе/развести по инструкции. Все этажи. Уголок попробывать закрепить тряпку к цепи. | 6h | 2026-11-14 09:00 | 2026-11-14 16:00 |  | start no earlier than 2026-11-14 09:00 | Бундин В |
| 1625 | смазка цепей печи пищевой смазкой. Не борщить. | 6h | 2026-11-15 09:00 | 2026-11-15 16:00 |  | start no earlier than 2026-11-15 09:00 | Бундин В |
| 1626 | доработать ловушки гранулы между этажами, что бы не разлеталась - образец от Тимофеева + удлинить 20-30см по ходу сетки. Все этажи | 1d? | 2026-11-16 09:00 | 2026-11-16 18:00 |  | start no earlier than 2026-11-16 09:00 | Николаев; Макаревич А |
| 1627 | вырезть окна в лотке после печи для сброса в ведро/мешок гранулы 10см от цепи привода сетки. Крепление для ведра/мешка | 4h | 2026-11-15 09:00 | 2026-11-15 13:00 |  | start no earlier than 2026-11-15 09:00 | Макаревич А; Николаев |
| 1628 | монтаж светильник над раковина жиры | 2h | 2026-11-13 09:00 | 2026-11-13 11:00 |  | start no earlier than 2026-11-13 08:00 | Бундин В |
| 1629 | установить розетку для весов гидролизата | 1h | 2026-11-13 09:00 | 2026-11-13 10:00 |  | start no earlier than 2026-11-13 08:00 | Бундин В |
| 1630 | полку для канистры гидролизата нарастить на 20 см, проверить что бы вошли весы | 3h | 2026-11-18 09:00 | 2026-11-18 12:00 |  | start no earlier than 2026-11-18 09:00 | Некрасов А |
| 1631 | **Установить частотный преобразователь на барабан этра** | 10.28d | 2026-11-16 09:00 | 2026-11-30 11:15 |  |  |  |
| 1632 | заявка частотники | 15min | 2026-11-16 09:00 | 2026-11-16 09:15 |  | start no earlier than 2026-11-16 09:00 | Зорькин В |
| 1633 | доставка конроль | 10d | 2026-11-16 09:15 | 2026-11-30 09:15 | 1632 | start no earlier than 2026-11-13 08:00 | Зорькин В |
| 1634 | монтаж | 2h | 2026-11-30 09:15 | 2026-11-30 11:15 | 1633 | start no earlier than 2026-11-13 08:00 | Тимофеев В |
| 1638 | заявка вентилятор | 15min | 2026-11-13 09:00 A | 2026-11-13 09:15 A |  | start no earlier than 2026-11-13 08:00 | Домоводов К |
| 1639 | заявка обратный клапан/тройник/дифузоры на вентилятор ВК200Б | 30min | 2026-11-16 09:00 | 2026-11-16 09:30 |  | start no earlier than 2026-11-16 09:00 | Зорькин В; Труфанов А |
| 1640 | доставка контроль | 7d | 2026-11-16 09:30 | 2026-11-25 09:30 | 1638, 1639 | start no earlier than 2026-11-13 08:00 | Зорькин В |
| 1641 | монтаж | 4h | 2026-11-25 09:30 | 2026-11-25 14:30 | 1640 | start no earlier than 2026-11-13 08:00 | Тимофеев В |
| 2559 | бойлер с 2ц на ремонт / проверка потенциометра | 2h | 2026-11-13 09:00 | 2026-11-13 11:00 |  | start no earlier than 2026-11-13 08:00 | Бундин В |
| 3476 | вызвать сервисного инженера на ТО | 15min | 2026-11-16 09:00 | 2026-11-16 09:15 |  | start no earlier than 2026-11-16 09:00 | Зорькин В; Труфанов А |

Changed:

| ID | Task | Start | Finish | Duration | Complete | Total float | Predecessors | Other |
| --- | --- | --- | --- | --- | --- | --- | --- | --- |
| 10 | Засыпать пескобетон в сваи | 2026-11-13 09:00 → 2026-11-16 09:00 (+3d) | 2026-11-13 11:00 → 2026-11-16 11:00 (+3d) |  |  | 83.34d → 82.34d |  | constraint start no earlier than 2026-11-13 09:00 → start no earlier than 2026-11-16 09:00 |
| 100 | **сборка рама для труб приточной вентиляции** |  |  | 26d? → 28d? |  |  |  |  |
| 116 | **бурение свай** |  |  | 16.03d? → 18.03d? |  |  |  |  |
| 146 | **реконструкция хранения гидролизатов и маршрут подачи навесок** |  |  | 61d → 63d |  |  |  |  |
| 149 | **монтаж доп плащадки** |  |  | 41d → 43d |  |  |  |  |
| 155 | **монтаж перегородка корридор** |  |  | 18.97d → 20.97d |  |  |  |  |
| 219 | **продумать как сделать герметичную крышку на смесителе сухого гидрализата** |  | 2026-11-13 11:00 → 2026-11-16 11:00 (+3d) | 67.25d → 70.25d |  | 83.34d → 82.34d |  |  |
| 224 | установка на струбцинах с уплотнителями | 2026-11-13 09:00 → 2026-11-16 09:00 (+3d) | 2026-11-13 11:00 → 2026-11-16 11:00 (+3d) |  |  | 83.34d → 82.34d |  | constraint start no earlier than 2026-11-13 09:00 → start no earlier than 2026-11-16 09:00 |
| 415 | **установить автоматику запуска шнека + смеситель по датчику уровня сырья в бункере экструдера** |  |  | 24d? → 26d? |  |  |  |  |
| 791 | **карантин и потом удалить** |  | 2026-11-18 11:00 → 2026-12-09 11:00 (+21d) | 189.25d? → 206.25d? |  | 80.34d → 65.34d |  |  |
| 815 | **сборка раковина нерж для мойки конвейер** | 2026-11-09 09:00 → 2026-11-30 09:00 (+21d) | 2026-11-18 11:00 → 2026-12-09 11:00 (+21d) |  |  | 80.34d → 65.34d |  |  |
| 816 | подготовить данные, оформить как проект / инициировать совещание | 2026-11-09 09:00 → 2026-11-30 09:00 (+21d) | 2026-11-09 11:00 → 2026-11-30 11:00 (+21d) |  |  | 80.34d → 65.34d |  | constraint start no earlier than 2026-11-09 09:00 → start no earlier than 2026-11-30 09:00 |
| 817 | совещание с руководителями / фиксация решения | 2026-11-10 11:00 → 2026-12-01 11:00 (+21d) | 2026-11-11 11:00 → 2026-12-02 11:00 (+21d) |  |  | 80.34d → 65.34d |  |  |
| 818 | подготовить чертеж раковины, проверить материал | 2026-11-12 11:00 → 2026-12-03 11:00 (+21d) | 2026-11-13 11:00 → 2026-12-04 11:00 (+21d) |  |  | 80.34d → 65.34d |  |  |
| 819 | сборка | 2026-11-16 11:00 → 2026-12-07 11:00 (+21d) | 2026-11-18 11:00 → 2026-12-09 11:00 (+21d) |  |  | 80.34d → 65.34d |  |  |
| 894 | Повешать болер, горизонтальный, на мойке, где экструдер. Попросить помощи пацанов на экструдере | 2026-11-12 09:00 A | 2026-11-12 10:00 A |  | 0% → 100% | 84.47d → none |  |  |
| 966 | **установить аспирационный рукав в зону бункера + фильтр + выход в цех/или общ обменную вент** |  | 2026-11-25 09:45 → 2026-11-23 09:45 (-2d) |  |  | 75.5d → 77.5d |  |  |
| 968 | доставка контроль | 2026-11-23 09:30 → 2026-11-19 09:30 (-4d) | 2026-11-23 09:45 → 2026-11-19 09:45 (-4d) |  |  | 75.5d → 77.5d |  |  |
| 969 | монтаж аспирационная установка | 2026-11-24 09:45 → 2026-11-20 09:45 (-4d) | 2026-11-25 09:45 → 2026-11-23 09:45 (-2d) |  |  | 75.5d → 77.5d |  |  |
| 1076 | **усиление подогрев приточной вентиляции** |  | 2026-11-24 14:15 → 2026-11-20 14:15 (-4d) |  |  | 76.06d → 78.06d |  |  |
| 1080 | контроль поствки | 2026-11-23 14:00 → 2026-11-19 14:00 (-4d) | 2026-11-23 14:15 → 2026-11-19 14:15 (-4d) |  |  | 76.06d → 78.06d |  |  |
| 1081 | монтаж | 2026-11-23 14:15 → 2026-11-19 14:15 (-4d) | 2026-11-24 14:15 → 2026-11-20 14:15 (-4d) |  |  | 76.06d → 78.06d |  |  |
| 1587 | **схема блокировки роль ворот при открытым шлюзе + авт закрытие + датчик препятствия** |  |  | 22.5d → 24.5d |  |  |  |  |
| 1606 | **отмена** |  |  | 91.31d? → 93.31d? |  |  |  |  |
| 1607 | **найти места утечки тепла под потолком- перемерзает труба подачи воды в 3 цех** |  |  | 91.31d? → 93.31d? |  |  |  |  |
| 1622 | **3 цех** |  | 2026-11-13 12:00 → 2026-11-30 11:15 (+17d) | 325.38d? → 338.28d? | 94% → 79% | 83.22d → 72.31d |  |  |
| 1635 | Найти кабель от щитка вентиляции 2 этаж бытовой комплекс (позвонить косте) распред щиток 1 этаж 3 колонна справа | 2026-11-12 09:00 A | 2026-11-12 10:00 A |  | 0% → 100% | 84.47d → none |  |  |
| 1636 | Герметизация слива в душах (герметиком санитарным) | 2026-11-13 09:00 → 2026-11-15 09:00 (+2d) | 2026-11-13 11:00 → 2026-11-15 11:00 (+2d) |  |  |  |  | constraint start no earlier than 2026-11-13 09:00 → start no earlier than 2026-11-15 09:00; resources Труфанов А; Некрасов А → Макаревич А; Николаев |
| 1637 | **Врезать вентилятор в курилку и подключить** | 2026-11-13 09:00 A | 2026-11-13 12:00 → 2026-11-25 14:30 (+12d) | 3h → 10.56d |  | 83.22d → 75.03d |  | constraint start no earlier than 2026-11-13 09:00 → none; resources Тимофеев В → none |
| 1642 | Срезать перемычки на загрузке жиров, мешают паллетам | 2026-11-12 09:00 → 2026-11-19 09:00 (+7d) | 2026-11-12 10:00 → 2026-11-19 10:00 (+7d) |  |  | 84.47d → 79.47d |  | was named Срезать перемычки на загрузке сырья, мешают паллетам; constraint start no earlier than 2026-11-12 08:00 → start no earlier than 2026-11-19 09:00 |
| 1643 | Посмотреть работу нотиса возле стены, который долго запускался, сыпит без остановки, не срабатывает по весу (буду звонить производителям потом если не справимся сами) | 2026-11-12 09:00 → 2026-11-14 09:00 (+2d) | 2026-11-12 10:00 → 2026-11-14 11:00 (+2d) | 1h → 2h |  | 84.47d → 84.34d |  | constraint start no earlier than 2026-11-12 08:00 → start no earlier than 2026-11-14 09:00; resources Бундин В → Макаревич А; Николаев |
| 1644 | Доработать конвейер на нотисах, много сыпит вниз в щели | 2026-11-12 09:00 → 2026-11-15 09:00 (+3d) | 2026-11-12 11:00 → 2026-11-15 13:00 (+3d) | 2h → 4h |  | 84.34d → 83.09d |  | was named Доработать конвейер на нотисах, много сыпит мимо; constraint start no earlier than 2026-11-12 08:00 → start no earlier than 2026-11-15 09:00; resources Бундин В → Макаревич А; Николаев |
| 1645 | Сделать свет на выходе из охладителя, над полибоксом | 2026-11-12 09:00 → 2026-11-13 09:00 (+1d) | 2026-11-12 11:00 → 2026-11-13 11:00 (+1d) |  |  | 84.34d → 85.34d |  | constraint start no earlier than 2026-11-12 08:00 → start no earlier than 2026-11-13 09:00 |
| 1646 | Сделать доп свет на экструдере, повешать на козырек центральный, между печкой и прекондером, повесить на край ближе к стене | 2026-11-12 09:00 → 2026-11-14 09:00 (+2d) | 2026-11-12 11:00 → 2026-11-14 13:00 (+2d) | 2h → 4h |  | 84.34d → 84.09d |  | constraint start no earlier than 2026-11-12 08:00 → start no earlier than 2026-11-14 09:00; resources Бундин В → Макаревич А; Николаев |
| 1653 | Поставить 2 светильника в туалеты 2 этаж |  |  |  |  | 83.47d → 85.47d |  | resources Труфанов А; Некрасов А → Бундин В |
| 1668 | Тест печей (на просадку температур) 3 и 4 зона, сначало нагреть, потом отключить первые контуры постоянного нагрева |  |  |  |  |  | 1665 → none |  |
| 2003 | **5 цех** |  |  | 972.25d? → 974.25d? |  |  |  |  |
| 2033 | **монтаж тепловые пушки подвесные 5 цех** |  |  | 75d → 77d |  |  |  |  |
| 2045 | **ремонт насос водоснабжения** |  |  | 71.25d → 73.25d |  |  |  |  |
| 2125 | **востановить коробку тельфера** |  |  | 184.25d → 186.25d |  |  |  |  |
| 2320 | **модернизация** |  |  | 986.5d? → 988.5d? |  |  |  |  |
| 2365 | **качественное нанесение жира тесты** |  |  | 273.5d? → 275.5d? |  |  |  |  |
| 2558 | **ЗИП ремонт** |  |  | 671.25d? → 673.25d? |  |  |  |  |
| 2806 | **ТО** |  | 2026-11-27 11:00 → 2026-11-25 11:00 (-2d) |  |  | 73.34d → 75.34d |  |  |
| 2935 | **линия 2** |  |  | 0.25d → 0.25d? |  |  |  |  |
| 3097 | **2 цех** |  | 2026-11-27 11:00 → 2026-11-25 11:00 (-2d) |  |  | 73.34d → 75.34d |  |  |
| 3145 | **привод сетки ПЕЧИ сушки** |  | 2026-11-27 11:00 → 2026-11-25 11:00 (-2d) |  |  | 73.34d → 75.34d |  |  |
| 3158 | смазка цепей пищ смазкой по графику 3 мес | 2026-11-27 10:00 → 2026-11-25 10:00 (-2d) | 2026-11-27 11:00 → 2026-11-25 11:00 (-2d) |  |  | 73.34d → 75.34d |  |  |
| 3467 | **Компрессор 2 цех** |  | 2026-09-17 09:30 → 2026-11-16 09:15 (+60d) | 33.06d → 85.03d | 99% → 94% | 0d → 82.56d |  |  |
| 3667 | **склад упаковки** |  | 2026-11-20 10:30 → 2026-11-23 10:30 (+3d) | 177.19d? → 180.19d? |  | 78.41d → 77.41d |  |  |
| 3668 | **ремонт роль ворот** | 2026-11-10 09:00 → 2026-11-13 09:00 (+3d) | 2026-11-20 10:30 → 2026-11-23 10:30 (+3d) |  |  | 78.41d → 77.41d |  |  |
| 3669 | заявка ролик | 2026-11-10 09:00 → 2026-11-13 09:00 (+3d) | 2026-11-10 09:15 → 2026-11-13 09:15 (+3d) |  |  | 78.41d → 77.41d |  | constraint start no earlier than 2026-11-10 09:00 → start no earlier than 2026-11-13 09:00; resources Зорькин В → Домоводов К |
| 3670 | контроль доставка | 2026-11-19 09:15 → 2026-11-20 09:15 (+1d) | 2026-11-19 09:30 → 2026-11-20 09:30 (+1d) |  |  | 78.41d → 77.41d |  |  |
| 3671 | замена | 2026-11-20 09:30 → 2026-11-23 09:30 (+3d) | 2026-11-20 10:30 → 2026-11-23 10:30 (+3d) |  |  | 78.41d → 77.41d |  |  |
| 3694 | **РЭФ контейнеры** |  |  | 215.59d? → 217.59d? |  |  |  |  |
| 3753 | **администрантивные** |  | 2026-11-13 11:00 → 2026-11-16 11:00 (+3d) | 182.25d → 185.25d |  | 83.34d → 82.34d |  |  |
| 3754 | Установить ящики желаний (узнавать места размещений у Кости) | 2026-11-13 09:00 → 2026-11-16 09:00 (+3d) | 2026-11-13 11:00 → 2026-11-16 11:00 (+3d) |  |  | 83.34d → 82.34d |  | constraint start no earlier than 2026-11-13 09:00 → start no earlier than 2026-11-16 09:00 |
| 3768 | **ТБ** |  |  | 931.25d? → 933.25d? |  |  |  |  |

## Version 38 (saved 2026-11-16, file 07.09.26.mpp)

Last finish stays 2027-03-10. Complete tasks 2676 → 2696.

Added:

| ID | Task | Duration | Start | Finish | Predecessors | Constraint | Resources |
| --- | --- | --- | --- | --- | --- | --- | --- |
| 2 | Повторить заявку на комплектующие для автоматической подачи сырья из смесителей | 1h | 2026-11-16 09:00 | 2026-11-16 10:00 |  | start no earlier than 2026-11-16 08:00 | Дедов В; Зорькин В |
| 30 | Монтаж насоса, взять в кабинете оги | 2h | 2026-11-17 09:00 | 2026-11-17 11:00 |  | start no earlier than 2026-11-17 09:00 | Дедов В |
| 103 | Срезать кончики свай на 300 | 2h | 2026-11-17 09:00 | 2026-11-17 11:00 |  | start no earlier than 2026-11-17 09:00 | Труфанов А; Некрасов А |
| 104 | Монтаж головок | 1h | 2026-11-17 10:00 | 2026-11-17 11:00 | 105 |  | Труфанов А; Некрасов А |
| 105 | Лазером сделать привязки свай относительно вентиляции (колонны здания) | 1h | 2026-11-17 09:00 | 2026-11-17 10:00 |  | start no earlier than 2026-11-17 09:00 | Труфанов А; Некрасов А |
| 106 | Монтаж арматурной сетки | 4h | 2026-11-17 09:00 | 2026-11-17 13:00 |  | start no earlier than 2026-11-17 09:00 | Труфанов А; Некрасов А |
| 1629 | Установить частотник на вращение барабанов 3 цех | 1h | 2026-11-17 09:00 | 2026-11-17 10:00 |  | start no earlier than 2026-11-17 09:00 | Дедов В |
| 1630 | Тест оборудование перед запуском | 2h | 2026-11-17 09:00 | 2026-11-17 11:00 | 1636 |  | Тимофеев В |
| 1631 | Тест печки с кормом, на поток гранулы, попадает ли к цепям или нет, как работает модернизация. | 2h | 2026-11-16 09:00 | 2026-11-16 11:00 |  | start no earlier than 2026-11-16 08:00 | Макаревич А; Николаев |
| 1632 | Установить на место ссыпную воронку после печи, сделать упоры? | 1h | 2026-11-16 09:00 A | 2026-11-16 10:00 A |  | start no earlier than 2026-11-16 08:00 | Труфанов А; Некрасов А |
| 2535 | Подготовка к инвентаризации | 6h | 2026-11-16 09:00 | 2026-11-16 16:00 |  | start no earlier than 2026-11-16 08:00 | Тимофеев В |
| 2570 | Восстановление электродов в слесарке | 3h | 2026-11-17 09:00 | 2026-11-17 12:00 |  | start no earlier than 2026-11-17 09:00 | Дедов В |
| 3584 | Маркировка оборудования по списку с кладовщиком, взять красные стикеры и пометить | 3h | 2026-11-17 09:00 | 2026-11-17 12:00 |  | start no earlier than 2026-11-17 09:00 | Тимофеев В |

Changed:

| ID | Task | Start | Finish | Duration | Complete | Total float | Predecessors | Other |
| --- | --- | --- | --- | --- | --- | --- | --- | --- |
| 6 | калибровка пид регулятор печи 2 | 2026-11-09 09:00 → 2026-11-16 09:00 (+7d) | 2026-11-09 10:00 → 2026-11-16 10:00 (+7d) |  |  | 89.47d → 82.47d |  | constraint start no earlier than 2026-11-09 08:00 → start no earlier than 2026-11-16 09:00; resources Николаев → Дедов В |
| 7 | ремонт силиконовой резинки выход из печи 1 | 2026-11-11 09:00 → 2026-11-18 09:00 (+7d) | 2026-11-11 10:00 → 2026-11-18 10:00 (+7d) |  |  | 87.47d → 80.47d |  | constraint start no earlier than 2026-11-11 09:00 → start no earlier than 2026-11-18 09:00 |
| 8 | 2 линия ремонт сквозной ржавчины прекондиционера возле горла | 2026-11-11 09:00 → 2026-11-18 09:00 (+7d) | 2026-11-11 11:00 → 2026-11-18 11:00 (+7d) |  |  | 87.34d → 80.34d |  | constraint start no earlier than 2026-11-11 09:00 → start no earlier than 2026-11-18 09:00 |
| 11 | Засыпать пескобетон в сваи | 2026-11-16 09:00 A | 2026-11-16 11:00 A |  | 0% → 100% | 82.34d → none |  |  |
| 17 | установить датчики температуры для прекондиционера (механический, со стрелкой) | 2026-11-03 09:00 A | 2026-11-03 10:00 A |  | 0% → 100% | 95.47d → none |  |  |
| 24 | Поставить насос 12В через расходомер линия 2 | 2026-11-04 09:00 → 2026-11-18 09:00 (+14d) | 2026-11-04 10:00 → 2026-11-18 10:00 (+14d) |  |  | 94.47d → 80.47d |  | constraint start no earlier than 2026-11-04 09:00 → start no earlier than 2026-11-18 09:00 |
| 26 | **Собрать канистру для подачи воды в экструдер, по аналогу 3 цех. Промежуточный бак 2 шт** |  | 2026-11-11 10:00 → 2026-11-17 11:00 (+6d) | 11.12d → 17.25d | 29% → 12% | 87.47d → 81.34d |  |  |
| 29 | монтаж | 2026-11-11 09:00 → 2026-11-17 09:00 (+6d) | 2026-11-11 10:00 → 2026-11-17 10:00 (+6d) |  |  | 87.47d → 81.47d |  | constraint start no earlier than 2026-11-11 09:00 → start no earlier than 2026-11-17 09:00; resources Бундин В → Дедов В |
| 102 | **сборка рама для труб приточной вентиляции** |  | 2026-11-16 18:00 → 2026-11-20 18:00 (+4d) | 28d? → 32d? | 69% → 64% | 81.59d → 77.59d |  |  |
| 112 | **покраска металл** |  | 2026-11-10 12:00 A |  | 78% → 100% | 88.22d → none |  |  |
| 113 | Докрасить металл на рампе | 2026-11-10 09:00 A | 2026-11-10 12:00 A |  | 0% → 100% | 88.22d → none |  |  |
| 122 | **бурение свай** |  | 2026-11-16 09:15 → 2026-11-20 09:15 (+4d) | 18.03d? → 22.03d? |  | 82.56d → 78.56d |  |  |
| 125 | примерка пластины с отверстием на сваю | 2026-11-16 09:00 → 2026-11-20 09:00 (+4d) | 2026-11-16 09:15 → 2026-11-20 09:15 (+4d) |  |  | 82.56d → 78.56d |  | constraint start no earlier than 2026-11-16 09:00 → start no earlier than 2026-11-20 09:00 |
| 129 | монтаж рама на цех краном | 2026-11-16 09:00 → 2026-11-20 09:00 (+4d) | 2026-11-16 18:00 → 2026-11-20 18:00 (+4d) |  |  | 81.59d → 77.59d |  | constraint start no earlier than 2026-11-16 09:00 → start no earlier than 2026-11-20 09:00 |
| 152 | **реконструкция хранения гидролизатов и маршрут подачи навесок** |  | 2026-11-17 18:00 → 2026-11-23 18:00 (+6d) | 63d → 67d |  | 80.59d → 76.59d |  |  |
| 155 | **монтаж доп плащадки** |  | 2026-11-17 18:00 → 2026-11-23 18:00 (+6d) | 43d → 47d |  | 80.59d → 76.59d |  |  |
| 160 | монтаж | 2026-11-16 09:00 → 2026-11-20 09:00 (+4d) | 2026-11-17 18:00 → 2026-11-23 18:00 (+6d) |  |  | 80.59d → 76.59d |  | constraint start no earlier than 2026-11-16 09:00 → start no earlier than 2026-11-20 09:00 |
| 161 | **монтаж перегородка корридор** |  | 2026-11-17 18:00 → 2026-11-23 18:00 (+6d) | 20.97d → 24.97d |  | 80.59d → 76.59d |  |  |
| 163 | монтаж | 2026-11-16 09:00 → 2026-11-20 09:00 (+4d) | 2026-11-17 18:00 → 2026-11-23 18:00 (+6d) |  |  | 80.59d → 76.59d |  | constraint start no earlier than 2026-11-16 09:00 → start no earlier than 2026-11-20 09:00 |
| 225 | **продумать как сделать герметичную крышку на смесителе сухого гидрализата** |  | 2026-11-16 11:00 → 2026-11-18 11:00 (+2d) | 70.25d → 72.25d | 57% → 86% | 82.34d → 80.34d |  |  |
| 226 | печать уплотненителей крышек | 2026-09-28 09:00 A | 2026-09-28 13:00 A |  | 0% → 100% | 122.84d → none |  |  |
| 227 | контроль доставка резинка упл | 2026-10-28 09:00 A | 2026-10-28 09:05 A |  | 0% → 100% | 99.33d → none |  |  |
| 230 | установка на струбцинах с уплотнителями | 2026-11-16 09:00 → 2026-11-18 09:00 (+2d) | 2026-11-16 11:00 → 2026-11-18 11:00 (+2d) |  |  | 82.34d → 80.34d |  | constraint start no earlier than 2026-11-16 09:00 → start no earlier than 2026-11-18 09:00 |
| 898 | ремонт ручка двери заявка битрикс | 2026-11-13 09:00 A | 2026-11-13 10:00 A |  | 0% → 100% | 85.47d → none |  | constraint start no earlier than 2026-11-13 08:00 → start no earlier than 2026-11-17 09:00; resources Тимофеев В → Дедов В |
| 899 | Найти на синем складе лопатки от прекондиционера LT 85 | 2026-11-13 09:00 → 2026-11-17 09:00 (+4d) | 2026-11-13 10:00 → 2026-11-17 10:00 (+4d) |  |  | 85.47d → 81.47d |  | constraint start no earlier than 2026-11-13 09:00 → start no earlier than 2026-11-17 09:00 |
| 951 | **востановить работу пирометра печи** |  | 2026-10-30 11:00 → 2026-11-20 11:00 (+21d) | 7.25d → 26.25d |  | 97.34d → 78.34d |  |  |
| 953 | Подключить кабель датчика пирометра с печи, разобраться, где что | 2026-10-30 09:00 → 2026-11-20 09:00 (+21d) | 2026-10-30 11:00 → 2026-11-20 11:00 (+21d) |  |  | 97.34d → 78.34d |  | constraint start no earlier than 2026-10-30 09:00 → start no earlier than 2026-11-20 09:00 |
| 967 | **пыление при загрузке при высыпании из мешка в бункер дозатора** |  | 2026-10-30 13:00 → 2026-10-29 14:15 (-1d) | 23.5d → 22.53d |  | 97.09d → 98.06d |  |  |
| 968 | **изготовить рукав на дозатор для помещения в него мешка из гибкого герметичного матриала** |  | 2026-10-30 13:00 → 2026-10-29 14:15 (-1d) | 23.5d → 22.53d |  | 97.09d → 98.06d |  |  |
| 971 | изготовление мешка | 2026-10-30 09:00 → 2026-10-29 09:15 (-1d) | 2026-10-30 13:00 → 2026-10-29 14:15 (-1d) |  |  | 97.09d → 98.06d |  | constraint start no earlier than 2026-10-30 09:00 → start no earlier than 2026-10-22 09:00 |
| 1612 | **отмена** |  | 2026-12-01 11:30 → 2026-12-07 11:30 (+6d) | 93.31d? → 97.31d? |  | 71.28d → 67.28d |  |  |
| 1613 | **найти места утечки тепла под потолком- перемерзает труба подачи воды в 3 цех** |  | 2026-12-01 11:30 → 2026-12-07 11:30 (+6d) | 93.31d? → 97.31d? |  | 71.28d → 67.28d |  |  |
| 1616 | проверка пирометром / тепловизором | 2026-11-16 09:00 → 2026-11-20 09:00 (+4d) | 2026-11-16 11:00 → 2026-11-20 11:00 (+4d) |  |  | 71.28d → 67.28d |  | constraint start no earlier than 2026-11-16 09:00 → start no earlier than 2026-11-20 09:00 |
| 1617 | заявка (подумать материал) | 2026-11-16 11:00 → 2026-11-20 11:00 (+4d) | 2026-11-16 11:15 → 2026-11-20 11:15 (+4d) |  |  | 71.28d → 67.28d |  |  |
| 1618 | доставка- контроль | 2026-11-30 11:15 → 2026-12-04 11:15 (+4d) | 2026-11-30 11:30 → 2026-12-04 11:30 (+4d) |  |  | 71.28d → 67.28d |  |  |
| 1619 | монтаж | 2026-11-30 11:30 → 2026-12-04 11:30 (+4d) | 2026-12-01 11:30 → 2026-12-07 11:30 (+6d) |  |  | 71.28d → 67.28d |  |  |
| 1628 | **3 цех** |  |  |  | 79% → 81% |  |  |  |
| 1633 | доработаь рукоятку переключения брака после ножейчто бы фиксировалась в закрытом положении. Времянку убрать | 2026-11-14 09:00 A | 2026-11-14 10:00 A |  | 0% → 100% | 84.47d → none |  |  |
| 1634 | удалить смазку с цепи сетки печи. Спирт получить на складе/развести по инструкции. Все этажи. Уголок попробывать закрепить тряпку к цепи. | 2026-11-14 09:00 A | 2026-11-14 16:00 A |  | 0% → 100% | 83.84d → none |  |  |
| 1635 | смазка цепей печи пищевой смазкой. Не борщить. | 2026-11-15 09:00 A | 2026-11-15 16:00 A |  | 0% → 100% | 82.84d → none |  |  |
| 1636 | доработать ловушки гранулы между этажами, что бы не разлеталась - образец от Тимофеева + удлинить 20-30см по ходу сетки. Все этажи |  |  | 1d? → 8h |  | 81.59d → 81.34d |  |  |
| 1637 | вырезть окна в лотке после печи для сброса в ведро/мешок гранулы 10см от цепи привода сетки. Крепление для ведра/мешка | 2026-11-15 09:00 A | 2026-11-15 13:00 A |  | 0% → 100% | 83.09d → none |  |  |
| 1638 | монтаж светильник над раковина жиры | 2026-11-13 09:00 A | 2026-11-13 11:00 A |  | 0% → 100% | 85.34d → none |  |  |
| 1640 | полку для канистры гидролизата нарастить на 20 см, проверить что бы вошли весы |  |  |  |  |  |  | resources Некрасов А → Макаревич А; Николаев |
| 2021 | Подготовка к монтажу доп отопления 5 цех. Собрать список материала, чего не хватает. Что расстаскали |  |  |  |  |  | 2304 → none |  |
| 2043 | **монтаж тепловые пушки подвесные 5 цех** |  | 2026-11-18 18:00 → 2026-12-01 18:00 (+13d) | 77d → 86d |  | 79.59d → 70.59d |  |  |
| 2048 | монтаж | 2026-11-17 09:00 → 2026-11-30 09:00 (+13d) | 2026-11-18 18:00 → 2026-12-01 18:00 (+13d) |  |  | 79.59d → 70.59d |  | constraint start no earlier than 2026-11-17 09:00 → start no earlier than 2026-11-30 09:00 |
| 2534 | **слесарное помещение** |  | 2026-11-10 12:00 → 2026-11-16 16:00 (+6d) | 119.38d? → 125.75d? | 88% → 81% | 88.22d → 81.84d |  |  |
| 2569 | **ЗИП ремонт** |  | 2026-11-19 11:00 → 2026-11-25 11:00 (+6d) | 673.25d? → 677.25d? | 54% → 55% | 79.34d → 75.34d |  |  |
| 2574 | **ремонт блоков управления датерами** | 2026-10-02 09:00 A | 2026-10-02 12:00 A |  | 0% → 100% | 119.22d → none |  |  |
| 2575 | составить схему подключения - мотор / датчик / тен / -- первые компоненты на плате блока (основной упор на эту задачу) Продолжаем делать | 2026-10-02 09:00 A | 2026-10-02 12:00 A |  | 0% → 100% | 119.22d → none |  |  |
| 2576 | **Собрать редуктор питателя, который разобранный на верстаке** |  | 2026-10-06 09:45 A |  | 82% → 100% | 116.5d → none |  |  |
| 2578 | контроль | 2026-10-04 09:15 A | 2026-10-04 09:30 A |  | 0% → 100% | 116.5d → none |  |  |
| 2579 | орг забрать | 2026-10-06 09:30 A | 2026-10-06 09:45 A |  | 0% → 100% | 116.5d → none |  |  |
| 2585 | **ремонт редутор печи №?** |  | 2026-10-02 11:30 A |  | 52% → 100% | 119.28d → none |  |  |
| 2590 | заказ шестерни червя в ЗИП - отправить курьера | 2026-09-21 09:00 A | 2026-09-21 09:15 A |  | 0% → 100% | 119.28d → none |  |  |
| 2591 | контроль изг шетесиерен | 2026-10-01 09:15 A | 2026-10-01 09:30 A |  | 0% → 100% | 119.28d → none |  |  |
| 2592 | сборка редутор венец | 2026-10-02 09:30 A | 2026-10-02 11:30 A |  | 0% → 100% | 119.28d → none |  |  |
| 2595 | пепенос трубы нерж с 3ц на синий склад | 2026-08-24 09:00 A | 2026-08-24 10:00 A |  | 0% → 100% | 155.47d → none |  |  |
| 2728 | **быстрая замена шнеков - кондуктор для хранения и перемещения подготвленного ствола** | 2026-11-16 09:00 → 2026-11-20 09:00 (+4d) | 2026-11-19 11:00 → 2026-11-25 11:00 (+6d) |  |  | 79.34d → 75.34d |  |  |
| 2729 | проект кондуктора и траверсы перемещения ствола штабелером | 2026-11-16 09:00 → 2026-11-20 09:00 (+4d) | 2026-11-16 11:00 → 2026-11-20 11:00 (+4d) |  |  | 79.34d → 75.34d |  | constraint start no earlier than 2026-11-16 09:00 → start no earlier than 2026-11-20 09:00 |
| 2730 | сборка | 2026-11-17 11:00 → 2026-11-23 11:00 (+6d) | 2026-11-19 11:00 → 2026-11-25 11:00 (+6d) |  |  | 79.34d → 75.34d |  |  |
| 3480 | **Компрессор 2 цех** |  | 2026-11-16 09:15 → 2026-11-13 09:15 (-3d) | 85.03d → 82.03d | 94% → 99% | 82.56d → 0d |  |  |
| 3489 | вызвать сервисного инженера на ТО | 2026-11-16 09:00 → 2026-11-13 09:00 A (-3d) | 2026-11-16 09:15 → 2026-11-13 09:15 A (-3d) |  | 0% → 100% | 82.56d → none |  |  |
| 3583 | **синий склад** |  | 2026-11-10 13:00 → 2026-11-17 12:00 (+7d) | 144.5d → 151.38d | 49% → 45% | 88.09d → 81.22d |  |  |

## Version 39 (saved 2026-11-17, file 07.09.26.mpp)

Last finish stays 2027-03-10. Complete tasks 2696 → 2731.

Added:

| ID | Task | Duration | Start | Finish | Constraint | Resources |
| --- | --- | --- | --- | --- | --- | --- |
| 2 | Замена редуктора на сухом гидролизате на s40-60-23 | 2h | 2026-11-18 09:00 | 2026-11-18 11:00 | start no earlier than 2026-11-18 09:00 | Труфанов А; Некрасов А |
| 3 | **Модернизация смесителей** | 10.38d | 2026-11-16 09:00 A | 2026-11-30 12:00 |  |  |
| 5 | контроль | 10min | 2026-11-27 09:00 | 2026-11-27 09:10 | start no earlier than 2026-11-27 09:00 | Зорькин В |
| 6 | монтаж | 3h | 2026-11-30 09:00 | 2026-11-30 12:00 | start no earlier than 2026-11-30 09:00 | Дедов В |
| 1633 | Оперативные работы по 3 цеху | 1d? | 2026-11-18 09:00 | 2026-11-18 18:00 | start no earlier than 2026-11-18 09:00 | Тимофеев В |
| 2575 | Перебрать насос гидрализата винтовой | 1h | 2026-11-17 09:00 | 2026-11-17 10:00 | start no earlier than 2026-11-17 08:00 | Тимофеев В |
| 2854 | Замена подшипников (все целые) | 1h | 2026-11-11 09:00 A | 2026-11-11 10:00 A | start no earlier than 2026-11-11 09:00 | Тимофеев В |
| 2867 | Ревизия питателя, контроль состояния подшипников/втулки/шестерен/втулки | 30min | 2026-11-18 09:00 | 2026-11-18 09:30 | start no earlier than 2026-11-18 09:00 | Бундин В |
| 2876 | контроль привода, подшипников/при необходимости замена | 15min | 2026-11-18 09:00 | 2026-11-18 09:15 | start no earlier than 2026-11-18 09:00 | Бундин В |
| 2890 | Чистка парогенератора (чистим, как остановятся) | 1h | 2026-11-17 09:00 | 2026-11-17 10:00 | start no earlier than 2026-11-17 08:00 | Николаев; Макаревич А |
| 2905 | Чистка фильтра | 15min | 2026-11-18 09:00 | 2026-11-18 09:15 | start no earlier than 2026-11-18 09:00 | Бундин В |
| 2915 | частотные привода экструдера, ножей, питателя - продувка | 15min | 2026-11-18 09:00 | 2026-11-18 09:15 | start no earlier than 2026-11-18 09:00 | Бундин В |
| 2924 | ревизия/ проверка токов | 15min | 2026-11-18 09:00 | 2026-11-18 09:15 | start no earlier than 2026-11-18 09:00 | Бундин В |
| 2934 | Осмотр, продувка, протяжка контактов | 20min | 2026-11-18 09:00 | 2026-11-18 09:20 | start no earlier than 2026-11-18 09:00 | Бундин В |
| 2943 | Дефектовка - проверить подачу, вибрации, посторонние шумы/проверка фильтров/насосов/фитингов | 5min | 2026-11-18 09:00 | 2026-11-18 09:05 | start no earlier than 2026-11-18 09:00 | Бундин В |
| 2963 | Контроль состояния сетки/цепи | 1h | 2026-11-18 09:00 | 2026-11-18 10:00 | start no earlier than 2026-11-18 09:00 | Бундин В |
| 2979 | Ревизия питателя, контроль состояния подшипников/втулки/шестерен | 30min | 2026-11-18 09:00 | 2026-11-18 09:30 | start no earlier than 2026-11-18 09:00 | Труфанов А; Некрасов А |
| 2988 | контроль привода, подшипников | 15min | 2026-11-18 09:00 | 2026-11-18 09:15 | start no earlier than 2026-11-18 09:00 | Труфанов А; Некрасов А |
| 3000 | Чистка парогенератора (когда остановятся) | 1h | 2026-11-17 09:00 | 2026-11-17 10:00 | start no earlier than 2026-11-17 09:00 | Макаревич А; Николаев |
| 3011 | частотные привода экструдера, ножей, питателя - продувка | 15min | 2026-11-18 09:00 | 2026-11-18 09:15 | start no earlier than 2026-11-18 09:00 | Труфанов А; Некрасов А |
| 3024 | Чистка фильтра/тэны и термопары шнеков - протяжка/ проверка масла | 30min | 2026-11-18 09:00 | 2026-11-18 09:30 | start no earlier than 2026-11-18 09:00 | Труфанов А; Некрасов А |
| 3033 | Ревизия, проверка жил, проверка токов | 20min | 2026-11-18 09:00 | 2026-11-18 09:20 | start no earlier than 2026-11-18 09:00 | Труфанов А; Некрасов А |
| 3048 | ревизия/ проверка токов/протяжка контактов | 15min | 2026-11-18 09:00 | 2026-11-18 09:15 | start no earlier than 2026-11-18 09:00 | Труфанов А; Некрасов А |
| 3053 | Дефектовка - проверить подачу, вибрации, посторонние шумы. | 30min | 2026-11-18 09:00 | 2026-11-18 09:30 | start no earlier than 2026-11-18 09:00 | Труфанов А; Некрасов А |
| 3068 | Осмотр, дефектовка, устранение неисправностей ,смазка по необходимости, протяжка болтов | 1h | 2026-11-18 09:00 | 2026-11-18 10:00 | start no earlier than 2026-11-18 09:00 | Труфанов А; Некрасов А |
| 3078 | Дефектовка - проверить подачу, вибрации, посторонние шумы/проверка фильтров/насосов/фитингов | 15min | 2026-11-18 09:00 | 2026-11-18 09:15 | start no earlier than 2026-11-18 09:00 | Труфанов А; Некрасов А |
| 3086 | насос, фильтр - осмотр, чистка | 15min | 2026-11-18 09:00 | 2026-11-18 09:15 | start no earlier than 2026-11-18 09:00 | Труфанов А; Некрасов А |
| 3105 | Осмотр всех упаковщиков/транспортеров/накопительных столов/ всех щитков оборудования/редукторов | 1h | 2026-11-18 09:00 | 2026-11-18 10:00 | start no earlier than 2026-11-18 09:00 | Труфанов А; Некрасов А |
| 3796 | Проведение экзамена Николаеву Юре на предмет понимания и знания технологического оборудования на предприятии. Где что включается, выключается, как производится ремонт, принцип работы. Где проложены основные магистрали Электроснабжения и водоснабжения | 1h | 2026-11-17 09:00 | 2026-11-17 10:00 | start no earlier than 2026-11-17 08:00 | Макаревич А |

Changed:

| ID | Task | Start | Finish | Duration | Complete | Total float | Other |
| --- | --- | --- | --- | --- | --- | --- | --- |
| 4 | Повторить заявку на комплектующие для автоматической подачи сырья из смесителей | 2026-11-16 09:00 A | 2026-11-16 10:00 A |  | 0% → 100% | 82.47d → none |  |
| 11 | ремонт силиконовой резинки выход из печи 1 |  |  |  |  |  | resources Тимофеев В → Труфанов А; Некрасов А |
| 12 | 2 линия ремонт сквозной ржавчины прекондиционера возле горла |  |  |  |  |  | resources Бундин В → Бундин В; Труфанов А |
| 106 | **сборка рама для труб приточной вентиляции** |  |  |  | 64% → 65% |  |  |
| 126 | **бурение свай** |  | 2026-11-20 09:15 A |  | 97% → 100% | 78.56d → none |  |
| 129 | примерка пластины с отверстием на сваю | 2026-11-20 09:00 A | 2026-11-20 09:15 A |  | 0% → 100% | 78.56d → none |  |
| 192 | **квадропак - сделать силиконовый успокоитель между нория и весы 800*250 шаг шторок 60** |  | 2026-11-02 10:00 A |  | 25% → 100% | 96.47d → none |  |
| 195 | сборка | 2026-11-02 09:00 A | 2026-11-02 10:00 A |  | 0% → 100% | 96.47d → none |  |
| 234 | установка на струбцинах с уплотнителями |  |  |  |  |  | resources Тимофеев В → Бундин В |
| 585 | **замена лент на аппликаторе, подумать какой сделать отражатель для фотометки, чтобы не цепляло пакеты в работе** |  |  |  | 0% → 100% |  |  |
| 586 | замена ленеты | 2026-10-12 09:00 A | 2026-10-12 13:00 A |  | 0% → 100% | 112.09d → none |  |
| 587 | **замена ленты пролистывателя** |  | 2026-10-27 18:00 → 2026-10-30 18:00 (+3d) | 34d → 37d |  | 99.59d → 96.59d |  |
| 591 | склеить ремень | 2026-10-26 09:00 → 2026-10-29 09:00 (+3d) | 2026-10-26 13:00 → 2026-10-29 13:00 (+3d) |  |  | 99.59d → 96.59d | constraint start no earlier than 2026-10-26 09:00 → start no earlier than 2026-10-29 09:00 |
| 592 | замена лент | 2026-10-27 14:00 → 2026-10-30 14:00 (+3d) | 2026-10-27 18:00 → 2026-10-30 18:00 (+3d) |  |  | 99.59d → 96.59d |  |
| 907 | Замена и ремонт инсектицидных ламп 7 шт (сделана 1шт) | 2026-11-05 09:00 → 2026-11-18 09:00 (+13d) | 2026-11-05 12:00 → 2026-11-18 12:00 (+13d) |  |  | 93.22d → 80.22d | constraint start no earlier than 2026-11-05 08:00 → start no earlier than 2026-11-18 09:00 |
| 1632 | **3 цех** |  |  |  | 81% → 80% |  |  |
| 1635 | Тест оборудование перед запуском | 2026-11-17 09:00 → 2026-11-18 09:00 (+1d) | 2026-11-17 11:00 → 2026-11-18 11:00 (+1d) |  |  | 81.34d → 80.34d | constraint none → start no earlier than 2026-11-18 09:00 |
| 2576 | Восстановление электродов в слесарке |  |  |  |  |  | resources Дедов В → Макаревич А; Николаев |
| 2825 | **ТО** |  |  |  | 45% → 46% |  |  |
| 2828 | **1 цех** |  |  |  | 80% → 88% |  |  |
| 2852 | **линия 1** |  | 2026-11-11 10:00 → 2026-11-18 10:00 (+7d) | 181.12d? → 188.12d? | 84% → 92% | 87.47d → 80.47d |  |
| 2853 | **шнек подачи в питатель экструдера** | 2026-11-11 09:00 A | 2026-11-11 10:00 → 2026-11-18 10:00 (+7d) | 0.12d → 7.12d | 0% → 50% | 87.47d → 80.47d |  |
| 2855 | Замена подшипников | 2026-11-11 09:00 → 2026-11-18 09:00 (+7d) | 2026-11-11 10:00 → 2026-11-18 10:00 (+7d) |  |  | 87.47d → 80.47d | constraint start no earlier than 2026-11-11 09:00 → start no earlier than 2026-11-18 09:00; resources Тимофеев В → Бундин В |
| 2856 | **питатель экструдера** |  | 2026-11-11 09:30 → 2026-11-18 09:30 (+7d) | 181.06d? → 188.06d? | 88% → 96% | 87.53d → 80.53d |  |
| 2864 | Ревизия питателя, контроль состояния подшипников/втулки/шестерен/втулки | 2026-10-21 09:00 A | 2026-10-21 09:30 A |  | 0% → 100% | 104.53d → none |  |
| 2865 | Ревизия питателя, контроль состояния подшипников/втулки/шестерен/втулки | 2026-10-29 09:00 A | 2026-10-29 09:30 A |  | 0% → 100% | 98.53d → none |  |
| 2866 | Ревизия питателя, контроль состояния подшипников/втулки/шестерен/втулки | 2026-11-11 09:00 A | 2026-11-11 09:30 A |  | 0% → 100% | 87.53d → none |  |
| 2868 | **прекондицинер экструдера** |  | 2026-11-11 09:15 → 2026-11-18 09:15 (+7d) | 141.03d → 148.03d | 57% → 88% | 87.56d → 80.56d |  |
| 2873 | контроль привода, подшипников/при необходимости замена | 2026-10-21 09:00 A | 2026-10-21 09:15 A |  | 0% → 100% | 104.56d → none |  |
| 2874 | контроль привода, подшипников/при необходимости замена | 2026-10-29 09:00 A | 2026-10-29 09:15 A |  | 0% → 100% | 98.56d → none |  |
| 2875 | контроль привода, подшипников/при необходимости замена | 2026-11-11 09:00 A | 2026-11-11 09:15 A |  | 0% → 100% | 87.56d → none |  |
| 2877 | **парогенератор** |  | 2026-11-10 10:00 → 2026-11-17 10:00 (+7d) | 165.12d → 172.12d | 88% → 94% | 88.47d → 81.47d |  |
| 2888 | Чистка парогенератора | 2026-10-21 09:00 A | 2026-10-21 10:00 A |  | 0% → 100% | 104.47d → none |  |
| 2889 | Чистка парогенератора | 2026-10-29 09:00 A | 2026-10-29 10:00 A |  | 0% → 100% | 98.47d → none |  |
| 2892 | **редуктор экструдера и маслянная станция** |  | 2026-11-11 09:20 → 2026-11-18 09:20 (+7d) | 463.04d → 470.04d | 54% → 65% | 87.55d → 80.55d |  |
| 2896 | тэны и термпары шнеков- прортяжка | 2025-02-25 09:00 A | 2025-02-25 09:30 A |  | 0% → 100% | 544.53d → none |  |
| 2901 | Чистка фильтра | 2026-10-14 09:00 A | 2026-10-14 09:30 A |  | 0% → 100% | 110.53d → none |  |
| 2902 | Чистка фильтра/тэны и термопары шнеков - протяжка | 2026-10-21 09:00 A | 2026-10-21 09:30 A |  | 0% → 100% | 104.53d → none |  |
| 2903 | Чистка фильтра | 2026-10-29 09:00 A | 2026-10-29 09:30 A |  | 0% → 100% | 98.53d → none |  |
| 2904 | Чистка фильтра | 2026-11-11 09:00 A | 2026-11-11 09:15 A |  | 0% → 100% | 87.56d → none |  |
| 2906 | **шкаф управления экструдером** |  | 2026-11-11 09:15 → 2026-11-18 09:15 (+7d) | 172.03d → 179.03d | 90% → 82% | 87.56d → 80.56d |  |
| 2916 | **блок тэнов сушки** |  | 2026-11-11 09:15 → 2026-11-18 09:15 (+7d) | 136.03d → 143.03d | 90% → 82% | 87.56d → 80.56d |  |
| 2933 | Осмотр, продувка, протяжка контактов | 2026-11-11 09:00 A | 2026-11-11 09:20 A |  | 0% → 100% | 87.55d → none |  |
| 2935 | **барабан смесительный дрожировка - прорверка подшипнки , реуктор** |  | 2026-11-11 09:15 → 2026-11-18 09:05 (+7d) | 191.03d → 198.01d | 93% → 98% | 87.56d → 80.58d |  |
| 2942 | Дефектовка - проверить подачу, вибрации, посторонние шумы/проверка фильтров/насосов/фитингов | 2026-11-11 09:00 A | 2026-11-11 09:15 A |  | 0% → 100% | 87.56d → none |  |
| 2944 | **печь** |  | 2026-11-11 10:00 → 2026-11-18 10:00 (+7d) | 667.12d → 674.12d | 79% → 95% | 87.47d → 80.47d |  |
| 2959 | Контроль состояния сетки/цепи | 2026-10-14 09:00 A | 2026-10-14 10:00 A |  | 0% → 100% | 110.47d → none |  |
| 2960 | Контроль состояния сетки/цепи | 2026-10-21 09:00 A | 2026-10-21 10:00 A |  | 0% → 100% | 104.47d → none |  |
| 2961 | Контроль состояния сетки/цепи | 2026-10-29 09:00 A | 2026-10-29 10:00 A |  | 0% → 100% | 98.47d → none |  |
| 2962 | Контроль состояния сетки/цепи | 2026-11-11 09:00 A | 2026-11-11 10:00 A |  | 0% → 100% | 87.47d → none |  |
| 2964 | **линия 2** |  |  |  | 39% → 41% |  |  |
| 2965 | **шнек подачи в питатель экструдера** | 2026-11-11 09:00 → 2026-11-18 09:00 (+7d) | 2026-11-11 10:00 → 2026-11-18 10:00 (+7d) |  |  | 87.47d → 80.47d |  |
| 2966 | Замена подшипников | 2026-11-11 09:00 → 2026-11-18 09:00 (+7d) | 2026-11-11 10:00 → 2026-11-18 10:00 (+7d) |  |  | 87.47d → 80.47d | constraint start no earlier than 2026-11-11 09:00 → start no earlier than 2026-11-18 09:00; resources Бундин В → Труфанов А; Некрасов А |
| 2967 | **питатель экструдера** |  | 2026-11-11 09:30 → 2026-11-18 09:30 (+7d) | 181.06d → 188.06d | 71% → 93% | 87.53d → 80.53d |  |
| 2975 | Ревизия питателя, контроль состояния подшипников/втулки/шестерен | 2026-10-14 09:00 A | 2026-10-14 09:30 A |  | 0% → 100% | 110.53d → none |  |
| 2976 | Ревизия питателя, контроль состояния подшипников/втулки/шестерен | 2026-10-21 09:00 A | 2026-10-21 09:30 A |  | 0% → 100% | 104.53d → none |  |
| 2977 | Ревизия питателя, контроль состояния подшипников/втулки/шестерен | 2026-10-29 09:00 A | 2026-10-29 09:30 A |  | 0% → 100% | 98.53d → none |  |
| 2978 | Ревизия питателя, контроль состояния подшипников/втулки/шестерен | 2026-11-11 09:00 A | 2026-11-11 09:30 A |  | 0% → 100% | 87.53d → none |  |
| 2980 | **прекондицинер экструдера** |  | 2026-11-11 09:15 → 2026-11-18 09:15 (+7d) | 141.03d → 148.03d | 43% → 88% | 87.56d → 80.56d |  |
| 2984 | контроль привода, подшипников | 2026-10-14 09:00 A | 2026-10-14 09:15 A |  | 0% → 100% | 110.56d → none |  |
| 2985 | контроль привода, подшипников | 2026-10-21 09:00 A | 2026-10-21 09:15 A |  | 0% → 100% | 104.56d → none |  |
| 2986 | контроль привода, подшипников | 2026-10-29 09:00 A | 2026-10-29 09:15 A |  | 0% → 100% | 98.56d → none |  |
| 2987 | контроль привода, подшипников | 2026-11-11 09:00 A | 2026-11-11 09:15 A |  | 0% → 100% | 87.56d → none |  |
| 2989 | **парогенератор** |  | 2026-11-11 10:00 → 2026-11-17 10:00 (+6d) | 686.12d → 692.12d | 63% → 86% | 87.47d → 81.47d |  |
| 2997 | Чистка парогенератора после остановки | 2026-10-21 09:00 A | 2026-10-21 10:00 A |  | 0% → 100% | 104.47d → none |  |
| 2998 | Чистка парогенератора | 2026-10-29 09:00 A | 2026-10-29 10:00 A |  | 0% → 100% | 98.47d → none |  |
| 2999 | Чистка парогенератора | 2026-11-11 09:00 A | 2026-11-11 10:00 A |  | 0% → 100% | 87.47d → none |  |
| 3001 | **шкаф управления экструдером** |  | 2026-11-11 09:15 → 2026-11-18 09:15 (+7d) | 186.03d → 193.03d | 64% → 58% | 87.56d → 80.56d |  |
| 3012 | **редуктор экструдера и маслянная станция** |  | 2026-11-11 09:30 → 2026-11-18 09:30 (+7d) | 136.06d → 143.06d | 58% → 54% | 87.53d → 80.53d |  |
| 3025 | **блок тэнов сушки - протяжка** |  | 2026-11-11 09:20 → 2026-11-18 09:20 (+7d) | 136.04d? → 143.04d? | 63% → 61% | 87.55d → 80.55d |  |

| ID | Task | Finish | Duration | Complete | Total float |
| --- | --- | --- | --- | --- | --- |
| 3034 | **шкаф управления тэнами сушки** | 2026-11-11 09:15 → 2026-11-18 09:15 (+7d) | 639.03d → 646.03d | 86% → 84% | 87.56d → 80.56d |
| 3049 | **Насос гидролизата** | 2026-11-11 09:30 → 2026-11-18 09:30 (+7d) | 171.06d → 178.06d | 67% → 50% | 87.53d → 80.53d |
| 3054 | **Квадропак** | 2026-11-11 10:00 → 2026-11-18 10:00 (+7d) | 156.12d → 163.12d | 93% → 87% | 87.47d → 80.47d |
| 3079 | **жиротопка и насос перекачки жира** | 2026-11-11 09:15 → 2026-11-18 09:15 (+7d) | 686.03d → 693.03d | 14% → 13% | 87.56d → 80.56d |
| 3087 | **упаковщкики** | 2026-11-11 10:00 → 2026-11-18 10:00 (+7d) | 464.12d → 471.12d | 13% → 12% | 87.47d → 80.47d |
| 3795 | **администрантивные** | 2026-11-16 11:00 → 2026-11-17 10:00 (+1d) | 185.25d → 186.12d |  | 82.34d → 81.47d |

## Version 40 (saved 2026-11-19, file 07.09.26.mpp)

Last finish stays 2027-03-10. Complete tasks 2731 → 2853.

Added:

| ID | Task | Duration | Start | Finish | Constraint | Resources |
| --- | --- | --- | --- | --- | --- | --- |
| 2 | Посмотреть отопление в 1 цехе холодно | 1h | 2026-11-19 09:00 | 2026-11-19 10:00 | start no earlier than 2026-11-19 09:00 | Труфанов А; Некрасов А |
| 901 | Осмотр вентиляции, жалуются на вонь | 1h | 2026-11-19 09:00 A | 2026-11-19 10:00 A | start no earlier than 2026-11-19 09:00 | Труфанов А; Некрасов А |
| 1635 | Подключить кабель от тепловой пушки, которая стоит в гидрализатной 1 цеха и саму пушку в тамбуре, где будет вывоз готовой продукции, там ворота стоят. (Если Валентин не подключит, всю информацию получить у него) | 1h | 2026-11-19 09:00 | 2026-11-19 10:00 | start no earlier than 2026-11-19 08:00 | Дедов В |
| 1636 | Сделать отвод воздуха, при засыпке муки летит в лицо все | 1h | 2026-11-19 09:00 A | 2026-11-19 10:00 A | start no earlier than 2026-11-19 09:00 | Труфанов А; Некрасов А |
| 1637 | Составить список что нужно закупить для подключения батареи между охладителем и фасовкой | 1h | 2026-11-18 09:00 | 2026-11-18 10:00 | start no earlier than 2026-11-18 08:00 | Труфанов А; Некрасов А |
| 3083 | Разбор и чистка бункера со шнеком подачи сухого гидролизата | 1h | 2026-11-25 09:00 | 2026-11-25 10:00 | start no earlier than 2026-11-25 09:00 | Тимофеев В |
| 3166 | Замена лопаток | 3h | 2026-11-20 09:00 | 2026-11-20 12:00 | start no earlier than 2026-11-20 09:00 | Макаревич А; Тимофеев В |
| 3167 | Ревизия масла редуктора/осмотр подшипников/ смазка при необходимости | 15min | 2026-11-20 09:00 | 2026-11-20 09:15 | start no earlier than 2026-11-20 09:00 | Макаревич А; Тимофеев В |
| 3193 | Чистка (после остановки) | 1h | 2026-11-19 09:00 | 2026-11-19 10:00 | start no earlier than 2026-11-19 09:00 | Дедов В |
| 3211 | прорверка масла редуктор / натяжка цепи/ ремень/осмотр сетки | 20min | 2026-11-20 09:00 | 2026-11-20 09:20 | start no earlier than 2026-11-20 09:00 | Макаревич А; Тимофеев В |
| 3220 | ревизия / замена критичных | 1h | 2026-11-20 09:00 | 2026-11-20 10:00 | start no earlier than 2026-11-20 09:00 | Макаревич А; Тимофеев В |
| 3232 | Замена сальника/замена редуктора | 3h | 2026-11-20 09:00 | 2026-11-20 12:00 | start no earlier than 2026-11-20 09:00 | Труфанов А; Некрасов А |
| 3247 | Ревизия ленты, контроль соединения | 30min | 2026-11-20 09:00 | 2026-11-20 09:30 | start no earlier than 2026-11-20 09:00 | Макаревич А; Тимофеев В |
| 3258 | Осмотр | 5min | 2026-11-20 09:00 | 2026-11-20 09:05 | start no earlier than 2026-11-20 09:00 | Макаревич А; Тимофеев В |
| 3272 | Ревизия шестерен и подшипников | 1h | 2026-11-20 09:00 | 2026-11-20 10:00 | start no earlier than 2026-11-20 09:00 | Макаревич А; Тимофеев В |
| 3285 | Осмотр подшипников, муфты, шестерен | 10min | 2026-11-20 09:00 | 2026-11-20 09:10 | start no earlier than 2026-11-20 09:00 | Макаревич А; Тимофеев В |
| 3296 | Проверка масла | 10min | 2026-11-20 09:00 | 2026-11-20 09:10 | start no earlier than 2026-11-20 09:00 | Макаревич А; Тимофеев В |
| 3318 | Проверка масла, чистка фильтра | 15min | 2026-11-20 09:00 | 2026-11-20 09:15 | start no earlier than 2026-11-20 09:00 | Макаревич А; Тимофеев В |
| 3334 | продувка частотного привода | 10min | 2026-11-20 09:00 | 2026-11-20 09:10 | start no earlier than 2026-11-20 09:00 | Макаревич А; Тимофеев В |
| 3343 | Ревизия узлов/масла. Очистка мотора от пыли | 10min | 2026-11-20 09:00 | 2026-11-20 09:10 | start no earlier than 2026-11-20 09:00 | Макаревич А; Тимофеев В |
| 3356 | Контроль редуктора, осмотр, проверка масла | 30min | 2026-11-20 09:00 | 2026-11-20 09:30 | start no earlier than 2026-11-20 09:00 | Макаревич А; Тимофеев В |
| 3364 | Осмотр, очистка от пыли | 1h | 2026-11-20 09:00 | 2026-11-20 10:00 | start no earlier than 2026-11-20 09:00 | Тимофеев В; Макаревич А |
| 3381 | осмотср замена подгоревших кабелей | 20min | 2026-11-20 09:00 | 2026-11-20 09:20 | start no earlier than 2026-11-20 09:00 | Макаревич А; Тимофеев В |
| 3394 | Продувка. Замена подогретых жил | 20min | 2026-11-20 09:00 | 2026-11-20 09:20 | start no earlier than 2026-11-20 09:00 | Макаревич А; Тимофеев В |
| 3405 | очистка валов и ленты / контроль крепления редуктора / состояния подшипника | 15min | 2026-11-20 09:00 | 2026-11-20 09:15 | start no earlier than 2026-11-20 09:00 | Труфанов А; Некрасов А |
| 3423 | Осмотр соединений фитингов, трехходового крана бежит/не бежит | 10min | 2026-11-20 09:00 | 2026-11-20 09:10 |  | Труфанов А; Некрасов А |
| 3424 | Замена фитингов на новые под новый шланг | 1h | 2026-11-20 09:00 | 2026-11-20 10:00 | start no earlier than 2026-11-20 09:00 | Труфанов А; Некрасов А |
| 3435 | Осмотр/ревизия насоса гидролизата, проверка всех соединений | 10min | 2026-11-20 09:00 | 2026-11-20 09:10 | start no earlier than 2026-11-20 09:00 | Труфанов А; Некрасов А |
| 3436 | Проверка частотника, какая максимальная герцовка стоит | 10min | 2026-11-20 09:00 | 2026-11-20 09:10 | start no earlier than 2026-11-20 09:00 | Труфанов А |
| 3447 | ревизия люфтов, фиксации смазки подшипников | 30min | 2026-11-20 09:00 | 2026-11-20 09:30 | start no earlier than 2026-11-20 09:00 | Труфанов А; Некрасов А |
| 3478 | ревизия люфтов, фиксации, смазки подшипников | 15min | 2026-11-19 09:00 | 2026-11-19 09:15 | start no earlier than 2026-11-19 08:00 | Труфанов А; Некрасов А |
| 3487 | запайщик 1 и 2 проверка перемычек/тефлона замена при необходимости | 30min | 2026-11-20 09:00 | 2026-11-20 09:30 | start no earlier than 2026-11-20 09:00 | Труфанов А; Некрасов А |
| 3499 | Комплексный осмотр всех узлов | 1h | 2026-11-20 09:00 | 2026-11-20 10:00 | start no earlier than 2026-11-20 09:00 | Труфанов А; Некрасов А |
| 3519 | Чистка тенов, проверка тефлона, роликов | 1h | 2026-11-20 09:00 | 2026-11-20 10:00 | start no earlier than 2026-11-20 09:00 | Труфанов А; Некрасов А |
| 3567 | чистка фильтров | 20min | 2026-11-20 09:00 | 2026-11-20 09:20 | start no earlier than 2026-11-20 09:00 | Труфанов А; Некрасов А |
| 3579 | чистка фильтров | 20min | 2026-11-20 09:00 | 2026-11-20 09:20 | start no earlier than 2026-11-20 09:00 | Труфанов А; Некрасов А |
| 3589 | чистка фильтров | 20min | 2026-11-20 09:00 | 2026-11-20 09:20 | start no earlier than 2026-11-20 09:00 | Труфанов А; Некрасов А |
| 3872 | **Монтаж дополнительного освещения** | 1d? | 2026-11-20 09:00 | 2026-11-20 18:00 |  |  |
| 3873 | Выяснить маркировку и тип светильников в кабинете снабжения, 2 этаж | 1h | 2026-11-20 09:00 | 2026-11-20 10:00 | start no earlier than 2026-11-20 09:00 | Макаревич А |
| 3874 | Повесить доп светильники, в каких местах добавить, узнать у маркетинга, узнать возможность поставить другие светильники (согласовать с Домоводовым), смонтировать по красоте. | 1d? | 2026-11-20 09:00 | 2026-11-20 18:00 | start no earlier than 2026-11-20 09:00 | Макаревич А |
| 3878 | Растяжка бетона, помощ олегу, когда привезут | 1h | 2026-11-20 09:00 | 2026-11-20 10:00 | start no earlier than 2026-11-20 09:00 | Труфанов А; Некрасов А |

Changed:

| ID | Task | Start | Finish | Duration | Complete | Total float | Other |
| --- | --- | --- | --- | --- | --- | --- | --- |
| 3 | Замена редуктора на сухом гидролизате на s40-60-23 | 2026-11-18 09:00 A | 2026-11-18 11:00 A |  | 0% → 100% | 80.34d → none |  |
| 11 | калибровка пид регулятор печи 2 | 2026-11-16 09:00 A | 2026-11-16 10:00 A |  | 0% → 100% | 82.47d → none |  |
| 12 | ремонт силиконовой резинки выход из печи 1 | 2026-11-18 09:00 A | 2026-11-18 10:00 A |  | 0% → 100% | 80.47d → none |  |
| 31 | **Собрать канистру для подачи воды в экструдер, по аналогу 3 цех. Промежуточный бак 2 шт** |  |  |  | 12% → 99% | 81.34d → 0d |  |
| 34 | монтаж | 2026-11-17 09:00 A | 2026-11-17 10:00 A |  | 0% → 100% | 81.47d → none |  |
| 35 | Монтаж насоса, взять в кабинете оги | 2026-11-17 09:00 A | 2026-11-17 11:00 A |  | 0% → 100% | 81.34d → none |  |
| 50 | **монтаж водоподготовка // разделить воду в экструдер и парогенераторы** |  |  |  | 95% → 96% |  |  |
| 55 | **разделение воды ПГ / экструдер** |  |  |  | 18% → 30% |  |  |
| 56 | изготовить промежуточную емкость для прекондера, подача воды, сделать по аналогу 3 цеха | 2026-10-05 09:00 A | 2026-10-05 11:00 A |  | 0% → 100% |  |  |
| 107 | **сборка рама для труб приточной вентиляции** |  | 2026-11-20 18:00 → 2026-11-23 18:00 (+3d) | 32d? → 33d? | 65% → 67% | 77.59d → 76.59d |  |
| 110 | Лазером сделать привязки свай относительно вентиляции (колонны здания) | 2026-11-17 09:00 A | 2026-11-17 10:00 A |  | 0% → 100% | 81.34d → none |  |
| 127 | **бурение свай** |  | 2026-11-20 09:15 A → 2026-11-16 09:15 A (-4d) | 22.03d? → 18.03d? |  |  |  |
| 130 | примерка пластины с отверстием на сваю | 2026-11-20 09:00 A → 2026-11-16 09:00 A (-4d) | 2026-11-20 09:15 A → 2026-11-16 09:15 A (-4d) |  |  |  |  |
| 134 | монтаж рама на цех краном | 2026-11-20 09:00 → 2026-11-23 09:00 (+3d) | 2026-11-20 18:00 → 2026-11-23 18:00 (+3d) |  |  | 77.59d → 76.59d | constraint start no earlier than 2026-11-20 09:00 → start no earlier than 2026-11-23 09:00 |
| 157 | **реконструкция хранения гидролизатов и маршрут подачи навесок** |  | 2026-11-23 18:00 → 2026-12-01 18:00 (+8d) | 67d → 73d |  | 76.59d → 70.59d |  |
| 160 | **монтаж доп плащадки** |  | 2026-11-23 18:00 → 2026-12-01 18:00 (+8d) | 47d → 53d |  | 76.59d → 70.59d |  |
| 165 | монтаж | 2026-11-20 09:00 → 2026-11-30 09:00 (+10d) | 2026-11-23 18:00 → 2026-12-01 18:00 (+8d) |  |  | 76.59d → 70.59d | constraint start no earlier than 2026-11-20 09:00 → start no earlier than 2026-11-30 09:00 |
| 166 | **монтаж перегородка корридор** |  | 2026-11-23 18:00 → 2026-12-01 18:00 (+8d) | 24.97d → 30.97d |  | 76.59d → 70.59d |  |
| 168 | монтаж | 2026-11-20 09:00 → 2026-11-30 09:00 (+10d) | 2026-11-23 18:00 → 2026-12-01 18:00 (+8d) |  |  | 76.59d → 70.59d | constraint start no earlier than 2026-11-20 09:00 → start no earlier than 2026-11-30 09:00 |
| 903 | заменаить лопатки на прекондиционере | 2026-11-19 09:00 → 2026-11-20 09:00 (+1d) | 2026-11-19 13:00 → 2026-11-20 13:00 (+1d) |  |  | 79.09d → 78.09d | constraint start no earlier than 2026-11-19 09:00 → start no earlier than 2026-11-20 09:00; resources Некрасов А; Тимофеев В → Тимофеев В; Макаревич А |
| 905 | Найти на синем складе лопатки от прекондиционера LT 85 | 2026-11-17 09:00 → 2026-11-19 09:00 A (+2d) | 2026-11-17 10:00 → 2026-11-19 10:00 A (+2d) |  | 0% → 100% | 81.47d → none | constraint start no earlier than 2026-11-17 09:00 → start no earlier than 2026-11-19 09:00 |
| 909 | Замена и ремонт инсектицидных ламп 7 шт (сделана 1шт) подробная информация состояния и что нужно |  |  |  |  |  | was named Замена и ремонт инсектицидных ламп 7 шт (сделана 1шт) |
| 922 | Скомплектовать что нужно для безопасного отвода пара на парогенераторе на подрывном клапане написать смской | 2026-11-03 09:00 → 2026-11-19 09:00 A (+16d) | 2026-11-03 10:00 → 2026-11-19 10:00 A (+16d) |  | 0% → 100% | 95.47d → none | was named Скомплектовать что нужно для безопасного отвода пара на парогенераторе на подрывном клапане; constraint start no earlier than 2026-11-03 09:00 → start no earlier than 2026-11-19 09:00 |
| 978 | **установить аспирационный рукав в зону бункера + фильтр + выход в цех/или общ обменную вент** |  | 2026-11-23 09:45 → 2026-11-30 18:00 (+7d) | 17.09d? → 23d? |  | 77.5d → 71.59d |  |
| 981 | монтаж аспирационная установка | 2026-11-20 09:45 → 2026-11-30 09:00 (+10d) | 2026-11-23 09:45 → 2026-11-30 18:00 (+7d) |  |  | 77.5d → 71.59d | constraint start no earlier than 2026-09-30 08:00 → start no earlier than 2026-11-30 09:00 |
| 1088 | **усиление подогрев приточной вентиляции** |  | 2026-11-20 14:15 → 2026-11-30 18:00 (+10d) | 82.53d? → 89d? |  | 78.06d → 71.59d |  |
| 1093 | монтаж | 2026-11-19 14:15 → 2026-11-30 09:00 (+11d) | 2026-11-20 14:15 → 2026-11-30 18:00 (+10d) |  |  | 78.06d → 71.59d | constraint start no earlier than 2026-10-23 09:00 → start no earlier than 2026-11-30 09:00 |
| 1618 | **отмена** |  | 2026-12-07 11:30 → 2026-12-08 11:30 (+1d) | 97.31d? → 98.31d? |  | 67.28d → 66.28d |  |
| 1619 | **найти места утечки тепла под потолком- перемерзает труба подачи воды в 3 цех** |  | 2026-12-07 11:30 → 2026-12-08 11:30 (+1d) | 97.31d? → 98.31d? |  | 67.28d → 66.28d |  |
| 1622 | проверка пирометром / тепловизором | 2026-11-20 09:00 → 2026-11-23 09:00 (+3d) | 2026-11-20 11:00 → 2026-11-23 11:00 (+3d) |  |  | 67.28d → 66.28d | constraint start no earlier than 2026-11-20 09:00 → start no earlier than 2026-11-23 09:00 |
| 1623 | заявка (подумать материал) | 2026-11-20 11:00 → 2026-11-23 11:00 (+3d) | 2026-11-20 11:15 → 2026-11-23 11:15 (+3d) |  |  | 67.28d → 66.28d |  |
| 1624 | доставка- контроль | 2026-12-04 11:15 → 2026-12-07 11:15 (+3d) | 2026-12-04 11:30 → 2026-12-07 11:30 (+3d) |  |  | 67.28d → 66.28d |  |
| 1625 | монтаж | 2026-12-04 11:30 → 2026-12-07 11:30 (+3d) | 2026-12-07 11:30 → 2026-12-08 11:30 (+1d) |  |  | 67.28d → 66.28d |  |
| 1634 | **3 цех** |  |  |  | 80% → 83% |  |  |
| 1638 | Оперативные работы по 3 цеху | 2026-11-18 09:00 A | 2026-11-18 18:00 A |  | 0% → 100% | 79.59d → none |  |
| 1639 | Установить частотник на вращение барабанов 3 цех | 2026-11-17 09:00 A | 2026-11-17 10:00 A |  | 0% → 100% | 81.47d → none |  |
| 1640 | Тест оборудование перед запуском | 2026-11-18 09:00 A | 2026-11-18 11:00 A |  | 0% → 100% | 80.34d → none |  |
| 1641 | Тест печки с кормом, на поток гранулы, попадает ли к цепям или нет, как работает модернизация. | 2026-11-16 09:00 A | 2026-11-16 11:00 A |  | 0% → 100% | 82.34d → none |  |
| 1646 | доработать ловушки гранулы между этажами, что бы не разлеталась - образец от Тимофеева + удлинить 20-30см по ходу сетки. Все этажи | 2026-11-16 09:00 A | 2026-11-16 18:00 A |  | 0% → 100% | 81.59d → none |  |
| 1649 | установить розетку для весов гидролизата | 2026-11-13 09:00 → 2026-11-18 09:00 (+5d) | 2026-11-13 10:00 → 2026-11-18 10:00 (+5d) |  |  | 85.47d → 80.47d | constraint start no earlier than 2026-11-13 08:00 → start no earlier than 2026-11-18 09:00; resources Бундин В → Дедов В |
| 1650 | (сначало поменять кран на полнопроходной вместо золотникового) полку для канистры гидролизата нарастить на 20 см, проверить что бы вошли весы | 2026-11-18 09:00 → 2026-11-19 09:00 (+1d) | 2026-11-18 12:00 → 2026-11-19 10:00 (+1d) | 3h → 1h |  | 80.22d → 79.47d | was named полку для канистры гидролизата нарастить на 20 см, проверить что бы вошли весы; constraint start no earlier than 2026-11-18 09:00 → start no earlier than 2026-11-19 09:00; resources Макаревич А; Николаев → Дедов В |
| 1663 | Посмотреть работу нотиса возле стены, который долго запускался, сыпит без остановки, не срабатывает по весу (буду звонить производителям потом если не справимся сами) | 2026-11-14 09:00 A | 2026-11-14 11:00 A |  | 0% → 100% | 84.34d → none |  |
| 1664 | Доработать конвейер на нотисах, много сыпит вниз в щели | 2026-11-15 09:00 A | 2026-11-15 13:00 A |  | 0% → 100% | 83.09d → none |  |
| 1665 | Сделать свет на выходе из охладителя, над полибоксом | 2026-11-13 09:00 A | 2026-11-13 11:00 A |  | 0% → 100% | 85.34d → none |  |
| 1666 | Сделать доп свет на экструдере, повешать на козырек центральный, между печкой и прекондером, повесить на край ближе к стене | 2026-11-14 09:00 A | 2026-11-14 13:00 A |  | 0% → 100% | 84.09d → none |  |
| 1673 | Поставить 2 светильника в туалеты 2 этаж | 2026-11-13 09:00 A | 2026-11-13 10:00 A |  | 0% → 100% | 85.47d → none |  |
| 1698 | Ревизия редуктора шнека, проверить масло, шнек подачи сырья в прекондиционер | 2026-11-10 09:00 A | 2026-11-10 09:30 A |  | 0% → 100% | 88.53d → none |  |
| 1783 | сделать перемычку на нижней части системы загрузки палет подачи жиров и гидрализата | 2026-08-15 09:00 A | 2026-08-15 12:00 A |  | 0% → 100% |  |  |
| 2579 | **ЗИП ремонт** |  | 2026-11-25 11:00 → 2026-12-03 11:00 (+8d) | 677.25d? → 683.25d? |  | 75.34d → 69.34d |  |
| 2581 | Восстановление электродов в слесарке | 2026-11-17 09:00 A | 2026-11-17 12:00 A |  | 0% → 100% | 81.22d → none |  |
| 2738 | **быстрая замена шнеков - кондуктор для хранения и перемещения подготвленного ствола** | 2026-11-20 09:00 → 2026-11-30 09:00 (+10d) | 2026-11-25 11:00 → 2026-12-03 11:00 (+8d) |  |  | 75.34d → 69.34d |  |
| 2739 | проект кондуктора и траверсы перемещения ствола штабелером | 2026-11-20 09:00 → 2026-11-30 09:00 (+10d) | 2026-11-20 11:00 → 2026-11-30 11:00 (+10d) |  |  | 75.34d → 69.34d | constraint start no earlier than 2026-11-20 09:00 → start no earlier than 2026-11-30 09:00 |
| 2740 | сборка | 2026-11-23 11:00 → 2026-12-01 11:00 (+8d) | 2026-11-25 11:00 → 2026-12-03 11:00 (+8d) |  |  | 75.34d → 69.34d |  |
| 2829 | **ТО** |  | 2026-11-25 11:00 → 2026-12-07 12:00 (+12d) | 772.25d? → 780.38d? | 46% → 51% | 75.34d → 67.22d |  |
| 2832 | **1 цех** |  |  |  | 88% → 89% |  |  |
| 2843 | очистка моторов шлюз питателей циклонов от пыли | 2026-10-29 09:00 A | 2026-10-29 09:30 A |  | 0% → 100% | 98.53d → none |  |
| 2856 | **линия 1** |  |  |  | 92% → 95% |  |  |
| 2881 | **парогенератор** |  | 2026-11-17 10:00 A |  | 94% → 100% | 81.47d → none |  |
| 2894 | Чистка парогенератора (чистим, как остановятся) | 2026-11-17 09:00 A | 2026-11-17 10:00 A |  | 0% → 100% | 81.47d → none |  |
| 2968 | **линия 2** |  |  |  | 41% → 58% |  |  |
| 2969 | **шнек подачи в питатель экструдера** | 2026-11-18 09:00 A | 2026-11-18 10:00 A |  | 0% → 100% | 80.47d → none |  |
| 2970 | Замена подшипников | 2026-11-18 09:00 A | 2026-11-18 10:00 A |  | 0% → 100% | 80.47d → none |  |
| 2971 | **питатель экструдера** |  | 2026-11-18 09:30 A |  | 93% → 100% | 80.53d → none |  |
| 2983 | Ревизия питателя, контроль состояния подшипников/втулки/шестерен | 2026-11-18 09:00 A | 2026-11-18 09:30 A |  | 0% → 100% | 80.53d → none |  |
| 2984 | **прекондицинер экструдера** |  | 2026-11-18 09:15 A |  | 88% → 100% | 80.56d → none |  |
| 2992 | контроль привода, подшипников | 2026-11-18 09:00 A | 2026-11-18 09:15 A |  | 0% → 100% | 80.56d → none |  |
| 2993 | **парогенератор** |  |  |  | 86% → 95% |  |  |
| 3004 | Чистка парогенератора (когда остановятся) | 2026-11-17 09:00 A | 2026-11-17 10:00 A |  | 0% → 100% | 81.47d → none |  |
| 3005 | **шкаф управления экструдером** |  | 2026-11-18 09:15 A |  | 58% → 100% | 80.56d → none |  |
| 3011 | частотные привода экструдера, ножей, питателя - продувка | 2026-10-14 09:00 A | 2026-10-14 09:15 A |  | 0% → 100% | 110.56d → none |  |

| ID | Task | Start | Finish | Duration | Complete | Total float | Other |
| --- | --- | --- | --- | --- | --- | --- | --- |
| 3012 | частотные привода экструдера, ножей, питателя - продувка | 2026-10-21 09:00 A | 2026-10-21 09:15 A |  | 0% → 100% | 104.56d → none |  |
| 3013 | частотные привода экструдера, ножей, питателя - продувка | 2026-10-29 09:00 A | 2026-10-29 09:15 A |  | 0% → 100% | 98.56d → none |  |
| 3014 | частотные привода экструдера, ножей, питателя - продувка | 2026-11-11 09:00 A | 2026-11-11 09:15 A |  | 0% → 100% | 87.56d → none |  |
| 3015 | частотные привода экструдера, ножей, питателя - продувка | 2026-11-18 09:00 A | 2026-11-18 09:15 A |  | 0% → 100% | 80.56d → none |  |
| 3016 | **редуктор экструдера и маслянная станция** |  | 2026-11-18 09:30 A |  | 54% → 100% | 80.53d → none |  |
| 3023 | Чистка фильтра/тэны и термопары шнеков - протяжка | 2026-10-14 09:00 A | 2026-10-14 09:30 A |  | 0% → 100% | 110.53d → none |  |
| 3024 | Чистка фильтра/тэны и термопары шнеков - протяжка | 2026-10-14 09:00 A | 2026-10-14 09:30 A |  | 0% → 100% | 110.53d → none |  |
| 3025 | Чистка фильтра/тэны и термопары шнеков - протяжка/ проверка масла | 2026-10-21 09:00 A | 2026-10-21 09:30 A |  | 0% → 100% | 104.53d → none |  |
| 3026 | Чистка фильтра/тэны и термопары шнеков - протяжка/ проверка масла | 2026-10-29 09:00 A | 2026-10-29 09:30 A |  | 0% → 100% | 98.53d → none |  |
| 3027 | Чистка фильтра/тэны и термопары шнеков - протяжка/ проверка масла | 2026-11-11 09:00 A | 2026-11-11 09:30 A |  | 0% → 100% | 87.53d → none |  |
| 3028 | Чистка фильтра/тэны и термопары шнеков - протяжка/ проверка масла | 2026-11-18 09:00 A | 2026-11-18 09:30 A |  | 0% → 100% | 80.53d → none |  |
| 3029 | **блок тэнов сушки - протяжка** |  |  |  | 61% → 71% |  |  |
| 3034 | Ревизия, проверка жил, проверка токов | 2026-10-21 09:00 A | 2026-10-21 09:20 A |  | 0% → 100% | 104.55d → none |  |
| 3035 | Ревизия, проверка жил, проверка токов | 2026-10-29 09:00 A | 2026-10-29 09:20 A |  | 0% → 100% | 98.55d → none |  |
| 3036 | Ревизия, проверка жил, проверка токов | 2026-11-11 09:00 A | 2026-11-11 09:20 A |  | 0% → 100% | 87.55d → none |  |
| 3037 | Ревизия, проверка жил, проверка токов | 2026-11-18 09:00 A | 2026-11-18 09:20 A |  | 0% → 100% | 80.55d → none |  |
| 3038 | **шкаф управления тэнами сушки** |  |  |  | 84% → 97% |  |  |
| 3048 | ревизия/ проверка токов/протяжка контактов | 2026-10-14 09:00 A | 2026-10-14 09:15 A |  | 0% → 100% | 110.56d → none |  |
| 3049 | ревизия/ проверка токов/протяжка контактов | 2026-10-21 09:00 A | 2026-10-21 09:15 A |  | 0% → 100% | 104.56d → none |  |
| 3050 | ревизия/ проверка токов/протяжка контактов | 2026-10-29 09:00 A | 2026-10-29 09:15 A |  | 0% → 100% | 98.56d → none |  |
| 3051 | ревизия/ проверка токов/протяжка контактов | 2026-11-11 09:00 A | 2026-11-11 09:15 A |  | 0% → 100% | 87.56d → none |  |
| 3052 | ревизия/ проверка токов/протяжка контактов | 2026-11-18 09:00 A | 2026-11-18 09:15 A |  | 0% → 100% | 80.56d → none |  |
| 3053 | **Насос гидролизата** |  | 2026-11-18 09:30 A |  | 50% → 100% | 80.53d → none |  |
| 3056 | Дефектовка - проверить подачу, вибрации, посторонние шумы. | 2026-11-11 09:00 A | 2026-11-11 09:30 A |  | 0% → 100% | 87.53d → none |  |
| 3057 | Дефектовка - проверить подачу, вибрации, посторонние шумы. | 2026-11-18 09:00 A | 2026-11-18 09:30 A |  | 0% → 100% | 80.53d → none |  |
| 3058 | **Квадропак** |  | 2026-11-18 10:00 → 2026-11-25 10:00 (+7d) | 163.12d → 168.12d |  | 80.47d → 75.47d |  |
| 3072 | Осмотр, дефектовка, устранение неисправностей ,смазка по необходимости, протяжка болтов | 2026-11-18 09:00 → 2026-11-25 09:00 (+7d) | 2026-11-18 10:00 → 2026-11-25 10:00 (+7d) |  |  | 80.47d → 75.47d | constraint start no earlier than 2026-11-18 09:00 → start no earlier than 2026-11-25 09:00 |
| 3073 | **Дражжировка** | 2026-08-27 09:00 A |  |  | 0% → 85% |  |  |
| 3074 | Проверка подшипников на барабанах | 2026-08-27 09:00 A | 2026-08-27 09:15 A |  | 0% → 100% | 152.56d → none |  |
| 3075 | Проверка фильтров | 2026-08-27 09:00 A | 2026-08-27 09:10 A |  | 0% → 100% | 152.57d → none |  |
| 3076 | Ревизия насоса гидролизата | 2026-08-27 09:00 A | 2026-08-27 11:00 A |  | 0% → 100% | 152.34d → none |  |
| 3077 | Дефектовка - проверить подачу, вибрации, посторонние шумы/проверка фильтров/насосов/фитингов | 2026-10-14 09:00 A | 2026-10-14 09:15 A |  | 0% → 100% | 110.56d → none |  |
| 3078 | Дефектовка - проверить подачу, вибрации, посторонние шумы/проверка фильтров/насосов/фитингов | 2026-10-21 09:00 A | 2026-10-21 09:15 A |  | 0% → 100% | 104.56d → none |  |
| 3079 | Ремон конвейера изготовление и установка полосы, чтоб не сыпало | 2026-10-21 09:00 A | 2026-10-21 11:00 A |  | 0% → 100% | 104.34d → none |  |
| 3080 | Дефектовка - проверить подачу, вибрации, посторонние шумы/проверка фильтров/насосов/фитингов | 2026-10-29 09:00 A | 2026-10-29 09:15 A |  | 0% → 100% | 98.56d → none |  |
| 3081 | Дефектовка - проверить подачу, вибрации, посторонние шумы/проверка фильтров/насосов/фитингов | 2026-11-11 09:00 A | 2026-11-11 09:15 A |  | 0% → 100% | 87.56d → none |  |
| 3082 | Дефектовка - проверить подачу, вибрации, посторонние шумы/проверка фильтров/насосов/фитингов | 2026-11-18 09:00 A | 2026-11-18 09:15 A |  | 0% → 100% | 80.56d → none |  |
| 3084 | **жиротопка и насос перекачки жира** |  | 2026-11-18 09:15 A |  | 13% → 100% | 80.56d → none |  |
| 3085 | блок тэнов -протяжка | 2024-04-10 09:00 A | 2024-04-10 09:30 A |  | 0% → 100% | 773.53d → none |  |
| 3086 | насос, фильтр - осмотр, чистка | 2024-04-25 09:00 A | 2024-04-25 09:15 A |  | 0% → 100% | 762.56d → none |  |
| 3088 | насос, фильтр - осмотр, чистка | 2026-10-21 09:00 A | 2026-10-21 09:15 A |  | 0% → 100% | 104.56d → none |  |
| 3089 | насос, фильтр - осмотр, чистка | 2026-10-29 09:00 A | 2026-10-29 09:15 A |  | 0% → 100% | 98.56d → none |  |
| 3090 | насос, фильтр - осмотр, чистка | 2026-11-11 09:00 A | 2026-11-11 09:15 A |  | 0% → 100% | 87.56d → none |  |
| 3091 | насос, фильтр - осмотр, чистка | 2026-11-18 09:00 A | 2026-11-18 09:15 A |  | 0% → 100% | 80.56d → none |  |
| 3092 | **упаковщкики** |  |  |  | 12% → 33% |  |  |
| 3106 | Осмотр всех упаковщиков/транспортеров/накопительных столов/ всех щитков оборудования | 2026-10-14 09:00 A | 2026-10-14 11:00 A |  | 0% → 100% | 110.34d → none |  |
| 3107 | Осмотр всех упаковщиков/транспортеров/накопительных столов/ всех щитков оборудования/редукторов | 2026-10-21 09:00 A | 2026-10-21 11:00 A |  | 0% → 100% | 104.34d → none |  |
| 3108 | Осмотр всех упаковщиков/транспортеров/накопительных столов/ всех щитков оборудования/редукторов | 2026-10-29 09:00 A | 2026-10-29 10:00 A |  | 0% → 100% | 98.47d → none |  |
| 3109 | Осмотр всех упаковщиков/транспортеров/накопительных столов/ всех щитков оборудования/редукторов | 2026-11-11 09:00 A | 2026-11-11 10:00 A |  | 0% → 100% | 87.47d → none |  |
| 3110 | Осмотр всех упаковщиков/транспортеров/накопительных столов/ всех щитков оборудования/редукторов | 2026-11-18 09:00 A | 2026-11-18 10:00 A |  | 0% → 100% | 80.47d → none |  |
| 3143 | **2 цех** |  | 2026-11-25 11:00 → 2026-12-07 12:00 (+12d) | 772.25d? → 780.38d? | 65% → 69% | 75.34d → 67.22d |  |
| 3145 | **прекондицинер экструдера** |  | 2026-10-30 13:00 → 2026-11-20 12:00 (+21d) | 670.5d? → 689.38d? | 82% → 89% | 97.09d → 78.22d |  |
| 3162 | Замена редуктора прекондиционера | 2026-10-30 09:00 A | 2026-10-30 13:00 A |  | 0% → 100% | 97.09d → none |  |
| 3163 | Ревизия масла редуктора/осмотр подшипников/ смазка при необходимости | 2026-10-15 09:00 A | 2026-10-15 09:15 A |  | 0% → 100% | 109.56d → none |  |
| 3164 | Контроль крепления лопаток | 2026-10-15 09:00 A | 2026-10-15 09:30 A |  | 0% → 100% | 109.53d → none |  |
| 3165 | Осмотр подшипников | 2026-10-30 09:00 A | 2026-10-30 09:15 A |  | 0% → 100% | 97.56d → none |  |
| 3168 | **парогенератор** |  | 2026-11-05 10:00 → 2026-11-20 09:15 (+15d) | 674d → 688.91d | 90% → 91% | 93.47d → 78.56d |  |
| 3190 | Чистка | 2026-11-05 09:00 A | 2026-11-05 10:00 A |  | 0% → 100% | 93.47d → none |  |
| 3192 | подписать сирена вкл/выкл | 2026-10-30 09:00 → 2026-11-20 09:00 (+21d) | 2026-10-30 09:15 → 2026-11-20 09:15 (+21d) |  |  | 97.56d → 78.56d | constraint start no earlier than 2026-10-30 08:00 → start no earlier than 2026-11-20 09:00; resources Зорькин В → Тимофеев В |
| 3194 | **привод сетки ПЕЧИ сушки** |  |  |  | 68% → 89% |  |  |
| 3209 | Замена шестерен привода | 2026-10-15 09:00 A | 2026-10-15 11:00 A |  | 0% → 100% | 109.34d → none |  |
| 3210 | Замена шкива на моторе привода печи (шкив на складе) | 2026-10-30 09:00 A | 2026-10-30 10:00 A |  | 0% → 100% | 97.47d → none |  |
| 3212 | **блок тэнов сушки** |  | 2026-10-30 10:00 → 2026-11-20 10:00 (+21d) | 670.12d → 689.12d | 80% → 91% | 97.47d → 78.47d |  |
| 3218 | ревизия перемычек | 2026-10-15 09:00 A | 2026-10-15 10:00 A |  | 0% → 100% | 109.47d → none |  |
| 3219 | ревизия / замена критичных | 2026-10-30 09:00 A | 2026-10-30 10:00 A |  | 0% → 100% | 97.47d → none |  |
| 3221 | **смеситель СМ-1500** |  | 2026-10-30 09:10 → 2026-11-20 12:00 (+21d) | 180.02d → 199.38d | 98% → 71% | 97.57d → 78.22d |  |
| 3231 | Осмотр подшипников/контроль масла | 2026-10-30 09:00 A | 2026-10-30 09:10 A |  | 0% → 100% | 97.57d → none |  |
| 3233 | **нория 2 выгрузки смесителя** |  | 2026-10-30 09:30 → 2026-11-20 09:30 (+21d) | 180.06d → 199.06d | 92% → 96% | 97.53d → 78.53d |  |
| 3245 | Ревизия ленты, контроль соединения | 2026-10-15 09:00 A | 2026-10-15 09:30 A |  | 0% → 100% | 109.53d → none |  |
| 3246 | Ревизия ленты, контроль соединения | 2026-10-30 09:00 A | 2026-10-30 09:30 A |  | 0% → 100% | 97.53d → none |  |

| ID | Task | Start | Finish | Duration | Complete | Total float | Other |
| --- | --- | --- | --- | --- | --- | --- | --- |
| 3248 | **бункер-накопитель с шнековой разкгрузкой синий** |  | 2026-10-30 09:05 → 2026-11-20 09:05 (+21d) | 130.01d → 149.01d | 98% → 97% | 97.58d → 78.58d |  |
| 3259 | **питатель экструдера** |  | 2026-10-30 10:00 → 2026-11-20 10:00 (+21d) | 165.12d → 184.12d | 90% → 95% | 97.47d → 78.47d |  |
| 3270 | Ревизия шестерен и подшипников | 2026-10-15 09:00 A | 2026-10-15 10:00 A |  | 0% → 100% | 109.47d → none |  |
| 3271 | Ревизия шестерен и подшипников | 2026-10-30 09:00 A | 2026-10-30 10:00 A |  | 0% → 100% | 97.47d → none |  |
| 3273 | **привод прекондиционера** |  | 2026-10-30 09:10 → 2026-11-20 09:10 (+21d) | 180.02d → 199.02d | 93% → 98% | 97.57d → 78.57d |  |
| 3283 | Осмотр подшипников, муфты, шестерен | 2026-10-15 09:00 A | 2026-10-15 09:20 A |  | 0% → 100% | 109.55d → none |  |
| 3284 | Осмотр подшипников, муфты, шестерен | 2026-10-30 09:00 A | 2026-10-30 09:10 A |  | 0% → 100% | 97.57d → none |  |
| 3286 | **мотор-редуктор привод шнеков** |  | 2026-10-30 09:10 → 2026-11-20 09:10 (+21d) | 60.02d → 79.02d | 41% → 43% | 97.57d → 78.57d |  |
| 3295 | Проверка масла | 2026-10-30 09:00 A | 2026-10-30 09:10 A |  | 0% → 100% | 97.57d → none |  |
| 3297 | **редуктор шнеков экструдера - проверка масла** |  | 2026-10-30 09:15 → 2026-11-20 09:15 (+21d) | 453.03d → 472.03d |  | 97.56d → 78.56d |  |
| 3317 | Проверка масла, чистка фильтра | 2026-10-30 09:00 A | 2026-10-30 09:15 A |  | 0% → 100% | 97.56d → none |  |
| 3319 | **шкаф управления экструдером** |  | 2026-10-30 09:10 → 2026-11-20 09:10 (+21d) | 180.02d → 199.02d | 85% → 93% | 97.57d → 78.57d |  |
| 3332 | продувка частотного привода | 2026-10-15 09:00 A | 2026-10-15 09:10 A |  | 0% → 100% | 109.57d → none |  |
| 3333 | продувка частотного привода | 2026-10-30 09:00 A | 2026-10-30 09:10 A |  | 0% → 100% | 97.57d → none |  |
| 3335 | **пневотранспорт роторный питатель** |  | 2026-10-30 09:10 → 2026-11-20 09:10 (+21d) | 170.02d → 189.02d | 46% → 55% | 97.57d → 78.57d |  |
| 3341 | Ревизия узлов/масла. Очистка мотора от пыли | 2026-10-15 09:00 A | 2026-10-15 09:20 A |  | 0% → 100% | 109.55d → none |  |
| 3342 | Ревизия узлов/масла. Очистка мотора от пыли | 2026-10-30 09:00 A | 2026-10-30 09:10 A |  | 0% → 100% | 97.57d → none |  |
| 3344 | **печь - валы этажей, подшипники, цепи** |  | 2026-10-15 10:00 A → 2026-11-20 09:30 (+36d) | 158.12d → 189.06d | 100% → 94% | none → 78.53d |  |
| 3357 | **вентиляторы обдува сушки** |  | 2026-10-30 10:00 → 2026-11-20 10:00 (+21d) | 180.12d? → 199.12d? | 17% → 29% | 97.47d → 78.47d |  |
| 3362 | Осмотр, очистка от пыли | 2026-10-15 09:00 A | 2026-10-15 11:00 A |  | 0% → 100% | 109.34d → none |  |
| 3363 | Осмотр, очистка от пыли | 2026-10-30 09:00 A | 2026-10-30 10:00 A |  | 0% → 100% | 97.47d → none |  |
| 3365 | **шкаф управления тэнами сушки главный** |  | 2026-10-30 09:20 → 2026-11-20 09:20 (+21d) | 180.04d → 199.04d | 87% → 88% | 97.55d → 78.55d |  |
| 3380 | осмотср замена подгоревших кабелей | 2026-10-30 09:00 A | 2026-10-30 09:20 A |  | 0% → 100% | 97.55d → none |  |
| 3382 | **шкаф управления тэнами твердотельный** |  | 2026-10-30 09:20 → 2026-11-20 09:20 (+21d) | 180.04d → 199.04d |  | 97.55d → 78.55d |  |
| 3393 | Продувка. Замена подогретых жил | 2026-10-30 09:00 A | 2026-10-30 09:20 A |  | 0% → 100% | 97.55d → none |  |
| 3395 | **конвейер №1 с печи в дрожировщик** |  | 2026-10-30 09:30 → 2026-11-20 09:15 (+21d) | 180.06d → 199.03d | 86% → 93% | 97.53d → 78.56d |  |
| 3404 | очистка валов и ленты / контроль крепления редуктора / состояния подшипника | 2026-10-30 09:00 A | 2026-10-30 09:30 A |  | 0% → 100% | 97.53d → none |  |
| 3406 | **барабан смесительный дрожировка** |  | 2026-10-30 11:00 → 2026-11-20 10:00 (+21d) | 750.25d → 769.12d | 65% → 79% | 97.34d → 78.47d |  |
| 3417 | Осмотр соединений фитингов, трехходового крана бежит/не бежит | 2026-09-18 09:00 A | 2026-09-18 09:10 A |  | 0% → 100% | 133.57d → none |  |
| 3418 | Осмотр подшипников редукторов | 2026-10-08 09:00 A | 2026-10-08 09:15 A |  | 0% → 100% | 114.56d → none |  |
| 3419 | Осмотр соединений фитингов, трехходового крана бежит/не бежит | 2026-10-08 09:00 A | 2026-10-08 09:10 A |  | 0% → 100% | 114.57d → none |  |
| 3420 | Осмотр соединений фитингов, трехходового крана бежит/не бежит | 2026-10-15 09:00 A | 2026-10-15 09:15 A |  | 0% → 100% | 109.56d → none |  |
| 3421 | Осмотр соединений фитингов, трехходового крана бежит/не бежит | 2026-10-30 09:00 A | 2026-10-30 09:10 A |  | 0% → 100% | 97.57d → none |  |
| 3422 | Замена фитингов на новые под новый шланг | 2026-10-30 09:00 A | 2026-10-30 11:00 A |  | 0% → 100% | 97.34d → none |  |
| 3425 | **Узел подачи гидролизата** |  | 2026-10-30 09:10 → 2026-11-20 09:10 (+21d) | 87.02d → 106.02d | 85% → 93% | 97.57d → 78.57d |  |
| 3432 | Осмотр/ревизия насоса гидролизата, проверка всех соединений | 2026-10-15 09:00 A | 2026-10-15 09:10 A |  | 0% → 100% | 109.57d → none |  |
| 3433 | Вернуть ограничение частоты на 70 герц и заблокировать настройки частотника, чтоб не могли менять | 2026-10-15 09:00 A | 2026-10-15 09:20 A |  | 0% → 100% | 109.55d → none |  |
| 3434 | Осмотр/ревизия насоса гидролизата, проверка всех соединений | 2026-10-30 09:00 A | 2026-10-30 09:10 A |  | 0% → 100% | 97.57d → none |  |
| 3437 | **конвейер №2 с дрожировки в охладитель** |  | 2026-10-30 09:30 → 2026-11-20 09:30 (+21d) | 180.06d → 199.06d | 86% → 88% | 97.53d → 78.53d |  |
| 3446 | ревизия люфтов, фиксации смазки подшипников | 2026-10-30 09:00 A | 2026-10-30 09:30 A |  | 0% → 100% | 97.53d → none |  |
| 3448 | **охладитель сеточный** |  | 2026-11-05 12:00 → 2026-12-07 12:00 (+32d) | 674.38d? → 700.38d? | 54% → 60% | 93.22d → 67.22d |  |
| 3466 | ревизия состояния сетки/контроль натяжки цепей, ревизия сетки | 2026-10-30 09:00 A | 2026-10-30 10:00 A |  | 0% → 100% | 97.47d → none |  |
| 3467 | Смазка подшипников привода при необходимости | 2026-10-30 09:00 A | 2026-10-30 09:30 A |  | 0% → 100% | 97.53d → none |  |
| 3468 | заявка на тавотницы 90 | 2026-10-30 09:00 A | 2026-10-30 09:20 A |  | 0% → 100% | 97.55d → none |  |
| 3469 | замена тавотниц которые требуют ослабление сетки для доступа | 2026-11-05 09:00 → 2026-12-07 09:00 (+32d) | 2026-11-05 12:00 → 2026-12-07 12:00 (+32d) |  |  | 93.22d → 67.22d | constraint start no earlier than 2026-11-05 09:00 → start no earlier than 2026-12-07 09:00 |
| 3470 | **конвейер 3 с охладителя в упаковку** |  | 2026-10-30 09:15 → 2026-11-19 09:15 (+20d) | 66.03d → 84.03d | 57% → 88% | 97.56d → 79.56d |  |
| 3475 | ревизия люфтов, фиксации, смазки подшипников | 2026-10-01 09:00 A | 2026-10-01 09:15 A |  | 0% → 100% | 120.56d → none |  |
| 3476 | ревизия люфтов, фиксации, смазки подшипников | 2026-10-15 09:00 A | 2026-10-15 09:15 A |  | 0% → 100% | 109.56d → none |  |
| 3477 | ревизия люфтов, фиксации, смазки подшипников | 2026-10-30 09:00 A | 2026-10-30 09:15 A |  | 0% → 100% | 97.56d → none |  |
| 3479 | **упаковка** |  | 2026-09-24 10:00 A → 2026-11-20 09:30 (+57d) | 720.12d → 769.06d | 100% → 96% | none → 78.53d |  |
| 3488 | **квадропак** |  | 2026-10-29 09:10 → 2026-11-20 10:00 (+22d) | 65.02d → 85.12d | 60% → 87% | 98.57d → 78.47d |  |
| 3489 | смазка вращающиющихся механизмов | 2026-10-01 09:00 A | 2026-10-01 09:30 A |  | 0% → 100% | 120.41d → none |  |
| 3490 | протяжка креплений поворотных лап захвата | 2026-10-01 09:30 A | 2026-10-01 10:00 A |  | 0% → 100% | 120.41d → none |  |
| 3491 | чистка вала ленты выгрзного транспортера | 2026-10-01 10:00 A | 2026-10-01 10:30 A |  | 0% → 100% | 120.41d → none |  |
| 3492 | осмотр приводной системы нории / смазка | 2026-08-12 09:00 A | 2026-08-12 09:30 A |  | 0% → 100% | 163.53d → none |  |
| 3493 | осмотр приводной системы нории / смазка | 2026-08-20 09:00 A | 2026-08-20 09:30 A |  | 0% → 100% | 157.53d → none |  |
| 3498 | Проверка редуктора транспортерной ленты | 2026-10-29 09:00 A | 2026-10-29 09:10 A |  | 0% → 100% | 98.57d → none |  |
| 3500 | **БЕСТРОМ** |  | 2026-10-30 10:00 → 2026-11-20 10:00 (+21d) | 750.12d → 769.12d | 80% → 77% | 97.47d → 78.47d |  |
| 3557 | **кондиционер 1** |  | 2026-10-30 09:20 → 2026-11-20 09:20 (+21d) | 670.04d? → 689.04d? | 97% → 94% | 97.55d → 78.55d |  |
| 3568 | **кондиционер 2** |  | 2026-10-30 09:20 → 2026-11-20 09:20 (+21d) | 670.04d? → 689.04d? | 97% → 95% | 97.55d → 78.55d |  |
| 3580 | **кондиционер 3** |  | 2026-10-30 09:20 → 2026-11-20 09:20 (+21d) | 180.04d → 199.04d | 88% → 78% | 97.55d → 78.55d |  |
| 3647 | **синий склад** |  | 2026-11-17 12:00 → 2026-11-23 12:00 (+6d) | 151.38d → 155.38d |  | 81.22d → 77.22d |  |
| 3648 | Маркировка оборудования по списку с кладовщиком, взять красные стикеры и пометить | 2026-11-17 09:00 → 2026-11-23 09:00 (+6d) | 2026-11-17 12:00 → 2026-11-23 12:00 (+6d) |  |  | 81.22d → 77.22d | constraint start no earlier than 2026-11-17 09:00 → start no earlier than 2026-11-23 09:00 |
| 3832 | Проведение экзамена Николаеву Юре на предмет понимания и знания технологического оборудования на предприятии. Где что включается, выключается, как производится ремонт, принцип работы. Где проложены основные магистрали Электроснабжения и водоснабжения | 2026-11-17 09:00 A | 2026-11-17 10:00 A |  | 0% → 100% | 81.47d → none |  |
| 3871 | **офис** |  | 2026-09-08 09:15 → 2026-11-20 18:00 (+73d) | 325.03d → 391d? | 80% → 10% | 143.56d → 77.59d |  |
| 3877 | **территория** |  | 2026-11-04 13:00 → 2026-11-20 10:00 (+16d) | 453.5d? → 469.12d? | 71% → 70% | 94.09d → 78.47d |  |

## Version 41 (saved 2026-11-24, file 07.09.26.mpp)

Last finish stays 2027-03-10. Complete tasks 2853 → 2895.

Added:

| ID | Task | Duration | Start | Finish | Predecessors | Constraint | Resources |
| --- | --- | --- | --- | --- | --- | --- | --- |
| 2 | Замена пускателя получить информацию по смене от Николаева | 1h | 2026-11-23 09:00 A | 2026-11-23 10:00 A |  | start no earlier than 2026-11-23 08:00 | Бундин В |
| 3 | Усиление рамы прайсчекера, чтоб не падала так легко, подумать как укрепить, утяжелить | 2h | 2026-11-27 09:00 | 2026-11-27 11:00 |  | start no earlier than 2026-11-27 09:00 | Бундин В |
| 4 | Установка дополнительного освещения на охладителях | 2h | 2026-11-30 09:00 | 2026-11-30 11:00 |  | start no earlier than 2026-11-30 09:00 | Труфанов А; Некрасов А |
| 131 | монтаж растверк свай | 5h | 2026-11-24 09:00 A | 2026-11-24 15:00 A |  | start no earlier than 2026-11-24 08:00 | Труфанов А; Некрасов А; Макаревич А |
| 132 | сборка рамы | 5h | 2026-11-25 09:00 | 2026-11-25 15:00 |  | start no earlier than 2026-11-25 09:00 | Некрасов А; Макаревич А |
| 906 | Ремонт фартука поломоечной машины (впаять проволоку в фронтальный разрыв, по периметру обклеить космофеном с содой, дополнитьльно армировать стеклотканью) | 3h | 2026-11-24 09:00 | 2026-11-24 12:00 |  | start no earlier than 2026-11-24 08:00 | Николаев |
| 907 | Замена автомата в печи, не работает | 1h | 2026-11-24 09:00 | 2026-11-24 10:00 |  | start no earlier than 2026-11-24 09:00 | Николаев |
| 1607 | подготорвка схемы | 5h | 2026-11-24 09:00 A | 2026-11-24 15:00 A |  | start no earlier than 2026-11-24 08:00 | Дедов В |
| 1608 | Установка электромагнита на двери | 5h | 2026-11-25 09:00 | 2026-11-25 15:00 |  | start no earlier than 2026-11-25 09:00 | Дедов В |
| 1644 | поднять силиконовые резинки так, что бы они не касались сетки охладителя | 2h | 2026-11-25 09:00 | 2026-11-25 11:00 |  | start no earlier than 2026-11-25 09:00 | Тимофеев В |
| 1645 | Сделать отверстия по краям охладителя в месте ссыпания гранулы, чтоб то что шло с цепей, падало мимо полибокса | 2h | 2026-11-25 09:00 | 2026-11-25 11:00 |  | start no earlier than 2026-11-25 09:00 | Тимофеев В |
| 1646 | Протираем цепи и сетку на охладителе повторно, так же прогоняем под цепями | 6h | 2026-11-23 09:00 A | 2026-11-23 16:00 A |  | start no earlier than 2026-11-23 08:00 | Бундин В |
| 1647 | Не работает шторка на охладителе, исправить | 1h | 2026-11-20 09:00 A | 2026-11-20 10:00 A |  | start no earlier than 2026-11-20 08:00 | Бундин В |
| 1648 | Активное дежурство | 1d | 2026-11-22 09:00 A | 2026-11-22 18:00 A | 1650 |  | Дедов В |
| 1649 | Активное дежурство | 1d | 2026-11-22 09:00 A | 2026-11-22 18:00 A |  | start no earlier than 2026-11-22 09:00 | Николаев |
| 1650 | Активное дежурство | 1d | 2026-11-21 09:00 A | 2026-11-21 18:00 A | 1651 |  | Тимофеев В |
| 1651 | Активное дежурство | 1d? | 2026-11-20 09:00 A | 2026-11-20 18:00 A |  | start no earlier than 2026-11-20 08:00 | Бундин В |
| 1652 | Усиление рамы смесителей, делаем крест со стороны которую качает (пока готовим, на остановке делаем на выключенном смесителе) | 4h | 2026-11-24 09:00 A | 2026-11-24 13:00 A |  | start no earlier than 2026-11-24 09:00 | Тимофеев В |
| 1653 | Чистка форсунок в прекондиционере (на остановке) | 2h | 2026-11-20 09:00 A | 2026-11-20 11:00 A |  | start no earlier than 2026-11-20 08:00 | Бундин В |
| 2043 | Монтаж освещения на улицу | 2h | 2026-11-27 09:00 | 2026-11-27 11:00 |  | start no earlier than 2026-11-27 09:00 | Труфанов А; Некрасов А |
| 2600 | ремонт электродов с парогенератора, которые в врестаке | 3h | 2026-11-25 09:00 | 2026-11-25 12:00 |  | start no earlier than 2026-11-25 09:00 | Николаев |
| 2601 | ремонт обручей от вибросит | 3h | 2026-11-24 09:00 | 2026-11-24 12:00 |  | start no earlier than 2026-11-24 09:00 | Николаев |
| 2602 | ремонт сеток от печек. Если не сверлиться - не сверлить. Нарезать пластины и заготовки , сверлить | 3h | 2026-11-24 09:00 | 2026-11-24 12:00 |  | start no earlier than 2026-11-24 09:00 | Николаев |
| 2603 | Со 2 цеха привезти редуктор от прекондиционера в слесарку и поставить на рабочий стол, мычалками перецепить и вилами положить на стол, раскидать его, отдефектовать | 4h | 2026-11-21 09:00 | 2026-11-21 13:00 |  | start no earlier than 2026-11-21 09:00 | Бундин В |
| 2604 | Ремонт электродов в слесарке (1 и 2 цех) нержа в доль стелажа, пластины на желтом складе | 3h | 2026-11-21 09:00 A | 2026-11-21 12:00 A |  | start no earlier than 2026-11-21 09:00 | Тимофеев В |
| 3771 | На желтом складе наведение порядка. Всю вентиляцию утащить на синий склад. | 2h | 2026-11-21 09:00 A | 2026-11-21 11:00 A |  | start no earlier than 2026-11-21 09:00 | Тимофеев В |
| 3858 | инвентаризация | 1d? | 2026-11-25 09:00 | 2026-11-25 18:00 |  | start no earlier than 2026-11-25 09:00 | Зорькин В; Труфанов А |
| 3899 | Установить ящики желаний отдел кадров | 30min | 2026-11-25 09:00 | 2026-11-25 09:30 |  | start no earlier than 2026-11-25 09:00 | Некрасов А; Макаревич А |
| 3938 | сделать кронштейны для намотки кабеля зарядки, что бы не лежал на земле | 2h | 2026-11-25 09:00 | 2026-11-25 11:00 |  | start no earlier than 2026-11-25 09:00 | Тимофеев В |

Changed:

| ID | Task | Start | Finish | Duration | Complete | Total float | Predecessors | Other |
| --- | --- | --- | --- | --- | --- | --- | --- | --- |
| 5 | Посмотреть отопление в 1 цехе холодно | 2026-11-19 09:00 A | 2026-11-19 10:00 A |  | 0% → 100% | 79.47d → none |  |  |
| 12 | 2 линия ремонт сквозной ржавчины прекондиционера возле горла | 2026-11-18 09:00 → 2026-11-30 09:00 (+12d) | 2026-11-18 11:00 → 2026-11-30 11:00 (+12d) |  |  | 80.34d → 72.34d |  | constraint start no earlier than 2026-11-18 09:00 → start no earlier than 2026-11-30 09:00 |
| 30 | **Собрать канистру для подачи воды в экструдер, по аналогу 3 цех. Промежуточный бак 2 шт** |  | 2026-11-17 11:00 A |  | 99% → 100% | 0d → none |  | resources Бундин В → none |
| 106 | **сборка рама для труб приточной вентиляции** |  | 2026-11-23 18:00 → 2026-11-27 18:00 (+4d) | 33d? → 37d? | 67% → 70% | 76.59d → 72.59d |  |  |
| 110 | Монтаж арматурной сетки | 2026-11-17 09:00 A | 2026-11-17 13:00 A |  | 0% → 100% | 81.09d → none |  |  |
| 130 | **сборка рама в цехе 3** | 2026-11-09 09:00 A | 2026-11-10 10:00 → 2026-11-25 15:00 (+15d) | 1.12d → 14.62d | 0% → 33% | 87.47d → 73.97d |  | was named сборка рама в цехе |
| 135 | монтаж рама на цех краном | 2026-11-23 09:00 → 2026-11-27 09:00 (+4d) | 2026-11-23 18:00 → 2026-11-27 18:00 (+4d) |  |  | 76.59d → 72.59d |  | constraint start no earlier than 2026-11-23 09:00 → start no earlier than 2026-11-27 09:00 |
| 427 | **Модернизация смесителей для автоматической подачи сырья из смесителей** |  |  |  |  |  |  | was named Модернизация смесителей |
| 593 | **замена ленты пролистывателя** |  | 2026-10-30 18:00 → 2026-11-27 13:00 (+28d) | 37d → 60.5d |  | 96.59d → 0d |  |  |
| 597 | склеить ремень с лентой, ремень на складе (отправить ленту организации, которая когда-то приезжала и склеивала ленты) | 2026-10-29 09:00 → 2026-11-27 09:00 (+29d) | 2026-10-29 13:00 → 2026-11-27 13:00 (+29d) |  |  | 96.59d → none |  | was named склеить ремень; constraint start no earlier than 2026-10-29 09:00 → start no earlier than 2026-11-27 09:00 |
| 598 | замена лент | 2026-10-30 14:00 → 2026-11-21 09:00 (+22d) | 2026-10-30 18:00 → 2026-11-21 13:00 (+22d) |  |  | 96.59d → none |  | constraint start no earlier than 2026-10-26 09:00 → start no earlier than 2026-11-21 09:00 |
| 910 | заменаить лопатки на прекондиционере | 2026-11-20 09:00 A | 2026-11-20 13:00 A |  | 0% → 100% | 78.09d → none |  |  |
| 916 | Замена и ремонт инсектицидных ламп 7 шт (сделана 1шт) подробная информация состояния и что нужно | 2026-11-18 09:00 A | 2026-11-18 12:00 A |  | 0% → 100% | 80.22d → none |  |  |
| 937 | **замена трубки на насос гидролизат** |  | 2026-10-30 11:00 A |  | 27% → 100% | 97.34d → none |  |  |
| 940 | замена всех трубок на 12/10 | 2026-10-30 09:00 A | 2026-10-30 11:00 A |  | 0% → 100% | 97.34d → none |  |  |
| 963 | Откалибровать смеситель | 2026-10-09 09:00 A | 2026-10-09 10:00 A |  | 0% → 100% | 113.47d → none |  |  |
| 1606 | **схема блокировки роль ворот при открытым шлюзе + авт закрытие + датчик препятствия** | 2026-11-02 09:00 A |  |  | 0% → 28% |  |  |  |
| 1627 | **отмена** |  | 2026-12-08 11:30 → 2026-12-15 11:30 (+7d) | 98.31d? → 103.31d? |  | 66.28d → 61.28d |  |  |
| 1628 | **найти места утечки тепла под потолком- перемерзает труба подачи воды в 3 цех** |  | 2026-12-08 11:30 → 2026-12-15 11:30 (+7d) | 98.31d? → 103.31d? |  | 66.28d → 61.28d |  |  |
| 1631 | проверка пирометром / тепловизором | 2026-11-23 09:00 → 2026-11-30 09:00 (+7d) | 2026-11-23 11:00 → 2026-11-30 11:00 (+7d) |  |  | 66.28d → 61.28d |  | constraint start no earlier than 2026-11-23 09:00 → start no earlier than 2026-11-30 09:00 |
| 1632 | заявка (подумать материал) | 2026-11-23 11:00 → 2026-11-30 11:00 (+7d) | 2026-11-23 11:15 → 2026-11-30 11:15 (+7d) |  |  | 66.28d → 61.28d |  |  |
| 1633 | доставка- контроль | 2026-12-07 11:15 → 2026-12-14 11:15 (+7d) | 2026-12-07 11:30 → 2026-12-14 11:30 (+7d) |  |  | 66.28d → 61.28d |  |  |
| 1634 | монтаж | 2026-12-07 11:30 → 2026-12-14 11:30 (+7d) | 2026-12-08 11:30 → 2026-12-15 11:30 (+7d) |  |  | 66.28d → 61.28d |  |  |
| 1643 | **3 цех** |  |  |  | 83% → 91% |  |  |  |
| 1654 | Подключить кабель от тепловой пушки, которая стоит в гидрализатной 1 цеха и саму пушку в тамбуре, где будет вывоз готовой продукции, там ворота стоят. (Если Валентин не подключит, всю информацию получить у него) | 2026-11-19 09:00 A | 2026-11-19 10:00 A |  | 0% → 100% | 79.47d → none |  |  |
| 1656 | Составить список что нужно закупить для подключения батареи между охладителем и фасовкой | 2026-11-18 09:00 A | 2026-11-18 10:00 A |  | 0% → 100% | 80.47d → none |  |  |
| 1659 | Тест оборудование перед запуском |  |  |  |  |  | 1665 → none |  |
| 1669 | (сначало поменять кран на полнопроходной вместо золотникового) полку для канистры гидролизата нарастить на 20 см, проверить что бы вошли весы | 2026-11-19 09:00 A | 2026-11-19 10:00 A |  | 0% → 100% | 79.47d → none |  |  |
| 1670 | **Установить частотный преобразователь на барабан этра** | 2026-11-16 09:00 A | 2026-11-30 11:15 A |  | 0% → 100% | 72.31d → none |  |  |
| 1671 | заявка частотники | 2026-11-16 09:00 A | 2026-11-16 09:15 A |  | 0% → 100% | 72.31d → none |  |  |
| 1672 | доставка конроль | 2026-11-16 09:15 A | 2026-11-30 09:15 A |  | 0% → 100% | 72.31d → none |  |  |
| 1673 | монтаж | 2026-11-30 09:15 A | 2026-11-30 11:15 A |  | 0% → 100% | 72.31d → none |  |  |
| 1675 | Герметизация слива в душах (герметиком санитарным) | 2026-11-15 09:00 A | 2026-11-15 11:00 A |  | 0% → 100% | 83.34d → none |  |  |
| 1676 | **Врезать вентилятор в курилку и подключить** |  | 2026-11-25 14:30 → 2026-11-25 13:00 | 10.56d → 10.5d |  | 75.03d → 75.09d |  |  |
| 1678 | заявка обратный клапан/тройник/дифузоры на вентилятор ВК200Б | 2026-11-16 09:00 → 2026-11-25 09:00 (+9d) | 2026-11-16 09:30 → 2026-11-25 09:30 (+9d) |  |  | 75.03d → 75.53d |  | constraint start no earlier than 2026-11-16 09:00 → start no earlier than 2026-11-25 09:00 |
| 1679 | доставка контроль | 2026-11-16 09:30 → 2026-11-13 09:00 (-3d) | 2026-11-25 09:30 → 2026-11-19 18:00 (-6d) |  |  | 75.03d → 78.09d | 1677, 1678 → none |  |
| 1680 | монтаж вентилятор | 2026-11-25 09:30 → 2026-11-25 09:00 | 2026-11-25 14:30 → 2026-11-25 13:00 |  |  | 75.03d → 75.09d |  | was named монтаж; constraint start no earlier than 2026-11-13 08:00 → start no earlier than 2026-11-25 09:00 |
| 1681 | Срезать перемычки на загрузке жиров, мешают паллетам (на остановке) | 2026-11-19 09:00 → 2026-11-20 09:00 A (+1d) | 2026-11-19 10:00 → 2026-11-20 10:00 A (+1d) |  | 0% → 100% | 79.47d → none |  | was named Срезать перемычки на загрузке жиров, мешают паллетам; constraint start no earlier than 2026-11-19 09:00 → start no earlier than 2026-11-20 09:00 |
| 1691 | Изготовить площадку для засыпки сухого гидролизата, за основу взять раму у 5 цеха. Покрасить |  |  |  |  |  |  | was named Изготовить площадку для засыпки сухого гидролизата, за основу взять раму у 5 цеха |
| 2017 | покраска рамы воздуховодов уличные | 2026-05-27 09:00 A | 2026-05-27 13:00 A |  | 0% → 100% | 218.09d → none |  |  |
| 2050 | 5а подключить автоматику ворот | 2026-11-10 09:00 → 2026-11-25 09:00 (+15d) | 2026-11-10 10:00 → 2026-11-25 11:00 (+15d) | 1h → 2h |  | 88.47d → 75.34d |  | constraint start no earlier than 2026-11-10 09:00 → start no earlier than 2026-11-25 09:00; resources Некрасов А → Тимофеев В |
| 2208 | завершить работы по примыканию к кровли 5А (излишки изоспан) | 2026-06-19 09:00 A | 2026-06-19 18:00 A |  | 0% → 100% | 200.59d → none |  |  |
| 2411 | **монтаж форсунки в линию** |  |  | 266.5d? → 268.5d? |  |  |  |  |
| 2515 | **техника** |  |  |  | 95% → 98% |  |  |  |
| 2516 | ремонт генератора - замена реле / покупка с курьером | 2026-11-10 09:00 A | 2026-11-10 11:00 A |  | 0% → 100% | 88.34d → none |  |  |
| 2520 | рвет ремень генератора | 2026-10-20 09:00 A | 2026-10-20 09:00 A |  | 0% → 100% | 105.59d → none |  |  |
| 2521 | течь "всех" патрубков - комплексная замена | 2026-10-20 09:00 A | 2026-10-20 09:00 A |  | 0% → 100% | 105.59d → none |  |  |
| 2605 | Перебрать насос гидрализата винтовой | 2026-11-17 09:00 A | 2026-11-17 10:00 A |  | 0% → 100% | 81.47d → none |  |  |
| 2607 | бойлер с 2ц на ремонт / проверка потенциометра | 2026-11-13 09:00 A | 2026-11-13 11:00 A |  | 0% → 100% | 85.34d → none |  |  |
| 3083 | **Квадропак** |  | 2026-11-25 10:00 → 2026-11-30 10:00 (+5d) | 168.12d → 171.12d |  | 75.47d → 72.47d |  |  |
| 3097 | Осмотр, дефектовка, устранение неисправностей ,смазка по необходимости, протяжка болтов | 2026-11-25 09:00 → 2026-11-30 09:00 (+5d) | 2026-11-25 10:00 → 2026-11-30 10:00 (+5d) |  |  | 75.47d → 72.47d |  | constraint start no earlier than 2026-11-25 09:00 → start no earlier than 2026-11-30 09:00 |
| 3108 | Разбор и чистка бункера со шнеком подачи сухого гидролизата | 2026-11-25 09:00 → 2026-11-30 09:00 (+5d) | 2026-11-25 10:00 → 2026-11-30 10:00 (+5d) |  |  | 75.47d → 72.47d |  | constraint start no earlier than 2026-11-25 09:00 → start no earlier than 2026-11-30 09:00 |
| 3193 | **парогенератор** |  |  |  | 91% → 95% |  |  |  |
| 3218 | Чистка (после остановки) | 2026-11-19 09:00 A | 2026-11-19 10:00 A |  | 0% → 100% | 79.47d → none |  |  |
| 3219 | **привод сетки ПЕЧИ сушки** |  | 2026-11-25 11:00 → 2026-11-30 10:00 (+5d) | 692.25d → 695.12d |  | 75.34d → 72.47d |  |  |
| 3232 | смазка цепей пищ смазкой по графику 3 мес | 2026-11-25 10:00 → 2026-11-30 09:00 (+5d) | 2026-11-25 11:00 → 2026-11-30 10:00 (+5d) |  |  | 75.34d → 72.47d |  | constraint start no earlier than 2026-09-16 09:00 → start no earlier than 2026-11-30 09:00 |
| 3495 | **конвейер 3 с охладителя в упаковку** |  |  |  | 88% → 99% | 79.56d → 0d |  |  |
| 3503 | ревизия люфтов, фиксации, смазки подшипников | 2026-11-19 09:00 A | 2026-11-19 09:15 A |  | 0% → 100% | 79.56d → none |  |  |
| 3672 | **синий склад** |  |  |  | 45% → 63% |  |  |  |
| 3673 | Маркировка оборудования по списку с кладовщиком, взять красные стикеры и пометить | 2026-11-23 09:00 A | 2026-11-23 12:00 A |  | 0% → 100% | 77.22d → none |  |  |
| 3674 | уборка зона металла / склад ЗИП | 2026-11-10 09:00 A | 2026-11-10 13:00 A |  | 0% → 100% | 88.09d → none |  |  |
| 3675 | Замерить ширину запаечных губок на теко 1,5, написать информацию в мах | 2026-10-30 09:00 A | 2026-10-30 09:30 A |  | 0% → 100% | 97.53d → none |  |  |
| 3770 | **склад упаковки** |  | 2026-11-23 10:30 → 2026-11-27 10:00 (+4d) | 180.19d? → 184.12d? |  | 77.41d → 73.47d |  |  |
| 3772 | **ремонт роль ворот** |  | 2026-11-23 10:30 → 2026-11-27 10:00 (+4d) | 8.19d → 12.12d |  | 77.41d → 73.47d |  |  |
| 3775 | замена | 2026-11-23 09:30 → 2026-11-27 09:00 (+4d) | 2026-11-23 10:30 → 2026-11-27 10:00 (+4d) |  |  | 77.41d → 73.47d |  | constraint start no earlier than 2026-11-09 08:00 → start no earlier than 2026-11-27 09:00 |
| 3857 | **администрантивные** |  | 2026-11-17 10:00 → 2026-11-25 18:00 (+8d) | 186.12d → 193d? | 87% → 83% | 81.47d → 74.59d |  |  |
| 3860 | Установить ящики желаний (узнавать места размещений у Кости) | 2026-11-16 09:00 A | 2026-11-16 11:00 A |  | 0% → 100% | 82.34d → none |  |  |
| 3898 | **офис** |  | 2026-11-20 18:00 → 2026-11-25 10:00 (+5d) | 391d? → 393.12d | 10% → 27% | 77.59d → 75.47d |  |  |
| 3900 | **Монтаж дополнительного освещения** | 2026-11-20 09:00 → 2026-11-25 09:00 (+5d) | 2026-11-20 18:00 → 2026-11-25 10:00 (+5d) | 1d? → 0.12d |  | 77.59d → 75.47d |  |  |
| 3901 | Выяснить маркировку и тип светильников в кабинете снабжения, 2 этаж | 2026-11-20 09:00 → 2026-11-25 09:00 (+5d) | 2026-11-20 10:00 → 2026-11-25 10:00 (+5d) |  |  | 78.47d → 75.47d |  | constraint start no earlier than 2026-11-20 09:00 → start no earlier than 2026-11-25 09:00; resources Макаревич А → Макаревич А; Некрасов А |

| ID | Task | Start | Finish | Duration | Complete | Total float | Other |
| --- | --- | --- | --- | --- | --- | --- | --- |
| 3902 | Повесить доп светильники, в каких местах добавить, узнать у маркетинга, узнать возможность поставить другие светильники (согласовать с Домоводовым), смонтировать по красоте. | 2026-11-20 09:00 → 2026-11-25 09:00 (+5d) | 2026-11-20 18:00 → 2026-11-25 10:00 (+5d) | 1d? → 1h |  | 77.59d → 75.47d | constraint start no earlier than 2026-11-20 09:00 → start no earlier than 2026-11-25 09:00; resources Макаревич А → Макаревич А; Некрасов А |
| 3905 | **территория** |  | 2026-11-20 10:00 → 2026-11-25 11:00 (+5d) | 469.12d? → 472.25d? | 70% → 71% | 78.47d → 75.34d |  |
| 3906 | Растяжка бетона, помощ олегу, когда привезут | 2026-11-20 09:00 A | 2026-11-20 10:00 A |  | 0% → 100% | 78.47d → none |  |
| 3937 | **установить пост для зарядки эл мобиль директору** |  | 2026-06-03 18:00 → 2026-11-25 11:00 (+175d) | 1d? → 138.25d? |  | 212.59d → 75.34d |  |
| 3986 | **Люки на колодцы** |  | 2026-06-12 11:30 A |  | 98% → 100% | 206.28d → none |  |
| 3990 | установка люков на колодцы | 2026-06-12 09:30 A | 2026-06-12 11:30 A |  | 0% → 100% | 206.28d → none |  |

## Version 42 (saved 2026-11-27, file 07.09.26.mpp)

Last finish stays 2027-03-10. Complete tasks 2895 → 2925.

Added:

| ID | Task | Duration | Start | Finish | Constraint | Resources |
| --- | --- | --- | --- | --- | --- | --- |
| 2 | Покраска металла на пандусе | 2h | 2026-11-28 09:00 | 2026-11-28 11:00 | start no earlier than 2026-11-28 09:00 | Тимофеев В |
| 3 | Замена прокладки на стиральной машинке, шланг подачи воды. Прокладки пришли на склад | 30min | 2026-11-26 09:00 A | 2026-11-26 09:30 A | start no earlier than 2026-11-26 08:00 | Дедов В |
| 4 | Заказать кнопки для рольставен на пандусе в сторону завоза навесок | 20min | 2026-11-26 09:00 A | 2026-11-26 09:20 A | start no earlier than 2026-11-26 08:00 | Зорькин В |
| 5 | Монтаж кнопок для рольставен с двух сторон на пандусе в сторону завоза навесок | 2h | 2026-12-03 09:00 | 2026-12-03 11:00 | start no earlier than 2026-12-03 09:00 | Бундин В |
| 6 | Перенести звонок за ворота пандуса (спросить Зорькина) | 2h | 2026-11-28 09:00 | 2026-11-28 11:00 | start no earlier than 2026-11-28 09:00 | Бундин В |
| 7 | Покрасить швелер грунтовкой по низким температурам | 2d | 2026-11-25 09:00 A | 2026-11-26 18:00 A | start no earlier than 2026-11-25 08:00 | Николаев |
| 137 | Изготовление заготовок для рамы (в 9:00 обсуждаем с костей) | 4h | 2026-11-27 09:00 | 2026-11-27 13:00 | start no earlier than 2026-11-27 09:00 | Макаревич А; Некрасов А |
| 913 | Настройка и подключение ворот с электромагнитом, продолжаем работу | 8h | 2026-11-27 09:00 | 2026-11-27 18:00 | start no earlier than 2026-11-27 08:00 | Дедов В |
| 914 | Для электромагнита использовать свободные жилы кабеля UTP | 2h | 2026-11-27 09:00 | 2026-11-27 11:00 | start no earlier than 2026-11-27 08:00 | Дедов В |
| 915 | Замена переключателя в шкафу синий бункер | 1h | 2026-11-27 09:00 | 2026-11-27 10:00 | start no earlier than 2026-11-27 09:00 | Тимофеев В |
| 916 | Замена стульчака в туалете правая дверь | 1h | 2026-11-25 09:00 A | 2026-11-25 10:00 A | start no earlier than 2026-11-25 08:00 | Николаев |
| 1618 | Приварить пластину для электрозамка | 2h | 2026-11-26 09:00 A | 2026-11-26 11:00 A | start no earlier than 2026-11-26 09:00 | Некрасов А; Макаревич А |
| 1620 | Протяжка провода для электромагнита по стене | 2h | 2026-12-01 09:00 | 2026-12-01 11:00 | start no earlier than 2026-12-01 09:00 | Бундин В |
| 1622 | Монтаж концевика, кнопок | 2h | 2026-11-26 09:00 A | 2026-11-26 11:00 A | start no earlier than 2026-11-26 09:00 | Дедов В |
| 1658 | Продолжаем мыть сетку на охладителе, отмыть грязхный кусок, спросить у валентина, ему показывали видео, где он находится | 3h | 2026-11-28 09:00 | 2026-11-28 12:00 | start no earlier than 2026-11-28 09:00 | Тимофеев В |
| 1659 | Доработать лоток с которого ссыпается в полибок с охладителя, при подъеме втыкается в сетку | 2h | 2026-11-28 09:00 | 2026-11-28 11:00 | start no earlier than 2026-11-28 09:00 | Тимофеев В |
| 1660 | изготовление сеток для дражжировки и охладителя по образцу (сетка которая с ручками) | 6h | 2026-11-28 09:00 | 2026-11-28 16:00 | start no earlier than 2026-11-28 09:00 | Бундин В |
| 1697 | **площадка для гидролизата** | 3.25d | 2026-11-27 09:00 A | 2026-12-02 11:00 |  |  |
| 1698 | Очистка и помывка площадки, подготовка к покраске | 2h | 2026-11-27 09:00 | 2026-11-27 11:00 | start no earlier than 2026-11-27 08:00 | Уборщица |
| 1699 | Покраска | 2h | 2026-12-02 09:00 | 2026-12-02 11:00 | start no earlier than 2026-12-02 09:00 | Николаев |
| 2585 | Изготовить и установить козырьки над кнопками ворот (2ц, там где ключ, там где звонок), посмотреть, где еще можно поставить | 3h | 2026-11-29 09:00 | 2026-11-29 12:00 | start no earlier than 2026-11-29 09:00 | Некрасов А |
| 2586 | С желтого склада утащить всю ненужную требуху на синий, освободить полки. Утащить вентиляцию. | 4h | 2026-11-29 09:00 | 2026-11-29 13:00 | start no earlier than 2026-11-29 09:00 | Некрасов А |
| 3015 | Замена сетки | 8h | 2026-11-27 09:00 | 2026-11-27 18:00 | start no earlier than 2026-11-27 08:00 | Макаревич А; Некрасов А; Николаев; Труфанов А |
| 3881 | Проведение повторного инструктажа с росписью в журнал | 1d? | 2027-02-03 09:00 | 2027-02-03 18:00 | start no earlier than 2027-02-03 09:00 | Зорькин В |

Changed:

| ID | Task | Start | Finish | Duration | Complete | Total float | Predecessors | Other |
| --- | --- | --- | --- | --- | --- | --- | --- | --- |
| 112 | **сборка рама для труб приточной вентиляции** |  | 2026-11-27 18:00 → 2026-12-01 15:00 (+4d) | 37d? → 38.62d? |  | 72.59d → 70.97d |  |  |
| 113 | Срезать кончики свай на 300 | 2026-11-17 09:00 A | 2026-11-17 11:00 A |  | 0% → 100% | 81.34d → none |  |  |
| 114 | Монтаж головок | 2026-11-17 10:00 A | 2026-11-17 11:00 A |  | 0% → 100% | 81.34d → none |  |  |
| 136 | **сборка рама в цехе 3** |  | 2026-11-25 15:00 → 2026-11-30 15:00 (+5d) | 14.62d → 17.62d | 33% → 26% | 73.97d → 70.97d |  |  |
| 139 | сборка рамы | 2026-11-25 09:00 → 2026-11-30 09:00 (+5d) | 2026-11-25 15:00 → 2026-11-30 15:00 (+5d) |  |  | 73.97d → 70.97d |  | constraint start no earlier than 2026-11-25 09:00 → start no earlier than 2026-11-30 09:00 |
| 142 | монтаж рама на цех краном | 2026-11-27 09:00 → 2026-11-30 15:00 (+3d) | 2026-11-27 18:00 → 2026-12-01 15:00 (+4d) |  |  | 72.59d → 70.97d |  | constraint start no earlier than 2026-11-27 09:00 → start no earlier than 2026-11-30 09:00 |
| 165 | **реконструкция хранения гидролизатов и маршрут подачи навесок** |  | 2026-12-01 18:00 → 2026-12-08 18:00 (+7d) | 73d → 78d |  | 70.59d → 65.59d |  |  |
| 168 | **монтаж доп плащадки** |  | 2026-12-01 18:00 → 2026-12-02 18:00 (+1d) | 53d → 54d |  | 70.59d → 69.59d |  |  |
| 173 | монтаж | 2026-11-30 09:00 → 2026-12-01 09:00 (+1d) | 2026-12-01 18:00 → 2026-12-02 18:00 (+1d) |  |  | 70.59d → 69.59d |  | constraint start no earlier than 2026-11-30 09:00 → start no earlier than 2026-12-01 09:00 |
| 174 | **монтаж перегородка корридор** |  | 2026-12-01 18:00 → 2026-12-08 18:00 (+7d) | 30.97d → 35.97d |  | 70.59d → 65.59d |  |  |
| 176 | монтаж | 2026-11-30 09:00 → 2026-12-07 09:00 (+7d) | 2026-12-01 18:00 → 2026-12-08 18:00 (+7d) |  |  | 70.59d → 65.59d |  | constraint start no earlier than 2026-11-30 09:00 → start no earlier than 2026-12-07 09:00 |
| 434 | **Модернизация смесителей для автоматической подачи сырья из смесителей** |  | 2026-11-30 12:00 → 2026-12-04 09:10 (+4d) | 10.38d → 14.02d |  | 72.22d → 68.57d |  |  |
| 436 | контроль | 2026-11-27 09:00 → 2026-12-04 09:00 (+7d) | 2026-11-27 09:10 → 2026-12-04 09:10 (+7d) |  |  | 73.57d → 68.57d |  | constraint start no earlier than 2026-11-27 09:00 → start no earlier than 2026-12-04 09:00 |
| 600 | **замена ленты пролистывателя** |  | 2026-11-27 13:00 → 2026-12-04 13:00 (+7d) | 60.5d → 65.5d |  |  |  |  |
| 604 | склеить ремень с лентой, ремень на складе (отправить ленту организации, которая когда-то приезжала и склеивала ленты) | 2026-11-27 09:00 → 2026-12-04 09:00 (+7d) | 2026-11-27 13:00 → 2026-12-04 13:00 (+7d) |  |  |  |  | constraint start no earlier than 2026-11-27 09:00 → start no earlier than 2026-12-04 09:00 |
| 917 | Ремонт фартука поломоечной машины (впаять проволоку в фронтальный разрыв, по периметру обклеить космофеном с содой, дополнитьльно армировать стеклотканью) установить обратно | 2026-11-24 09:00 → 2026-11-25 09:00 A (+1d) | 2026-11-24 12:00 → 2026-11-25 12:00 A (+1d) |  | 0% → 100% | 76.22d → none |  | was named Ремонт фартука поломоечной машины (впаять проволоку в фронтальный разрыв, по периметру обклеить космофеном с содой, дополнитьльно армировать стеклотканью); constraint start no earlier than 2026-11-24 08:00 → start no earlier than 2026-11-25 09:00 |
| 996 | **установить аспирационный рукав в зону бункера + фильтр + выход в цех/или общ обменную вент** |  | 2026-11-30 18:00 → 2026-12-04 18:00 (+4d) | 23d? → 27d? |  | 71.59d → 67.59d |  |  |
| 999 | монтаж аспирационная установка | 2026-11-30 09:00 → 2026-12-04 09:00 (+4d) | 2026-11-30 18:00 → 2026-12-04 18:00 (+4d) |  |  | 71.59d → 67.59d |  | constraint start no earlier than 2026-11-30 09:00 → start no earlier than 2026-12-04 09:00 |
| 1617 | **схема блокировки роль ворот при открытым шлюзе + авт закрытие + датчик препятствия** |  | 2026-11-30 13:00 → 2026-12-01 11:00 (+1d) | 24.5d → 25.25d | 28% → 75% | 72.09d → 71.34d |  |  |
| 1621 | Установка электромагнита на двери | 2026-11-25 09:00 → 2026-11-26 09:00 A (+1d) | 2026-11-25 15:00 → 2026-11-26 15:00 A (+1d) |  | 0% → 100% | 74.97d → none |  | constraint start no earlier than 2026-11-25 09:00 → start no earlier than 2026-11-26 09:00 |
| 1623 | разработка схемы | 2026-11-02 09:00 A | 2026-11-02 13:00 A |  | 0% → 100% | 94.59d → none |  |  |
| 1641 | **отмена** |  | 2026-12-15 11:30 → 2026-12-14 11:30 (-1d) | 103.31d? → 102.31d? |  | 61.28d → 62.28d |  |  |
| 1642 | **найти места утечки тепла под потолком- перемерзает труба подачи воды в 3 цех** |  | 2026-12-15 11:30 → 2026-12-14 11:30 (-1d) | 103.31d? → 102.31d? |  | 61.28d → 62.28d |  |  |
| 1645 | проверка пирометром / тепловизором | 2026-11-30 09:00 → 2026-11-27 09:00 (-3d) | 2026-11-30 11:00 → 2026-11-27 11:00 (-3d) |  |  | 61.28d → 62.28d |  | constraint start no earlier than 2026-11-30 09:00 → start no earlier than 2026-11-27 09:00; resources Некрасов А → Бундин В |
| 1646 | заявка (подумать материал) | 2026-11-30 11:00 → 2026-11-27 11:00 (-3d) | 2026-11-30 11:15 → 2026-11-27 11:15 (-3d) |  |  | 61.28d → 62.28d |  |  |
| 1647 | доставка- контроль | 2026-12-14 11:15 → 2026-12-11 11:15 (-3d) | 2026-12-14 11:30 → 2026-12-11 11:30 (-3d) |  |  | 61.28d → 62.28d |  |  |
| 1648 | монтаж | 2026-12-14 11:30 → 2026-12-11 11:30 (-3d) | 2026-12-15 11:30 → 2026-12-14 11:30 (-1d) |  |  | 61.28d → 62.28d |  |  |
| 1657 | **3 цех** |  | 2026-11-30 11:15 → 2026-12-02 11:00 (+2d) | 338.28d? → 340.25d? |  | 72.31d → 70.34d |  |  |
| 1661 | поднять силиконовые резинки так, что бы они не касались сетки охладителя | 2026-11-25 09:00 A | 2026-11-25 11:00 A |  | 0% → 100% | 75.34d → none |  |  |
| 1662 | Сделать отверстия по краям охладителя в месте ссыпания гранулы, чтоб то что шло с цепей, падало мимо полибокса | 2026-11-25 09:00 A | 2026-11-25 11:00 A |  | 0% → 100% | 75.34d → none |  |  |
| 1685 | установить розетку для весов гидролизата | 2026-11-18 09:00 A | 2026-11-18 10:00 A |  | 0% → 100% | 80.47d → none |  |  |
| 1687 | **Установить частотный преобразователь на барабан этра** | 2026-11-16 09:00 A → 2026-11-02 09:00 A (-14d) | 2026-11-30 11:15 A → 2026-11-30 09:15 A | 10.28d → 24.03d |  |  |  |  |
| 1690 | монтаж | 2026-11-30 09:15 A → 2026-11-02 09:00 A (-28d) | 2026-11-30 11:15 A → 2026-11-02 11:00 A (-28d) |  |  |  |  |  |
| 1693 | **Врезать вентилятор в курилку и подключить** |  | 2026-11-25 13:00 → 2026-11-25 09:30 | 10.5d → 10.06d | 0% → 1% | 75.09d → 75.53d |  |  |
| 1695 | заявка обратный клапан/тройник/дифузоры на вентилятор ВК200Б | 2026-11-25 09:00 A | 2026-11-25 09:30 A |  | 0% → 100% | 75.53d → none |  |  |
| 1700 | Изготовить площадку для засыпки сухого гидролизата, за основу взять раму у 5 цеха. Покрасить | 2026-11-11 09:00 → 2026-11-27 09:00 (+16d) | 2026-11-11 13:00 → 2026-11-27 13:00 (+16d) |  |  | 87.09d → 73.09d |  | constraint start no earlier than 2026-11-11 09:00 → start no earlier than 2026-11-27 08:00 |
| 1701 | монтаж вентилятор состыковка с олегом | 2026-11-25 09:00 → 2026-11-27 09:00 A (+2d) | 2026-11-25 13:00 → 2026-11-27 13:00 A (+2d) |  | 0% → 100% | 75.09d → none |  | was named монтаж вентилятор; constraint start no earlier than 2026-11-25 09:00 → start no earlier than 2026-11-27 09:00; resources Тимофеев В → Тимофеев В; Бундин В |
| 1711 | **Поставить продувку на парогенераторе каждые 2ч интервал продувки 2 секунды.** | 2026-11-10 09:00 A → 2026-11-06 09:00 A (-4d) | 2026-11-10 09:30 A → 2026-11-13 10:00 A (+3d) | 30min → 7.12d |  |  |  | constraint start no earlier than 2026-11-10 08:00 → none |
| 1733 | **парогенератор скидывает давление до 0 на продувке** |  | 2026-11-09 11:00 A |  | 92% → 100% | 89.34d → none |  |  |
| 1735 | запрос программы | 2026-11-09 09:00 A | 2026-11-09 09:15 A |  | 0% → 100% | 89.56d → none |  |  |
| 1738 | **Поставить вибратор на приемную воронку после смесителя, шнек подачи сырья в прекондиционер** | 2026-11-10 09:00 → 2025-09-01 09:00 A (-435d) | 2026-11-10 11:00 → 2026-11-07 13:00 (-3d) | 2h → 319.5d? | 0% → 96% | 88.34d → 91.09d |  | constraint start no earlier than 2026-11-10 09:00 → none |
| 2062 | **5 цех** |  |  |  | 64% → 65% |  |  |  |
| 2063 | Монтаж освещения на улицу | 2026-11-27 09:00 → 2026-11-30 09:00 (+3d) | 2026-11-27 11:00 → 2026-11-30 11:00 (+3d) |  |  | 73.34d → 72.34d | none → 2101 | constraint start no earlier than 2026-11-27 09:00 → none |
| 2067 | Поставить крышку, которую изготовил бобренок, для тельфера | 2026-11-06 09:00 → 2026-11-27 09:00 (+21d) | 2026-11-06 10:00 → 2026-11-27 10:00 (+21d) |  |  | 92.47d → 73.47d |  | constraint start no earlier than 2026-11-06 08:00 → start no earlier than 2026-11-27 09:00; resources Макаревич А; Николаев → Макаревич А; Некрасов А |
| 2068 | ТО в пятом цеху, осмотр, дефектовка, протяжка на всем оборудовании | 2026-11-06 09:00 A | 2026-11-06 16:00 A |  | 0% → 100% |  |  |  |
| 2070 | 5а подключить автоматику ворот | 2026-11-25 09:00 → 2026-11-26 09:00 A (+1d) | 2026-11-25 11:00 → 2026-11-26 11:00 A (+1d) |  | 0% → 100% | 75.34d → none |  | constraint start no earlier than 2026-11-25 09:00 → start no earlier than 2026-11-26 09:00 |
| 2101 | **установить зажим троса на тельфер** |  | 2026-11-06 18:00 → 2026-11-27 18:00 A (+21d) | 56d? → 75d? | 3% → 100% | 91.59d → none |  |  |
| 2103 | контроль доставки | 2026-10-28 09:00 A | 2026-10-28 09:15 A |  | 0% → 100% | 97.56d → none |  |  |
| 2104 | монтаж (узнать у Артема) | 2026-11-06 09:00 → 2026-11-27 09:00 A (+21d) | 2026-11-06 18:00 → 2026-11-27 18:00 A (+21d) |  | 0% → 100% | 91.59d → none |  | constraint start no earlier than 2026-11-06 09:00 → start no earlier than 2026-11-27 09:00; resources Макаревич А; Николаев → Макаревич А; Некрасов А |
| 2105 | **ремонт насос водоснабжения** |  | 2026-11-26 11:00 A → 2026-11-23 11:00 A (-3d) | 73.25d → 70.25d |  |  |  |  |
| 2106 | перекрутить американку для удобного обслуживания | 2026-11-26 09:00 A → 2026-11-23 09:00 A (-3d) | 2026-11-26 11:00 A → 2026-11-23 11:00 A (-3d) |  |  |  |  |  |
| 2584 | **слесарное помещение** |  | 2026-11-16 16:00 → 2026-11-29 13:00 (+13d) | 125.75d? → 135d? | 81% → 74% | 81.84d → 72.59d |  |  |
| 2621 | **ЗИП ремонт** |  | 2026-12-03 11:00 → 2026-12-09 11:00 (+6d) | 683.25d? → 687.25d? |  | 69.34d → 65.34d |  |  |
| 2622 | ремонт электродов с парогенератора, которые в врестаке | 2026-11-25 09:00 A | 2026-11-25 12:00 A |  | 0% → 100% | 75.22d → none |  |  |
| 2785 | **быстрая замена шнеков - кондуктор для хранения и перемещения подготвленного ствола** | 2026-11-30 09:00 → 2026-12-04 09:00 (+4d) | 2026-12-03 11:00 → 2026-12-09 11:00 (+6d) |  |  | 69.34d → 65.34d |  |  |
| 2786 | проект кондуктора и траверсы перемещения ствола штабелером | 2026-11-30 09:00 → 2026-12-04 09:00 (+4d) | 2026-11-30 11:00 → 2026-12-04 11:00 (+4d) |  |  | 69.34d → 65.34d |  | constraint start no earlier than 2026-11-30 09:00 → start no earlier than 2026-12-04 09:00 |
| 2787 | сборка | 2026-12-01 11:00 → 2026-12-07 11:00 (+6d) | 2026-12-03 11:00 → 2026-12-09 11:00 (+6d) |  |  | 69.34d → 65.34d |  |  |
| 2879 | **1 цех** |  |  |  | 89% → 84% |  |  |  |
| 2995 | **печь** |  | 2026-11-18 10:00 → 2026-11-27 18:00 (+9d) | 674.12d → 682d | 95% → 71% | 80.47d → 72.59d |  |  |
| 3014 | Контроль состояния сетки/цепи | 2026-11-18 09:00 A | 2026-11-18 10:00 A |  | 0% → 100% | 80.47d → none |  |  |
| 3695 | **синий склад** |  | 2026-11-23 12:00 → 2026-11-27 18:00 (+4d) | 155.38d → 160d |  | 77.22d → 72.59d |  |  |
| 3710 | расширить проем вверху для проезда погрузчиков, врезаются | 2026-09-21 09:00 → 2026-11-27 09:00 (+67d) | 2026-09-21 18:00 → 2026-11-27 18:00 (+67d) |  |  |  |  | constraint start no earlier than 2026-09-21 09:00 → start no earlier than 2026-11-27 09:00; resources Олег → Тимофеев В; Бундин В |
| 3793 | **склад упаковки** |  | 2026-11-27 10:00 → 2026-11-23 10:00 (-4d) | 184.12d? → 180.12d? |  | 73.47d → 77.47d |  |  |
| 3795 | **ремонт роль ворот** | 2026-11-13 09:00 A | 2026-11-27 10:00 → 2026-11-23 10:00 (-4d) | 12.12d → 8.12d | 0% → 67% | 73.47d → 77.47d |  |  |
| 3798 | замена | 2026-11-27 09:00 → 2026-11-23 09:00 A (-4d) | 2026-11-27 10:00 → 2026-11-23 10:00 A (-4d) |  | 0% → 100% | 73.47d → none |  |  |
| 3880 | **администрантивные** |  | 2026-11-25 18:00 → 2027-02-03 18:00 (+70d) | 193d? → 243d? | 83% → 92% | 74.59d → 24.59d |  |  |
| 3882 | инвентаризация | 2026-11-25 09:00 A | 2026-11-25 18:00 A |  | 0% → 100% | 74.59d → none |  |  |
| 3886 | спсиание материалов | 2026-09-01 09:00 A | 2026-09-01 16:00 A |  | 0% → 100% | 148.84d → none |  |  |
| 3887 | составить список остатков шнеков в таблицу зип | 2026-09-01 09:00 A | 2026-09-01 11:00 A |  | 0% → 100% | 149.34d → none |  |  |
| 3890 | договор по ремонту стиральных машинок. Переговоры | 2026-09-01 09:00 A | 2026-09-01 10:00 A |  | 0% → 100% | 149.47d → none |  |  |

| ID | Task | Start | Finish | Duration | Complete | Total float | Other |
| --- | --- | --- | --- | --- | --- | --- | --- |
| 3922 | **офис** |  | 2026-11-25 10:00 → 2026-11-26 10:00 (+1d) | 393.12d → 394.12d | 27% → 80% | 75.47d → 74.47d |  |
| 3924 | **Монтаж дополнительного освещения** | 2026-11-25 09:00 A | 2026-11-25 10:00 → 2026-11-26 10:00 A (+1d) | 0.12d → 1.12d | 0% → 100% | 75.47d → none |  |
| 3925 | Выяснить маркировку и тип светильников в кабинете снабжения, 2 этаж | 2026-11-25 09:00 A | 2026-11-25 10:00 A |  | 0% → 100% | 75.47d → none |  |
| 3926 | Повесить доп светильники, в каких местах добавить, узнать у маркетинга, узнать возможность поставить другие светильники (согласовать с Домоводовым), смонтировать по красоте. | 2026-11-25 09:00 → 2026-11-26 09:00 A (+1d) | 2026-11-25 10:00 → 2026-11-26 10:00 A (+1d) |  | 0% → 100% | 75.47d → none | constraint start no earlier than 2026-11-25 09:00 → start no earlier than 2026-11-26 09:00 |
| 3929 | **территория** |  |  |  | 71% → 72% |  |  |
| 3961 | **установить пост для зарядки эл мобиль директору** | 2026-06-03 09:00 A |  |  | 0% → 20% |  |  |
| 3962 | сделать кронштейны для намотки кабеля зарядки, что бы не лежал на земле | 2026-11-25 09:00 A | 2026-11-25 11:00 A |  | 0% → 100% | 75.34d → none |  |
